# Madison BRT - CPM JUL 2023

How a schedule from Primavera P6 changed from version to version. A marks actual dates.

## Version 1 (data date 2023-08-14, saved 2023-09-18, file 0_MBRT-127_1787889727448.xer)

Note of the change: Restructure As Build Schedule UI and clarify XER run history: move XER Null Test out of the in-project tab bar into a new app-wide "As Build Schedule" tab (opened via a header button on completed projects), redesign the XER results view with a vibrant success/warning/error banner treatment, and turn each run into its own numbered, timestamped, collapsible accordion card so repeated runs of the same upload are no longer visually indistinguishable.

| ID | WBS | Task | Duration | Start | Finish | Predecessors | Complete | Constraint |
| --- | --- | --- | --- | --- | --- | --- | --- | --- |
|  | 1 | **PRECONSTRUCTION / PROCUREMENT** |  | 2021-09-20 | 2023-10-18 |  |  |  |
| PCS-0014 |  | PROJECT AWARD | 0d | 2021-09-20 A | 2021-09-20 A |  | 100% |  |
|  | 1 | **PREPARE SUBMITTALS** |  | 2021-09-20 | 2022-04-15 |  |  |  |
| PSP-0003 |  | PREP-CQPP PLAN | 1d | 2021-09-20 A | 2021-09-20 A | PCS-0014 SS | 100% |  |
| PSP-0004 |  | PREP-POLE FOUNDATIONS SUBMITTALS | 1d | 2021-09-20 A | 2021-09-20 A | PCS-0014 SS | 100% |  |
| PSP-0005 |  | PREP-POLE SUBMITTALS | 1d | 2021-09-20 A | 2022-02-07 A | PCS-0014 SS | 100% |  |
| PSP-0006 |  | PREP-WATER LINE LAY DRAWINGS | 1d | 2021-09-20 A | 2021-09-20 A | PCS-0014 SS | 100% |  |
| PSP-0007 |  | PREP-PIPE SUBMITTALS | 1d | 2021-09-20 A | 2021-09-20 A | PCS-0014 SS | 100% |  |
| PSP-0008 |  | PREP-GENERAL SUBMITALS | 1d | 2021-09-20 A | 2021-09-20 A | PCS-0014 SS | 100% |  |
| PSP-0009 |  | PREP-EMERGENCY OCS REACTIVATION PLAN | 1d | 2021-09-20 A | 2021-09-20 A | PCS-0014 SS | 100% |  |
| PSP-0010 |  | PREP-TEMPORARY SIGNAL PLAN | 1d | 2021-09-20 A | 2021-09-20 A | PCS-0014 SS | 100% |  |
| PSP-0011 |  | PREP-TEMPORARY LIGHTING PLAN | 1d | 2021-09-20 A | 2021-09-20 A | PCS-0014 SS | 100% |  |
| PSP-0012 |  | PREP-BRASS INLAY | 1d | 2021-09-20 A | 2021-09-20 A | PCS-0014 SS | 100% |  |
| PSP-0013 |  | PREP-BUS SHELTERS | 1d | 2021-09-20 A | 2022-04-15 A | PCS-0014 SS | 100% |  |
| PSP-0018 |  | PREP-TEMPORARY DISCHARGE PLAN | 1d | 2021-09-20 A | 2021-09-20 A | PCS-0014 | 100% |  |
| PSP-0023 |  | PREP-SWPP | 1d | 2021-09-20 A | 2021-09-20 A | PCS-0014 | 100% |  |
| PSP-0028 |  | PREP-PROJECT WORK PLAN | 1d | 2021-09-20 A | 2021-09-20 A | PCS-0014 | 100% |  |
| PSP-0033 |  | PREP-TVSPP | 1d | 2021-09-20 A | 2021-09-20 A | PCS-0014 | 100% |  |
| PSP-0038 |  | PREP-VIBRATION MONITORING PLAN | 1d | 2021-09-20 A | 2021-09-20 A | PCS-0014 | 100% |  |
| PSP-0043 |  | PREP-TEMPORARY BYPASS PLANS | 1d | 2021-09-20 A | 2021-09-20 A | PCS-0014 | 100% |  |
| PSP-0048 |  | PREP-WATERMAIN SEQUENCE PLAN | 1d | 2021-09-20 A | 2021-09-20 A | PCS-0014 | 100% |  |
| PSP-48 |  | PREP-TEMPORARY WATERMAIN WORK PLAN | 1d | 2021-09-20 A | 2021-09-20 A | PCS-0014 | 100% |  |
| PSP-53 |  | PREP-PIPE LINING SUBMITTALS | 1d | 2021-09-20 A | 2021-09-20 A | PCS-0014 | 100% |  |
| PSP-58 |  | PREP-SCL VAULT MATERIAL SUBMITTAL | 5d | 2021-10-08 A | 2021-10-08 A | PCS-0014 | 100% |  |
|  | 3 | **SUBMITTAL REVIEW** |  | 2021-09-21 | 2023-03-13 |  |  |  |
| PSR-0003 |  | REVIEW-CQPP PLAN | 20d | 2021-09-21 A | 2021-10-18 A | PSP-0003 | 100% |  |
| PSR-0004 |  | REVIEW-POLE FOUNDATIONS SUBMITTALS | 20d | 2021-09-21 A | 2021-10-18 A | PSP-0004 | 100% |  |
| PSR-0006 |  | REVIEW-WATER LINE LAY DRAWINGS | 20d | 2021-09-21 A | 2021-10-18 A | PSP-0006 | 100% |  |
| PSR-0007 |  | REVIEW-PIPE SUBMITTALS | 10d | 2021-09-21 A | 2021-10-04 A | PSP-0007 | 100% |  |
| PSR-0008 |  | REVIEW-GENERAL SUBMITALS | 10d | 2021-09-21 A | 2021-10-04 A | PSP-0008 | 100% |  |
| PSR-0009 |  | REVIEW-EMERGENCY OCS REACTIVATION PLAN | 10d | 2021-09-21 A | 2021-10-04 A | PSP-0009 | 100% |  |
| PSR-0010 |  | REVIEW-TEMPORARY SIGNAL PLAN | 10d | 2021-09-21 A | 2021-10-04 A | PSP-0010 | 100% |  |
| PSR-0011 |  | REVIEW-TEMPORARY LIGHTING PLAN | 10d | 2021-09-21 A | 2021-10-04 A | PSP-0011 | 100% |  |
| PSR-0012 |  | REVIEW-BRASS INLAY | 15d | 2021-09-21 A | 2021-10-11 A | PSP-0012 | 100% |  |
| PSR-0014 |  | REVIEW-PIPE LINING SUBMITTAL | 10d | 2021-09-21 A | 2021-10-04 A | PSP-53 | 100% |  |
| PSR-0018 |  | REVIEW-TEMPORARY DISCHARGE PLAN | 10d | 2021-09-21 A | 2021-10-04 A | PSP-0018 | 100% |  |
| PSR-0023 |  | REVIEW-SWPP | 10d | 2021-09-21 A | 2021-10-04 A | PSP-0023 | 100% |  |
| PSR-0028 |  | REVIEW-PROJECT WORK PLAN | 10d | 2021-09-21 A | 2021-10-04 A | PSP-0028 | 100% |  |
| PSR-0033 |  | REVIEW-TVSPP | 10d | 2021-09-21 A | 2021-10-04 A | PSP-0033 | 100% |  |
| PSR-0038 |  | REVIEW-VIBRATION MONITORING PLAN | 10d | 2021-09-21 A | 2021-10-04 A | PSP-0038 | 100% |  |
| PSR-0043 |  | REVIEW-TEMPORARY BYPASS PLANS | 10d | 2021-09-21 A | 2021-10-04 A | PSP-0043 | 100% |  |
| PSR-0048 |  | REVIEW-WATERMAIN SEQUENCE PLAN | 10d | 2021-09-21 A | 2021-10-04 A | PSP-0048 | 100% |  |
| PSR-0053 |  | REVIEW-TEMPORARY WATERMAIN WORK PLAN | 10d | 2021-09-21 A | 2021-10-04 A | PSP-48 | 100% |  |
| PSR-0015 |  | REVIEW-SCL VAULT MATERIAL SUBMITTAL | 5d | 2021-10-11 A | 2021-11-10 A | PSP-58 | 100% |  |
| PSR-93 |  | CITY REVIEW OF PRIME POLES | 20d | 2021-11-23 A | 2022-08-22 A | PSP-0005 | 100% |  |
| PSR-0005 |  | REVIEW-POLE SUBMITTALS | 20d | 2022-02-17 A | 2022-03-10 A | PSP-0005 | 100% |  |
| PSR-53 |  | CITY DELAY ON REVIEW-SUNDANCER POLE SUBMITTALS | 20d | 2022-03-10 A | 2022-08-01 A | PSR-0005 | 100% |  |
| PSR-78 |  | OWNER DELAYS POLES AT UNION AND 19TH | 20d | 2022-03-11 A | 2023-02-10 A | PSR-0005 | 100% |  |
| PSR-0013 |  | REVIEW-BUS SHELTERS | 15d | 2022-04-18 A | 2022-06-08 A | PSP-0013 | 100% |  |
| PSR-58 |  | RE-DO SHOP DRAWINGS DUE TO DESIGN CHANGES-SUNDANCER POLE SUBMITTALS | 20d | 2022-08-02 A | 2022-10-03 A | PSR-53 | 100% |  |
| PSR-98 |  | CITY DELAY FOR PORTION OF PRIME POLES DESIGN | 20d | 2022-08-23 A | 2023-02-08 A | PSR-93 | 100% |  |
| PSR-63 |  | REVIEW NEW SUNDANCER POLES SHOP DRAWINGS | 15d | 2022-10-04 A | 2022-10-28 A | PSR-58 | 100% |  |
| PSR-103 |  | RESUBMITTAL OF PARTIAL PRIME POLES | 20d | 2023-02-08 A | 2023-02-08 A | PSR-98 | 100% |  |
| PSR-108 |  | CITY REVIEW FOR PARTIAL PRIME POLES | 20d | 2023-02-08 A | 2023-02-08 A | PSR-103 | 100% |  |
| PSR-83 |  | RESUBMIT POLES AT UNION AND 19TH | 20d | 2023-02-13 A | 2023-02-20 A | PSR-78 SS | 100% |  |
| PSR-88 |  | CITY REVIEW POLES AT UNION AND 19TH RESUBMITTAL | 20d | 2023-02-21 A | 2023-03-13 A | PSR-83 | 100% |  |
|  | 2 | **MATERIAL PROCURMENT LONG LEAD TIME** |  | 2021-10-05 | 2023-10-18 |  |  |  |
| PMP-0019 |  | OFD-BUTTERFLY VALES, MATERIAL PROCURMENT LONG LEAD TIME | 90d | 2021-10-05 A | 2022-05-09 A | PSR-0007 | 100% |  |
| PMP-0020 |  | OFD-72" DURAMAX PIPE, MATERIAL PROCURMENT LONG LEAD TIME | 70d | 2021-10-05 A | 2022-02-15 A | PSR-0007 | 100% |  |
| PMP-0023 |  | OFD-DOUBLE DISK GATE VALES | 70d | 2021-10-05 A | 2022-02-10 A | PSR-0007 | 100% |  |
| PMP-0021 |  | OFD-BRASS INLAY, MATERIAL PROCURMENT LONG LEAD TIME | 20d | 2021-10-12 A | 2021-11-08 A | PSP-0012, PSR-0012 | 100% |  |
| PMP-0015 |  | OFD-POLE ANCHOR BOLTS AND REBAR CAGES | 15d | 2021-10-19 A | 2021-11-08 A | PSR-0004 | 100% |  |
| PMP-0017 |  | OFD-WATERLINE PIPE | 55d | 2021-10-19 A | 2022-01-11 A | MS-0025, PSR-0006, PSR-0048, PSR-0053 | 100% |  |
| PMP-0026 |  | RECEIVE KCM OCS POLES | 0d | 2022-02-02 A | 2022-02-02 A | MS-0025 | 100% | as late as possible |
| PMP-0022 |  | OFD-STATION SHELTERS - PRIOR TO RFI 218 AND 219 | 120d | 2022-06-09 A | 2023-04-19 A | PSR-0013 | 100% |  |
| PMP-36 |  | OFD-POLES (PRIME) FIRST BATCH | 120d | 2022-08-23 A | 2023-01-13 A | PSR-93 | 100% |  |
| PMP-0016 |  | OFD-POLES (SUNDANCER) FIRST SHIPMENT RECEIVE AND SORT | 120d | 2022-10-31 A | 2023-04-21 A | PSR-0005, PSR-63, PSR-58, PSR-53 | 100% |  |
| PMP-26 |  | OFD-POLES (SUNDANCER) SECOND SHIPMENT RECEIVE AND SORT | 120d | 2022-10-31 A | 2023-04-21 A | PSR-63 | 100% |  |
| PMP-31 |  | OFD-POLES (SUNDANCER) 19TH AND UNION RECEIVE AND SORT | 50d | 2022-10-31 A | 2023-04-21 A | PSR-88 | 100% |  |
| PMP-41 |  | OFD-POLES (PRIME) SECOND BATCH | 41d | 2023-02-09 A | 2023-05-26 A | PSR-108 | 100% |  |

| ID | WBS | Task | Duration | Start | Finish | Predecessors | Complete | Total float | Constraint |
| --- | --- | --- | --- | --- | --- | --- | --- | --- | --- |
| PMP-46 |  | OFD-STATION SHELTERS - RFI 218 AND 219 | 25d | 2023-04-19 A | 2023-08-22 | PMP-0022 |  | -30d |  |
| PMP-51 |  | OFD-STATION SHELTERS - AFTER RFI 218 AND 219 | 40d | 2023-08-23 | 2023-10-18 | PMP-46 |  | -30d |  |
|  | 20 | **SCL FALSE CEILING NOTIFICATIONS** |  | 2021-10-12 | 2022-03-14 |  |  |  |  |
| 1-SCL-0900 |  | NOTIFY SCL, SCL FALSE CEILING NOTIFICATIONS | 0d | 2021-10-12 A | 2021-10-12 A | PCS-0014 FS+17d | 100% |  |  |
| 1-SCL-1000 |  | SCL INST FALSE CEILING 1st ALLEY & Spring St #123-M-357 | 10d | 2021-10-12 A | 2021-10-30 A | 1-SCL-0900 SS | 100% |  |  |
| 1-SCL-1010 |  | SCL INST FALSE CEILING 3rd Alley & Spring Street #143-M-109 | 10d | 2021-10-12 A | 2021-10-30 A | 1-SCL-0900 SS | 100% |  |  |
| 1-SCL-1070 |  | SCL INST FALSE CEILING 3rd AVE & Spring #133-M-013 | 10d | 2021-10-12 A | 2021-10-30 A | 1-SCL-0900 SS | 100% |  |  |
| 1-SCL-1080 |  | SCL INST FALSE CEILING 2nd Alley & Spring St #133-M-111 | 10d | 2021-10-12 A | 2021-10-30 A | 1-SCL-0900 SS | 100% |  |  |
| 1-SCL-1090 |  | SCL INST FALSE CEILING 2nd Alley & Spring St #133-M-375 | 10d | 2021-10-12 A | 2021-10-30 A | 1-SCL-0900 SS | 100% |  |  |
| 1-SCL-1100 |  | SCL INST FALSE CEILING 3rd AVE & Spring ST #133-M-005 | 10d | 2021-10-12 A | 2021-10-30 A | 1-SCL-0900 SS | 100% |  |  |
| 1-SCL-1110 |  | SCL INST FALSE CEILING 3rd Ave & Spring St #133-M-007 | 10d | 2021-10-12 A | 2021-10-30 A | 1-SCL-0900 SS | 100% |  |  |
| 1-SCL-1210 |  | SCL INST FALSE CEILING 3rd Ave & Spring ST #133-M-011 | 10d | 2021-10-12 A | 2021-10-30 A | 1-SCL-0900 SS | 100% |  |  |
| 1-SCL-1220 |  | SCL INST FALSE CEILING 3rd Ave & Spring St #133-M-012 | 10d | 2021-10-12 A | 2021-10-30 A | 1-SCL-0900 SS | 100% |  |  |
| 1-SCL-1060 |  | SCL INST FALSE CEILING 3rd AVE & MAD #143-M-117 | 10d | 2021-12-01 A | 2021-12-14 A | 1-SCL-0900 SS | 100% |  |  |
| 1-SCL-1020 |  | SCL INST FALSE CEILING 4th Alley & Spring St #153-M-268 | 10d | 2022-01-14 A | 2022-01-28 A | 1-SCL-0900 SS | 100% |  |  |
| 1-SCL-1030 |  | SCL INST FALSE CEILING 5th AVE & Spring St #163-M-354 | 10d | 2022-01-14 A | 2022-01-28 A | 1-SCL-0900 SS | 100% |  |  |
| 1-SCL-1040 |  | SCL INST FALSE CEILING 6th AVE & Spring St #163-M-355 | 10d | 2022-01-14 A | 2022-01-28 A | 1-SCL-0900 SS | 100% |  |  |
| 1-SCL-1050 |  | SCL INST FALSE CEILING 5th Alley & Spring St #163-M-351 | 10d | 2022-01-14 A | 2022-01-28 A | 1-SCL-0900 SS | 100% |  |  |
| 1-SCL-1120 |  | SCL INST FALSE CEILING 5th AVE & Spring St #163-M-003 | 10d | 2022-01-14 A | 2022-01-28 A | 1-SCL-0900 SS | 100% |  |  |
| 1-SCL-1130 |  | SCL INST FALSE CEILING 5th AVE & Spring St #163-M-353 | 10d | 2022-01-14 A | 2022-01-28 A | 1-SCL-0900 SS | 100% |  |  |
| 1-SCL-1140 |  | SCL INST FALSE CEILING 6th AVE & Spring St #163-M-009 | 10d | 2022-01-14 A | 2022-01-28 A | 1-SCL-0900 SS | 100% |  |  |
| 1-SCL-1150 |  | SCL INST FALSE CEILING 8th Ave & Spring St #703-M-001 | 10d | 2022-03-01 A | 2022-03-14 A | 1-SCL-0900 SS | 100% |  |  |
| 1-SCL-1160 |  | SCL INST FALSE CEILING 8th Ave & Spring St #713-M-003 | 10d | 2022-03-01 A | 2022-03-14 A | 1-SCL-0900 SS | 100% |  |  |
| 1-SCL-1170 |  | SCL INST FALSE CEILING 8th Ave & Spring St #713-M-001 | 10d | 2022-03-01 A | 2022-03-14 A | 1-SCL-0900 SS | 100% |  |  |
| 1-SCL-1180 |  | SCL INST FALSE CEILING 8th Ave & Spring St #713-M-372 | 10d | 2022-03-01 A | 2022-03-14 A | 1-SCL-0900 SS | 100% |  |  |
| 1-SCL-1190 |  | SCL INST FALSE CEILING 8th Ave & Spring St #713-V-003 | 10d | 2022-03-01 A | 2022-03-14 A | 1-SCL-0900 SS | 100% |  |  |
| 1-SCL-1200 |  | SCL INST FALSE CEILING 3rd AVE & MAD #133-M-118 | 10d | 2022-03-01 A | 2022-03-14 A | 1-SCL-0900 SS | 100% |  |  |
| 1-SCL-1230 |  | SCL INST FALSE CEILING 7th Alley & Spring St #703-M-004 | 10d | 2022-03-01 A | 2022-03-14 A | 1-SCL-0900 SS | 100% |  |  |
| 1-SCL-1240 |  | SCL INST FALSE CEILING 9th Ave & Spring St #713-M-002 | 10d | 2022-03-01 A | 2022-03-14 A | 1-SCL-0900 SS | 100% |  |  |
|  | 2 | **CONSTRUCTION / CONTRACT DAYS** |  | 2021-10-18 | 2024-09-09 |  |  |  |  |
|  | 1 | **MILESTONES** |  | 2021-10-18 | 2024-09-09 |  |  |  |  |
| MS-0025 |  | NTP | 0d | 2021-10-18 A | 2021-10-18 A | PSP-0003, PSP-0009, PSP-0006, PSP-0008, PSR-0003 FS-1d, PSR-0009, PSR-0008, PSR-0018, PSR-0023, PSR-0028, PSR-0033 | 100% |  |  |
| MS-0026 |  | MOBILIZATION, INSTALL TVSSPP/SWPPP MEASURES | 9d | 2021-10-18 A | 2021-10-28 A | MS-0025 | 100% |  |  |
| MS-0030 |  | CONTRACT DURATION | 600d | 2021-10-18 A | 2024-09-09 | MS-0025 SS | 55% | -131d |  |
| MS-2571 |  | CONCRETE TEAMSTER STRIKE | 20d | 2021-12-06 A | 2022-03-21 A | MS-0026, MS-2581 FF | 100% |  |  |
| MS-2576 |  | WEATHER DELAYS - SNOW | 4d | 2021-12-27 A | 2021-12-31 A | MS-0026, 3-1665 | 100% |  |  |
| MS-2581 |  | SUSPEND ROADWAY DEMOLITION FM 074 | 5d | 2022-01-26 A | 2022-03-11 A | MS-0025 | 100% |  |  |
| MS-2556 |  | 19TH & UNION, COMPLETION MILESTONE | 0d | 2024-02-14 | 2024-02-14 | 3-2499 |  | -28d |  |
| MS-1137 |  | COMPLETE ZONE 1 | 0d | 2024-03-20 | 2024-03-20 | 1-1133, 1-1135, 1-1045, 1-1043, 1-0792, 1-0790, 1-0822, 1-0086, 1-0085 |  | -52d |  |
| MS-1674 |  | COMPLETE ZONE 2 | 0d | 2024-03-20 | 2024-03-20 | 2-1655, MS-1137 |  | -52d |  |
| MS-0067 |  | KC METRO, 20d NOTICE | 20d | 2024-03-21 | 2024-04-17 | MS-1137 |  | 102d |  |
| MS-2561 |  | KC METRO, 20d NOTICE | 20d | 2024-03-21 | 2024-04-17 | MS-1137 |  | 102d |  |
| MS-2547 |  | COMPLETE ZONE 3 | 0d | 2024-03-28 | 2024-03-28 | 3-2501, 3-2362, 3-2364, 3-2542, 3-2379, 3-2565, 3-3300, 3-2189, 3-2267 |  | -58d |  |
| MS-2566 |  | KC METRO, 20d NOTICE | 20d | 2024-03-29 | 2024-04-25 | MS-2547 |  | 96d |  |
| MS-0052 |  | OCS WIRE INSTALLATION KCM - W OF BDWY (120CD) | 0d | 2024-04-17 | 2024-04-17 | 1-1017, 1-1047, MS-1137, MS-2561 |  | 145d |  |
| MS-0057 |  | OCS WIRE INSTALLATION KCM - BDWY INT (45CD) | 0d | 2024-04-17 | 2024-04-17 | 1-1017, 1-1047, MS-0067, OCS-0043 |  | 145d |  |
| MS-0062 |  | OCS WIRE INSTALLATION KCM - E OF BDWY (180CD) | 0d | 2024-07-10 | 2024-07-10 | 2-1657, 2-1604, 3-2542, MS-1674, MS-2547, MS-2566 |  | 61d |  |
| MS-2549 |  | SUBSTANTIAL COMPLETION | 0d | 2024-07-10 | 2024-07-10 | MS-1137, MS-2547, 2-1657, 2-1541, 2-1543, 2-1642, 2-1655, 2-1626, 2-1524, MS-0025, MS-1674, LS-1290, SC-1664, SC-1669, 2-1643, LS-1475, MS-2556, 1-1520, 1-1500, 1-1770, 1-1540, 1-1795, 1-1815, 1-1840, 1-1870, 1-1895, 1-1920, 1-1945, 1-1970, 1-1995, 2-2137, 2-2152, 2-2167, 2-2197, 2-2212, 3-2378, 3-2507, 3-2995, 3-3040, 3-3085, 3-2770, 3-2815, 3-2860, 3-2905, 3-2725, 3-2950, 2-2622, 2-2657, 3-3155, 3-3165, 3-3200, 3-3220, 3-3240, 3-3260, 3-3305, 3-3280, 1-2030, 1-2050, 1-2070, 1-2105, 1-2135, 1-2150, 1-2195, 1-2320, 1-2415, 1-2425, 1-2585, 1-2520, 1-2665, 1-2700, 1-2705, 2-1640, 1-2225, 1-2575, 3-2486, SC-0032, 3-2201, 1-6629, 1-6618, 1-6640, 1-6651, 1-6662, 1-6607, 3-9583, 3-9572, 3-9561, 3-9550, 1-10006, 3-2540 |  | -131d |  |
| MS-2550 |  | PUNCH LIST | 43d | 2024-07-11 | 2024-09-09 | MS-2549 |  | -131d |  |
| MS-2551 |  | PHYSICAL COMPLETION | 0d | 2024-09-09 | 2024-09-09 | MS-2550, MS-0030 FF, LS-1185, LS-1445 |  | -131d | finish on or before 2024-03-07 |
|  | 2 | **SCHDULE CONSTRAINTS** |  | 2021-10-18 | 2024-07-10 |  |  |  |  |
| SC-0029 |  | NO WORK ALLOWED 1-5 TO BROADWAY & ON 9TH | 40d | 2021-10-18 A | 2021-12-15 A | MS-0025 | 100% |  |  |
| SC-0030 |  | NO POTHOLING ALLOWED 1-5 TO BROADWAY & ON 9TH | 20d | 2021-10-18 A | 2021-11-12 A | MS-0025 | 100% |  |  |
| SC-0027 |  | REMOVE TREES | 10d | 2021-10-29 A | 2021-11-11 A | MS-0026, PSR-0033 | 100% |  |  |
| SC-1674 |  | EXPIRATION OF HOLIDAY MORATORIUM | 0d | 2022-01-01 A | 2022-01-01 A | MS-0025 | 100% |  | finish on or after 2022-01-01 |
| SC-0031 |  | ROUTE 2 DEENERGIZATION | 0d | 2022-03-19 A | 2022-03-19 A | MS-0025 | 100% |  | start on or after 2022-03-01 |
| SC-0037 |  | 10TH AVE START WORK | 0d | 2023-05-01 A | 2023-05-01 A | PMP-0020, MS-0025 | 100% |  |  |
| SC-0047 |  | 10TH AVE DURATION (4 MO) | 80d | 2023-05-01 A | 2023-08-22 | SC-0037 SS | 91% | 265d |  |
| SC-1664 |  | COMPLETE ROUTE 2 PAVING & CURBS | 0d | 2023-05-30 A | 2023-05-30 A |  | 100% |  | finish on or before 2023-03-31 |
| SC-0032 |  | OCS POLES E OF BROADWAY INSTALLED | 0d | 2024-07-10 | 2024-07-10 | 2-1604 FF, 2-1657 FF, 3-2542 FF |  | -131d |  |
| SC-1669 |  | COMPLETE ROUTE 2 SIGNALS & CHANN | 0d | 2024-07-10 | 2024-07-10 | 2-1657, MS-0025, 2-1537, 2-1489, 2-1516, 2-1540, 2-1613 |  | -131d | finish on 2024-01-31 |
|  | 3 | **OCS LINE REMOVAL** |  | 2022-03-24 | 2022-09-25 |  |  |  |  |
| OCS-0036 |  | 20 DAY NOTIFICATION FOR KC METRO | 20d | 2022-03-24 A | 2022-04-20 A | MS-2571 | 100% |  |  |
| OCS-0041 |  | 20 DAY NOTIFICATION FOR KC METRO | 20d | 2022-03-24 A | 2022-04-20 A | OCS-0040 | 100% |  |  |
| OCS-0033 |  | INST OCS POLE FOUNDATIONS REQUIRED FOR LINE REMOVAL FROM 5TH TO BROADWAY 5 EACH | 10d | 2022-03-29 A | 2022-04-19 A | MS-0026, PMP-0015, MS-2571, OCS-0036 SS | 100% |  |  |
| OCS-0038 |  | INST FOUNDATIONS FOR OCS ROUTE 2 16 EACH, OCS LINE REMOVAL | 32d | 2022-04-04 A | 2022-04-27 A | OCS-0033 SS | 100% |  |  |
| OCS-0034 |  | POLE FOUNDATION CURE TIME, OCS LINE REMOVAL | 14d | 2022-04-14 A | 2022-04-29 A | OCS-0033 | 100% |  |  |
| OCS-0035 |  | INST OWNER FUNISHED OCS POLES, OCS LINE REMOVAL | 2d | 2022-04-28 A | 2022-04-29 A | OCS-0034, PMP-0026 | 100% |  |  |
| OCS-0039 |  | FOUNDATION CURE TIME, OCS LINE REMOVAL | 14d | 2022-04-28 A | 2022-05-04 A | OCS-0038 | 100% |  |  |
| OCS-0037 |  | REM OCS LINES 5TH TO BROADWAY, OCS LINE REMOVAL | 45d | 2022-04-30 A | 2022-06-27 A | OCS-0036, OCS-0035 | 100% |  |  |

| ID | WBS | Task | Duration | Start | Finish | Predecessors | Complete |
| --- | --- | --- | --- | --- | --- | --- | --- |
| OCS-0040 |  | INST OWNER FURNISHED POLES FOR ROUTE 2, OCS LINE REMOVAL | 16d | 2022-05-05 A | 2022-05-10 A | OCS-0039 | 100% |
| OCS-0042 |  | REM OCS LINES FROM BROADWAY TO 16TH, OCS LINE REMOVAL | 60d | 2022-06-28 A | 2022-09-25 A | OCS-0041, SC-0031, MS-0025 | 100% |
| OCS-0043 |  | REM OCS LINES BROADWAY INTERSECTION, OCS LINE REMOVAL | 45d | 2022-09-21 A | 2022-09-25 A | OCS-0042 | 100% |
|  | 4 | **ZONE 1 - 1ST AVE TO BROADWAY** |  | 2021-10-19 | 2024-06-19 |  |  |
|  | 1 | **POTHOLING FOUNDATIONS** |  | 2021-10-25 | 2023-02-24 |  |  |
| 1-0046 |  | SPRING AVE 1ST TO 6TH - 1 EACH, POTHOLING FOUNDATIONS | 1d | 2021-10-25 A | 2021-10-25 A | MS-0026 | 100% |
| PCO009.01 |  | DSC 4-Potholing 40W-1629-1 3rd and Madison Foundation obstruction | 5d | 2021-10-26 A | 2021-11-05 A | 1-0046 | 100% |
| 1-0048 |  | MAD 1ST TO 6TH - 3 EACH, POTHOLING FOUNDATIONS | 2d | 2021-10-26 A | 2021-10-28 A | 1-0046 | 100% |
| 1-0068 |  | Pothole foundation at 3rd and Spring had obstruction will need to resume | 5d | 2021-10-26 A | 2022-03-18 A | 1-0046 | 100% |
| 1-0049 |  | SUBMITTAL REVIEW MAD 1ST TO 6TH, POTHOLING FOUNDATIONS | 10d | 2021-10-29 A | 2022-01-03 A | 1-0048 | 100% |
| 1-0047 |  | SUBMITTAL REVIEW SPRING 1ST TO 6TH, POTHOLING FOUNDATIONS | 10d | 2021-11-01 A | 2022-04-18 A | 1-0046 | 100% |
| 1-0052 |  | MAD 6TH TO BROADWAY - 30 EACH, POTHOLING FOUNDATIONS | 8d | 2021-11-29 A | 2021-12-14 A | 1-0068 SS | 100% |
| 1-0050 |  | SPRING 6TH TO 9TH - 5 EACH, POTHOLING FOUNDATIONS | 3d | 2021-12-15 A | 2022-01-06 A | 1-0048, SC-0030, MS-2576 | 100% |
| 1-0053 |  | SUBMITTAL REVIEW MAD 6TH TO BROADWAY, POTHOLING FOUNDATIONS | 10d | 2021-12-15 A | 2022-02-11 A | 1-0052 | 100% |
| PCO069.01 |  | DSC 43-Pole 40E-845-1 Concrete Conflict | 5d | 2021-12-20 A | 2022-05-13 A |  | 100% |
| 1-0054 |  | 9TH AVE - 8 EACH, POTHOLING FOUNDATIONS | 3d | 2022-01-12 A | 2022-01-26 A | 1-0052 | 100% |
| PCO106.01 |  | DSC 67-Pole 40E-119-1 Mad and 13th Conflict | 5d | 2022-01-19 A | 2022-01-26 A |  | 100% |
| 1-0051 |  | SUBMITTAL REVIEW SPRING 6TH TO 9TH, POTHOLING FOUNDATIONS | 10d | 2022-01-21 A | 2022-02-03 A | 1-0050, 1-0108 FF | 100% |
| 1-0055 |  | SUBMITTAL REVIEW 9TH AVE, POTHOLING FOUNDATIONS | 10d | 2022-01-27 A | 2022-02-10 A | 1-0054 | 100% |
| 1-0108 |  | Resumption of potholing 3rd and Spring | 1d | 2022-03-18 A | 2022-03-18 A | 1-0068, 1-0053 | 100% |
| PCO412.01 |  | DSC 302-Tie Back Pole 40E-795-2 | 5d | 2022-10-10 A | 2022-10-20 A |  | 100% |
| PCO416.01 |  | DSC 306-40W-883-1 Tie Back conflict | 5d | 2022-10-12 A | 2022-10-14 A | PCO412.01 SF | 100% |
| PCO481.01 |  | DSC 348-Pole Conflict Boylston to Broadway | 5d | 2022-11-29 A | 2023-02-24 A | PCO412.01, PCO416.01 | 100% |
|  | 2 | **WATERLINE WORK** |  | 2021-10-19 | 2023-02-24 |  |  |
| PCO001.01 |  | DSC 1-Utility Conflicts at 1st Ave WM Joint Potholing | 5d | 2021-10-19 A | 2021-10-20 A |  | 100% |
| 1-0057 |  | JOINT CLAMPS 1ST & MAD, WATERLINE WORK | 2d | 2021-10-19 A | 2021-10-20 A | MS-0026, PCO001.01 SS | 100% |
| 1-0058 |  | JOINT CLAMPS 5TH & MAD, WATERLINE WORK | 2d | 2021-11-23 A | 2021-12-07 A | 1-0057 | 100% |
| PCO055.01 |  | DSC 34-Faulty Lead Joints and collapsed side sewer 5th and Madison | 5d | 2021-11-24 A | 2021-12-09 A |  | 100% |
| 1-0204 |  | Joint clamp at 5th delay | 5d | 2021-11-29 A | 2021-12-07 A | 1-0058 FF | 100% |
| 1-0254 |  | JOINT CLAMPS 5TH & MAD, FINISH | 1d | 2021-12-07 A | 2021-12-07 A | 1-0204 FF, 1-0058 | 100% |
| 1-0059 |  | JOINT CLAMPS SPRING & 8TH, WATERLINE WORK | 2d | 2021-12-16 A | 2021-12-17 A | SC-0029, 1-0057, PCO055.01 | 100% |
|  | 4 | **STAGE 1 - 8TH AVE** |  | 2023-02-09 | 2023-02-24 |  |  |
| 1-0061 |  | SPU PRE - DISINFECTION, STAGE 1 - 8TH AVE | 1d | 2023-02-09 A | 2023-02-09 A | MS-0026, PMP-0017 | 100% |
| 1-0107 |  | SPU & BAC-T TEST | 3d | 2023-02-10 A | 2023-02-13 A | 1-0061 | 100% |
| PCO561.01 |  | DSC 396-Broken existing storm 8th and madison | 5d | 2023-02-11 A | 2023-02-24 A |  | 100% |
| 1-0062 |  | EXCAVATE & SHORE FOR WATERLINE, STAGE 1 - 8TH AVE | 1d | 2023-02-11 A | 2023-02-12 A | SC-0029, 1-0057, 1-0061, 1-0199 | 100% |
| PCO562.01 |  | DSC 397-Stage 1 2" Service leaking | 5d | 2023-02-13 A | 2023-02-24 A |  | 100% |
| 1-0199 |  | SPU CUSTOMER SHUTDOWN NOTIFICATION | 5d | 2023-02-13 A | 2023-02-17 A | PCS-0014 | 100% |
| 1-0063 |  | SPU DEWATER EXISTING PIPE, STAGE 1 - 8TH AVE | 1d | 2023-02-18 A | 2023-02-18 A | 1-0062 | 100% |
| 1-0064 |  | SPU CUT & REM PIPE, STAGE 1 - 8TH AVE | 1d | 2023-02-18 A | 2023-02-18 A | 1-0063 SS, 1-0199, 1-0107 | 100% |
| 1-0065 |  | SPU INST 12" DI MAIN & HYDRANT, STAGE 1 - 8TH AVE | 1d | 2023-02-18 A | 2023-02-18 A | 1-0064 SS, 1-0061 | 100% |
| 1-0066 |  | SPU CONNECT MAIN LINE TO EXISTING LINES, STAGE 1 - 8TH AVE | 1d | 2023-02-18 A | 2023-02-18 A | 1-0065 SS | 100% |
| 1-0067 |  | SPU FLUSH WATER MAINS, STAGE 1 - 8TH AVE | 1d | 2023-02-18 A | 2023-02-18 A | 1-0066 SS | 100% |
|  | 3 | **STORM** |  | 2021-10-21 | 2023-05-31 |  |  |
| 1-0069 |  | STORM MAD AND 1ST, STORM | 2d | 2021-10-21 A | 2021-10-25 A | 1-0057 | 100% |
| 1-0070 |  | STORM MAD AND 2ND | 1d | 2021-10-26 A | 2021-10-26 A | 1-0069 | 100% |
| PCO042.01 |  | DSC 28-Inlet Corner of 5th and Madison, Inlet 5 | 5d | 2021-11-16 A | 2021-11-17 A |  | 100% |
| 1-0072 |  | STORM MAD AND 5TH, PRIOR TO DSC 28 | 1d | 2021-11-16 A | 2021-11-16 A | 1-0070 | 100% |
| 1-0156 |  | Wating for Direction from SDOT on DSC 28, STORM | 5d | 2021-11-17 A | 2022-04-19 A | 1-0072 | 100% |
| PCO063.01 |  | DSC 40-Side Sewer Conflict Approx Sta 219+10 | 5d | 2021-12-08 A | 2021-12-09 A |  | 100% |
| 1-0073 |  | STORM MAD AND 7TH | 1d | 2021-12-20 A | 2021-12-21 A | 1-0072, SC-0029 | 100% |
| 1-0074 |  | STORM MAD AND 9TH, BEFORE DSC 047/048 | 3d | 2021-12-22 A | 2021-12-23 A | 1-0073 | 100% |
| PCO077.01 |  | DSC 46-Inlet 007 conflict | 5d | 2021-12-23 A | 2022-01-12 A |  | 100% |
| 1-0259 |  | STORM MAD AND 9TH, DSC 047/048 | 5d | 2021-12-27 A | 2022-01-07 A | 1-0074 | 100% |
| 1-0085 |  | STORM MAD & BROADWAY PIPE LINING | 2d | 2022-01-03 A | 2022-01-04 A | SC-0029, PSR-0014, MS-2576 | 100% |
| PCO078.01 |  | DSC 47-Inlet 007.A Conflict Side Sewer Conflict | 5d | 2022-01-03 A | 2022-01-16 A |  | 100% |
| PCO079.01 |  | DSC 48-Inlet 007.B Conflict | 5d | 2022-01-04 A | 2022-01-05 A |  | 100% |
| 1-0079 |  | STORM MAD AND TERRY INLETS | 2d | 2022-01-04 A | 2022-01-05 A | 1-0259 SS | 100% |
| PCO084.01 |  | DSC 52-Inlet 8A conflicts | 5d | 2022-01-06 A | 2022-01-07 A |  | 100% |
| 1-0118 |  | STORM MAD TERRY INLETS, DSC 052 | 5d | 2022-01-06 A | 2022-01-14 A | 1-0079 | 100% |
| 1-0082 |  | STORM MAD AND MINOR | 1d | 2022-01-07 A | 2022-01-07 A | 1-0118 SS | 100% |
| 1-0083 |  | STORM MAD AND SUMMIT | 3d | 2022-01-10 A | 2022-01-13 A | 1-0082 | 100% |
| 1-0279 |  | STORM MAD AND 9TH, AFTER DSC 047/048 | 5d | 2022-01-10 A | 2022-01-12 A | 1-0259 | 100% |
| 1-0080 |  | STORM MAD AND TERRY MAINLINE | 2d | 2022-01-18 A | 2022-01-21 A | SC-0029, MS-2576, 1-0118 | 100% |
| PCO105.01 |  | DSC 66-Spring & 9th, Inlet 4E conflicts | 5d | 2022-01-19 A | 2022-02-11 A |  | 100% |
| 1-0084 |  | STORM MAD AND BOYLSTON | 2d | 2022-01-24 A | 2022-01-26 A | 1-0083 SS, SC-0027 | 100% |
| PCO112.01 |  | DSC 72-Boyleston Storm Shut Down ESO for Streetlight | 5d | 2022-01-26 A | 2022-02-04 A |  | 100% |
| PCO113.01 |  | DSC 73-Unlocated previously broked Conduit Boyston Storm | 5d | 2022-01-26 A | 2022-01-27 A |  | 100% |
| PCO122.01 |  | DSC 80-Inlet 4A connection duct bank conflict | 5d | 2022-01-29 A | 2022-02-11 A |  | 100% |
| PCO123.01 |  | DSC 81-Inlet 4B SW 9th and Spring Conflict W/ Ductbank | 5d | 2022-02-01 A | 2022-02-02 A |  | 100% |

| ID | WBS | Task | Duration | Start | Finish | Predecessors | Complete |
| --- | --- | --- | --- | --- | --- | --- | --- |
| 1-0071 |  | STORM MAD AND 3RD | 2d | 2022-02-03 A | 2022-02-07 A | 1-0070, MS-2576 | 100% |
| PCO130.01 |  | DSC 88-Inet 4C SE corner 9th & Spring, Steam conflict | 5d | 2022-02-08 A | 2022-02-09 A |  | 100% |
| 1-0078 |  | STORM SPRING AND 9TH, STORM | 3d | 2022-02-08 A | 2022-02-10 A | 1-0071 | 100% |
| PCO131.01 |  | DSC 89-Inlet 4D unlocated unknown conduit | 5d | 2022-02-09 A | 2022-02-10 A |  | 100% |
| PCO137.01 |  | DSC 94-Inlet 4 NE 8th and Spring, Root Conflict | 5d | 2022-02-11 A | 2022-02-12 A |  | 100% |
| 1-0077 |  | STORM SPRING AND 8TH | 4d | 2022-02-11 A | 2022-02-16 A | 1-0078 SF | 100% |
| PCO138.01 |  | DSC 95-Inlet Conection 3A Conflit | 5d | 2022-02-14 A | 2022-02-15 A |  | 100% |
| PCO139.01 |  | DSC 96-Inlet 3 conflict | 5d | 2022-02-15 A | 2022-02-16 A |  | 100% |
| PCO141.01 |  | DSC 98-CDF conflict inlet 2A | 5d | 2022-02-16 A | 2022-02-17 A |  | 100% |
| PCO145.01 |  | DSC 102-Tree Roots conflcit Inlet 2B | 5d | 2022-02-17 A | 2022-02-18 A |  | 100% |
| PCO146.01 |  | DSC 103-unlocated conduit conflict Inlet 2B | 5d | 2022-02-17 A | 2022-02-18 A |  | 100% |
| 1-0075 |  | STORM SPRING AND 7TH | 2d | 2022-02-17 A | 2022-02-18 A | 1-0077 | 100% |
| PCO148.01 |  | DSC 105-Inlet 1G Conflict with Strain pole 5th and Spring | 5d | 2022-02-21 A | 2022-02-22 A |  | 100% |
| 1-0076 |  | STORM SPRING AND 5TH, STORM | 2d | 2022-02-21 A | 2022-02-22 A | 1-0074, 1-0279, 1-0075 | 100% |
| 1-0426 |  | INSTALL FILTER VAULT #2 | 5d | 2022-03-24 A | 2022-03-25 A | 1-0076 | 100% |
| PCO184.01 |  | DSC 130-Filter Vault #2 Connection Conflict | 5d | 2022-03-28 A | 2022-06-24 A |  | 100% |
| 1-0456 |  | DSC 130 - FILTER VAULT CONNECTION CONFLICT | 5d | 2022-03-28 A | 2022-06-10 A | 1-0426 | 100% |
| PCO190.01 |  | DSC 136-FM 130 Inlet conflict | 5d | 2022-03-30 A | 2022-03-31 A |  | 100% |
| PCO222.01 |  | DSC 160-Inltet 5 Added Conflict | 5d | 2022-04-20 A | 2022-04-22 A |  | 100% |
| 1-0106 |  | MADISON ON 5TH AFTER DSC 28, STORM | 5d | 2022-04-22 A | 2022-04-22 A | 1-0156, MS-2576 | 100% |
| PCO272.01 |  | DSC 198-Steam line MH Madison 1st to 2nd | 5d | 2022-06-03 A | 2022-06-04 A |  | 100% |
| 1-0556 |  | FINISH FILTER VAULT #2 INSTALLATION | 1d | 2022-06-13 A | 2022-06-13 A | 1-0456 | 100% |
| 1-0081 |  | STORM MAD AND BOREN | 2d | 2022-06-14 A | 2022-06-15 A | 1-0079, 1-0118, 1-0076 | 100% |
| PCO298.01 |  | DSC 220-Existing Cracked CB Conection Pipe at Terry | 5d | 2022-06-30 A | 2022-07-02 A |  | 100% |
| 1-0086 |  | STORM SPRING & 2ND PIPE LINING | 1d | 2023-05-31 A | 2023-05-31 A | PSR-0014, 1-0268 SS, MS-2576 | 100% |
|  | 4 | **DUCT BANK BETWEEN 3RD AND 4TH MADISON** |  | 2021-11-02 | 2023-04-04 |  |  |
| PCO020.01 |  | DSC 13-Prime DSC 001 Ductbank 3rd Ave Change | 5d | 2021-11-02 A | 2022-06-03 A |  | 100% |
| 1-1165 |  | POTHOLE DUCTBANK SDOT DIRECTED | 8d | 2022-06-01 A | 2022-06-30 A | 1-0271 | 100% |
| 1-1170 |  | SDOT REVIEW POTHOLE DATA | 3d | 2022-07-07 A | 2022-09-29 A | 1-1165 | 100% |
| 1-1280 |  | CITY DELAY - CHANGE TO COUPLINGS | 3d | 2022-09-30 A | 2022-11-21 A | 1-1170 | 100% |
| 1-1300 |  | CITY DELAY - NEGOTIATE CHANGE ORDER FOR CHANGES | 3d | 2022-11-22 A | 2023-01-06 A | 1-1280 | 100% |
| 1-0087 |  | TRENCH DUCT BANK, DUCT BANK BETWEEN 3RD & 4TH MAD | 3d | 2023-01-09 A | 2023-01-20 A | 1-0071, MS-2576, MS-2571, 1-1170, 1-1280, 1-1300 | 100% |
| 1-0088 |  | INST DUCT BANK, DUCT BANK BETWEEN 3RD & 4TH MAD | 3d | 2023-01-09 A | 2023-01-20 A | 1-0087 SS, 1-1170 | 100% |
| 1-0089 |  | BACKFILL DUCT BANK, DUCT BANK BETWEEN 3RD & 4TH MAD | 2d | 2023-01-09 A | 2023-01-20 A | 1-0088 | 100% |
| PCO507.01 |  | DSC 362-Prime Ductbank 3rd Ave Concrete Obstruction | 5d | 2023-01-11 A | 2023-02-26 A |  | 100% |
| 1-1335 |  | DELAY FOR NORTHERN VAULT ALIGNMENT , DUCT BANK BETWEEN 3RD & 4TH MAD | 2d | 2023-01-13 A | 2023-03-03 A | 1-0087 | 100% |
| 1-1360 |  | DELAY AWAITING RESPONSE TO CHANGES IN SOUTHERN VAULT PENETRATION | 3d | 2023-01-13 A | 2023-03-03 A | 1-0088 | 100% |
| PCO518.01 |  | DSC 370-Vault 3rd to 4th Madison not square | 5d | 2023-01-17 A | 2023-01-21 A |  | 100% |
| PCO549.01 |  | DSC 386-Concrete collar around Vault 3rd to 4th | 5d | 2023-01-31 A | 2023-02-26 A |  | 100% |
| 1-1340 |  | COMPLETE INSTALLATION AFTER OBSTRUCTION REMOVAL AND CHANGES | 10d | 2023-03-06 A | 2023-04-04 A | 1-1335, PCO507.01, 1-1360, 1-0089 | 100% |
|  | 5 | **TEMPORARY SIGNALS** |  | 2021-10-20 | 2022-10-19 |  |  |
| 1-0091 |  | TEMP SIG SPRING & 1ST, TEMPORARY SIGNALS | 2d | 2021-10-20 A | 2021-10-20 A | MS-0026, PSR-0011, PSR-0010 | 100% |
| 1-0092 |  | TEMP SIG SPRING & 3RD, TEMPORARY SIGNALS | 2d | 2021-10-21 A | 2021-10-21 A | 1-0091 | 100% |
| 1-0095 |  | TEMP SIG MAD & 1ST, TEMPORARY SIGNALS | 2d | 2021-10-21 A | 2021-10-21 A | MS-0025 | 100% |
| 1-0096 |  | TEMP SIG MAD & 3RD, TEMPORARY SIGNALS | 2d | 2021-10-22 A | 2021-10-22 A | 1-0095 | 100% |
| 1-0097 |  | TEMP SIG MAD & 6TH, TEMPORARY SIGNALS | 2d | 2021-11-09 A | 2021-11-10 A | 1-0096 | 100% |
| 1-0098 |  | TEMP SIG MAD & 8TH, TEMPORARY SIGNALS | 2d | 2022-01-06 A | 2022-01-06 A | 1-0097, 1-0180 FF | 100% |
| 1-0099 |  | TEMP SIG MAD & 9TH, TEMPORARY SIGNALS | 2d | 2022-01-06 A | 2022-01-06 A | 1-0098 | 100% |
| 1-0180 |  | TEMP SIG MAD & 7TH, TEMPORARY SIGNALS | 2d | 2022-01-06 A | 2022-01-06 A | 1-0097 | 100% |
| 1-0100 |  | TEMP SIG MAD & TERRY, TEMPORARY SIGNALS | 2d | 2022-01-24 A | 2022-01-26 A | 1-0099 | 100% |
| 1-0102 |  | TEMP SIG MAD & MINOR, TEMPORARY SIGNALS | 2d | 2022-02-14 A | 2022-02-15 A | 1-0180 | 100% |
| 1-0103 |  | TEMP SIG MAD & SUMMIT, TEMPORARY SIGNALS | 2d | 2022-02-16 A | 2022-02-17 A | 1-0102 | 100% |
| PCO170.01 |  | DSC 118-KCM relocate WB Boren BS refusal | 5d | 2022-03-18 A | 2022-04-13 A |  | 100% |
| 1-0101 |  | TEMP SIG MAD & BOREN, TEMPORARY SIGNALS | 2d | 2022-03-22 A | 2022-03-23 A | 1-0100 | 100% |
| 1-0104 |  | TEMP SIG MAD & BOYLSTON, TEMPORARY SIGNALS | 2d | 2022-04-22 A | 2022-04-22 A | 1-0103 | 100% |
| 1-0094 |  | TEMP SIG SPRING & 7TH, TEMPORARY SIGNALS | 2d | 2022-05-11 A | 2022-05-12 A | SC-0029, 1-0097, MS-2576 | 100% |
| 1-0105 |  | TEMP SIG MAD & BROADWAY, TEMPORARY SIGNALS | 2d | 2022-06-03 A | 2022-06-06 A | 1-0104 | 100% |
| 1-0093 |  | TEMP SIG SPRING & 5TH, TEMPORARY SIGNALS | 2d | 2022-10-18 A | 2022-10-19 A | 1-0092, MS-2576 | 100% |
|  | 6 | **ROADWAY WORK** |  | 2021-10-21 | 2023-09-20 |  |  |
|  | 1 | **1ST TO BROADWAY BETWEEN INTERSECTIONS** |  | 2021-10-21 | 2023-09-20 |  |  |
|  | 8 | **SPRING 1ST TO 2ND NORTH SIDE** |  | 2022-05-16 | 2022-05-25 |  |  |
| 1-0152 |  | DEMO ROAD - COMMON EX - TYPE 2, SPRING 1ST TO 2ND NORTH SIDE | 3d | 2022-05-16 A | 2022-05-18 A | 1-0271 SS | 100% |
| 1-0153 |  | CONDUIT RD CROSSING, SPRING 1ST TO 2ND NORTH SIDE | 3d | 2022-05-19 A | 2022-05-20 A | 1-0152 SS | 100% |
| 1-0154 |  | ROADWAY PAVING - 2 POURS, SPRING 1ST TO 2ND NORTH SIDE | 3d | 2022-05-19 A | 2022-05-20 A | 1-0152, 1-0153 | 100% |
| 1-0155 |  | CONCRETE CURE, SPRING 1ST TO 2ND NORTH SIDE | 3d | 2022-05-23 A | 2022-05-25 A | 1-0154 | 100% |
|  | 27 | **SPRING 2ND TO 3RD NORTH SIDE** |  | 2022-05-25 | 2023-05-09 |  |  |
| PCO258.01 |  | DSC 188-Conduit conflict 3rd and Spring | 5d | 2022-05-25 A | 2022-06-17 A |  | 100% |
| 1-1140 |  | DEMO ROAD - COMMON EX - TYPE 2, SPRING 2ND TO 3RD NORTH SIDE | 3d | 2022-09-15 A | 2022-09-20 A | 1-0155 | 100% |
| 1-1145 |  | CONDUIT RD CROSSING, SPRING 2ND TO 3RD NORTH SIDE | 3d | 2022-09-19 A | 2022-10-05 A | 1-1140 SS | 100% |
| 1-1285 |  | VAULT WORK, SPRING 2ND TO 3RD NORTH SIDE | 3d | 2022-10-06 A | 2022-10-14 A | 1-1145 | 100% |

| ID | WBS | Task | Duration | Start | Finish | Predecessors | Complete |
| --- | --- | --- | --- | --- | --- | --- | --- |
| PCO423.01 |  | DSC 309-NW 3rd & Spring Extra Depth Conduit | 5d | 2022-10-19 A | 2022-10-20 A |  | 100% |
| PCO426.01 |  | DSC 311-Shallow conduit NW 3rd and Spring | 5d | 2022-10-20 A | 2022-10-21 A |  | 100% |
| PCO434.01 |  | DSC 316-Zao Conduit CDF encased NW 3rd and Spring | 5d | 2022-10-24 A | 2022-10-27 A |  | 100% |
| PCO438.01 |  | DSC 320-Concrete Delays VP Visit spring 1-3rd | 5d | 2022-10-26 A | 2022-10-27 A |  | 100% |
| 1-1150 |  | ROADWAY PAVING - 2 POURS, SPRING 2ND TO 3RD NORTH SIDE | 3d | 2022-10-27 A | 2022-10-31 A | 1-1140, 1-1145, 1-1285 | 100% |
| 1-1305 |  | EXTRA WORK FOR VAULTS, SPRING 2ND TO 3RD NORTH SIDE | 3d | 2023-04-06 A | 2023-04-19 A | 1-1155 | 100% |
| 1-1310 |  | REMOVE ADDITIONAL ROADWAY TYPE 2, SPRING 2ND TO 3RD NORTH SIDE | 3d | 2023-04-20 A | 2023-04-24 A | 1-1305 | 100% |
| PCO647.01 |  | DSC 457-UKNOWN CONCRETE PIPE | 5d | 2023-04-25 A | 2023-04-25 A |  | 100% |
| 1-1315 |  | ROADWAY CONCRETE, SPRING 2ND TO 3RD NORTH SIDE | 3d | 2023-04-26 A | 2023-04-27 A | 1-1310 | 100% |
| 1-2945 |  | OWNER CHANGE FULL DEPTH ASPHALT TO CONCRETE BASE PAVING | 3d | 2023-05-08 A | 2023-05-09 A | 1-1315 | 100% |
|  | 1 | **SPRING 1ST TO 3RD SOUTH SIDE** |  | 2021-10-21 | 2023-01-24 |  |  |
| 1-0130 |  | ELECTRICAL VAULT WORK, SPRING 1ST TO 3ND SOUTH SIDE | 2d | 2021-10-21 A | 2021-10-22 A | 1-SCL-1000, 1-SCL-1010, 1-SCL-1080, 1-SCL-1090, 1-SCL-1070 | 100% |
| 1-0109 |  | DEMO ROAD - COMMON EX - TYPE 2, SPRING 1ST TO 3ND SOUTH SIDE | 6d | 2021-10-25 A | 2021-11-09 A | MS-0026, 1-0046 | 100% |
| PCO012.01 |  | DSC 7-Duct Bank Conflict with Subgrade Spring 1st to 2nd | 5d | 2021-10-27 A | 2022-08-30 A |  | 100% |
| 1-0110 |  | ROADWAY PAVING PRIOR TO SCL VAULT DELAYS AND HANDHOLE DELAY - 2 POURS | 4d | 2021-11-03 A | 2021-11-10 A | 1-0109, 1-0130 | 100% |
| PCO026.01 |  | DSC 17-3rd and spring conduit conflict gas and duct bank | 5d | 2021-11-08 A | 2021-11-12 A |  | 100% |
| 1-0216 |  | WAITING FOR SDOT TO RESOLVE SCL FALSE CEILINGS & DSC-017/018 | 5d | 2021-11-11 A | 2021-12-09 A | 1-0110, PSR-0015 | 100% |
| 1-0351 |  | VAULT PROCURMENT MATERIALS | 5d | 2021-12-10 A | 2022-01-07 A | 1-0216 | 100% |
| 1-0111 |  | CONCRETE CURE, SPRING 1ST TO 3RD SOUTH SIDE | 3d | 2021-12-11 A | 2021-12-13 A | 1-0110 | 100% |
| PCO088.01 |  | DSC 55-Vault 123M357 Concrete Obstruction | 5d | 2022-01-10 A | 2022-01-14 A |  | 100% |
| PCO093.01 |  | DSC 57-Vault 133M013 | 5d | 2022-01-11 A | 2022-05-10 A |  | 100% |
| 1-0391 |  | DSC 057 VAULT 133M013 CONFLICT | 5d | 2022-01-31 A | 2022-05-12 A | 1-0351 | 100% |
| 1-0266 |  | ROADWAY PREP AFTER DELAY | 5d | 2022-05-13 A | 2022-05-13 A | 1-0216, 1-0351, MS-2571, 1-0391 | 100% |
| PCO248.01 |  | DSC 181-Gas line conflict SCL Vault 3rd to 6th. | 5d | 2022-05-16 A | 2023-01-24 A |  | 100% |
| 1-0271 |  | ROADWAY PAVING AFTER DELAY | 6d | 2022-05-16 A | 2022-05-16 A | 1-0266 | 100% |
| 1-1155 |  | CONCRETE CURE, SPRING 2ND TO 3RD NORTH SIDE | 3d | 2022-11-01 A | 2022-11-03 A | 1-1150 | 100% |
|  | 29 | **SPRING 4TH TO 5TH NORTH SIDE** |  | 2022-07-12 | 2023-01-24 |  |  |
| PCO317.01 |  | DSC 234-CDF Encased Gas Line 3rd to 4th on Spring | 5d | 2022-07-12 A | 2022-07-28 A |  | 100% |
| PCO318.01 |  | DSC 235-Duct Bank conflict 4th to 5th on Spring | 5d | 2022-07-12 A | 2022-07-22 A |  | 100% |
| PCO320.01 |  | DSC 236-unknown clay pipe spring 4th to 5th | 5d | 2022-07-16 A | 2022-07-20 A |  | 100% |
| PCO406.01 |  | DSC 297-Prime Vaults Spring 2nd to 5th | 5d | 2022-10-05 A | 2022-10-13 A |  | 100% |
| 1-1215 |  | DEMO ROAD - COMMON EX - TYPE 2, SPRING 4TH TO 5TH NORTH SIDE | 3d | 2022-10-06 A | 2022-10-10 A | 1-0157 SS | 100% |
| 1-1220 |  | CONDUIT RD CROSSING, SPRING 4TH TO 5TH NORTH SIDE | 3d | 2022-10-06 A | 2022-10-10 A | 1-1215 SS | 100% |
| PCO415.01 |  | DSC 305-4th to 5th Spring North SCL Vault Lid | 5d | 2022-10-12 A | 2023-01-24 A |  | 100% |
| PCO428.01 |  | DSC 312-Unknown Unlocated Catholic Protection 4th and Madison | 5d | 2022-10-22 A | 2022-10-23 A |  | 100% |
| PCO429.01 |  | DSC 313-CDF encased Gas Line 4th and Madison | 5d | 2022-10-22 A | 2022-10-23 A |  | 100% |
| 1-1225 |  | ROADWAY PAVING - 2 POURS, SPRING 4TH TO 5TH NORTH SIDE | 3d | 2022-10-31 A | 2022-11-02 A | 1-1215, 1-1220 | 100% |
| 1-1230 |  | CONCRETE CURE, SPRING 4TH TO 5TH NORTH SIDE | 3d | 2022-11-03 A | 2022-11-05 A | 1-1225 | 100% |
|  | 28 | **SPRING 3RD TO 5TH SOUTH SIDE** |  | 2022-06-29 | 2022-07-28 |  |  |
| PCO300.01 |  | DSC 221-Gas Main conflict with road Spring 3rd to 4th | 5d | 2022-06-29 A | 2022-07-04 A |  | 100% |
| 1-1175 |  | DEMO ROAD - COMMON EX - TYPE 2, SPRING 3RD TO 5TH SOUTH SIDE | 6d | 2022-07-06 A | 2022-07-11 A | 1-0231 | 100% |
| PCO309.01 |  | DSC 229-Gas line locates 3rd and Spring | 5d | 2022-07-09 A | 2022-07-10 A |  | 100% |
| PCO310.01 |  | DSC 230-unknown duct bank 3rd and Spring | 5d | 2022-07-09 A | 2022-07-10 A |  | 100% |
| 1-1180 |  | ROADWAY PAVING - 2 POURS, SPRING 3RD TO 5TH SOUTH SIDE | 4d | 2022-07-22 A | 2022-07-26 A | 1-1175 | 100% |
| 1-1185 |  | CONCRETE CURE, SPRING 3RD TO 5TH SOUTH SIDE | 1d | 2022-07-27 A | 2022-07-27 A | 1-1180 | 100% |
| 1-1195 |  | F/P CURB 1ST TO 6TH WEST SIDE, SPRING 3RD TO 5TH SOUTH SIDE | 1d | 2022-07-27 A | 2022-07-27 A | 1-1185 | 100% |
| 1-1190 |  | TEMP PATCH, SPRING 3RD TO 5TH SOUTH SIDE | 1d | 2022-07-28 A | 2022-07-28 A | 1-1195 | 100% |
|  | 9 | **SPRING 5TH TO 6TH NORTH SIDE** |  | 2022-10-06 | 2022-11-11 |  |  |
| 1-0157 |  | DEMO ROAD - COMMON EX - TYPE 2, SPRING 5TH TO 6TH NORTH SIDE | 3d | 2022-10-06 A | 2022-10-11 A | 1-1145 | 100% |
| 1-0158 |  | CONDUIT RD CROSSING, SPRING 5TH TO 6TH NORTH SIDE | 3d | 2022-10-06 A | 2022-10-11 A | 1-0157 SS | 100% |
| 1-0159 |  | ROADWAY PAVING - 2 POURS, SPRING 5TH TO 6TH NORTH SIDE | 3d | 2022-10-31 A | 2022-11-03 A | 1-0157, 1-0158, 1-0154 | 100% |
| 1-0160 |  | CONCRETE CURE, SPRING 5TH TO 6TH NORTH SIDE | 3d | 2022-11-03 A | 2022-11-05 A | 1-0159 | 100% |
| 1-0161 |  | F/P CURB SPRING 1ST TO 6TH, SPRING 5TH TO 6TH NORTH SIDE | 3d | 2022-11-07 A | 2022-11-09 A | 1-0155, 1-0160 | 100% |
| 1-0162 |  | TEMP PATCH 1ST TO 6TH, SPRING 5TH TO 6TH NORTH SIDE | 2d | 2022-11-10 A | 2022-11-11 A | 1-0161 | 100% |
|  | 2 | **SPRING 5TH TO 6TH SOUTH SIDE** |  | 2022-06-14 | 2022-07-12 |  |  |
| PCO279.01 |  | DSC 204-Vault 163-M-355 additonal DSC | 5d | 2022-06-14 A | 2022-07-12 A |  | 100% |
| 1-0144 |  | ELECTRICAL VAULT WORK, SPRING 5TH TO 6TH SOUTH SIDE | 6d | 2022-06-22 A | 2022-06-29 A | 1-SCL-1020, 1-SCL-1030, 1-SCL-1040, 1-SCL-1050, 1-SCL-1060, 1-SCL-1100, 1-SCL-1110, 1-SCL-1120, 1-SCL-1130, 1-SCL-1140, 1-SCL-1220 | 100% |
| 1-0113 |  | DEMO ROAD - COMMON EX - TYPE 2, SPRING 5TH TO 6TH SOUTH SIDE | 6d | 2022-06-23 A | 2022-06-28 A | 1-0109, 1-0266 | 100% |
| 1-0114 |  | ROADWAY PAVING - 2 POURS, SPRING 5TH TO 6TH SOUTH SIDE | 4d | 2022-06-30 A | 2022-06-30 A | 1-0110, 1-0113, 1-0144, 1-0271 | 100% |
| 1-0115 |  | CONCRETE CURE, SPRING 5TH TO 6TH SOUTH SIDE | 1d | 2022-07-01 A | 2022-07-01 A | 1-0114 | 100% |
| 1-0116 |  | F/P CURB 1ST TO 6TH WEST SIDE, SPRING 5TH TO 6TH SOUTH SIDE | 1d | 2022-07-01 A | 2022-07-01 A | 1-0115, 1-0111 | 100% |
| 1-0117 |  | TEMP PATCH, SPRING 5TH TO 6TH SOUTH SIDE | 1d | 2022-07-05 A | 2022-07-05 A | 1-0116 | 100% |
|  | 10 | **SPRING 6TH TO 9TH NORTH SIDE** |  | 2022-03-15 | 2023-01-06 |  |  |
| 1-0211 |  | ELECTRICAL VAULT WORK, SPRING 6TH TO 9TH NORTH SIDE | 2d | 2022-03-15 A | 2022-03-17 A | 1-SCL-1230, 1-SCL-1240 | 100% |
| 1-0164 |  | DEMO ROAD - COMMON EX - TYPE 2, SPRING 6TH TO 9TH NORTH SIDE | 8d | 2022-11-22 A | 2022-12-05 A | 1-0157 | 100% |
| 1-0165 |  | CONDUIT RD CROSSING, SPRING 6TH TO 9TH NORTH SIDE | 8d | 2022-11-22 A | 2022-12-05 A | 1-0164 SS | 100% |
| PCO479.01 |  | DSC 347-CDF Ductbank conflict Spring 7th to 9th | 5d | 2022-11-28 A | 2022-11-30 A |  | 100% |
| 1-0166 |  | ROADWAY PAVING - 2 POURS, SPRING 6TH TO 9TH NORTH SIDE | 4d | 2022-12-27 A | 2023-01-03 A | 1-0164, 1-0165, 1-0211 | 100% |
| 1-0167 |  | CONCRETE CURE, SPRING 6TH TO 9TH NORTH SIDE | 3d | 2023-01-04 A | 2023-01-06 A | 1-0166 | 100% |
|  | 6 | **SPRING 7TH TO 9TH SOUTH SIDE** |  | 2022-01-13 | 2022-08-20 |  |  |

| ID | WBS | Task | Duration | Start | Finish | Predecessors | Complete |
| --- | --- | --- | --- | --- | --- | --- | --- |
| PCO097.01 |  | DSC 60-P08-06 Sign and boulder conflict 8th and Spring | 5d | 2022-01-13 A | 2022-01-15 A |  | 100% |
| 1-0175 |  | ELECTRICAL VAULT WORK, SPRING 7TH TO 9TH SOUTH SIDE | 4d | 2022-03-31 A | 2022-04-05 A | 1-SCL-1150, 1-SCL-1160, 1-SCL-1170, 1-SCL-1180, 1-SCL-1190 | 100% |
| PCO221.01 |  | DSC 159-Vault 713M002 | 5d | 2022-04-18 A | 2022-04-29 A |  | 100% |
| PCO239.01 |  | DSC 173-Duct Bank Conflict Subgrade SW 9th and Spring | 5d | 2022-05-05 A | 2022-05-13 A |  | 100% |
| 1-0138 |  | DEMO ROAD - COMMON EX - TYPE 2, SPRING 7TH TO 9TH SOUTH SIDE | 8d | 2022-05-13 A | 2022-06-03 A | 1-0131, 1-0094, 1-0059, 1-0077, 1-0187 | 100% |
| 1-0139 |  | CONDUIT RD CROSSING, SPRING 7TH TO 9TH SOUTH SIDE | 8d | 2022-05-13 A | 2022-06-02 A | 1-0138 SS | 100% |
| PCO250.01 |  | DSC 182-Unknown Unlocated utilitys Vault Core Spring 7th | 5d | 2022-05-18 A | 2022-08-20 A |  | 100% |
| PCO266.01 |  | DSC 192-Vault on 8th and Spring added work | 5d | 2022-06-02 A | 2022-06-24 A |  | 100% |
| 1-0140 |  | ROADWAY PAVING - 2 POURS, SPRING 7TH TO 9TH SOUTH SIDE | 4d | 2022-06-03 A | 2022-06-08 A | 1-0138, 1-0139, 1-0133, 1-0175 | 100% |
| 1-0142 |  | F/P CURB SPRING 7TH TO 9TH, SPRING 7TH TO 9TH SOUTH SIDE | 2d | 2022-06-08 A | 2022-06-08 A | 1-0141 | 100% |
| 1-0143 |  | TEMP PATCH, SPRING 7TH TO 9TH SOUTH SIDE | 1d | 2022-06-09 A | 2022-06-09 A | 1-0142 | 100% |
| 1-0141 |  | CONCRETE CURE, SPRING 7TH TO 9TH SOUTH SIDE | 1d | 2022-06-09 A | 2022-06-09 A | 1-0140, 1-0139 | 100% |
|  | 3 | **MADISON 1ST TO 3RD NORTH SIDE** |  | 2021-10-27 | 2022-10-05 |  |  |
| 1-0119 |  | DEMO ROAD - COMMON EX - TYPE 2, MAD 1ST TO 3RD NORTH SIDE | 6d | 2021-10-27 A | 2021-11-09 A | 1-0057, 1-0096, 1-0048 | 100% |
| 1-0120 |  | CONDUIT RD CROSSING, MAD 1ST TO 3RD NORTH SIDE | 6d | 2021-10-27 A | 2021-11-04 A | 1-0119 SS | 100% |
| PCO014.01 |  | DSC 8-ITS Obstruction Madison 1st to 2nd North | 5d | 2021-10-29 A | 2022-03-19 A |  | 100% |
| PCO015.01 |  | DSC 9-CDF in Roadway Madison 1st to 2nd North | 5d | 2021-10-29 A | 2021-10-30 A |  | 100% |
| PCO019.01 |  | DSC 12-Center Lane obstruction Pipe Madison 1st to 2nd | 5d | 2021-11-02 A | 2021-11-06 A |  | 100% |
| PCO021.01 |  | DSC 14-Concrete encased Yokes and Concrete in Roadway | 5d | 2021-11-03 A | 2021-11-04 A |  | 100% |
| PCO024.01 |  | DSC 15-void under road Madison 2nd to 3rd North side | 5d | 2021-11-05 A | 2021-11-06 A |  | 100% |
| 1-0121 |  | ROADWAY PAVING PRIOR TO SCL VAULT DELAYS AND HANDHOLE DELAY - 2 POURS | 4d | 2021-11-08 A | 2021-11-11 A | 1-0119, 1-0120 | 100% |
| PCO028.01 |  | DSC 19-SCL Riser poured into roadway Mad 2nd to 3rd | 5d | 2021-11-09 A | 2021-11-17 A |  | 100% |
| PCO031.01 |  | DSC 22-Conduit and Irrigation in conflict with roadway Madison 2nd to 3rd North side | 5d | 2021-11-10 A | 2021-11-23 A |  | 100% |
| PCO037.01 |  | DSC 25-Conduit Conflict with Duct Bank Madison 2nd to 3rd | 5d | 2021-11-12 A | 2022-10-05 A |  | 100% |
| 1-0331 |  | WAITING FOR SDOT TO RESOLVE FALSE CEILINGS & | 5d | 2021-11-12 A | 2021-11-24 A | 1-0121 | 100% |
| PCO049.01 |  | DSC 31-Shallow Ductbank, Madison & 3rd | 5d | 2021-11-20 A | 2021-11-30 A |  | 100% |
| 1-0151 |  | ELECTRICAL VAULT WORK, MAD 1ST TO 3RD NORTH SIDE | 2d | 2021-12-01 A | 2021-12-02 A | 1-SCL-1210 | 100% |
| 1-0311 |  | ROADWAY PREP AFTER DELAY | 5d | 2021-12-03 A | 2021-12-03 A | 1-0331, 1-0151 FF | 100% |
| 1-0291 |  | ROADWAY PAVING AFTER DELAY | 3d | 2022-03-22 A | 2022-03-23 A | 1-0311, MS-2571 | 100% |
| 1-0122 |  | CONCRETE CURE, MAD 1ST TO 3RD NORTH SIDE | 3d | 2022-03-23 A | 2022-03-23 A | 1-0121, 1-0291 SS | 100% |
|  | 18 | **MADISON 1ST TO 3RD SOUTH SIDE** |  | 2022-05-12 | 2022-12-31 |  |  |
| PCO246.01 |  | DSC 179-Duct Bank Conflict Vault 163M351 | 5d | 2022-05-12 A | 2022-06-15 A |  | 100% |
| 1-0212 |  | DEMO ROAD - COMMON EX - TYPE 2, MAD 1ST TO 3RD SOUTH SIDE | 4d | 2022-05-16 A | 2022-05-19 A | 1-0129 | 100% |
| 1-0213 |  | CONDUIT RD CROSSING, MAD 1ST TO 3RD SOUTH SIDE | 4d | 2022-05-16 A | 2022-05-19 A | 1-0212 SS | 100% |
| 1-0275 |  | DSC 191 - DELAY AT 2ND UNKNOWN KC METRO CONDUIT | 11d | 2022-05-16 A | 2022-09-27 A | 1-0212 | 100% |
| 1-0214 |  | ROADWAY PAVING - 1 POURS, MAD 1ST TO 3RD SOUTH SIDE | 2d | 2022-05-20 A | 2022-05-23 A | 1-0212, 1-0213 | 100% |
| 1-0215 |  | CONCRETE CURE, MAD 1ST TO 3RD SOUTH SIDE | 3d | 2022-05-24 A | 2022-05-26 A | 1-0214 | 100% |
| PCO265.01 |  | DSC 191-Duct Bank Conflict with Conduit crossing 2nd Ave | 5d | 2022-06-02 A | 2022-09-13 A |  | 100% |
| 1-1160 |  | DSC AT COURTHOUSE | 6d | 2022-06-03 A | 2022-08-19 A | 1-0230 | 100% |
| PCO270.01 |  | DSC 196-unknown unlocated conduit 1st Mad roadway | 5d | 2022-06-03 A | 2022-09-15 A |  | 100% |
| PCO271.01 |  | DSC 197-Cable Car infrastructure 1st to 2nd Madison | 5d | 2022-06-03 A | 2022-08-17 A |  | 100% |
| 1-0230 |  | DEMO AT COURTHOUSE | 5d | 2022-06-03 A | 2022-06-03 A | 1-0212 | 100% |
| PCO391.01 |  | DSC 285-Shallow Electrical Vault SW 2nd and Madison | 5d | 2022-09-13 A | 2022-12-31 A |  | 100% |
| PCO392.01 |  | DSC 286-Concrete overpour electrical vault Sw 2nd and Madison | 5d | 2022-09-13 A | 2022-09-14 A |  | 100% |
| 1-0315 |  | COMPLETE GRADING AT 2ND AFTER DELAY | 5d | 2022-09-28 A | 2022-09-29 A | 1-0275 | 100% |
| 1-0335 |  | ROADWAY PAVING AT 2ND AFTER DELAY | 2d | 2022-09-30 A | 2022-10-10 A | 1-0315, 1-1160 | 100% |
| 1-0235 |  | ROADWAY PAVING AT COURTHOUSE | 1d | 2022-10-15 A | 2022-10-15 A | 1-0230, 1-0335 | 100% |
|  | 30 | **MADISON 3RD TO 5TH NORTHSIDE** |  | 2023-04-17 | 2023-08-07 |  |  |
| 1-1410 |  | DEMO ROAD - COMMON EX - TYPE 2, MADISON 3RD TO 5TH NORTHSIDE | 7d | 2023-04-17 A | 2023-04-18 A | 1-0119, 1-1340, 1-0167 | 100% |
| 1-2720 |  | ARCHAEOLOGY STOP WORK ORDER | 7d | 2023-04-19 A | 2023-04-24 A | 1-1410 | 100% |
| PCO639.01 |  | DSC 450-DUCT BANK CONFLICT WITH ROAD REMOVAL | 7d | 2023-04-19 A | 2023-05-09 A | 1-1410 | 100% |
| PCO669.01 |  | DSC 472-3RD AND MADISON UNLOCATED SPU TEST STATION WIRES | 7d | 2023-05-09 A | 2023-05-18 A | 1-2725 SS | 100% |
| PCO670.01 |  | DSC 473-UNKNOWN AND UNLOCATED CONDUIT | 7d | 2023-05-09 A | 2023-05-15 A | 1-2725 SS | 100% |
| 1-2725 |  | COMMON EX - TYPE 2 - AFTER DSC AND ARCHAEOLOGY | 7d | 2023-05-10 A | 2023-05-15 A | PCO639.01, 1-2720 | 100% |
| PCO677.01 |  | DSC 480-3RD TO 4TH NORTHSIDE ITS CONFLICTS | 7d | 2023-05-11 A | 2023-05-15 A | 1-2725 SS | 100% |
| 1-1415 |  | CONDUIT RD CROSSING, MADISON 3RD TO 5TH NORTHSIDE | 7d | 2023-05-12 A | 2023-05-16 A | 1-1410 SS, 1-2725 SS | 100% |
| PCO692.01 |  | DSC 494-3RD TO 4TH MADISON CAST-IN-PLACE VAULT LIDS NOT TO GRADE | 7d | 2023-05-15 A | 2023-05-24 A | 1-2725 SS | 100% |
| PCO705.01 |  | DSC 506-SCL VAULT LID ENCASED IN CONCRETE | 3d | 2023-05-25 A | 2023-06-23 A | PCO692.01 | 100% |
| 1-2940 |  | FM 540 - NEW CAST IN PLACE SCL RISERS | 18d | 2023-06-19 A | 2023-07-24 A | PCO692.01, PCO705.01 FS-5d | 100% |
| 1-3005 |  | DSC 539 - SCL Risers Existing Conditions Note Per Plan | 17d | 2023-06-20 A | 2023-07-24 A | PCO705.01 FS-4d | 100% |
| 1-0192 |  | ROADWAY PAVING, MADISON 3RD TO 5TH NORTHSIDE | 4d | 2023-07-31 A | 2023-08-03 A | 1-1415, 1-2940, PCO669.01, PCO670.01, PCO677.01, PCO705.01, 1-3005 | 100% |
| 1-1420 |  | CONCRETE CURE, MADISON 3RD TO 5TH NORTHSIDE | 3d | 2023-08-04 A | 2023-08-07 A | 1-0192 | 100% |
|  | 4 | **MADISON 5TH TO 6TH NORTH SIDE** |  | 2021-11-12 | 2022-11-16 |  |  |
| 1-0124 |  | DEMO ROAD - COMMON EX - TYPE 2, MAD 5TH TO 6TH NORTH SIDE | 7d | 2021-11-12 A | 2021-11-29 A | 1-0119, 1-0058 FF, 1-0254 FF | 100% |
| 1-0125 |  | CONDUIT RD CROSSING, MAD 5TH TO 6TH NORTH SIDE | 7d | 2021-11-12 A | 2021-11-23 A | 1-0124 SS | 100% |
| PCO092.01 |  | DSC 56-Sinkhole Madison 5th to 6th | 5d | 2022-01-11 A | 2022-11-16 A |  | 100% |
| 1-0411 |  | CO-08 EMERGENCY SEWER REPAIR | 6d | 2022-03-26 A | 2022-04-03 A | 1-0125 | 100% |
| PCO183.01 |  | DSC 129-Sewer Repair 5th to 6th DSC | 5d | 2022-03-27 A | 2022-05-09 A |  | 100% |
| 1-0126 |  | ROADWAY PAVING - 2 POURS, MAD 5TH TO 6TH NORTH SIDE | 4d | 2022-04-12 A | 2022-04-25 A | 1-0121, 1-0124, 1-0125, 1-0291, 1-0411 | 100% |
| 1-0127 |  | CONCRETE CURE, MAD 5TH TO 6TH NORTH SIDE | 3d | 2022-04-26 A | 2022-04-28 A | 1-0126 | 100% |

| ID | WBS | Task | Duration | Start | Finish | Predecessors | Complete | Total float |
| --- | --- | --- | --- | --- | --- | --- | --- | --- |
| 1-0129 |  | TEMP PATCH, MAD 5TH TO 6TH NORTH SIDE | 1d | 2022-04-29 A | 2022-04-29 A | 1-0127 | 100% |  |
| 1-0128 |  | F/P CURB 1ST TO 6TH WEST SIDE, MAD 3RD TO 6TH NORTH SIDE | 2d | 2022-05-06 A | 2022-05-09 A | 1-0122, 1-0127 | 100% |  |
|  | 19 | **MADISON 3RD TO 6TH SOUTH SIDE** |  | 2023-07-19 | 2023-09-19 |  |  |  |
| 1-0217 |  | DEMO ROAD - COMMON EX - TYPE 2, MAD 3RD TO 6TH SOUTH SIDE | 4d | 2023-07-19 A | 2023-08-11 A | 1-0212, 1-1420 FF, 1-0335 | 100% |  |
| 1-0223 |  | DSC 581 CONCRETE CONFLICT WITH COMMON EX | 5d | 2023-08-10 A | 2023-08-11 A | 1-0217 SS | 100% |  |
| 1-0283 |  | DSC 583 BRICK WALL IN CONFLICT WITH CONDUIT SWC 4TH | 5d | 2023-08-11 A | 2023-09-11 | 1-0217 SS |  | -13d |
| 1-0218 |  | CONDUIT RD CROSSING, MAD 3RD TO 6TH SOUTH SIDE | 1d | 2023-08-14 | 2023-08-14 | 1-0217 SS, 1-0223, 1-0283 SS |  | -13d |
| 1-0219 |  | ROADWAY PAVING - 2 POURS, MAD 3RD TO 6TH SOUTH SIDE | 2d | 2023-08-15 | 2023-08-16 | 1-0214, 1-0217, 1-0218 |  | -13d |
| 1-0220 |  | CONCRETE CURE, MAD 3RD TO 6TH SOUTH SIDE | 3d | 2023-08-17 | 2023-08-19 | 1-0219 |  | -18d |
| 1-0221 |  | F/P CURB MAD 1ST TO 6TH SOUTH SIDE, MAD 3RD TO 6TH SOUTH SIDE | 1d | 2023-08-21 | 2023-08-21 | 1-0215, 1-0220 |  | -13d |
| 1-0222 |  | TEMP PATCH, MAD 3RD TO 6TH SOUTH SIDE | 1d | 2023-08-22 | 2023-08-22 | 1-0221 |  | -13d |
| 1-0242 |  | CONDUIT AFTER DSC 538 | 2d | 2023-09-12 | 2023-09-13 | 1-0283 |  | -4d |
| 1-0267 |  | GRADING AFTER DSC 538 | 2d | 2023-09-14 | 2023-09-15 | 1-0242 |  | -4d |
| 1-0247 |  | ROADWAY PAVING AFTER DSC 538 | 2d | 2023-09-18 | 2023-09-19 | 1-0267 |  | -4d |
|  | 5 | **MADISON 7TH TO 9TH NORTH SIDE** |  | 2022-01-18 | 2022-05-24 |  |  |  |
| PCO103.01 |  | DSC 64-Conduit In Roadway 9th to 8th | 5d | 2022-01-18 A | 2022-04-01 A |  | 100% |  |
| PCO104.01 |  | DSC 65-Steel Conduit in Subgrade 7th 8th on Madison | 5d | 2022-01-18 A | 2022-04-01 A |  | 100% |  |
| 1-0131 |  | DEMO ROAD - COMMON EX - TYPE 2, MAD 7TH TO 9TH NORTH SIDE | 8d | 2022-01-18 A | 2022-01-24 A | 1-0124, 1-0074, SC-0029, 1-0279 | 100% |  |
| 1-0132 |  | CONDUIT RD CROSSING, MAD 7TH TO 9TH NORTH SIDE | 8d | 2022-01-18 A | 2022-01-27 A | 1-0131 SS | 100% |  |
| PCO108.01 |  | DSC 69-Remove Cable Car System 7th to 9th Center Lane North side | 5d | 2022-01-21 A | 2022-03-04 A |  | 100% |  |
| PCO109.01 |  | DSC 70-Broken Conduit discovered, directly under concrete. Madison 8th-9th North side | 5d | 2022-01-21 A | 2022-02-24 A |  | 100% |  |
| 1-0137 |  | DELAY - POLE REMOVAL 7TH-8TH, SDOT POLE SUPPORT | 5d | 2022-01-25 A | 2022-03-18 A | 1-0131 | 100% |  |
| PCO116.01 |  | DSC 75-Streetlight Conduit Madison and 8th | 5d | 2022-01-26 A | 2022-02-10 A |  | 100% |  |
| PCO171.01 |  | DSC 119-conduit conflict 7th to 8th curb lane | 5d | 2022-03-21 A | 2022-04-01 A |  | 100% |  |
| PCO172.01 |  | DSC 120-Unknown unlocted clay pipe 7th to 8th curb lane | 5d | 2022-03-21 A | 2022-04-01 A |  | 100% |  |
| PCO173.01 |  | DSC 121-Pavement Depth WB Curb Lane 7th to 8th | 5d | 2022-03-21 A | 2022-04-01 A |  | 100% |  |
| 1-0187 |  | COMPLETE DEMO, COMMON EX, TYPE-2, AFTER POLE REMVOAL | 5d | 2022-03-21 A | 2022-03-23 A | 1-0137, 1-0137 FF, MS-2581 | 100% |  |
| PCO178.01 |  | DSC 125-CDF Conflict with Curb 7th to 8th | 5d | 2022-03-22 A | 2022-05-24 A |  | 100% |  |
| 1-0133 |  | ROADWAY PAVING - 3 POURS, MAD 7TH TO 9TH NORTH SIDE | 4d | 2022-03-24 A | 2022-04-07 A | 1-0132, 1-0187, MS-2571 | 100% |  |
| 1-0134 |  | CONCRETE CURE, MAD 7TH TO 9TH NORTH SIDE | 3d | 2022-03-25 A | 2022-04-08 A | 1-0133 SS | 100% |  |
| PCO187.01 |  | DSC 133-Watermain Valve Nut, 9th & Madison | 5d | 2022-03-29 A | 2022-04-06 A |  | 100% |  |
| 1-0135 |  | F/P CURB MAD 7TH TO 9TH, MAD 7TH TO 9TH NORTH SIDE | 2d | 2022-04-07 A | 2022-04-07 A | 1-0134 SS | 100% |  |
| 1-0136 |  | TEMP PATCH, MAD 7TH TO 9TH NORTH SIDE | 1d | 2022-04-08 A | 2022-04-08 A | 1-0135 | 100% |  |
|  | 20 | **MADISON 7TH TO 9TH SOUTH SIDE** |  | 2022-06-10 | 2022-08-12 |  |  |  |
| 1-0224 |  | DEMO ROAD - COMMON EX - TYPE 2, MAD 7TH TO 9TH SOUTH SIDE | 6d | 2022-06-10 A | 2022-06-14 A | 1-0136, 1-0128 | 100% |  |
| 1-0225 |  | CONDUIT RD CROSSING, MAD 7TH TO 9TH SOUTH SIDE | 6d | 2022-06-10 A | 2022-06-14 A | 1-0224 SS | 100% |  |
| 1-0226 |  | ROADWAY PAVING - 2 POURS, MAD 7TH TO 9TH SOUTH SIDE | 4d | 2022-06-15 A | 2022-06-19 A | 1-0225 | 100% |  |
| PCO280.01 |  | DSC 205-SFD water on grade 8th to 9th | 5d | 2022-06-16 A | 2022-06-24 A |  | 100% |  |
| PCO281.01 |  | DSC 206-Com Vault hole Madison and 8th | 5d | 2022-06-16 A | 2022-08-12 A |  | 100% |  |
| 1-0227 |  | CONCRETE CURE, MAD 7TH TO 9TH SOUTH SIDE | 3d | 2022-06-20 A | 2022-06-23 A | 1-0226 | 100% |  |
| 1-0228 |  | F/P CURB MAD 7TH TO 9TH SOUTH SIDE, MAD 7TH TO 9TH SOUTH SIDE | 2d | 2022-06-24 A | 2022-06-25 A | 1-0227 | 100% |  |
| 1-0229 |  | TEMP PATCH, MAD 7TH TO 9TH SOUTH SIDE | 1d | 2022-06-28 A | 2022-06-28 A | 1-0228 | 100% |  |
|  | 11 | **9TH SPRING TO MADISON EAST SIDE** |  | 2023-05-16 | 2023-09-06 |  |  |  |
| 1-2950 |  | CITY WON'T ALLOW CONCURRENT CLOSURE WITH BOREN | 4d | 2023-05-16 A | 2023-06-09 A |  | 100% |  |
| 1-0169 |  | DEMO ROAD - COMMON EX - TYPE 2, 9TH SPRING TO MAD EAST SIDE | 6d | 2023-06-29 A | 2023-07-07 A | 1-0164, 1-0255, 1-0260, 1-2950 FS+13d | 100% |  |
| 1-0299 |  | DSC 544 DUCT BANK 9TH MADISON TO SPRING CONFLICT | 2d | 2023-06-29 A | 2023-06-30 A | 1-2950 | 100% |  |
| 1-0319 |  | DSC 547 9TH MADISON TO SPRING CONTAMINATED SOILS | 3d | 2023-06-29 A | 2023-07-03 A | 1-0169 SS | 100% |  |
| 1-0339 |  | BUILDING FIRE | 7d | 2023-07-05 A | 2023-08-22 | 1-0319 |  | -110d |
| 1-3020 |  | DSC 550 CONDUIT IN ROADWAY | 5d | 2023-07-05 A | 2023-07-11 A | 1-0169 SS | 100% |  |
| 1-0170 |  | CONDUIT RD CROSSING, 9TH SPRING TO MAD EAST SIDE | 6d | 2023-07-06 A | 2023-08-15 | 1-0169 SS, 1-0339 SS, 1-3020 FF, 1-3125 FF, 1-3220 FF |  | -105d |
| 1-3125 |  | DSC 552 UNTILITY CONFLICTS WITH CONDUIT | 5d | 2023-07-06 A | 2023-07-12 A | 1-0169 SS | 100% |  |
| 1-3220 |  | DSC 553 UNKNOWN ABANDONED CB | 5d | 2023-07-06 A | 2023-07-12 A | 1-0169 SS | 100% |  |
| 1-3340 |  | GRADING AFTER FIRE | 2d | 2023-08-23 | 2023-08-24 | 1-0170, 1-0339 |  | -110d |
| 1-0171 |  | ROADWAY PAVING - 1 POURS, 9TH SPRING TO MAD EAST SIDE | 2d | 2023-08-25 | 2023-08-28 | 1-0169, 1-0170, 1-0166, 1-0319, 1-0299, 1-0339, 1-3340 |  | -110d |
| 1-0172 |  | CONCRETE CURE, 9TH SPRING TO MAD EAST SIDE | 3d | 2023-08-29 | 2023-08-31 | 1-0171 |  | -158d |
| 1-0173 |  | F/P CURB, 9TH SPRING TO MAD EAST SIDE | 2d | 2023-09-01 | 2023-09-05 | 1-0171, 1-0172 |  | -112d |
| 1-0174 |  | TEMP PATCH, 9TH SPRING TO MAD EAST SIDE | 1d | 2023-09-06 | 2023-09-06 | 1-0173 |  | -112d |
|  | 7 | **9TH SPRING TO MADISON WEST SIDE** |  | 2022-06-06 | 2023-09-20 |  |  |  |
| 1-1425 |  | DELAY AWAITING COMCAST, 9TH SPRING TO MAD WEST SIDE | 3d | 2022-06-06 A | 2023-06-16 A | 1-0138 | 100% |  |
| 1-0145 |  | DEMO ROAD - COMMON EX - TYPE 2, 9TH SPRING TO MAD WEST SIDE | 3d | 2023-09-07 | 2023-09-11 | 1-1410, 1-1425, 1-0173, 1-0173 FF, 1-0174 |  | -112d |
| 1-0146 |  | CONDUIT RD CROSSING, 9TH SPRING TO MAD WEST SIDE | 3d | 2023-09-07 | 2023-09-11 | 1-0145 SS |  | -112d |
| 1-0147 |  | ROADWAY PAVING - 2 POURS, 9TH SPRING TO MAD WEST SIDE | 4d | 2023-09-12 | 2023-09-15 | 1-0146, 1-0140 |  | -112d |
| 1-0148 |  | CONCRETE CURE, 9TH SPRING TO MAD WEST SIDE | 3d | 2023-09-16 | 2023-09-18 | 1-0147 |  | -161d |
| 1-0149 |  | F/P CURB SPRING 7TH TO 9TH, 9TH SPRING TO MAD WEST SIDE | 1d | 2023-09-19 | 2023-09-19 | 1-0147, 1-0148 |  | -112d |
| 1-0150 |  | TEMP PATCH, 9TH SPRING TO MAD WEST SIDE | 1d | 2023-09-20 | 2023-09-20 | 1-0149, 1-0148 |  | -112d |
|  | 12 | **9TH TO TERRY NORTH SIDE** |  | 2022-01-26 | 2022-09-17 |  |  |  |
| 1-0371 |  | FM 074 - SDOT ROADWAY REMOVAL SUSPENSION | 5d | 2022-01-26 A | 2022-03-11 A | MS-0025 | 100% |  |
| 1-0176 |  | DEMO ROAD - COMMON EX - TYPE 2, 9TH TO TERRY NORTH SIDE | 6d | 2022-03-24 A | 2022-04-11 A | 1-0079, 1-0080, 1-0100, 1-0118, 1-0371 | 100% |  |
| 1-0177 |  | CONDUIT RD CROSSING, 9TH TO TERRY NORTH SIDE | 6d | 2022-03-24 A | 2022-03-31 A | 1-0176 SS | 100% |  |
| PCO207.01 |  | DSC 148-Unknown Utilities North Side 9th Crossing | 5d | 2022-04-11 A | 2022-04-30 A |  | 100% |  |

| ID | WBS | Task | Duration | Start | Finish | Predecessors | Complete |
| --- | --- | --- | --- | --- | --- | --- | --- |
| 1-0178 |  | ROADWAY PAVING - 2 POURS, 9TH TO TERRY NORTH SIDE | 4d | 2022-04-12 A | 2022-04-19 A | 1-0177, 1-0176 | 100% |
| 1-0179 |  | CONCRETE CURE, 9TH TO TERRY NORTH SIDE | 3d | 2022-04-20 A | 2022-04-22 A | 1-0178 | 100% |
| PCO376.01 |  | DSC 274-Chipping Concrete at Alley 8th-9th on Madison | 5d | 2022-09-08 A | 2022-09-17 A |  | 100% |
|  | 21 | **9TH TO TERRY SOUTH SIDE** |  | 2022-06-22 | 2022-07-13 |  |  |
| PCO289.01 |  | DSC 212-Shallow Gas Line - Madison 9th-Terry | 5d | 2022-06-22 A | 2022-07-01 A |  | 100% |
| 1-0231 |  | DEMO ROAD - COMMON EX - TYPE 2, 9TH TO TERRY SOUTH SIDE | 6d | 2022-06-22 A | 2022-06-29 A | 1-0186, 1-0224 | 100% |
| 1-0232 |  | CONDUIT RD CROSSING, 9TH TO TERRY SOUTH SIDE | 6d | 2022-06-22 A | 2022-06-29 A | 1-0231 SS | 100% |
| 1-0233 |  | ROADWAY PAVING - 2 POURS, 9TH TO TERRY SOUTH SIDE | 4d | 2022-07-06 A | 2022-07-11 A | 1-0226, 1-0231, 1-0232 | 100% |
| 1-0234 |  | CONCRETE CURE, 9TH TO TERRY SOUTH SIDE | 3d | 2022-07-11 A | 2022-07-13 A | 1-0233 | 100% |
|  | 13 | **TERRY TO BOREN NORTH SIDE** |  | 2022-03-24 | 2022-04-25 |  |  |
| 1-0181 |  | DEMO ROAD - COMMON EX - TYPE 2, TERRY TO BOREN NORTH SIDE | 6d | 2022-03-24 A | 2022-04-11 A | 1-0176 SS, 1-0101 | 100% |
| 1-0182 |  | CONDUIT RD CROSSING, TERRY TO BOREN NORTH SIDE | 6d | 2022-03-24 A | 2022-03-31 A | 1-0181 SS | 100% |
| PCO186.01 |  | DSC 132-Existing type 264 Inlet NE Terry | 5d | 2022-03-29 A | 2022-03-30 A |  | 100% |
| 1-0183 |  | ROADWAY PAVING - 2 POURS, TERRY TO BOREN NORTH SIDE | 4d | 2022-04-12 A | 2022-04-19 A | 1-0182, 1-0181, 1-0178 | 100% |
| 1-0184 |  | CONCRETE CURE, TERRY TO BOREN NORTH SIDE | 3d | 2022-04-20 A | 2022-04-22 A | 1-0183 | 100% |
| 1-0185 |  | F/P CURB MAD 9TH TO BOREN, TERRY TO BOREN NORTH SIDE | 3d | 2022-04-20 A | 2022-04-21 A | 1-0184, 1-0179 | 100% |
| 1-0186 |  | TEMP PATCH MAD TERRY TO BOREN, TERRY TO BOREN NORTH SIDE | 1d | 2022-04-22 A | 2022-04-25 A | 1-0185 | 100% |
|  | 22 | **TERRY TO BOREN SOUTH SIDE** |  | 2022-06-22 | 2022-07-27 |  |  |
| 1-0236 |  | DEMO ROAD - COMMON EX - TYPE 2, TERRY TO BOREN SOUTH SIDE | 6d | 2022-06-22 A | 2022-06-29 A | 1-0231 SS, 1-0081 | 100% |
| 1-0237 |  | CONDUIT RD CROSSING, TERRY TO BOREN SOUTH SIDE | 6d | 2022-06-22 A | 2022-06-29 A | 1-0236 SS | 100% |
| PCO290.01 |  | DSC 213-Steel Conduit Conflict Terry-Boren South | 5d | 2022-06-24 A | 2022-07-02 A |  | 100% |
| PCO292.01 |  | DSC 214-Shallow Com Vault Lid 9th to Terre | 5d | 2022-06-24 A | 2022-07-27 A |  | 100% |
| PCO295.01 |  | DSC 217-Cable Car infrastructure 9th to Boren S Center lane | 5d | 2022-06-29 A | 2022-07-02 A |  | 100% |
| PCO297.01 |  | DSC 219-CDF conflict with conduit at Terry | 5d | 2022-06-30 A | 2022-07-07 A |  | 100% |
| 1-0238 |  | ROADWAY PAVING - 2 POURS, TERRY TO BOREN SOUTH SIDE | 4d | 2022-07-08 A | 2022-07-12 A | 1-0233, 1-0236, 1-0237 | 100% |
| 1-0239 |  | CONCRETE CURE, TERRY TO BOREN SOUTH SIDE | 3d | 2022-07-13 A | 2022-07-15 A | 1-0238 | 100% |
| 1-0240 |  | F/P CURB MAD 7TH TO 9TH SOUTH SIDE, TERRY TO BOREN SOUTH SIDE | 3d | 2022-07-14 A | 2022-07-15 A | 1-0234, 1-0239 | 100% |
| 1-0241 |  | TEMP PATCH, TERRY TO BOREN SOUTH SIDE | 3d | 2022-07-18 A | 2022-07-20 A | 1-0240, 1-0229 | 100% |
|  | 14 | **BOREN TO MINOR NORTH SIDE** |  | 2022-04-11 | 2022-04-17 |  |  |
| 1-0188 |  | DEMO ROAD - COMMON EX - TYPE 2, BOREN TO MINOR NORTH SIDE | 4d | 2022-04-11 A | 2022-04-12 A | 1-0102, 1-0082, 1-0181, 1-0136 | 100% |
| 1-0189 |  | CONDUIT RD CROSSING, BOREN TO MINOR NORTH SIDE | 4d | 2022-04-11 A | 2022-04-12 A | 1-0188 SS | 100% |
| 1-0190 |  | ROADWAY PAVING - 1 POURS, BOREN TO MINOR NORTH SIDE | 2d | 2022-04-13 A | 2022-04-14 A | 1-0183, 1-0188, 1-0189 | 100% |
| 1-0191 |  | CONCRETE CURE, BOREN TO MINOR NORTH SIDE | 3d | 2022-04-15 A | 2022-04-17 A | 1-0190 | 100% |
|  | 23 | **BOREN TO MINOR SOUTH SIDE** |  | 2022-07-18 | 2022-08-26 |  |  |
| 1-0243 |  | DEMO ROAD - COMMON EX - TYPE 2, BOREN TO MINOR SOUTH SIDE | 6d | 2022-07-18 A | 2022-07-26 A | 1-0198, 1-0236 | 100% |
| 1-0244 |  | CONDUIT RD CROSSING, BOREN TO MINOR SOUTH SIDE | 6d | 2022-07-18 A | 2022-07-26 A | 1-0243 SS | 100% |
| 1-0245 |  | ROADWAY PAVING - 2 POURS, BOREN TO MINOR SOUTH SIDE | 4d | 2022-07-27 A | 2022-08-05 A | 1-0243, 1-0238, 1-0244 | 100% |
| 1-0246 |  | CONCRETE CURE, BOREN TO MINOR SOUTH SIDE | 3d | 2022-08-06 A | 2022-08-08 A | 1-0245 | 100% |
| PCO347.01 |  | DSC 256-Boren & Madison, Unlocated Conduit | 5d | 2022-08-10 A | 2022-08-26 A |  | 100% |
|  | 15 | **MINOR TO SUMMIT NORTH SIDE** |  | 2022-04-25 | 2022-05-05 |  |  |
| PCO229.01 |  | DSC 164-Existing inlet and pipe in roadway NW Minor | 5d | 2022-04-25 A | 2022-05-01 A |  | 100% |
| 1-0193 |  | DEMO ROAD - COMMON EX - TYPE 2, MINOR TO SUMMIT NORTH SIDE | 4d | 2022-04-25 A | 2022-04-26 A | 1-0103, 1-0083, 1-0188 | 100% |
| 1-0194 |  | CONDUIT RD CROSSING, MINOR TO SUMMIT NORTH SIDE | 4d | 2022-04-27 A | 2022-04-27 A | 1-0193 SS | 100% |
| PCO235.01 |  | DSC 170-Unknown Concrete Slab Summit-Minor | 5d | 2022-04-28 A | 2022-04-29 A |  | 100% |
| 1-0195 |  | ROADWAY PAVING - 1 POURS, MINOR TO SUMMIT NORTH SIDE | 2d | 2022-04-28 A | 2022-05-02 A | 1-0190, 1-0193, 1-0194 | 100% |
| 1-0196 |  | CONCRETE CURE, MINOR TO SUMMIT NORTH SIDE | 3d | 2022-05-01 A | 2022-05-03 A | 1-0195 | 100% |
| 1-0197 |  | F/P CURB BOREN TO SUMMIT, MINOR TO SUMMIT NORTH SIDE | 2d | 2022-05-04 A | 2022-05-04 A | 1-0191, 1-0196 | 100% |
| 1-0198 |  | TEMP PATCH BOREN TO SUMMIT, MINOR TO SUMMIT NORTH SIDE | 1d | 2022-05-05 A | 2022-05-05 A | 1-0197 | 100% |
|  | 24 | **MINOR TO SUMMIT SOUTH SIDE** |  | 2022-07-18 | 2022-09-03 |  |  |
| 1-0248 |  | DEMO ROAD - COMMON EX - TYPE 2, MINOR TO SUMMIT SOUTH SIDE | 6d | 2022-07-18 A | 2022-07-26 A | 1-0556, 1-0243 SS | 100% |
| 1-0249 |  | CONDUIT RD CROSSING, MINOR TO SUMMIT SOUTH SIDE | 6d | 2022-07-18 A | 2022-07-26 A | 1-0248 SS | 100% |
| PCO325.01 |  | DSC 241-Summit & Madison Conduit Clearances | 5d | 2022-07-21 A | 2022-08-30 A |  | 100% |
| PCO334.01 |  | DSC 244-Prime notice exisitng conduit extra work minor | 5d | 2022-07-26 A | 2022-08-19 A |  | 100% |
| 1-0250 |  | ROADWAY PAVING - 2 POURS, MINOR TO SUMMIT SOUTH SIDE | 4d | 2022-07-27 A | 2022-08-05 A | 1-0248, 1-0249 | 100% |
| 1-1205 |  | DSC - SCL CONDUIT | 16d | 2022-08-08 A | 2022-08-29 A | 1-0250 | 100% |
| PCO346.01 |  | DSC 255-Prime Elec. Minor Ave Conduit & HH conflict | 5d | 2022-08-10 A | 2022-08-18 A |  | 100% |
| PCO351.01 |  | DSC 258-Pavment Depth at Minor | 5d | 2022-08-13 A | 2022-08-14 A |  | 100% |
| 1-0252 |  | F/P CURB MAD 7TH TO 9TH SOUTH SIDE, MINOR TO SUMMIT SOUTH SIDE | 3d | 2022-08-25 A | 2022-08-25 A | 1-0250 | 100% |
| 1-0253 |  | TEMP PATCH, MINOR TO SUMMIT SOUTH SIDE | 3d | 2022-08-26 A | 2022-08-29 A | 1-0252, 1-0241, 1-0246 | 100% |
| 1-1210 |  | DSC - SCL CONDUIT - COMPLETE ROADWAY AFTER DELAY | 4d | 2022-08-30 A | 2022-08-31 A | 1-1205 | 100% |
| 1-0251 |  | CONCRETE CURE, MINOR TO SUMMIT SOUTH SIDE | 3d | 2022-09-01 A | 2022-09-03 A | 1-0250, 1-1210 | 100% |
|  | 16 | **SUMMIT TO BOYLSTON NORTH SIDE** |  | 2022-04-25 | 2022-05-10 |  |  |
| PCO230.01 |  | DSC 165-Unknown Unlocated conduit NW Boyleston | 5d | 2022-04-25 A | 2022-05-10 A |  | 100% |
| 1-0200 |  | DEMO ROAD - COMMON EX - TYPE 2, SUMMIT TO BOYLSTON NORTH SIDE | 4d | 2022-04-25 A | 2022-04-27 A | 1-0104, 1-0084, 1-0193 SS | 100% |
| 1-0201 |  | CONDUIT RD CROSSING, SUMMIT TO BOYLSTON NORTH SIDE | 4d | 2022-04-25 A | 2022-04-27 A | 1-0200 SS | 100% |
| 1-0202 |  | ROADWAY PAVING - 1 POURS, SUMMIT TO BOYLSTON NORTH SIDE | 2d | 2022-04-28 A | 2022-05-02 A | 1-0195, 1-0200, 1-0201 | 100% |
| 1-0203 |  | CONCRETE CURE, SUMMIT TO BOYLSTON NORTH SIDE | 3d | 2022-05-03 A | 2022-05-05 A | 1-0202 | 100% |
|  | 25 | **SUMMIT TO BOYLSTON SOUTH SIDE** |  | 2022-11-18 | 2023-06-02 |  |  |
| 1-1320 |  | CITY CAUSED DELAY ALLOWING DEVELOPER TO FINISH; SUMMIT TO BOYLSTON SOUTH SIDE | 6d | 2022-11-18 A | 2023-02-03 A | 1-0248, 1-0229, 1-0210 | 100% |
| PCO476.01 |  | DSC 345-Boyleston Conduit intersept | 5d | 2022-11-22 A | 2023-02-17 A |  | 100% |

| ID | WBS | Task | Duration | Start | Finish | Predecessors | Complete | Total float |
| --- | --- | --- | --- | --- | --- | --- | --- | --- |
| 1-1325 |  | FM TO RELOCATE SIDE SEWER; SUMMIT TO BOYLSTON SOUTH SIDE | 6d | 2023-02-06 A | 2023-02-10 A | 1-1320 | 100% |  |
| 1-1365 |  | DELAY - KCM NOT ALLOWING CLOSURE TO GO IN | 6d | 2023-02-13 A | 2023-03-17 A | 1-1325 | 100% |  |
| 1-0255 |  | DEMO ROAD - COMMON EX - TYPE 2, SUMMIT TO BOYLSTON SOUTH SIDE | 6d | 2023-04-03 A | 2023-04-18 A | 1-0210, 1-0248, 1-0251, 1-1325, 1-1365, 1-1320 | 100% |  |
| PCO630.01 |  | DSC 442-WATER VAULT IN CONFLICT WITH ROADWAY | 6d | 2023-04-06 A | 2023-05-02 A |  | 100% |  |
| 1-0256 |  | CONDUIT RD CROSSING, SUMMIT TO BOYLSTON SOUTH SIDE | 6d | 2023-04-12 A | 2023-04-14 A | 1-0255 | 100% |  |
| 1-2735 |  | DIRECTION TO INSTALL CONDUIT IN ROADWAY | 4d | 2023-05-02 A | 2023-05-05 A | 1-2730 | 100% |  |
| 1-2730 |  | MODIFY SPU VAULT | 4d | 2023-05-03 A | 2023-05-05 A | PCO630.01 | 100% |  |
| 1-2740 |  | RE-GRADE ROADWAY AFTER EXTRA WORK | 4d | 2023-05-08 A | 2023-05-09 A | 1-2735 | 100% |  |
| 1-0257 |  | ROADWAY PAVING - 2 POURS, SUMMIT TO BOYLSTON SOUTH SIDE | 4d | 2023-05-19 A | 2023-05-30 A | 1-0250, 1-0256, PCO630.01, 1-2740 | 100% |  |
| 1-0258 |  | CONCRETE CURE, SUMMIT TO BOYLSTON SOUTH SIDE | 3d | 2023-05-31 A | 2023-06-02 A | 1-0257 | 100% |  |
|  | 17 | **BOYLSTON TO BROADWAY NORTH SIDE** |  | 2022-09-13 | 2022-11-17 |  |  |  |
| 1-0205 |  | DEMO ROAD - COMMON EX - TYPE 2, BOYLSTON TO BROADWAY NORTH SIDE | 6d | 2022-09-13 A | 2022-09-20 A | 1-0105, 1-0200 | 100% |  |
| 1-0206 |  | CONDUIT RD CROSSING, BOYLSTON TO BROADWAY NORTH SIDE | 6d | 2022-09-13 A | 2022-10-04 A | 1-0205 SS | 100% |  |
| PCO401.01 |  | DSC 293-Conduit Conflict with Paving Boylston to Broadway North side | 5d | 2022-09-20 A | 2022-09-21 A |  | 100% |  |
| 1-0207 |  | ROADWAY PAVING - 2 POURS, BOYLSTON TO BROADWAY NORTH SIDE | 2d | 2022-10-31 A | 2022-11-11 A | 1-0202, 1-0205, 1-0206 | 100% |  |
| 1-0208 |  | CONCRETE CURE, BOYLSTON TO BROADWAY NORTH SIDE | 3d | 2022-11-12 A | 2022-11-15 A | 1-0207 | 100% |  |
| 1-0209 |  | F/P CURB, BOYLSTON TO BROADWAY NORTH SIDE | 2d | 2022-11-15 A | 2022-11-16 A | 1-0203, 1-0208 | 100% |  |
| 1-0210 |  | TEMP PATCH, BOYLSTON TO BROADWAY NORTH SIDE | 1d | 2022-11-17 A | 2022-11-17 A | 1-0209 | 100% |  |
|  | 26 | **BOYLSTON TO BROADWAY SOUTH SIDE** |  | 2023-04-06 | 2023-08-31 |  |  |  |
| 1-0260 |  | DEMO ROAD - COMMON EX - TYPE 2, BOYLSTON TO BROADWAY SOUTH SIDE | 6d | 2023-04-06 A | 2023-04-17 A | 1-0255 | 100% |  |
| 1-0261 |  | CONDUIT RD CROSSING, BOYLSTON TO BROADWAY SOUTH SIDE | 6d | 2023-04-06 A | 2023-04-17 A | 1-0260 SS | 100% |  |
| PCO631.01 |  | DSC 443-DUCT BANK CONFLICT WITH CONDUIT | 6d | 2023-04-10 A | 2023-04-11 A |  | 100% |  |
| 1-2745 |  | OWNER CAUSED DELAY - DIRECTION TO SPLIT WORK FROM ALLEY TO BROADWAY | 4d | 2023-04-13 A | 2023-08-18 | 1-0260 |  | 30d |
| 1-0262 |  | ROADWAY PAVING - 2 POURS, BOYLSTON TO BROADWAY SOUTH SIDE | 4d | 2023-05-19 A | 2023-05-30 A | 1-0257 SS, 1-0260, 1-0261, PCO630.01 | 100% |  |
| 1-0263 |  | CONCRETE CURE, BOYLSTON TO BROADWAY SOUTH SIDE | 3d | 2023-05-31 A | 2023-06-02 A | 1-0262 | 100% |  |
| 1-0264 |  | F/P CURB, BOYLSTON TO BROADWAY SOUTH SIDE | 1d | 2023-05-31 A | 2023-05-31 A | 1-0258 SS, 1-0263 SS | 100% |  |
| 1-0265 |  | TEMP PATCH, BOYLSTON TO BROADWAY SOUTH SIDE | 3d | 2023-06-01 A | 2023-06-05 A | 1-0264, 1-0253 | 100% |  |
| 1-2750 |  | REMOVE RDWAY TYPE 2 ACROSS FROM WHOLE FOODS ALLEY | 1d | 2023-08-21 | 2023-08-21 | 1-2745, 1-0265 |  | 30d |
| 1-2760 |  | ROADWAY PAVING ACROSS FROM WHOLE FOODS ALLEY | 1d | 2023-08-22 | 2023-08-22 | 1-2750 |  | 30d |
| 1-2755 |  | REMOVE RDWAY TYPE 2 FROM ALLEY TO BROADWAY | 4d | 2023-08-23 | 2023-08-28 | 1-0265, 1-2745, 1-2750, 1-2760 |  | 30d |
| 1-2765 |  | ROADWAY PAVING ACROSS FROM ALLEY TO BROADWAY | 3d | 2023-08-29 | 2023-08-31 | 1-2755 |  | 30d |
|  | 2 | **1ST TO BROADWAY INTERSECTIONS** |  | 2022-04-02 | 2023-09-19 |  |  |  |
|  | 5 | **SPRING AND 1ST** |  | 2023-05-06 | 2023-06-11 |  |  |  |
| 1-0284 |  | TRENCH CONDUIT, SPRING AND 1ST | 2d | 2023-05-06 A | 2023-05-07 A | MS-0026, SC-1674 | 100% |  |
| PCO664.01 |  | DSC 467-VOID UNDER ROADWAY | 2d | 2023-05-06 A | 2023-05-07 A |  | 100% |  |
| PCO665.01 |  | DSC 468-MULTIPLE UTILITY CONFLICTS | 2d | 2023-05-06 A | 2023-05-07 A |  | 100% |  |
| PCO667.01 |  | DSC 470-2' THICK ROADWAY | 2d | 2023-05-06 A | 2023-05-07 A |  | 100% |  |
| 1-2955 |  | INSTALL CONDUIT, SPRING AND 1ST | 2d | 2023-05-13 A | 2023-05-14 A | 1-0284 | 100% |  |
| 1-2960 |  | BACKFILL CONDUIT WITH CDF, SPRING AND 1ST | 2d | 2023-05-20 A | 2023-05-21 A | 1-2955 | 100% |  |
| 1-0285 |  | DEMO ROAD - COMMON EX - TYPE 2, SPRING & 1ST | 2d | 2023-06-10 A | 2023-06-11 A | 1-0284, MS-2581, MS-2571, 1-2960 FS+4d | 100% |  |
| 1-0286 |  | ASPHALT PAVING, SPRING AND 1ST | 2d | 2023-06-10 A | 2023-06-11 A | 1-0285 SS | 100% |  |
|  | 1 | **SPRING AND 2ND SOUTH SIDE** |  | 2022-04-02 | 2022-04-29 |  |  |  |
| 1-0268 |  | DEMO ROAD - COMMON EX - TYPE 2, SPRING & 2ND SOUTH SIDE | 1d | 2022-04-02 A | 2022-04-02 A | 1-0111 | 100% |  |
| 1-0269 |  | TRENCH CONDUIT, SPRING & 2ND SOUTH SIDE | 1d | 2022-04-02 A | 2022-04-02 A | 1-0268 SS | 100% |  |
| 1-0270 |  | ROADWAY PAVING, SPRING & 2ND SOUTH SIDE | 1d | 2022-04-03 A | 2022-04-03 A | 1-0269 | 100% |  |
| PCO200.01 |  | DSC 143-ITS Conduit Conflict Spring Alley way 1st to 2nd | 5d | 2022-04-05 A | 2022-04-12 A |  | 100% |  |
| PCO198.01 |  | DSC 141-Curb Ramp 1.1.1 and 1.1.2 | 5d | 2022-04-06 A | 2022-04-29 A |  | 100% |  |
|  | 2 | **SPRING AND 3RD SOUTH SIDE** |  | 2022-06-14 | 2022-08-26 |  |  |  |
| PCO278.01 |  | DSC 203-Conduit Change 3rd and Spring | 5d | 2022-06-14 A | 2022-06-23 A |  | 100% |  |
| 1-0272 |  | DEMO ROAD - COMMON EX - TYPE 2, SPRING & 3RD SOUTH SIDE | 1d | 2022-07-16 A | 2022-07-16 A | 1-0270, 1-0117, 1-1190 | 100% |  |
| PCO323.01 |  | DSC 239-ITS Conflict Spring 3rd to 4th | 5d | 2022-07-18 A | 2022-07-21 A |  | 100% |  |
| 1-0273 |  | TRENCH CONDUIT, SPRING & 3RD SOUTH SIDE | 1d | 2022-07-23 A | 2022-07-23 A | 1-0272 SS | 100% |  |
| 1-0274 |  | ROADWAY PAVING, SPRING & 3RD SOUTH SIDE | 1d | 2022-07-24 A | 2022-07-24 A | 1-0273 | 100% |  |
| PCO359.01 |  | DSC 261-Conduit Conflict SE 3rd and Spring | 5d | 2022-08-24 A | 2022-08-26 A |  | 100% |  |
|  | 16 | **SPRING AND 3RD NORTH SIDE** |  | 2022-07-17 | 2022-07-24 |  |  |  |
| PCO322.01 |  | DSC 238-Unknown Unlocated Comm Line NE 3rd Spring | 5d | 2022-07-17 A | 2022-07-19 A |  | 100% |  |
| 1-0328 |  | DEMO ROAD - COMMON EX - TYPE 2, SPRING & 3RD NORTH SIDE | 1d | 2022-07-23 A | 2022-07-23 A | 1-0274 | 100% |  |
| 1-0329 |  | TRENCH CONDUIT, SPRING & 3RD NORTH SIDE | 1d | 2022-07-23 A | 2022-07-23 A | 1-0328 SS | 100% |  |
| 1-0330 |  | ROADWAY PAVING, SPRING & 3RD NORTH SIDE | 1d | 2022-07-24 A | 2022-07-24 A | 1-0329 | 100% |  |
|  | 3 | **SPRING AND 4TH SOUTH SIDE** |  | 2022-08-13 | 2023-01-26 |  |  |  |
| 1-0277 |  | TRENCH CONDUIT, SPRING & 4TH SOUTH SIDE | 1d | 2022-08-13 A | 2022-08-13 A | 1-0276 SS | 100% |  |
| 1-0276 |  | DEMO ROAD - COMMON EX - TYPE 2, SPRING & 4TH SOUTH SIDE | 1d | 2022-09-10 A | 2022-09-11 A | 1-0274 | 100% |  |
| 1-0278 |  | ROADWAY PAVING, SPRING & 4TH SOUTH SIDE | 1d | 2022-09-10 A | 2022-09-11 A | 1-0277 | 100% |  |
| PCO442.01 |  | DSC 323-SCL Access lid SE 4th and Spring poured mono | 5d | 2022-10-31 A | 2023-01-26 A |  | 100% |  |
| PCO443.01 |  | DSC 324-SE 4th & Spring Conduit Conflicts @ Hand Hole | 5d | 2022-10-31 A | 2022-11-08 A |  | 100% |  |
| PCO477.01 |  | DSC 346-FM 348 DSC Air Vent 4th and Spring | 5d | 2022-11-22 A | 2023-01-25 A |  | 100% |  |
|  | 4 | **SPRING AND 5TH SOUTH SIDE** |  | 2022-05-24 | 2022-12-06 |  |  |  |
| PCO255.01 |  | DSC 186-Vault 163-M-351 Steel In lid | 5d | 2022-05-24 A | 2022-06-02 A |  | 100% |  |
| PCO387.01 |  | DSC 283-5th and Spring Conduit Conflict | 5d | 2022-09-12 A | 2022-09-15 A |  | 100% |  |
| 1-0281 |  | TRENCH CONDUIT, SPRING & 5TH SOUTH SIDE | 1d | 2022-09-17 A | 2022-09-17 A | 1-0280 SS | 100% |  |

| ID | WBS | Task | Duration | Start | Finish | Predecessors | Complete | Total float | Constraint |
| --- | --- | --- | --- | --- | --- | --- | --- | --- | --- |
| 1-0280 |  | DEMO ROAD - COMMON EX - TYPE 2, SPRING & 5TH SOUTH SIDE | 1d | 2022-09-24 A | 2022-09-24 A | 1-0278, 1-0106 | 100% |  |  |
| 1-0282 |  | ROADWAY PAVING, SPRING & 5TH SOUTH SIDE | 1d | 2022-09-24 A | 2022-09-25 A | 1-0281 | 100% |  |  |
| PCO486.01 |  | DSC 350-Conduit Conflict SW 5th and Spring | 5d | 2022-12-05 A | 2022-12-06 A |  | 100% |  |  |
|  | 17 | **SPRING AND 7TH NORTH SIDE** |  | 2023-06-28 | 2023-07-07 |  |  |  |  |
| 1-0332 |  | DEMO ROAD - COMMON EX - TYPE 2, SPRING & 7TH NORTH SIDE | 2d | 2023-06-28 A | 2023-06-29 A | 1-0166, 1-0330 | 100% |  | start on or after 2023-06-28 |
| 1-0333 |  | TRENCH CONDUIT, SPRING & 7TH NORTH SIDE | 2d | 2023-06-28 A | 2023-06-29 A | 1-0332 SS | 100% |  |  |
| 1-0343 |  | DSC 543 - Unknown Ductbank Conflict | 1d | 2023-06-28 A | 2023-06-28 A | 1-0333 SS | 100% |  |  |
| 1-0334 |  | ROADWAY PAVING, SPRING & 7TH NORTH SIDE | 2d | 2023-07-06 A | 2023-07-07 A | 1-0333 FS+2d, 1-0343 FF | 100% |  |  |
|  | 12 | **SPRING AND 7TH SOUTH SIDE** |  | 2022-06-01 | 2023-04-22 |  |  |  |  |
| 1-0312 |  | DEMO ROAD - COMMON EX - TYPE 2, SPRING & 7TH SOUTH SIDE | 1d | 2022-06-01 A | 2022-06-01 A | 1-0140, 1-0310 | 100% |  |  |
| 1-0313 |  | TRENCH CONDUIT, SPRING & 7TH SOUTH SIDE | 1d | 2022-06-01 A | 2023-04-22 A | 1-0312 SS | 100% |  |  |
| 1-0314 |  | ROADWAY PAVING, SPRING & 7TH SOUTH SIDE | 1d | 2022-06-01 A | 2022-06-01 A | 1-0313 | 100% |  |  |
| PCO315.01 |  | DSC 232-Prime DSC SE 7th and Spring | 5d | 2022-07-11 A | 2022-07-13 A |  | 100% |  |  |
| PCO324.01 |  | DSC 240-type 3 handhole SE 7th and spring conflict | 5d | 2022-07-19 A | 2022-07-20 A |  | 100% |  |  |
|  | 18 | **SPRING AND 8TH NORTH SIDE** |  | 2022-11-22 | 2023-01-17 |  |  |  |  |
| 1-0336 |  | DEMO ROAD - COMMON EX - TYPE 2, SPRING & 8TH NORTH SIDE | 1d | 2022-11-22 A | 2022-12-01 A | 1-0280, 1-0235 | 100% |  |  |
| 1-0337 |  | TRENCH CONDUIT, SPRING & 8TH NORTH SIDE | 1d | 2022-11-22 A | 2022-12-01 A | 1-0336 SS | 100% |  |  |
| 1-0338 |  | ROADWAY PAVING, SPRING & 8TH NORTH SIDE | 1d | 2022-12-27 A | 2023-01-03 A | 1-0337 | 100% |  |  |
| PCO506.01 |  | DSC 360-Steam Pipe Conflict at 8th and Spring | 5d | 2023-01-09 A | 2023-01-17 A |  | 100% |  |  |
|  | 13 | **SPRING AND 8TH SOUTH SIDE** |  | 2022-06-01 | 2022-06-02 |  |  |  |  |
| 1-0316 |  | DEMO ROAD - COMMON EX - TYPE 2, SPRING & 8TH SOUTH SIDE | 1d | 2022-06-01 A | 2022-06-01 A | 1-0314 | 100% |  |  |
| 1-0317 |  | TRENCH CONDUIT, SPRING & 8TH SOUTH SIDE | 1d | 2022-06-01 A | 2022-06-01 A | 1-0316 SS | 100% |  |  |
| 1-0318 |  | ROADWAY PAVING, SPRING & 8TH SOUTH SIDE | 1d | 2022-06-02 A | 2022-06-02 A | 1-0317 | 100% |  |  |
|  | 14 | **SPRING AND 9TH SW CORNER** |  | 2023-08-05 | 2023-08-24 |  |  |  |  |
| 1-0321 |  | TRENCH CONDUIT, SPRING AND 9TH SW CORNER | 1d | 2023-08-05 A | 2023-08-07 A | 1-0170 SS | 100% |  |  |
| 1-0355 |  | DSC 572 GAS LINE CONFLICT | 5d | 2023-08-05 A | 2023-08-07 A | 1-0321 SS | 100% |  |  |
| 1-0375 |  | DSC 573 DUCT BANK CONFLICT | 5d | 2023-08-05 A | 2023-08-07 A | 1-0321 SS | 100% |  |  |
| 1-0395 |  | DSC 574 UNKNOWN STEEL LINE | 1d | 2023-08-05 A | 2023-08-07 A | 1-0321 SS | 100% |  |  |
| 1-0320 |  | DEMO ROAD - COMMON EX - TYPE 2, SPRING & 9TH SW CORNER | 5d | 2023-08-14 | 2023-08-18 | 1-0318, 1-0078, 1-0294, 1-0321, 1-0395, 1-0375, 1-0355 FF |  | -100d |  |
| 1-0322 |  | ROADWAY PAVING, SPRING AND 9TH SW CORNER | 4d | 2023-08-21 | 2023-08-24 | 1-0321, 1-0320 |  | -100d |  |
|  | 15 | **SPRING AND 9TH SE CORNER** |  | 2023-08-05 | 2023-09-07 |  |  |  |  |
| 1-0325 |  | TRENCH CONDUIT, SPRING AND 9TH SE CORNER | 1d | 2023-08-05 A | 2023-08-07 A | 1-0321 SS | 100% |  |  |
| 1-0324 |  | DEMO ROAD - COMMON EX - TYPE 2, SPRING & 9TH SE CORNER | 4d | 2023-08-25 | 2023-08-30 | 1-0322 SS+1d, 1-0320 SS, 1-0325, 1-0322 |  | -100d |  |
| 1-0326 |  | ROADWAY PAVING, SPRING AND 9TH SE CORNER | 5d | 2023-08-31 | 2023-09-07 | 1-0325, 1-0322, 1-0324 |  | 18d |  |
|  | 19 | **SPRING AND 9TH NW CORNER** |  | 2022-05-10 | 2023-09-15 |  |  |  |  |
| PCO242.01 |  | DSC 176-NW Corner 9th & Spring Elevation Bust | 5d | 2022-05-10 A | 2022-05-13 A |  | 100% |  |  |
| 1-0340 |  | DEMO ROAD - COMMON EX - TYPE 2, SPRING & 9TH NW CORNER | 1d | 2023-09-14 | 2023-09-14 | 1-0338, 1-0324 SS |  | -113d | start on or after 2023-09-14 |
| 1-0341 |  | TRENCH CONDUIT, SPRING AND 9TH NW CORNER | 1d | 2023-09-14 | 2023-09-14 | 1-0340 SS |  | -113d |  |
| 1-0342 |  | ROADWAY PAVING, SPRING AND 9TH NW CORNER | 1d | 2023-09-15 | 2023-09-15 | 1-0341 |  | -113d |  |
|  | 20 | **SPRING AND 9TH NE CORNER** |  | 2023-09-18 | 2023-09-19 |  |  |  |  |
| 1-0344 |  | DEMO ROAD - COMMON EX - TYPE 2, SPRING & 9TH NE CORNER | 1d | 2023-09-18 | 2023-09-18 | 1-0342 |  | -113d |  |
| 1-0345 |  | TRENCH CONDUIT, SPRING AND 9TH NE CORNER | 1d | 2023-09-18 | 2023-09-18 | 1-0344 SS |  | -113d |  |
| 1-0346 |  | ROADWAY PAVING, SPRING AND 9TH NE CORNER | 1d | 2023-09-19 | 2023-09-19 | 1-0345 |  | -113d |  |
|  | 7 | **MADISON AND 1ST** |  | 2022-04-12 | 2023-06-11 |  |  |  |  |
| PCO212.01 |  | DSC 151-Sidwalk Remove Thickness SW 1st and Mad | 5d | 2022-04-12 A | 2022-04-13 A |  | 100% |  |  |
| PCO214.01 |  | DSC 152-SCL Vault Sw Corner 1st and Mad | 5d | 2022-04-12 A | 2022-11-05 A |  | 100% |  |  |
| PCO215.01 |  | DSC 153-SW Corner 1st and Mad SDOT core into SCL | 5d | 2022-04-14 A | 2022-04-19 A |  | 100% |  |  |
| PCO241.01 |  | DSC 175-Unknown Conduit 1st and Madison South Side | 5d | 2022-05-10 A | 2022-05-11 A |  | 100% |  |  |
| PCO681.01 |  | DSC 483-UNKNOWN DUCT BANK CONFLICT | 5d | 2023-05-13 A | 2023-05-13 A |  | 100% |  |  |
| PCO683.01 |  | DSC 485-EXISTING DUCT BANK CONFLICT WITH SCL SERVICE | 5d | 2023-05-13 A | 2023-05-13 A |  | 100% |  |  |
| PCO685.01 |  | DSC 487-UKNOWN UNLOCATED UTILITIES CONFLICT WITH SCL SERVICE | 5d | 2023-05-13 A | 2023-05-13 A |  | 100% |  |  |
| PCO686.01 |  | DSC 488-UKNOWN UNLOCATED STEEL PIPE CONFLICT | 5d | 2023-05-13 A | 2023-05-13 A |  | 100% |  |  |
| PCO690.01 |  | DSC 492-UNKNOWN UNLOCATED CLAY PIPE | 5d | 2023-05-13 A | 2023-05-14 A |  | 100% |  |  |
| 1-0292 |  | TRENCH CONDUIT, MAD AND 1ST | 2d | 2023-05-13 A | 2023-05-14 A | 1-0284 | 100% |  |  |
| PCO687.01 |  | DSC 489-UNKNOWN STEEL PIPE REMOVED | 5d | 2023-05-14 A | 2023-05-14 A |  | 100% |  |  |
| PCO688.01 |  | DSC 490-2 UNKNOWN CONDUITS SCL SERVICE | 5d | 2023-05-14 A | 2023-05-14 A |  | 100% |  |  |
| PCO689.01 |  | DSC 491-CDF ENCASED WATERLINE CONFLICT WITH SCL SERVICE | 5d | 2023-05-14 A | 2023-05-28 A |  | 100% |  |  |
| 1-3190 |  | INSTALL CONDUIT, MAD AND 1ST | 2d | 2023-05-20 A | 2023-05-20 A | 1-0292 | 100% |  |  |
| 1-2965 |  | COMPLETE CONDUIT AFTER DSC 491 | 1d | 2023-06-03 A | 2023-06-03 A | PCO689.01, PCO688.01, PCO687.01, PCO686.01, PCO685.01, PCO683.01, PCO681.01, 1-3190 | 100% |  |  |
| 1-2970 |  | CDF BACKFILL, MAD AND 1ST | 1d | 2023-06-03 A | 2023-06-03 A | 1-2965 SS | 100% |  |  |
| 1-0293 |  | DEMO ROAD - COMMON EX - TYPE 2, MAD & 1ST | 2d | 2023-06-10 A | 2023-06-11 A | 1-0292, PCO690.01, 1-2970 FS+1d | 100% |  |  |
| 1-0294 |  | ROADWAY PAVING, MAD AND 1ST | 2d | 2023-06-10 A | 2023-06-11 A | 1-0293 SS | 100% |  |  |
|  | 26 | **MADISON AND 2ND SOUTH SIDE** |  | 2022-06-18 | 2022-06-18 |  |  |  |  |
| 1-0368 |  | DEMO ROAD - COMMON EX - TYPE 2, MAD & 2ND SOUTH SIDE | 1d | 2022-06-18 A | 2022-06-18 A | 1-0214, 1-0366 | 100% |  |  |
| 1-0369 |  | TRENCH CONDUIT, MAD & 2ND SOUTH SIDE | 1d | 2022-06-18 A | 2022-06-18 A | 1-0368 SS | 100% |  |  |
| 1-0370 |  | ROADWAY PAVING, MAD & 2ND SOUTH SIDE | 1d | 2022-06-18 A | 2022-06-18 A | 1-0369 | 100% |  |  |
|  | 6 | **MADISON AND 3RD NORTH SIDE** |  | 2022-05-06 | 2022-05-07 |  |  |  |  |
| 1-0295 |  | ELECTRICAL VAULT WORK, MAD & 3ND NORTH SIDE | 1d | 2022-05-06 A | 2022-05-06 A | 1-SCL-1200 | 100% |  |  |
| 1-0288 |  | DEMO ROAD - COMMON EX - TYPE 2, MAD & 3ND NORTH SIDE | 1d | 2022-05-07 A | 2022-05-07 A | 1-0121, 1-0291 | 100% |  |  |
| 1-0289 |  | TRENCH CONDUIT, MAD & 3ND NORTH SIDE | 1d | 2022-05-07 A | 2022-05-07 A | 1-0288 SS | 100% |  |  |

| ID | WBS | Task | Duration | Start | Finish | Predecessors | Complete | Total float |
| --- | --- | --- | --- | --- | --- | --- | --- | --- |
| 1-0290 |  | ROADWAY PAVING, MAD & 3ND NORTH SIDE | 1d | 2022-05-07 A | 2022-05-07 A | 1-0289 SS, 1-0295 | 100% |  |
|  | 27 | **MADISON AND 4TH SOUTH SIDE** |  | 2022-10-22 | 2022-10-23 |  |  |  |
| 1-0372 |  | DEMO ROAD - COMMON EX - TYPE 2, MAD & 4TH SOUTH SIDE | 1d | 2022-10-22 A | 2022-10-22 A | 1-0370 | 100% |  |
| 1-0373 |  | TRENCH CONDUIT, MAD & 4TH SOUTH SIDE | 1d | 2022-10-22 A | 2022-10-22 A | 1-0372 SS | 100% |  |
| 1-0374 |  | ROADWAY PAVING, MAD & 4TH SOUTH SIDE | 1d | 2022-10-23 A | 2022-10-23 A | 1-0373 | 100% |  |
|  | 8 | **MADISON AND 5TH NORTH SIDE** |  | 2022-09-24 | 2022-09-25 |  |  |  |
| 1-0296 |  | DEMO ROAD - COMMON EX - TYPE 2, MAD & 5TH NORTH SIDE | 1d | 2022-09-24 A | 2022-09-24 A | 1-0290, 1-0129 | 100% |  |
| 1-0297 |  | TRENCH CONDUIT, MAD & 5TH NORTH SIDE | 1d | 2022-09-24 A | 2022-09-24 A | 1-0296 SS | 100% |  |
| 1-0298 |  | ROADWAY PAVING, MAD & 5TH NORTH SIDE | 1d | 2022-09-24 A | 2022-09-25 A | 1-0297 | 100% |  |
|  | 28 | **MADISON AND 5TH SOUTH SIDE** |  | 2022-10-10 | 2022-11-20 |  |  |  |
| PCO411.01 |  | DSC 301-unknown unlocated conduit 5th and madison | 5d | 2022-10-10 A | 2022-10-30 A |  | 100% |  |
| PCO441.01 |  | DSC 322-Conduit Crossing Conflicts 5th and Madison | 5d | 2022-10-31 A | 2022-11-03 A |  | 100% |  |
| PCO469.01 |  | DSC 341-Void under road at 5th and madison | 5d | 2022-11-18 A | 2022-11-19 A |  | 100% |  |
| PCO470.01 |  | DSC 342-Concrete 20" thick at 5th and Madison | 5d | 2022-11-18 A | 2022-11-19 A |  | 100% |  |
| 1-0376 |  | DEMO ROAD - COMMON EX - TYPE 2, MAD & 5TH SOUTH SIDE | 1d | 2022-11-19 A | 2022-11-19 A | 1-0298 | 100% |  |
| 1-0377 |  | TRENCH CONDUIT, MAD & 5TH SOUTH SIDE | 1d | 2022-11-19 A | 2022-11-19 A | 1-0376 SS | 100% |  |
| 1-0378 |  | ROADWAY PAVING, MAD & 5TH SOUTH SIDE | 1d | 2022-11-20 A | 2022-11-20 A | 1-0377 | 100% |  |
|  | 29 | **MADISON AND 6TH SOUTH SIDE** |  | 2023-06-03 | 2023-08-19 |  |  |  |
| 1-0380 |  | DEMO ROAD - COMMON EX - TYPE 2, MAD & 6TH SOUTH SIDE | 1d | 2023-06-03 A | 2023-06-03 A | 1-0378, 1-0302 | 100% |  |
| 1-0381 |  | TRENCH CONDUIT, MAD & 6TH SOUTH SIDE | 1d | 2023-06-03 A | 2023-06-03 A | 1-0380 SS | 100% |  |
| 1-0382 |  | ROADWAY PAVING, MAD & 6TH SOUTH SIDE | 1d | 2023-08-19 | 2023-08-19 | 1-0381 FS+9d |  | 29d |
|  | 9 | **MADISON AND 8TH NORTH SIDE** |  | 2023-04-17 | 2023-05-09 |  |  |  |
| 1-0300 |  | DEMO ROAD - COMMON EX - TYPE 2, MAD & 8TH NORTH SIDE | 1d | 2023-04-17 A | 2023-04-18 A | 1-0133, 1-0298, 1-0067, 1-0282, 1-0374 | 100% |  |
| 1-0301 |  | TRENCH CONDUIT PRIOR TO DSC, MAD & 8TH NORTH SIDE | 1d | 2023-04-19 A | 2023-04-20 A | 1-0300 SS | 100% |  |
| PCO642.01 |  | DSC 452-CONDUIT CONFLICTS | 1d | 2023-04-21 A | 2023-04-21 A | 1-0301 | 100% |  |
| 1-2770 |  | TRENCH CONDUIT AFTER DSC, MAD & 8TH NORTH SIDE | 1d | 2023-04-24 A | 2023-04-24 A | PCO642.01 | 100% |  |
| 1-2775 |  | INSTALL CONDUIT, MAD & 8TH NORTH SIDE | 1d | 2023-04-25 A | 2023-04-28 A | 1-2770 | 100% |  |
| 1-0302 |  | ROADWAY PAVING, MAD & 8TH NORTH SIDE | 1d | 2023-05-04 A | 2023-05-09 A | 1-0301, 1-2775 | 100% |  |
|  | 30 | **MADISON AND 8TH SOUTH SIDE** |  | 2023-02-27 | 2023-03-15 |  |  |  |
| 1-0384 |  | DEMO ROAD - COMMON EX - TYPE 2, MAD & 8TH SOUTH SIDE | 1d | 2023-02-27 A | 2023-02-27 A | 1-0376 | 100% |  |
| 1-0385 |  | TRENCH CONDUIT, MAD & 8TH SOUTH SIDE | 1d | 2023-02-27 A | 2023-02-28 A | 1-0384 SS | 100% |  |
| 1-0386 |  | ROADWAY PAVING, MAD & 8TH SOUTH SIDE | 1d | 2023-03-10 A | 2023-03-15 A | 1-0385 | 100% |  |
|  | 11 | **MADISON AND 9TH NE CORNER** |  | 2022-04-30 | 2022-05-01 |  |  |  |
| 1-0308 |  | DEMO ROAD - COMMON EX - TYPE 2, MAD & 9TH NE CORNER | 1d | 2022-04-30 A | 2022-04-30 A | 1-0306 | 100% |  |
| 1-0309 |  | TRENCH CONDUIT, MAD & 9TH NE CORNER | 1d | 2022-04-30 A | 2022-04-30 A | 1-0308 SS | 100% |  |
| 1-0310 |  | ROADWAY PAVING, MAD & 9TH NE CORNER | 1d | 2022-05-01 A | 2022-05-01 A | 1-0309 | 100% |  |
|  | 10 | **MADISON AND 9TH NW CORNER** |  | 2022-04-23 | 2022-04-24 |  |  |  |
| 1-0304 |  | DEMO ROAD - COMMON EX - TYPE 2, MAD & 9TH NW CORNER | 1d | 2022-04-23 A | 2022-04-23 A | 1-0136 | 100% |  |
| 1-0305 |  | TRENCH CONDUIT, MAD & 9TH NW CORNER | 1d | 2022-04-23 A | 2022-04-23 A | 1-0304 SS | 100% |  |
| 1-0306 |  | ROADWAY PAVING, MAD & 9TH NW CORNER | 1d | 2022-04-24 A | 2022-04-24 A | 1-0305 | 100% |  |
|  | 31 | **MADISON AND 9TH SW CORNER** |  | 2023-03-11 | 2023-03-18 |  |  |  |
| 1-0388 |  | DEMO ROAD - COMMON EX - TYPE 2, MAD & 9TH SW CORNER | 1d | 2023-03-11 A | 2023-03-11 A | 1-0384 | 100% |  |
| 1-0389 |  | TRENCH CONDUIT, MAD & 9TH SW CORNER | 1d | 2023-03-11 A | 2023-03-11 A | 1-0388 SS | 100% |  |
| 1-0390 |  | ROADWAY PAVING, MAD & 9TH SW CORNER | 1d | 2023-03-18 A | 2023-03-18 A | 1-0389 | 100% |  |
|  | 32 | **MADISON AND 9TH SE CORNER** |  | 2023-03-11 | 2023-03-18 |  |  |  |
| 1-0392 |  | DEMO ROAD - COMMON EX - TYPE 2, MAD & 9TH SE CORNER | 1d | 2023-03-11 A | 2023-03-11 A | 1-0390 | 100% |  |
| 1-0393 |  | TRENCH CONDUIT, MAD & 9TH SE CORNER | 1d | 2023-03-11 A | 2023-03-11 A | 1-0392 SS | 100% |  |
| 1-0394 |  | ROADWAY PAVING, MAD & 9TH SE CORNER | 1d | 2023-03-18 A | 2023-03-18 A | 1-0393 | 100% |  |
|  | 21 | **MADISON AND TERRY NORTH SIDE** |  | 2022-09-20 | 2022-09-26 |  |  |  |
| 1-0348 |  | DEMO ROAD - COMMON EX - TYPE 2, MAD & TERRY NORTH SIDE | 1d | 2022-09-20 A | 2022-09-21 A | 1-0183 | 100% |  |
| 1-0349 |  | TRENCH CONDUIT, MAD & TERRY NORTH SIDE | 1d | 2022-09-20 A | 2022-09-21 A | 1-0348 SS | 100% |  |
| 1-0350 |  | ROADWAY PAVING, MAD & TERRY NORTH SIDE | 1d | 2022-09-22 A | 2022-09-26 A | 1-0349 | 100% |  |
|  | 33 | **MADISON AND TERRY SOUTH SIDE** |  | 2022-06-20 | 2022-07-11 |  |  |  |
| 1-0396 |  | DEMO ROAD - COMMON EX - TYPE 2, MAD & TERRY SOUTH SIDE | 1d | 2022-06-20 A | 2022-07-05 A | 1-0238 | 100% |  |
| 1-0397 |  | TRENCH CONDUIT, MAD & TERRY SOUTH SIDE | 1d | 2022-06-20 A | 2022-07-05 A | 1-0396 SS | 100% |  |
| 1-0398 |  | ROADWAY PAVING, MAD & TERRY SOUTH SIDE | 1d | 2022-07-06 A | 2022-07-11 A | 1-0397 | 100% |  |
|  | 22 | **MADISON AND BOREN NORTH SIDE** |  | 2023-01-14 | 2023-06-04 |  |  |  |
| 1-0353 |  | TRENCH CONDUIT, MAD & BOREN NORTH SIDE | 1d | 2023-01-14 A | 2023-01-14 A | 1-0398 | 100% |  |
| 1-0352 |  | DEMO ROAD - COMMON EX - TYPE 2, MAD & BOREN NORTH SIDE | 1d | 2023-06-03 A | 2023-06-03 A | 1-0190, 1-0350 | 100% |  |
| 1-0354 |  | ROADWAY PAVING, MAD & BOREN NORTH SIDE | 1d | 2023-06-04 A | 2023-06-04 A | 1-0353, 1-0352 | 100% |  |
|  | 39 | **MADISON AND BOREN WEST SIDE** |  | 2023-01-28 | 2023-08-20 |  |  |  |
| 1-2980 |  | TRENCH CONDUIT, MAD & BOREN WEST SIDE | 1d | 2023-01-28 A | 2023-01-28 A | 1-0353 | 100% |  |
| 1-2975 |  | DEMO ROAD - COMMON EX - TYPE 2, MAD & BOREN WEST SIDE | 1d | 2023-08-20 | 2023-08-20 | 1-0380, 1-0382 |  | 102d |
| 1-2985 |  | ROADWAY PAVING, MAD & BOREN WEST SIDE | 1d | 2023-08-20 | 2023-08-20 | 1-2980, 1-2975 SS, 1-3000 SS, 1-0402, 1-0382 |  | 102d |
|  | 40 | **MADISON AND BOREN EAST SIDE** |  | 2023-01-14 | 2023-06-04 |  |  |  |
| 1-2995 |  | TRENCH CONDUIT, MAD & BOREN EAST SIDE | 1d | 2023-01-14 A | 2023-01-14 A | 1-0353 SS | 100% |  |
| 1-2990 |  | DEMO ROAD - COMMON EX - TYPE 2, MAD & BOREN EAST SIDE | 1d | 2023-05-20 A | 2023-06-04 A | 1-0348 | 100% |  |
| 1-3000 |  | ROADWAY PAVING, MAD & BOREN EAST SIDE | 1d | 2023-05-20 A | 2023-06-04 A | 1-2995, 1-2990 SS | 100% |  |
| PCO700.01 |  | DSC 502-ABANDONED WATERLINE CONFLICT | 1d | 2023-05-23 A | 2023-05-24 A |  | 100% |  |
| PCO701.01 |  | DSC 503-UNKNOWN UNLOCATED DUCTBANK CONFLICT | 1d | 2023-05-24 A | 2023-05-25 A |  | 100% |  |

| ID | WBS | Task | Duration | Start | Finish | Predecessors | Complete | Total float |
| --- | --- | --- | --- | --- | --- | --- | --- | --- |
|  | 34 | **MADISON AND BOREN SOUTH SIDE** |  | 2023-01-28 | 2023-06-11 |  |  |  |
| 1-0401 |  | TRENCH CONDUIT, MAD & BOREN SOUTH SIDE | 1d | 2023-01-28 A | 2023-01-28 A | 1-0353 | 100% |  |
| 1-0400 |  | DEMO ROAD - COMMON EX - TYPE 2, MAD & BOREN SOUTH SIDE | 1d | 2023-06-10 A | 2023-06-10 A | 1-0245, 1-0398, 1-0354 | 100% |  |
| 1-0402 |  | ROADWAY PAVING, MAD & BOREN SOUTH SIDE | 1d | 2023-06-11 A | 2023-06-11 A | 1-0401, 1-0400 | 100% |  |
|  | 23 | **MADISON AND MINOR NORTH SIDE** |  | 2022-09-22 | 2022-09-28 |  |  |  |
| 1-0356 |  | DEMO ROAD - COMMON EX - TYPE 2, MAD & MINOR NORTH SIDE | 1d | 2022-09-22 A | 2022-09-23 A | 1-0195 | 100% |  |
| 1-0357 |  | TRENCH CONDUIT, MAD & MINOR NORTH SIDE | 1d | 2022-09-22 A | 2022-09-23 A | 1-0356 SS | 100% |  |
| 1-0358 |  | ROADWAY PAVING, MAD & MINOR NORTH SIDE | 1d | 2022-09-26 A | 2022-09-28 A | 1-0357 | 100% |  |
|  | 35 | **MADISON AND MINOR SOUTH SIDE** |  | 2022-08-13 | 2022-08-21 |  |  |  |
| 1-0405 |  | TRENCH CONDUIT, MAD & MINOR SOUTH SIDE | 1d | 2022-08-13 A | 2022-08-13 A | 1-0274 | 100% |  |
| 1-0404 |  | DEMO ROAD - COMMON EX - TYPE 2, MAD & MINOR SOUTH SIDE | 1d | 2022-08-20 A | 2022-08-20 A | 1-0405 | 100% |  |
| 1-0406 |  | ROADWAY PAVING, MAD & MINOR SOUTH SIDE | 1d | 2022-08-21 A | 2022-08-21 A | 1-0405, 1-0404 | 100% |  |
|  | 24 | **MADISON AND SUMMIT NORTH SIDE** |  | 2022-10-15 | 2022-11-11 |  |  |  |
| PCO421.01 |  | DSC 308-Sinkhole at Summitt | 5d | 2022-10-15 A | 2022-10-18 A |  | 100% |  |
| 1-0360 |  | DEMO ROAD - COMMON EX - TYPE 2, MAD & SUMMIT NORTH SIDE | 1d | 2022-10-17 A | 2022-10-18 A | 1-0202, 1-0358 | 100% |  |
| 1-0361 |  | TRENCH CONDUIT, MAD & SUMMIT NORTH SIDE | 1d | 2022-10-19 A | 2022-10-20 A | 1-0360 SS | 100% |  |
| PCO435.01 |  | DSC 317-SCL Conduit Conflict with Waterline North Summit | 5d | 2022-10-25 A | 2022-10-27 A |  | 100% |  |
| PCO436.01 |  | DSC 318-Unknown unlocated conduit Summit North Side | 5d | 2022-10-25 A | 2022-10-26 A |  | 100% |  |
| 1-0362 |  | ROADWAY PAVING, MAD & SUMMIT NORTH SIDE | 1d | 2022-11-08 A | 2022-11-11 A | 1-0361 | 100% |  |
|  | 36 | **MADISON AND SUMMIT SW CORNER** |  | 2022-12-04 | 2022-12-04 |  |  |  |
| 1-0408 |  | DEMO ROAD - COMMON EX - TYPE 2, MAD & SUMMIT SW CORNER | 1d | 2022-12-04 A | 2022-12-04 A | 1-0406, 1-0362 | 100% |  |
| 1-0409 |  | TRENCH CONDUIT, MAD & SUMMIT SW CORNER | 1d | 2022-12-04 A | 2022-12-04 A | 1-0408 SS | 100% |  |
| 1-0410 |  | ROADWAY PAVING, MAD & SUMMIT SW CORNER | 1d | 2022-12-04 A | 2022-12-04 A | 1-0409 | 100% |  |
|  | 37 | **MADISON AND SUMMIT SE CORNER** |  | 2023-01-07 | 2023-01-08 |  |  |  |
| 1-0412 |  | DEMO ROAD - COMMON EX - TYPE 2, MAD & SUMMIT SE CORNER | 1d | 2023-01-07 A | 2023-01-07 A | 1-0410 | 100% |  |
| 1-0413 |  | TRENCH CONDUIT, MAD & SUMMIT SE CORNER | 1d | 2023-01-07 A | 2023-01-07 A | 1-0412 | 100% |  |
| 1-0414 |  | ROADWAY PAVING, MAD & SUMMIT SE CORNER | 1d | 2023-01-08 A | 2023-01-08 A | 1-0413 | 100% |  |
|  | 25 | **MADISON AND BOYLSTON NORTH SIDE** |  | 2022-10-01 | 2022-10-02 |  |  |  |
| 1-0364 |  | DEMO ROAD - COMMON EX - TYPE 2, MAD & BOYLSTON NORTH SIDE | 1d | 2022-10-01 A | 2022-10-01 A | 1-0406 | 100% |  |
| 1-0365 |  | TRENCH CONDUIT, MAD & BOYLSTON NORTH SIDE | 1d | 2022-10-01 A | 2022-10-01 A | 1-0364 SS | 100% |  |
| 1-0366 |  | ROADWAY PAVING, MAD & BOYLSTON NORTH SIDE | 1d | 2022-10-02 A | 2022-10-02 A | 1-0365 | 100% |  |
|  | 38 | **MADISON AND BOYLSTON SOUTH SIDE** |  | 2023-04-04 | 2023-06-03 |  |  |  |
| 1-0416 |  | DEMO ROAD - COMMON EX - TYPE 2, MAD & BOYLSTON SOUTH SIDE | 1d | 2023-04-04 A | 2023-04-04 A | 1-0414, 1-0394 | 100% |  |
| 1-0418 |  | ROADWAY PAVING, MAD & BOYLSTON SOUTH SIDE | 1d | 2023-05-19 A | 2023-06-03 A | 1-0416 | 100% |  |
|  | 7 | **POLE FOUNDATIONS** |  | 2022-05-23 | 2023-09-11 |  |  |  |
| 1-0423 |  | MAD 6TH TO BROADWAY POLE FOUNDATIONS | 20d | 2022-05-23 A | 2022-05-24 A | PSR-0004 | 100% |  |
| 1-0424 |  | 9TH AVE - 8 EACH, POLE FOUNDATIONS | 16d | 2022-05-23 A | 2022-06-24 A | 1-0055 | 100% |  |
| 1-0422 |  | SPRING 6TH TO 9TH - 5 EACH, POLE FOUNDATIONS | 10d | 2022-05-27 A | 2022-06-03 A | 1-0051 | 100% |  |
| 1-0420 |  | SPRING 1ST TO 6TH 1 EACH, POLE FOUNDATIONS | 2d | 2022-07-27 A | 2022-07-28 A | 1-0047, MS-2571, OCS-0037 | 100% |  |
| 1-0421 |  | MAD 1ST TO 6TH - 3 EACH, POLE FOUNDATIONS | 6d | 2022-07-29 A | 2022-08-03 A | 1-0049, 1-0420, 1-0423 | 100% |  |
| 1-0453 |  | MAD 6TH TO BROADWAY POLE FOUNDATIONS (30 ea.) | 5d | 2022-10-10 A | 2023-09-11 | 1-0423 |  | -105d |
| PCO643.01 |  | DSC 453-TIE BACK AT BROADWAY FOUNDATION | 20d | 2023-04-22 A | 2023-04-24 A |  | 100% |  |
|  | 8 | **SIDEWALKS** |  | 2021-11-01 | 2023-10-30 |  |  |  |
|  | 73 | **MID BLOCK TERRY TO BOREN TO BOREN SOUTH SIDE** |  | 2023-07-12 | 2023-09-07 |  |  |  |
| 1-7000 |  | REM SIDEWALK | 1d | 2023-07-12 A | 2023-07-12 A | 1-3215 | 100% |  |
| 1-7005 |  | TRENCH CONDUIT | 2d | 2023-07-13 A | 2023-07-14 A | 1-7000 | 100% |  |
| 1-7010 |  | DSC 562 SWC BOREN MULTIPLE ELECTRICAL CONFLICTS | 1d | 2023-07-14 A | 2023-07-14 A | 1-7005 | 100% |  |
| 1-7015 |  | DSC 563 SWC BOREN DUCTBANK & FDN CONFLICT w/CONDUIT | 1d | 2023-07-14 A | 2023-07-14 A | 1-7010 SS | 100% |  |
| 1-7020 |  | INST CONDUIT | 22d | 2023-07-17 A | 2023-08-15 | 1-7015 | 91% | -102d |
| 1-7025 |  | GRADE SIDEWALK | 2d | 2023-08-16 | 2023-08-17 | 1-7020 |  | -102d |
| 1-7030 |  | POUR SIDEWALK | 4d | 2023-08-18 | 2023-08-23 | 1-7025 |  | -102d |
| 1-7035 |  | Bore Conduit | 5d | 2023-08-24 | 2023-08-30 | 1-7030 |  | -102d |
| 1-7040 |  | Finish Sidewalk After Bore | 5d | 2023-08-31 | 2023-09-07 | 1-7035 |  | -102d |
|  | 2 | **SPRING 1ST TO 2ND SOUTH SIDE** |  | 2021-11-16 | 2022-04-25 |  |  |  |
| 1-0438 |  | REM SIDEWALK, SPRING 1ST TO 2ND SOUTH SIDE | 2d | 2021-11-16 A | 2021-11-17 A | 1-0109 | 100% |  |
| 1-0439 |  | TRENCH CONDUIT, SPRING 1ST TO 2ND SOUTH SIDE | 2d | 2021-11-16 A | 2021-11-17 A | 1-0438 SS | 100% |  |
| 1-0440 |  | INST CONDUIT, SPRING 1ST TO 2ND SOUTH SIDE | 2d | 2021-11-16 A | 2021-11-17 A | 1-0439 SS | 100% |  |
| PCO043.01 |  | DSC 29-Conduit Conflict ITS SE Corner Spring and 2nd | 5d | 2021-11-18 A | 2021-12-02 A |  | 100% |  |
| 1-0441 |  | GRADE SIDEWALK, SPRING 1ST TO 2ND SOUTH SIDE | 1d | 2021-11-18 A | 2021-11-18 A | 1-0440 | 100% |  |
| 1-0443 |  | POUR SIDEWALK, SPRING 1ST TO 2ND SOUTH SIDE | 3d | 2021-11-19 A | 2021-11-19 A | PMP-0021, 1-0441 | 100% |  |
| 1-0442 |  | POUR DRIVEWAY, SPRING 1ST TO 2ND SOUTH SIDE | 1d | 2022-04-25 A | 2022-04-25 A | 1-0441, 1-0443, MS-2571 | 100% |  |
|  | 4 | **DRIVEWAYS SPRING 2ND TO 3RD SOUTH SIDE** |  | 2022-03-25 | 2022-05-14 |  |  |  |
| PCO181.01 |  | DSC 127-Vault and ductbank conflict with paving Spring 2nd to 3rd Alley | 5d | 2022-03-25 A | 2022-05-05 A |  | 100% |  |
| 1-0454 |  | REM & GRADE DRIVEWAYS, DRIVEWAYS SPRING 2ND TO 3RD SOUTH SIDE | 1d | 2022-05-14 A | 2022-05-14 A | 1-0447, MS-2571 | 100% |  |
| 1-0455 |  | POUR DRIVEWAYS, DRIVEWAYS SPRING 2ND TO 3RD SOUTH SIDE | 1d | 2022-05-14 A | 2022-05-14 A | 1-0454 SS | 100% |  |
|  | 3 | **SPRING 2ND TO 3RD SOUTH SIDE** |  | 2021-11-09 | 2022-06-10 |  |  |  |
| PCO027.01 |  | DSC 18-Type 6 conflict 3rd and Spring SW Corner | 5d | 2021-11-09 A | 2021-12-02 A |  | 100% |  |
| PCO029.01 |  | DSC 20-Shallow Inlet Spring and 2nd | 5d | 2021-11-09 A | 2021-11-10 A |  | 100% |  |
| PCO030.01 |  | DSC 21-Type 6 Conflict 3rd and Spring SW Corner II | 5d | 2021-11-10 A | 2021-12-03 A |  | 100% |  |
| 1-0445 |  | REM SIDEWALK, SPRING 2ND TO 3RD SOUTH SIDE | 1d | 2021-11-18 A | 2021-11-18 A | 1-0438 | 100% |  |

| ID | WBS | Task | Duration | Start | Finish | Predecessors | Complete |
| --- | --- | --- | --- | --- | --- | --- | --- |
| 1-0446 |  | TRENCH CONDUIT, SPRING 2ND TO 3RD SOUTH SIDE | 2d | 2021-11-19 A | 2021-11-22 A | 1-0445 | 100% |
| 1-0447 |  | INTALL CONDUIT, SPRING 2ND TO 3RD SOUTH SIDE | 2d | 2021-11-19 A | 2021-11-22 A | 1-0446 SS | 100% |
| PCO052.01 |  | DSC 33-ITS Conflict SE Spring and 2nd | 5d | 2021-11-23 A | 2021-11-30 A |  | 100% |
| 1-0448 |  | FORM FOUNDATIONS, SPRING 2ND TO 3RD SOUTH SIDE | 1d | 2022-05-16 A | 2022-05-16 A | 1-0446, 1-0443, MS-2571 | 100% |
| PCO252.01 |  | DSC 184-FM 124, V133-M-007 Vault Riser Conflict | 5d | 2022-05-18 A | 2022-05-22 A |  | 100% |
| PCO253.01 |  | DSC 185-3rd & Spring Bus Foundation Conflicts | 5d | 2022-05-19 A | 2022-05-29 A |  | 100% |
| 1-0450 |  | GRADE SIDEWALK, SPRING 2ND TO 3RD SOUTH SIDE | 1d | 2022-05-31 A | 2022-05-31 A | 1-0449 | 100% |
| 1-0451 |  | POUR SIDEWALK, SPRING 2ND TO 3RD SOUTH SIDE | 5d | 2022-06-01 A | 2022-06-07 A | 1-0450, 1-0436 | 100% |
| 1-0449 |  | POUR FOUNDATIONS, SPRING 2ND TO 3RD SOUTH SIDE | 2d | 2022-06-06 A | 2022-06-07 A | 1-0447, 1-0448 | 100% |
| 1-0460 |  | INSTALL WHEEL GUIDES | 1d | 2022-06-08 A | 2022-06-08 A | 1-0451 | 100% |
| 1-0452 |  | POUR STATION STEM WALL, SPRING 2ND TO 3RD SOUTH SIDE | 1d | 2022-06-10 A | 2022-06-10 A | 1-0451, 1-0442, 1-0460 FF | 100% |
|  | 23 | **SPRING AND 3RD NW CORNER** |  | 2022-11-01 | 2023-01-27 |  |  |
| PCO445.01 |  | DSC 325-Reinforced Sidewalk 3rd & Spring | 5d | 2022-11-01 A | 2022-11-03 A |  | 100% |
| 1-0561 |  | REM SIDEWALK, SPRING & 3RD NW CORNER | 1d | 2022-11-01 A | 2022-11-01 A | 1-0330 | 100% |
| PCO447.01 |  | DSC 327-3rd & Spring NWC CDF Duct Bank Conflict | 5d | 2022-11-02 A | 2023-01-27 A |  | 100% |
| PCO449.01 |  | DSC 328-3rd & Spring NWC Conduit Conflicts | 5d | 2022-11-03 A | 2022-11-08 A |  | 100% |
| 1-0562 |  | INST CONDUIT, SPRING & 3RD NW CORNER | 1d | 2022-11-03 A | 2022-11-22 A | 1-0561 | 100% |
| PCO455.01 |  | DSC 332-NW 3rd and Spring conduit conflicts | 5d | 2022-11-08 A | 2022-11-10 A |  | 100% |
| PCO457.01 |  | DSC 334-existing broken conduit 3rd and Spring | 5d | 2022-11-09 A | 2022-11-11 A |  | 100% |
| PCO465.01 |  | DSC 337-Type 5 HH elevation conflict with curb ramp | 5d | 2022-11-16 A | 2022-11-19 A |  | 100% |
| 1-0563 |  | POUR CURB RAMP, SPRING AND 3RD NW CORNER | 1d | 2022-11-23 A | 2022-11-23 A | 1-0562 | 100% |
| 1-0564 |  | POUR SIDEWALKS, SPRING AND 3RD NW CORNER | 1d | 2022-11-28 A | 2022-11-30 A | 1-0563 | 100% |
|  | 5 | **SPRING AND 3RD TO 4TH SOUTH SIDE** |  | 2022-08-31 | 2022-10-21 |  |  |
| 1-0457 |  | REM SIDEWALK & GRADE, SPRING & 3RD TO 4TH SOUTH SIDE | 2d | 2022-08-31 A | 2022-09-01 A | 1-0450 | 100% |
| 1-0458 |  | POUR CURB RAMPS, SPRING & 3RD TO 4TH SOUTH SIDE | 2d | 2022-09-02 A | 2022-09-06 A | 1-0457, 1-0421 | 100% |
| 1-0459 |  | POUR SIDEWALK, SPRING & 3RD TO 4TH SOUTH SIDE | 2d | 2022-09-07 A | 2022-09-08 A | 1-0458 | 100% |
| PCO414.01 |  | DSC 304-8" Sidewalk SW 4th and Spring | 5d | 2022-10-11 A | 2022-10-21 A |  | 100% |
|  | 6 | **SPRING 4TH TO 5TH SOUTH SIDE** |  | 2022-08-12 | 2023-05-31 |  |  |
| PCO348.01 |  | DSC 257-Spring 4th-5th, Bus Foundation Conflict | 5d | 2022-08-12 A | 2022-09-30 A |  | 100% |
| 1-0461 |  | REM SIDEWALK, SPRING 4TH TO 5TH SOUTH SIDE | 2d | 2022-08-12 A | 2022-08-19 A | 1-0422, 1-0117, 1-1190 | 100% |
| 1-0464 |  | FORM FOUNDATIONS, SPRING 4TH TO 5TH SOUTH SIDE | 1d | 2022-08-17 A | 2022-08-17 A | 1-0452, 1-0455, 1-0463 | 100% |
| PCO354.01 |  | DSC 259-Type 5 Vault Conflicts 4th to 5th Spring | 5d | 2022-08-18 A | 2022-08-20 A |  | 100% |
| 1-0465 |  | POUR FOUNDATIONS, SPRING 4TH TO 5TH SOUTH SIDE | 2d | 2022-08-18 A | 2022-08-19 A | 1-0464 | 100% |
| 1-0462 |  | TRENCH CONDUIT, SPRING 4TH TO 5TH SOUTH SIDE | 2d | 2022-08-22 A | 2022-08-23 A | 1-0461 | 100% |
| 1-0463 |  | INSTALL CONDUIT, SPRING 4TH TO 5TH SOUTH SIDE | 2d | 2022-08-22 A | 2022-08-23 A | 1-0462 SS | 100% |
| 1-0467 |  | GRADE SIDEWALK, SPRING 4TH TO 5TH SOUTH SIDE | 1d | 2022-08-22 A | 2022-08-22 A | 1-0465 | 100% |
| 1-0469 |  | POUR STATION STEM WALL, SPRING 4TH TO 5TH SOUTH SIDE | 2d | 2022-08-22 A | 2022-08-23 A | 1-0463 | 100% |
| 1-0466 |  | POUR DRIVEWAY, SPRING 4TH TO 5TH SOUTH SIDE | 1d | 2022-08-24 A | 2022-09-02 A | 1-0465 | 100% |
| 1-0468 |  | POUR SIDEWALK, SPRING 4TH TO 5TH SOUTH SIDE | 4d | 2022-09-02 A | 2022-09-08 A | 1-0466, 1-0467 | 100% |
| 1-0484 |  | INSTALL WHEEL GUIDES | 1d | 2023-05-31 A | 2023-05-31 A | 1-0468, 1-0469 | 100% |
|  | 25 | **SPRING AND 4TH NW CORNER** |  | 2022-12-21 | 2023-02-26 |  |  |
| PCO495.01 |  | DSC 354-Prime NW 4th and Spring HH | 5d | 2022-12-21 A | 2023-02-20 A |  | 100% |
| PCO497.01 |  | DSC 355-SCL Vault Conflict NW 4th and Spring | 5d | 2022-12-27 A | 2022-12-28 A |  | 100% |
| PCO498.01 |  | DSC 356-Old Light pole base NW 4th and Spring | 5d | 2022-12-27 A | 2023-02-26 A |  | 100% |
| 1-0570 |  | REM SIDEWALK, SPRING & 4TH NW CORNER | 1d | 2022-12-27 A | 2022-12-27 A | 1-0568 | 100% |
| 1-1330 |  | CITY DELAY - SCL VAULT IN CONFLICT WITH SIDEWALK, SPRING & 4TH NW CORNER | 1d | 2022-12-27 A | 2023-02-16 A | 1-0570 | 100% |
| 1-0571 |  | POUR CURB RAMP, SPRING AND 4TH NW CORNER | 1d | 2023-02-17 A | 2023-02-17 A | 1-0570, 1-1330 | 100% |
| 1-0572 |  | POUR SIDEWALKS, SPRING AND 4TH NW CORNER | 1d | 2023-02-20 A | 2023-02-20 A | 1-0571 | 100% |
|  | 27 | **SPRING AND 5TH NE CORNER** |  | 2023-02-07 | 2023-02-24 |  |  |
| 1-0578 |  | REM SIDEWALK, SPRING & 5TH NE CORNER | 1d | 2023-02-07 A | 2023-02-07 A | 1-0576, 1-0517, 1-0572 | 100% |
| PCO557.01 |  | DSC 393-Existing Hydrant Leaking NE 5th and Spring | 5d | 2023-02-08 A | 2023-02-24 A |  | 100% |
| 1-1370 |  | CITY CAUSED DELAY - LEAKING HYDRANT | 1d | 2023-02-08 A | 2023-02-15 A | 1-0578 | 100% |
| 1-1375 |  | ADDITIONAL WORK - LEAKING HYDRANT | 1d | 2023-02-16 A | 2023-02-17 A | 1-1370 | 100% |
| 1-0579 |  | POUR CURB RAMP, SPRING AND 5TH NE CORNER | 1d | 2023-02-17 A | 2023-02-17 A | 1-0578, 1-1375, 1-1370 | 100% |
| 1-0580 |  | POUR SIDEWALKS, SPRING AND 5TH NE CORNER | 1d | 2023-02-21 A | 2023-02-22 A | 1-0579 | 100% |
|  | 26 | **SPRING AND 5TH NW CORNER** |  | 2023-01-25 | 2023-01-30 |  |  |
| 1-0574 |  | REM SIDEWALK, SPRING & 5TH NW CORNER | 1d | 2023-01-25 A | 2023-01-25 A | 1-0570 | 100% |
| 1-0575 |  | POUR CURB RAMP, SPRING AND 5TH NW CORNER | 1d | 2023-01-26 A | 2023-01-26 A | 1-0574 | 100% |
| 1-0576 |  | POUR SIDEWALKS, SPRING AND 5TH NW CORNER | 1d | 2023-01-27 A | 2023-01-30 A | 1-0575 | 100% |
|  | 7 | **SPRING 5TH TO 6TH** |  | 2022-12-19 | 2023-02-28 |  |  |
| 1-0471 |  | REM SIDEWALK & GRADE, SPRING 5TH TO 6TH | 2d | 2022-12-19 A | 2023-02-24 A | 1-0463 | 100% |
| 1-0472 |  | POUR SIDEWALK, SPRING 5TH TO 6TH | 4d | 2022-12-28 A | 2023-02-28 A | 1-0471 | 100% |
|  | 28 | **SPRING AND 6TH NW CORNER** |  | 2023-01-20 | 2023-01-24 |  |  |
| 1-0582 |  | REM SIDEWALK, SPRING & 6TH NW CORNER | 1d | 2023-01-20 A | 2023-01-20 A | 1-0472 | 100% |
| 1-0583 |  | POUR CURB RAMP, SPRING AND 6TH NW CORNER | 1d | 2023-01-23 A | 2023-01-23 A | 1-0582 | 100% |
| 1-0584 |  | POUR SIDEWALKS, SPRING AND 6TH NW CORNER | 1d | 2023-01-24 A | 2023-01-24 A | 1-0583 | 100% |
|  | 19 | **SPRING 7TH TO 8TH SOUTH SIDE** |  | 2022-10-13 | 2023-06-29 |  |  |
| 1-0540 |  | REM SIDEWALK, SPRING 7TH TO 8TH SOUTH SIDE | 2d | 2022-10-13 A | 2022-10-14 A | 1-0143 | 100% |
| 1-0541 |  | TRENCH CONDUIT, SPRING 7TH TO 8TH SOUTH SIDE | 2d | 2022-10-17 A | 2022-10-18 A | 1-0540 | 100% |
| 1-0542 |  | INST CONDUIT, SPRING 7TH TO 8TH SOUTH SIDE | 2d | 2022-10-17 A | 2022-10-18 A | 1-0541 SS | 100% |

| ID | WBS | Task | Duration | Start | Finish | Predecessors | Complete | Total float |
| --- | --- | --- | --- | --- | --- | --- | --- | --- |
| 1-0543 |  | FORM FOUNDATIONS, SPRING 7TH TO 8TH SOUTH SIDE | 1d | 2022-10-17 A | 2022-10-17 A | 1-0542 SS | 100% |  |
| 1-0544 |  | POUR FOUNDATIONS, SPRING 7TH TO 8TH SOUTH SIDE | 2d | 2022-10-18 A | 2022-10-19 A | 1-0543 | 100% |  |
| 1-0545 |  | GRADE SIDEWALK, SPRING 7TH TO 8TH SOUTH SIDE | 2d | 2022-10-20 A | 2022-10-21 A | 1-0544 | 100% |  |
| 1-0560 |  | INSTALL WHEEL GUIDES | 1d | 2022-10-23 A | 2022-10-23 A | 1-0545 | 100% |  |
| 1-0546 |  | POUR SIDEWALK, SPRING 7TH TO 8TH SOUTH SIDE | 4d | 2022-10-24 A | 2022-10-27 A | 1-0545, 1-0560 FF | 100% |  |
| 1-2820 |  | CITY CAUSED DELAY, SPRING 7TH TO 8TH SOUTH SIDE | 4d | 2022-10-28 A | 2023-05-05 A | 1-0546 | 100% |  |
| 1-2825 |  | TEMP LIGHTING, SPRING 7TH TO 8TH SOUTH SIDE | 6d | 2023-05-08 A | 2023-06-23 A | 1-2820 | 100% |  |
| 1-2830 |  | ELECTRICAL AFTER DELAY, SPRING 7TH TO 8TH SOUTH SIDE | 2d | 2023-06-26 A | 2023-06-27 A | 1-2825, 1-2820 | 100% |  |
| 1-2835 |  | SIDEWALK AFTER DELAY, SPRING 7TH TO 8TH SOUTH SIDE | 2d | 2023-06-28 A | 2023-06-29 A | 1-2830 | 100% |  |
|  | 29 | **SPRING AND 7TH NE CORNER** |  | 2023-01-04 | 2023-01-06 |  |  |  |
| 1-0586 |  | REM SIDEWALK, SPRING & 7TH NE CORNER | 1d | 2023-01-04 A | 2023-01-04 A | 1-0584 | 100% |  |
| 1-0587 |  | POUR CURB RAMP, SPRING AND 7TH NE CORNER | 1d | 2023-01-05 A | 2023-01-05 A | 1-0586 | 100% |  |
| 1-0588 |  | POUR SIDEWALKS, SPRING AND 7TH NE CORNER | 1d | 2023-01-06 A | 2023-01-06 A | 1-0587 | 100% |  |
|  | 30 | **SPRING AND 8TH NW CORNER** |  | 2023-01-09 | 2023-01-17 |  |  |  |
| 1-0590 |  | REM SIDEWALK, SPRING & 8TH NW CORNER | 1d | 2023-01-09 A | 2023-01-17 A | 1-0588 | 100% |  |
| 1-0591 |  | INST CONDUIT, SPRING & 8TH NW CORNER | 1d | 2023-01-10 A | 2023-01-10 A | 1-0590 | 100% |  |
| 1-0592 |  | POUR CURB RAMP, SPRING AND 8TH NW CORNER | 2d | 2023-01-11 A | 2023-01-12 A | 1-0591 | 100% |  |
| 1-0593 |  | POUR SIDEWALKS, SPRING AND 8TH NW CORNER | 2d | 2023-01-13 A | 2023-01-17 A | 1-0592 | 100% |  |
|  | 31 | **SPRING 8TH TO 9TH NORTH SIDE** |  | 2023-01-03 | 2023-02-17 |  |  |  |
| 1-0595 |  | REM SIDEWALK, SPRING 8TH TO 9TH NORTH SIDE | 2d | 2023-01-03 A | 2023-01-04 A | 1-0165 | 100% |  |
| 1-0596 |  | TRENCH CONDUIT, SPRING 8TH TO 9TH NORTH SIDE | 2d | 2023-01-05 A | 2023-01-06 A | 1-0595 | 100% |  |
| 1-1350 |  | OWNER CAUSED DELAY SEWER DISCHARGING INTO TRENCH, SPRING 8TH TO 9TH NORTH SIDE | 2d | 2023-01-09 A | 2023-01-13 A | 1-0596 | 100% |  |
| PCO505.01 |  | DSC 361-NEC 8th & Spring Public Sewage Discharge | 5d | 2023-01-10 A | 2023-01-11 A |  | 100% |  |
| PCO509.01 |  | DSC 364-Bike Lane Curbs Spring 8th-9th | 5d | 2023-01-11 A | 2023-02-17 A |  | 100% |  |
| 1-0597 |  | INST CONDUIT, SPRING 8TH TO 9TH NORTH SIDE | 2d | 2023-01-17 A | 2023-01-20 A | 1-0596 SS, 1-1350 | 100% |  |
| 1-1355 |  | OWNER CAUSED DELAY SCL INSPECTION SPRING 8TH TO 9TH NORTH SIDE | 2d | 2023-01-23 A | 2023-01-26 A | 1-0597 | 100% |  |
| 1-0598 |  | GRADE SIDEWALK, SPRING 8TH TO 9TH NORTH SIDE | 1d | 2023-01-27 A | 2023-01-27 A | 1-0597, 1-1355 | 100% |  |
| 1-0599 |  | POUR SIDEWALK, SPRING 8TH TO 9TH NORTH SIDE | 5d | 2023-01-30 A | 2023-02-07 A | 1-0598 | 100% |  |
| PCO553.01 |  | DSC 390-Prime Re-Work Conduits 7th and Mad and 9th and Spring | 5d | 2023-02-04 A | 2023-02-05 A |  | 100% |  |
|  | 59 | **SPRING 8TH TO 9TH SOUTH SIDE** |  | 2022-08-05 | 2022-10-08 |  |  |  |
| PCO340.01 |  | DSC 250-8th & Spring, CDF Ductbank Conflict | 5d | 2022-08-05 A | 2022-08-23 A |  | 100% |  |
| PCO341.01 |  | DSC 251-9th & Spring, SCL HH Size Conflict | 5d | 2022-08-05 A | 2022-08-27 A |  | 100% |  |
| PCO361.01 |  | DSC 262-FM 262 T5 Handhole conflict 8th and Spring | 5d | 2022-08-25 A | 2022-08-27 A |  | 100% |  |
| PCO362.01 |  | DSC 263-SW 8th and Spring wire note 13 not installed | 5d | 2022-08-25 A | 2022-09-02 A |  | 100% |  |
| PCO365.01 |  | DSC 266-Unknown Unlocated Gas line 8th and Spring | 5d | 2022-08-31 A | 2022-08-31 A |  | 100% |  |
| PCO366.01 |  | DSC 267-SCL Handhole Conflict 8th and Spring | 5d | 2022-09-01 A | 2022-09-22 A |  | 100% |  |
| 1-1235 |  | REM SIDEWALK, SPRING 8TH TO 9TH SOUTH SIDE | 2d | 2022-09-01 A | 2022-09-02 A | 1-0546 | 100% |  |
| 1-1240 |  | TRENCH CONDUIT, SPRING 8TH TO 9TH SOUTH SIDE | 2d | 2022-09-01 A | 2022-09-02 A | 1-1235 | 100% |  |
| 1-1245 |  | INST ELECTRICAL SERVICE CONNECTIONS, SPRING 8TH TO 9TH SOUTH SIDE | 10d | 2022-09-02 A | 2022-09-27 A | 1-1240 SS | 100% |  |
| 1-1260 |  | VAULT WORK, SPRING 8TH TO 9TH SOUTH SIDE | 10d | 2022-09-02 A | 2022-09-27 A | 1-1245 SS | 100% |  |
| 1-1265 |  | INSTALL FOUNDATION - P09-05, SPRING 8TH TO 9TH SOUTH SIDE | 10d | 2022-09-05 A | 2022-09-27 A | 1-1260 | 100% |  |
| PCO380.01 |  | DSC 277-Electrical Service Conflict SE 8th and Spring | 5d | 2022-09-09 A | 2022-09-16 A |  | 100% |  |
| PCO400.01 |  | DSC 292-Duct Bank conflict With Signal Controler SE 8th and Spring | 5d | 2022-09-19 A | 2022-09-27 A |  | 100% |  |
| PCO403.01 |  | DSC 294-Spring and 8th Prime DSC | 5d | 2022-09-22 A | 2022-10-08 A |  | 100% |  |
| 1-1250 |  | GRADE SIDEWALK, SPRING 8TH TO 9TH SOUTH SIDE | 1d | 2022-09-28 A | 2022-09-29 A | 1-1265 | 100% |  |
| 1-1255 |  | POUR RAMPS AND SIDEWALK, SPRING 8TH TO 9TH SOUTH SIDE | 4d | 2022-09-30 A | 2022-10-05 A | 1-1250, 1-1155 | 100% |  |
|  | 8 | **SPRING AND 6TH SE CORNER 1-5 ON-RAMP** |  | 2023-04-06 | 2023-05-08 |  |  |  |
| 1-0474 |  | REM SIDEWALK & GRADE, SPRING & 6TH SE CORNER 1-5 ON-RAMP | 1d | 2023-04-06 A | 2023-04-06 A | 1-0467, 1-0459, 1-1255, 1-0580 | 100% |  |
| 1-3145 |  | DELAY AWAITING SUBMITTAL RETURNS | 1d | 2023-04-07 A | 2023-05-01 A | 1-0474 | 100% |  |
| 1-0475 |  | POUR CURB RAMPS, SPRING & 6TH SE CORNER 1-5 ON-RAMP | 1d | 2023-05-02 A | 2023-05-03 A | 1-0474 SS, 1-3145 | 100% |  |
| 1-0476 |  | POUR SIDEWALK, SPRING & 6TH SE CORNER 1-5 ON-RAMP | 1d | 2023-05-08 A | 2023-05-08 A | 1-0475 | 100% |  |
|  | 24 | **SPRING AND 3RD NE CORNER** |  | 2022-12-01 | 2022-12-07 |  |  |  |
| 1-0566 |  | REM SIDEWALK, SPRING & 3RD NE CORNER | 1d | 2022-12-01 A | 2022-12-01 A | 1-0564, 1-0162, 1-1230 | 100% |  |
| 1-0567 |  | INST CONDUIT, SPRING & 3RD NE CORNER | 1d | 2022-12-02 A | 2022-12-02 A | 1-0566 | 100% |  |
| 1-0568 |  | POUR SIDEWALKS, SPRING AND 3RD NE CORNER | 1d | 2022-12-05 A | 2022-12-07 A | 1-0567 | 100% |  |
|  | 1 | **1ST AVE SPRING TO MADISON NB** |  | 2021-11-03 | 2022-05-31 |  |  |  |
| 1-0427 |  | REM SIDEWALK, 1ST AVE SPRING TO MAD NB | 1d | 2021-11-03 A | 2021-11-03 A | MS-0026 | 100% |  |
| 1-0428 |  | EXCAVATE FOR BUS SHELTER FOOTINGS, 1ST AVE SPRING TO MAD NB | 1d | 2021-11-04 A | 2021-11-04 A | 1-0427 | 100% |  |
| 1-0429 |  | FORM FOOTINGS, 1ST AVE SPRING TO MAD NB | 1d | 2021-11-05 A | 2021-11-05 A | 1-0428 | 100% |  |
| 1-0430 |  | TRENCH CONDUIT, 1ST AVE SPRING TO MAD NB | 1d | 2021-11-05 A | 2021-11-05 A | 1-0428 | 100% |  |
| 1-0431 |  | INST CONDUIT, 1ST AVE SPRING TO MAD NB | 1d | 2021-11-08 A | 2021-11-08 A | 1-0430, 1-0429 | 100% |  |
| 1-0432 |  | INST REBAR, 1ST AVE SPRING TO MAD NB | 1d | 2021-11-09 A | 2021-11-09 A | 1-0431 | 100% |  |
| 1-0433 |  | POUR FOOTINGS, 1ST AVE SPRING TO MAD NB | 1d | 2021-11-10 A | 2021-11-10 A | 1-0432 | 100% |  |
| 1-0444 |  | DELAY DESIGN ISSUES, DSC-023/RFI-032 | 5d | 2021-11-11 A | 2022-05-17 A | 1-0433 | 100% |  |
| 1-0434 |  | BF FOOTINGS, CONDUIT & GRADE SIDEWALK, 1ST AVE SPRING TO MAD NB | 1d | 2022-05-18 A | 2022-05-18 A | 1-0433, 1-0444 | 100% |  |
| 1-0435 |  | POUR CURB, 1ST AVE SPRING TO MAD NB | 1d | 2022-05-19 A | 2022-05-19 A | 1-0434, MS-2571 | 100% |  |
| 1-0436 |  | POUR SIDEWALK, 1ST AVE SPRING TO MAD NB | 1d | 2022-05-31 A | 2022-05-31 A | 1-0435 | 100% |  |
|  | 32 | **9TH SPRING TO MADISON EAST SIDE** |  | 2023-08-10 | 2023-09-26 |  |  |  |
| DSC-580 |  | DSC 580 OFFSET FOUNDATION CONFLICTS | 26d | 2023-08-10 A | 2023-09-15 |  | 8% | -111d |
| 1-0601 |  | REM SIDEWALK, 9TH SPRING TO MAD EASE SIDE | 1d | 2023-09-20 | 2023-09-20 | 1-0174, 1-0599, 1-0346, 1-0334, DSC-580 |  | -113d |

| ID | WBS | Task | Duration | Start | Finish | Predecessors | Complete | Total float | Constraint |
| --- | --- | --- | --- | --- | --- | --- | --- | --- | --- |
| 1-0602 |  | TRENCH CONDUIT, 9TH SPRING TO MAD EASE SIDE | 1d | 2023-09-21 | 2023-09-21 | 1-0601 |  | -113d |  |
| 1-0603 |  | INST CONDUIT, 9TH SPRING TO MAD EASE SIDE | 1d | 2023-09-21 | 2023-09-21 | 1-0602 SS |  | -113d |  |
| 1-0604 |  | GRADE SIDWALKS, 9TH SPRING TO MAD EASE SIDE | 1d | 2023-09-22 | 2023-09-22 | 1-0603 |  | -113d |  |
| 1-0605 |  | POUR SIDEWALK, 9TH SPRING TO MAD EASE SIDE | 2d | 2023-09-25 | 2023-09-26 | 1-0604, 1-7040 |  | -113d |  |
|  | 20 | **9TH SPRING TO MADISON WEST SIDE** |  | 2023-09-22 | 2023-10-09 |  |  |  |  |
| 1-0548 |  | REM SIDEWALK, 9TH SPRING TO MAD WEST SIDE | 3d | 2023-09-22 | 2023-09-26 | 1-0424, 1-0150, 1-0545, 1-0538, 1-2800, 1-0453, 1-0605 FF |  | -113d |  |
| 1-0549 |  | TRENCH CONDUIT, 9TH SPRING TO MAD WEST SIDE | 2d | 2023-09-27 | 2023-09-28 | 1-0548 |  | -113d |  |
| 1-0550 |  | INST CONDUIT, 9TH SPRING TO MAD WEST SIDE | 2d | 2023-09-27 | 2023-09-28 | 1-0549 SS |  | -113d |  |
| 1-0551 |  | GRADE SIDEWALK, 9TH SPRING TO MAD WEST SIDE | 1d | 2023-09-29 | 2023-09-29 | 1-0550 |  | -113d |  |
| 1-0552 |  | POUR SIDEWALK, 9TH SPRING TO MAD WEST SIDE | 6d | 2023-10-02 | 2023-10-09 | 1-0551, 1-0546, 1-0610 FF |  | -113d |  |
|  | 33 | **SPRING AND 9TH NE CORNER** |  | 2023-09-27 | 2023-10-02 |  |  |  |  |
| 1-0607 |  | REM SIDEWALK, SPRING & 9TH NE CORNER | 1d | 2023-09-27 | 2023-09-27 | 1-0605, 1-0593, 1-2835 |  | -108d |  |
| 1-0608 |  | INST CONDUIT, SPRING & 9TH NE CORNER | 1d | 2023-09-28 | 2023-09-28 | 1-0607 |  | -108d |  |
| 1-0609 |  | POUR CURB RAMP, SPRING AND 9TH NE CORNER | 1d | 2023-09-29 | 2023-09-29 | 1-0608 |  | -108d |  |
| 1-0610 |  | POUR SIDEWALKS, SPRING AND 9TH NE CORNER | 1d | 2023-10-02 | 2023-10-02 | 1-0609 |  | -108d |  |
|  | 9 | **MADISON AND 1ST SW CORNER** |  | 2022-04-12 | 2023-04-24 |  |  |  |  |
| 1-0478 |  | REM SIDEWALK, MAD & 1ST SW CORNER | 0.5d | 2022-04-12 A | 2022-04-12 A | 1-0502 | 100% |  |  |
| 1-0480 |  | INST CONDUIT, MAD & 1ST SW CORNER | 1d | 2022-04-13 A | 2022-04-15 A | 1-0478, 1-0479 SS | 100% |  |  |
| 1-0479 |  | TRENCH CONDUIT, MAD & 1ST SW CORNER | 0.5d | 2022-04-13 A | 2022-04-13 A | 1-0478 | 100% |  |  |
| 1-0491 |  | DSC 153 - SCL VAULT CONFLICT | 5d | 2022-04-18 A | 2023-03-08 A | 1-0480 | 100% |  |  |
| 1-0481 |  | GRADE SIDEWALK, MAD & 1ST SW CORNER | 1d | 2023-03-29 A | 2023-03-29 A | 1-0479, 1-0480, 1-0491 | 100% |  |  |
| 1-0482 |  | POUR CURB RAMPS, MAD & 1ST SW CORNER | 2d | 2023-04-03 A | 2023-04-04 A | 1-0481, 1-0472 | 100% |  |  |
| 1-2780 |  | OWNER CAUSED DELAY-SCL DID NOT COMPLETE VAULT | 2d | 2023-04-03 A | 2023-04-21 A | 1-0482 | 100% |  |  |
| 1-0483 |  | POUR SIDEWALK, MAD & 1ST SW CORNER | 1d | 2023-04-24 A | 2023-04-24 A | 1-0482, 1-2780 | 100% |  |  |
|  | 10 | **MADISON AND 1ST NW CORNER** |  | 2023-07-06 | 2023-09-22 |  |  |  |  |
| 1-0510 |  | DE:LAY - City Won't Allow During MLB All-Star | 5d | 2023-07-06 A | 2023-07-12 A | 1-3280 SS | 100% |  |  |
| 1-0485 |  | REM SIDEWALK, MAD & 1ST NW CORNER | 0.5d | 2023-08-08 A | 2023-08-08 A | 1-0483, 1-0476, 1-0565, 1-0510 | 100% |  |  |
| 1-0486 |  | TRENCH CONDUIT, MAD & 1ST NW CORNER | 0.5d | 2023-08-08 A | 2023-08-08 A | 1-0485 | 100% |  |  |
| DSC-582 |  | DSC 582 HH REPLACEMENT CONFLICT | 5d | 2023-08-10 A | 2023-09-15 | 1-0486 |  | -43d |  |
| 1-0487 |  | INST CONDUIT, MAD & 1ST NW CORNER | 1d | 2023-09-18 | 2023-09-18 | 1-0485 SS, 1-0486, DSC-582 |  | -43d |  |
| 1-0488 |  | GRADE SIDEWALK, MAD & 1ST NW CORNER | 1d | 2023-09-19 | 2023-09-19 | 1-0487, 1-0486 |  | -43d |  |
| 1-0489 |  | POUR CURB RAMPS, MAD & 1ST NW CORNER | 2d | 2023-09-20 | 2023-09-21 | 1-0488, 1-0484 |  | -43d |  |
| 1-0490 |  | POUR SIDEWALK, MAD & 1ST NW CORNER | 1d | 2023-09-22 | 2023-09-22 | 1-0489 |  | -43d |  |
|  | 71 | **MADISON AND 1ST NE CORNER** |  | 2023-06-13 | 2023-07-06 |  |  |  |  |
| 1-3285 |  | Remove Roadway Panel 1ST NE CORNER | 1d | 2023-06-13 A | 2023-06-13 A |  | 100% |  | start on or after 2023-06-13 |
| 1-3295 |  | DSC 520 - Unlocated Storm Line COnflict | 1d | 2023-06-13 A | 2023-06-13 A | 1-3285 SS | 100% |  |  |
| 1-3290 |  | Form & Pour Roadway Panel 1ST NE CORNER | 2d | 2023-06-14 A | 2023-06-15 A | 1-3285 | 100% |  |  |
| 1-3255 |  | REM SIDEWALK, MAD & 1ST NE CORNER | 1d | 2023-06-16 A | 2023-06-16 A | 1-3290 | 100% |  |  |
| 1-3300 |  | DSC 528 - Extra Thick Sidewalk | 1d | 2023-06-16 A | 2023-06-16 A | 1-3295, 1-3290 | 100% |  |  |
| 1-3260 |  | TRENCH CONDUIT, MAD & 1ST NE CORNER | 1d | 2023-06-19 A | 2023-06-19 A | 1-3255 | 100% |  |  |
| 1-3305 |  | DSC 530 - Unknown Unloacted Conduits | 3d | 2023-06-19 A | 2023-06-21 A | 1-3300 | 100% |  |  |
| 1-3265 |  | INST ELECTRICAL MAD & 1ST NE CORNER | 6d | 2023-06-22 A | 2023-06-29 A | 1-3255 SS, 1-3260, 1-3305 | 100% |  |  |
| 1-3270 |  | GRADE SIDEWALK, MAD & 1ST NE CORNER | 1d | 2023-06-30 A | 2023-06-30 A | 1-3265, 1-3260 | 100% |  |  |
| 1-3275 |  | POUR CURB RAMPS, MAD & 1ST NE CORNER | 2d | 2023-07-03 A | 2023-07-05 A | 1-3270 | 100% |  |  |
| 1-3280 |  | POUR SIDEWALK, MAD & 1ST NE CORNER | 1d | 2023-07-06 A | 2023-07-06 A | 1-3275 | 100% |  |  |
|  | 43 | **MADISON AND 1ST SE CORNER** |  | 2023-08-14 | 2023-09-07 |  |  |  |  |
| 1-0663 |  | REMOVE BRICK, MAD AND 1ST SE CORNER | 1d | 2023-08-14 | 2023-08-14 | 1-0214, 1-0657 |  | -7d |  |
| 1-0678 |  | DSC 589 Non Standard MH Adjustment/SCL Vault | 10d | 2023-08-14 | 2023-08-25 | 1-0663 SS |  | -7d |  |
| 1-0683 |  | DSC 593 SEC 1st and Mad Unknown Unlocated Conduits | 10d | 2023-08-15 | 2023-08-28 | 1-0663 SS, 1-0678 SS+1d |  | -7d |  |
| 1-0688 |  | DSC 592 Concrete Cast Into SCL HH | 10d | 2023-08-16 | 2023-08-29 | 1-0663 SS, 1-0683 SS+1d |  | -7d |  |
| 1-0664 |  | INST ELLECTRICAL, MAD & 1ST SE CORNER | 2d | 2023-08-30 | 2023-08-31 | 1-0663, 1-0688, 1-0683, 1-0678 |  | -7d |  |
| 1-0665 |  | POUR CURB RAMP, MAD & 1ST SE CORNER | 1d | 2023-09-01 | 2023-09-01 | 1-0664 |  | -7d |  |
| 1-0666 |  | INST BRICK PAVERS, MAD & 1ST SE CORNER | 3d | 2023-09-05 | 2023-09-07 | 1-0665 |  | -7d |  |
|  | 11 | **MADISON 1ST TO 2ND NORTH SIDE** |  | 2021-11-01 | 2022-06-03 |  |  |  |  |
| PCO018.01 |  | DSC 11-ITS Conflict Madison and 2nd NW Corner | 5d | 2021-11-01 A | 2022-06-03 A |  | 100% |  |  |
| 1-0492 |  | REM SIDEWALK, MAD 1ST TO 2ND NORTH SIDE | 1d | 2022-03-21 A | 2022-03-22 A | 1-0137 | 100% |  |  |
| 1-0493 |  | TRENCH CONUIT, MAD 1ST TO 2ND NORTH SIDE | 1d | 2022-03-22 A | 2022-03-22 A | 1-0492 | 100% |  |  |
| 1-0494 |  | INST CONDUIT, MAD 1ST TO 2ND NORTH SIDE | 1d | 2022-03-22 A | 2022-03-22 A | 1-0493 SS | 100% |  |  |
| 1-0495 |  | GRADE SIDEWALK, MAD 1ST TO 2ND NORTH SIDE | 1d | 2022-03-23 A | 2022-03-23 A | 1-0494 | 100% |  |  |
| 1-0496 |  | POUR SIDEWALK, MAD 1ST TO 2ND NORTH SIDE | 3d | 2022-03-24 A | 2022-03-28 A | 1-0495 | 100% |  |  |
|  | 44 | **MADISON AND 2ND SW CORNER** |  | 2022-10-03 | 2023-08-23 |  |  |  |  |
| 1-0668 |  | REM SIDEWALK, MAD & 2ND SW CORNER | 1d | 2022-10-03 A | 2022-10-03 A | 1-0496 | 100% |  |  |
| 1-1290 |  | DSC; VAULT LID | 30d | 2022-10-04 A | 2023-08-18 | 1-0668 |  | -22d |  |
| 1-0669 |  | INST CONDUIT, MAD & 2ND SW CORNER | 1d | 2023-08-21 | 2023-08-21 | 1-0668, 1-1290 |  | -22d |  |
| 1-0670 |  | POUR CURB RAMP, MAD & 2ND SW CORNER | 1d | 2023-08-22 | 2023-08-22 | 1-0669 |  | -22d |  |
| 1-0671 |  | POUR SIDEWALK, MAD & 2ND SW CORNER | 1d | 2023-08-23 | 2023-08-23 | 1-0670 |  | -22d |  |
|  | 12 | **MADISON AND 2ND TO 3RD NORTH SIDE** |  | 2022-03-28 | 2023-05-31 |  |  |  |  |
| 1-0498 |  | REM SIDEWALK, MAD & 2ND TO 3RD NORTH SIDE | 1d | 2022-03-28 A | 2022-03-28 A | 1-0495 | 100% |  |  |
| 1-0499 |  | TRENCH CONDUIT, MAD & 2ND TO 3RD NORTH SIDE | 2d | 2022-03-29 A | 2022-03-30 A | 1-0498 | 100% |  |  |
| 1-0500 |  | INTALL CONDUIT, MAD & 2ND TO 3RD NORTH SIDE | 2d | 2022-03-29 A | 2022-03-30 A | 1-0499 SS | 100% |  |  |

| ID | WBS | Task | Duration | Start | Finish | Predecessors | Complete | Total float |
| --- | --- | --- | --- | --- | --- | --- | --- | --- |
| 1-0501 |  | FORM FOUNDATIONS, MAD & 2ND TO 3RD NORTH SIDE | 1d | 2022-03-31 A | 2022-04-05 A | 1-0500 | 100% |  |
| 1-0502 |  | POUR FOUNDATIONS, MAD & 2ND TO 3RD NORTH SIDE | 2d | 2022-04-06 A | 2022-04-07 A | 1-0501 | 100% |  |
| 1-0503 |  | GRADE SIDEWALK, MAD & 2ND TO 3RD NORTH SIDE | 1d | 2022-04-22 A | 2022-04-22 A | 1-0502 | 100% |  |
| 1-0504 |  | POUR SIDEWALK, MAD & 2ND TO 3RD NORTH SIDE | 5d | 2022-04-25 A | 2022-06-01 A | 1-0503, 1-0496 | 100% |  |
| 1-0505 |  | POUR STATION STEM WALL, MAD & 2ND TO 3RD NORTH SIDE | 1d | 2022-04-28 A | 2022-04-28 A | 1-0504 | 100% |  |
| 1-0506 |  | INSTALL WHEEL GUIDES | 1d | 2023-05-31 A | 2023-05-31 A | 1-0504, 1-0505 | 100% |  |
|  | 45 | **MADISON 2ND TO 3RD SOUTH SIDE** |  | 2022-06-09 | 2022-08-09 |  |  |  |
| 1-0673 |  | REM SIDEWALK, MAD 2ND TO 3RD SOUTH SIDE | 2d | 2022-06-09 A | 2022-06-10 A | 1-0215 | 100% |  |
| 1-0674 |  | TRENCH CONDUIT, MAD 2ND TO 3RD SOUTH SIDE | 2d | 2022-06-13 A | 2022-06-14 A | 1-0673 | 100% |  |
| 1-0675 |  | INST CONDUIT, MAD 2ND TO 3RD SOUTH SIDE | 2d | 2022-06-13 A | 2022-06-15 A | 1-0674 SS | 100% |  |
| PCO276.01 |  | DSC 202-ITS Conduit SW Corner 3rd and Madison | 5d | 2022-06-14 A | 2022-06-23 A |  | 100% |  |
| 1-1200 |  | MULTIPLE CONDUIT CONFLICT DSC'S MAD 2ND TO 3RD SOUTH SIDE | 2d | 2022-06-16 A | 2022-06-24 A | 1-0675 | 100% |  |
| PCO283.01 |  | DSC 208-Prime - Conduit Depths SW 3rd & Madison | 5d | 2022-06-20 A | 2022-06-26 A |  | 100% |  |
| 1-0676 |  | GRADE SIDEWALK, MAD 2ND TO 3RD SOUTH SIDE | 1d | 2022-06-28 A | 2022-06-28 A | 1-0675, 1-1200 | 100% |  |
| 1-0677 |  | POUR SIDEWALK, MAD 2ND TO 3RD SOUTH SIDE | 5d | 2022-07-01 A | 2022-07-05 A | 1-0676 | 100% |  |
| PCO316.01 |  | DSC 233-Duct Bank conflict SE Corner 2nd and Madison | 5d | 2022-07-12 A | 2022-08-09 A |  | 100% |  |
|  | 13 | **MADISON 3RD TO 4TH NORTH SIDE** |  | 2023-09-25 | 2023-10-02 |  |  |  |
| 1-0507 |  | REM SIDEWALK, MAD 3RD TO 4TH NORTH SIDE | 2d | 2023-09-25 | 2023-09-26 | 1-0129, 1-0503, 1-0490, 1-1420, 1-0671 |  | -43d |
| 1-0508 |  | GRADE SIDEWALK, MAD 3RD TO 4TH NORTH SIDE | 1d | 2023-09-27 | 2023-09-27 | 1-0507 |  | -43d |
| 1-0509 |  | POUR SIDEWALK, MAD 3RD TO 4TH NORTH SIDE | 3d | 2023-09-28 | 2023-10-02 | 1-0508, 1-0505 |  | -43d |
|  | 14 | **MADISON AND 3RD TO 4TH DRIVEWAY** |  | 2023-09-30 | 2023-10-01 |  |  |  |
| 1-0511 |  | REM SIDEWALK, MAD & 3RD TO 4TH DRIVEWAY | 1d | 2023-09-30 | 2023-09-30 | 1-0504 SS, 1-0509 SS+1d |  | -18d |
| 1-0512 |  | POUR CURB RAMP, MAD & 3RD TO 4TH DRIVEWAY | 1d | 2023-09-30 | 2023-09-30 | 1-0511 SS |  | -18d |
| 1-0513 |  | POUR SIDEWALK, MAD & 3RD TO 4TH DRIVEWAY | 1d | 2023-10-01 | 2023-10-01 | 1-0512 |  | -18d |
|  | 46 | **MADISON 3RD TO 4TH SOUTH SIDE** |  | 2023-10-03 | 2023-10-11 |  |  |  |
| 1-0679 |  | REM SIDEWALK, MAD 3RD TO 4TH SOUTH SIDE | 1d | 2023-10-03 | 2023-10-03 | 1-0677, 1-0509, 1-0222, 1-0513 |  | -41d |
| 1-0680 |  | TRENCH CONDUIT, MAD 3RD TO 4TH SOUTH SIDE | 2d | 2023-10-04 | 2023-10-05 | 1-0679 |  | -41d |
| 1-0681 |  | INST CONDUIT, MAD 3RD TO 4TH SOUTH SIDE | 2d | 2023-10-04 | 2023-10-05 | 1-0680 SS |  | -41d |
| 1-0682 |  | POUR SIDEWALK, MAD 3RD TO 4TH SOUTH SIDE | 4d | 2023-10-06 | 2023-10-11 | 1-0681 |  | -41d |
|  | 47 | **MADISON AND 4TH SE CORNER** |  | 2023-10-12 | 2023-10-20 |  |  |  |
| 1-0684 |  | REM SIDEWALK, MAD & 4TH SE CORNER | 2d | 2023-10-12 | 2023-10-13 | 1-0682 |  | -26d |
| 1-0685 |  | INST CONDUIT, MAD & 4TH SE CORNER | 2d | 2023-10-16 | 2023-10-17 | 1-0684 |  | -26d |
| 1-0686 |  | POUR CURB RAMP, MAD & 4TH SE CORNER | 2d | 2023-10-18 | 2023-10-19 | 1-0685 |  | -26d |
| 1-0687 |  | POUR SIDEWALK, MAD & 4TH SE CORNER | 1d | 2023-10-20 | 2023-10-20 | 1-0686, 1-0247 |  | -26d |
|  | 15 | **MADISON AND 5TH NW CORNER** |  | 2023-01-21 | 2023-02-07 |  |  |  |
| PCO530.01 |  | DSC 376-NE Madison and 5th Streetlight pole | 5d | 2023-01-21 A | 2023-01-24 A |  | 100% |  |
| 1-0515 |  | REM SIDEWALK, MAD & 5TH NW CORNER | 1d | 2023-01-25 A | 2023-01-25 A | 1-0501 | 100% |  |
| PCO542.01 |  | DSC 382-Drainpipe Conflict at NW Corner 5th and Mad | 5d | 2023-01-26 A | 2023-01-27 A |  | 100% |  |
| 1-0516 |  | GRADE SIDEWALK, MAD & 5TH NW CORNER | 1d | 2023-01-26 A | 2023-01-26 A | 1-0515 | 100% |  |
| 1-1345 |  | SCL VAULT LID ADJUTMENT EXTRA WORK, MAD & 5TH NW CORNER | 1d | 2023-01-27 A | 2023-02-03 A | 1-0516 | 100% |  |
| 1-0517 |  | POUR SIDEWALK, MAD AND 5TH NW CORNER | 3d | 2023-02-06 A | 2023-02-07 A | 1-0516, 1-1345 | 100% |  |
|  | 64 | **MADISON AND 5TH NE CORNER** |  | 2022-08-02 | 2023-08-31 |  |  |  |
| PCO530.1 |  | MULTIPLE DSC'S | 5d | 2022-08-02 A | 2023-06-30 A | 1-0519 | 100% |  |
| 1-3025 |  | INSTALL FOUNDATION DESIGN CHANGE | 20d | 2023-07-03 A | 2023-08-14 | PCO530.1 |  | 15d |
| 1-3030 |  | TRENCH CONDUIT, MAD & 5TH NE CORNER | 1d | 2023-08-23 | 2023-08-23 | 1-3025, 1-0222 |  | 9d |
| 1-3035 |  | INSTALL CONDUIT, MAD & 5TH NE CORNER | 1d | 2023-08-24 | 2023-08-24 | 1-3030 |  | 9d |
| 1-3010 |  | GRADE SIDEWALK, MAD & 5TH NE CORNER | 1d | 2023-08-25 | 2023-08-25 | 1-3035 |  | 9d |
| 1-3040 |  | POUR CURB RAMPS, MAD AND 5TH NE CORNER | 3d | 2023-08-28 | 2023-08-30 | 1-3010 |  | 9d |
| 1-3015 |  | POUR SIDEWALK, MAD AND 5TH NE CORNER | 1d | 2023-08-31 | 2023-08-31 | 1-3010, 1-3040 |  | 9d |
|  | 48 | **MADISON AND 5TH SW CORNER** |  | 2023-02-13 | 2023-02-21 |  |  |  |
| 1-0689 |  | REM SIDEWALK, MAD & 5TH SW CORNER | 1d | 2023-02-13 A | 2023-02-13 A | 1-0378 | 100% |  |
| 1-0690 |  | INST CONDUIT, MAD & 5TH SW CORNER | 1d | 2023-02-14 A | 2023-02-14 A | 1-0689 | 100% |  |
| 1-0691 |  | POUR CURB RAMP, MAD & 5TH SW CORNER | 1d | 2023-02-20 A | 2023-02-20 A | 1-0690 | 100% |  |
| 1-0692 |  | POUR SIDEWALK, MAD & 5TH SW CORNER | 1d | 2023-02-21 A | 2023-02-21 A | 1-0691 | 100% |  |
|  | 49 | **MADISON AND 5TH SE CORNER** |  | 2023-09-01 | 2023-09-07 |  |  |  |
| 1-0694 |  | REMOVE SIDEWALK, MAD AND 5 SE CORNER | 1d | 2023-09-01 | 2023-09-01 | 1-0692, 1-3015, 1-0222 |  | 9d |
| 1-0695 |  | INST CONDUIT, MAD AND 5 SE CORNER | 1d | 2023-09-05 | 2023-09-05 | 1-0694 |  | 9d |
| 1-0696 |  | POUR CURB RAMP, MAD AND 5 SE CORNER | 1d | 2023-09-06 | 2023-09-06 | 1-0695 |  | 9d |
| 1-0697 |  | POUR SIDEWALKS, MAD AND 5 SE CORNER | 1d | 2023-09-07 | 2023-09-07 | 1-0696 |  | 9d |
|  | 16 | **MADISON 5TH TO 6TH NORTH SIDE - BETWEEN CORNERS** |  | 2022-06-28 | 2023-06-08 |  |  |  |
| 1-0519 |  | REM SIDEWALK, MAD 5TH TO 6TH NORTH SIDE | 1d | 2022-06-28 A | 2022-06-28 A | 1-0129 | 100% |  |
| 1-0520 |  | TRENCH CONDUIT, MAD 5TH TO 6TH NORTH SIDE | 2d | 2022-06-29 A | 2022-06-30 A | 1-0519 | 100% |  |
| 1-0521 |  | INTALL CONDUIT, MAD 5TH TO 6TH NORTH SIDE | 2d | 2022-07-01 A | 2022-07-05 A | 1-0520 | 100% |  |
| PCO301.01 |  | DSC 222-CDF and unknown conduit Madison 5th to 6th | 5d | 2022-07-05 A | 2022-07-07 A |  | 100% |  |
| 1-0522 |  | FORM FOUNDATIONS, MAD 5TH TO 6TH NORTH SIDE | 1d | 2022-07-05 A | 2022-07-06 A | 1-0521 | 100% |  |
| 1-0523 |  | POUR FOUNDATIONS, MAD 5TH TO 6TH NORTH SIDE | 2d | 2022-07-12 A | 2022-07-13 A | 1-0522 | 100% |  |
| 1-0524 |  | GRADE SIDEWALK, MAD 5TH TO 6TH NORTH SIDE | 1d | 2022-07-19 A | 2022-07-25 A | 1-0523 | 100% |  |
| PCO328.01 |  | DSC 242-5th type 5 HH Prime | 5d | 2022-07-22 A | 2022-08-24 A |  | 100% |  |
| 1-0525 |  | POUR SIDEWALK, MAD 5TH TO 6TH NORTH SIDE | 5d | 2022-07-28 A | 2022-08-26 A | 1-0524 | 100% |  |
| 1-0526 |  | POUR STATION STEM WALL, MAD 5TH TO 6TH NORTH SIDE | 1d | 2022-08-15 A | 2022-08-15 A | 1-0524 | 100% |  |

| ID | WBS | Task | Duration | Start | Finish | Predecessors | Complete | Total float |
| --- | --- | --- | --- | --- | --- | --- | --- | --- |
| PCO540.01 |  | DSC 380-NW Corner 6th and Mad Existing Type 5 Conduit Conflict | 5d | 2023-01-25 A | 2023-01-28 A |  | 100% |  |
| PCO558.01 |  | DSC 394-SCL Sevice Conflicts NW 6th and Madison | 5d | 2023-02-10 A | 2023-06-06 A |  | 100% |  |
| 1-2935 |  | COMPLETE SIDEWALK AFTER DSC 394 | 1d | 2023-06-07 A | 2023-06-07 A | PCO558.01 | 100% |  |
| 1-0565 |  | INSTALL WHEEL GUIDES | 1d | 2023-06-08 A | 2023-06-08 A | 1-0526, 1-0525, 1-2935 | 100% |  |
|  | 50 | **MADISON AND 6TH SW CORNER** |  | 2023-09-08 | 2023-09-13 |  |  |  |
| 1-0699 |  | REM SIDEWALK, MAD & 6TH SW CORNER | 1d | 2023-09-08 | 2023-09-08 | 1-0697, 1-0378, 1-0382 |  | 56d |
| 1-0700 |  | INST CONDUIT, MAD & 6TH SW CORNER | 1d | 2023-09-11 | 2023-09-11 | 1-0699 |  | 56d |
| 1-0701 |  | POUR CURB RAMP, MAD & 6TH SW CORNER | 1d | 2023-09-12 | 2023-09-12 | 1-0700 |  | 56d |
| 1-0702 |  | POUR SIDEWALK, MAD & 6TH SW CORNER | 1d | 2023-09-13 | 2023-09-13 | 1-0701 |  | 56d |
|  | 65 | **MADISON AND 6TH NW CORNER** |  | 2022-08-02 | 2023-06-30 |  |  |  |
| 1-3045 |  | MULTIPLE DSC'S, MAD & 6TH SW CORNER | 1d | 2022-08-02 A | 2023-05-01 A | 1-0519 | 100% |  |
| 1-3065 |  | TRENCH CONDUIT, MAD & 6TH SW CORNER | 1d | 2023-05-02 A | 2023-05-02 A | 1-3045 | 100% |  |
| 1-3050 |  | INST CONDUIT, MAD & 6TH SW CORNER | 1d | 2023-05-03 A | 2023-05-04 A | 1-3065 | 100% |  |
| 1-3070 |  | GRADE SIDEWALK, MAD & 6TH SW CORNER | 1d | 2023-05-05 A | 2023-05-08 A | 1-3050 | 100% |  |
| PCO672.01 |  | DSC 475-SCL VAULT LID TOO HIGH | 10d | 2023-05-09 A | 2023-06-20 A | 1-3070 | 100% |  |
| 1-3075 |  | Regrade After Vault Lid | 1d | 2023-06-21 A | 2023-06-21 A | PCO672.01 | 100% |  |
| 1-3110 |  | Delay - Judge Hearings | 2d | 2023-06-22 A | 2023-06-23 A | 1-3075 | 100% |  |
| 1-3055 |  | POUR CURB RAMP, MAD & 6TH SW CORNER | 1d | 2023-06-26 A | 2023-06-26 A | 1-3070, PCO672.01, 1-3110 | 100% |  |
| 1-3060 |  | POUR SIDEWALK, MAD & 6TH SW CORNER | 1d | 2023-06-30 A | 2023-06-30 A | 1-3055 FS+3d | 100% |  |
|  | 60 | **MADISON AND 7TH NE CORNER** |  | 2023-04-12 | 2023-04-19 |  |  |  |
| 1-2785 |  | REM SIDEWALK, MADISON AND 7TH NE CORNER | 1d | 2023-04-12 A | 2023-04-13 A | 1-0532 | 100% |  |
| PCO634.1 |  | DSC 445-BURIED STEEL POLE | 5d | 2023-04-13 A | 2023-04-13 A | 1-2785 SS | 100% |  |
| 1-2805 |  | REM POLE | 1d | 2023-04-14 A | 2023-04-14 A | PCO634.1, 1-2785 | 100% |  |
| 1-2810 |  | REM POLE FOUNDATION | 1d | 2023-04-14 A | 2023-04-14 A | 1-2805 | 100% |  |
| 1-2815 |  | GRADE SIDEWALK, MADISON AND 7TH NE CORNER | 1d | 2023-04-14 A | 2023-04-14 A | 1-2810 | 100% |  |
| 1-2795 |  | POUR CURB RAMP, MADISON AND 7TH NE CORNER | 1d | 2023-04-17 A | 2023-04-18 A | 1-2815 | 100% |  |
| 1-2800 |  | POUR SIDEWALK, MADISON AND 7TH NE CORNER | 1d | 2023-04-19 A | 2023-04-19 A | 1-2795 | 100% |  |
|  | 17 | **MADISON 7TH TO 8TH NORTH SIDE** |  | 2023-01-10 | 2023-02-14 |  |  |  |
| 1-0528 |  | REM SIDEWALK, MAD 7TH TO 8TH NORTH SIDE | 2d | 2023-01-10 A | 2023-01-11 A | 1-0136, 1-0524 | 100% |  |
| PCO508.01 |  | DSC 363-7th & Madison unloacted fiber conflict | 5d | 2023-01-11 A | 2023-01-14 A |  | 100% |  |
| 1-0529 |  | TRENCH CONDUIT, MAD 7TH TO 8TH NORTH SIDE | 2d | 2023-01-12 A | 2023-01-13 A | 1-0528 | 100% |  |
| 1-0530 |  | INST CONDUIT, MAD 7TH TO 8TH NORTH SIDE | 2d | 2023-01-12 A | 2023-01-30 A | 1-0529 SS | 100% |  |
| 1-0531 |  | GRADE SIDEWALK, MAD 7TH TO 8TH NORTH SIDE | 1d | 2023-01-31 A | 2023-02-03 A | 1-0530 | 100% |  |
| 1-0532 |  | POUR SIDEWALK, MAD 7TH TO 8TH NORTH SIDE | 4d | 2023-02-08 A | 2023-02-14 A | 1-0531, 1-0526 | 100% |  |
|  | 51 | **MADISON 7TH TO 8TH SOUTH SIDE** |  | 2023-02-27 | 2023-04-06 |  |  |  |
| 1-0704 |  | REM SIDEWALK, MAD 7TH TO 8TH SOUTH SIDE | 2d | 2023-02-27 A | 2023-03-02 A | 1-0386 | 100% |  |
| 1-0705 |  | TRENCH CONDUIT, MAD 7TH TO 8TH SOUTH SIDE | 2d | 2023-03-01 A | 2023-03-03 A | 1-0704 | 100% |  |
| 1-0706 |  | INST CONDUIT, MAD 7TH TO 8TH SOUTH SIDE | 2d | 2023-03-01 A | 2023-03-24 A | 1-0705 SS | 100% |  |
| 1-0707 |  | GRADE SIDEWALK, MAD 7TH TO 8TH SOUTH SIDE | 2d | 2023-03-27 A | 2023-03-29 A | 1-0706 | 100% |  |
| 1-0708 |  | POUR SIDEWALK, MAD 7TH TO 8TH SOUTH SIDE | 6d | 2023-03-30 A | 2023-04-06 A | 1-0707 | 100% |  |
|  | 18 | **MADISON 8TH TO 9TH NORTH SIDE** |  | 2023-01-17 | 2023-02-16 |  |  |  |
| 1-0534 |  | REM SIDEWALK, MAD 8TH TO 9TH NORTH SIDE | 2d | 2023-01-17 A | 2023-01-18 A | 1-0529 | 100% |  |
| PCO520.01 |  | DSC 372-Conduit change 8th to 9th Mad to accomidate comcast | 5d | 2023-01-19 A | 2023-02-08 A |  | 100% |  |
| 1-0535 |  | TRENCH CONDUIT, MAD 8TH TO 9TH NORTH SIDE | 2d | 2023-01-19 A | 2023-01-20 A | 1-0534 | 100% |  |
| 1-0536 |  | INST CONDUIT, MAD 8TH TO 9TH NORTH SIDE | 2d | 2023-01-19 A | 2023-01-25 A | 1-0535 SS | 100% |  |
| PCO532.01 |  | DSC 377-Madison and 8th Handholes in ped path | 5d | 2023-01-23 A | 2023-01-25 A |  | 100% |  |
| 1-0537 |  | GRADE SIDEWALK, MAD 8TH TO 9TH NORTH SIDE | 1d | 2023-01-26 A | 2023-01-30 A | 1-0536 | 100% |  |
| 1-0538 |  | POUR SIDEWALK, MAD 8TH TO 9TH NORTH SIDE | 4d | 2023-02-08 A | 2023-02-16 A | 1-0532, 1-0537 | 100% |  |
| PCO564.01 |  | DSC 398-NW 9th and Madison Curb Ramp Field Fit HH Conflict | 5d | 2023-02-14 A | 2023-02-15 A |  | 100% |  |
|  | 52 | **MADISON 8TH TO 9TH SOUTH SIDE** |  | 2023-02-27 | 2023-04-10 |  |  |  |
| 1-0710 |  | REM SIDEWALK, MAD 8TH TO 9TH SOUTH SIDE | 2d | 2023-02-27 A | 2023-03-24 A | 1-0229 | 100% |  |
| 1-0711 |  | TRENCH CONDUIT, MAD 8TH TO 9TH SOUTH SIDE | 2d | 2023-03-01 A | 2023-03-29 A | 1-0710 | 100% |  |
| 1-0712 |  | INST CONDUIT, MAD 8TH TO 9TH SOUTH SIDE | 2d | 2023-03-01 A | 2023-03-24 A | 1-0711 SS | 100% |  |
| 1-2010 |  | CITY CAUSED DELAY LIGHT POLE FOUNDATION CONFLICT | 2d | 2023-03-01 A | 2023-03-14 A | 1-0712 | 100% |  |
| 1-0713 |  | GRADE SIDEWALK, MAD 8TH TO 9TH SOUTH SIDE | 2d | 2023-03-27 A | 2023-03-28 A | 1-0712, 1-2010 | 100% |  |
| PCO626.01 |  | DSC-BRICKS FALLING OFF BURNT BUILDING | 2d | 2023-03-29 A | 2023-03-30 A |  | 100% |  |
| 1-0714 |  | POUR SIDEWALK, MAD 8TH TO 9TH SOUTH SIDE | 5d | 2023-03-30 A | 2023-04-10 A | 1-0713, 1-0708 | 100% |  |
|  | 70 | **TERRY TO BOREN MID-BLOCK SW SIDE** |  | 2023-05-17 | 2023-06-14 |  |  |  |
| 1-3225 |  | REM SIDEWALK | 2d | 2023-05-17 A | 2023-05-18 A | 1-2930 SS | 100% |  |
| 1-3230 |  | TRENCH CONDUIT | 2d | 2023-05-19 A | 2023-06-01 A | 1-3225 | 100% |  |
| PCO698.01 |  | DSC 500-COMCAST HH NOT TO GRADE | 2d | 2023-05-23 A | 2023-05-25 A |  | 100% |  |
| 1-3235 |  | INST CONDUIT | 2d | 2023-05-24 A | 2023-06-01 A | 1-3230 SS | 100% |  |
| 1-3250 |  | FM 545 HH REMOVAL | 4d | 2023-05-24 A | 2023-06-06 A | PCO698.01 SS | 100% |  |
| 1-3240 |  | GRADE SIDEWALK | 2d | 2023-06-07 A | 2023-06-08 A | 1-3235, 1-3250 | 100% |  |
| 1-3245 |  | POUR SIDEWALK | 4d | 2023-06-09 A | 2023-06-14 A | 1-3240 | 100% |  |
|  | 69 | **TERRY TO BOREN MID-BLOCK SE SIDE** |  | 2023-06-13 | 2023-07-03 |  |  |  |
| 1-3195 |  | REM SIDEWALK | 2d | 2023-06-13 A | 2023-06-14 A | 1-3245 FS-2d | 100% |  |
| 1-3200 |  | TRENCH CONDUIT | 2d | 2023-06-15 A | 2023-06-16 A | 1-3195 | 100% |  |
| 1-3205 |  | INST CONDUIT | 3d | 2023-06-19 A | 2023-06-21 A | 1-3200 | 100% |  |
| 1-3210 |  | GRADE SIDEWALK | 2d | 2023-06-22 A | 2023-06-23 A | 1-3205 | 100% |  |

| ID | WBS | Task | Duration | Start | Finish | Predecessors | Complete | Total float |
| --- | --- | --- | --- | --- | --- | --- | --- | --- |
| 1-3215 |  | POUR SIDEWALK | 6d | 2023-06-26 A | 2023-07-03 A | 1-3210, 1-3060 FF | 100% |  |
|  | 66 | **MADISON AND 9TH SW CORNER** |  | 2023-04-11 | 2023-04-21 |  |  |  |
| 1-3080 |  | REM SIDEWALK, MADISON & 9TH SW CORNER | 1d | 2023-04-11 A | 2023-04-11 A | 1-0714 | 100% |  |
| 1-3100 |  | TRENCH CONDUIT, MADISON & 9TH SW CORNER | 1d | 2023-04-12 A | 2023-04-12 A | 1-3080 | 100% |  |
| PCO635.01 |  | DSC 446-LIVE CONDUIT | 1d | 2023-04-13 A | 2023-04-13 A |  | 100% |  |
| 1-3085 |  | INST CONDUIT, MADISON & 9TH SW CORNER | 1d | 2023-04-14 A | 2023-04-17 A | 1-3100 | 100% |  |
| 1-3105 |  | GRADE SIDEWALKS, MADISON AND 9TH SW CORNER | 1d | 2023-04-18 A | 2023-04-18 A | 1-3085 | 100% |  |
| 1-3090 |  | POUR CURB RAMP, MADISON AND 9TH SW CORNER | 1d | 2023-04-19 A | 2023-04-20 A | 1-3105 | 100% |  |
| 1-3095 |  | POUR SIDEWALKS, MADISON AND 9TH SW CORNER | 1d | 2023-04-21 A | 2023-04-21 A | 1-3090 | 100% |  |
|  | 67 | **MADISON AND 9TH SE CORNER** |  | 2023-04-24 | 2023-05-15 |  |  |  |
| 1-3115 |  | REM SIDEWALK, MADISON & 9TH SE CORNER | 1d | 2023-04-24 A | 2023-04-25 A | 1-3095 | 100% |  |
| PCO650.01 |  | DSC 459-LEAKING WATER SERVICE | 1d | 2023-04-26 A | 2023-04-26 A | 1-3115 | 100% |  |
| 1-3135 |  | TRENCH CONDUIT, MADISON & 9TH SE CORNER | 1d | 2023-04-27 A | 2023-04-28 A | 1-3115 | 100% |  |
| PCO652.01 |  | DSC 460-OLD STREETLIGHT POLE CONFLICT | 1d | 2023-04-27 A | 2023-04-27 A | 1-3115 | 100% |  |
| PCO653.01 |  | DSC 461-SIDE SEWER CONFLICT WITH SIGNAL CABINET | 1d | 2023-04-27 A | 2023-04-28 A | 1-3135 SS | 100% |  |
| PCO654.01 |  | DSC 462-STEAMLINE CONFLICT WITH CONDUIT | 1d | 2023-04-28 A | 2023-04-28 A | 1-3135 SS | 100% |  |
| 1-3120 |  | INST CONDUIT, MADISON & 9TH SE CORNER | 1d | 2023-05-01 A | 2023-05-05 A | 1-3135 | 100% |  |
| 1-3140 |  | GRADE SIDEWALKS, MADISON & 9TH SE CORNER | 1d | 2023-05-08 A | 2023-05-08 A | 1-3120 | 100% |  |
| 1-3130 |  | POUR SIDEWALKS, MADISON & 9TH SE CORNER | 1d | 2023-05-09 A | 2023-05-15 A | 1-3140 | 100% |  |
|  | 21 | **DRIVEWAYS 9TH SPRING TO MADISON WEST SIDE** |  | 2023-10-14 | 2023-10-14 |  |  |  |
| 1-0554 |  | REM SIDEWALK, DRIVEWAYS 9TH SPRING TO MAD WEST SIDE | 1d | 2023-10-14 | 2023-10-14 | 1-0550, 1-0552, 1-3130 |  | -47d |
| 1-0555 |  | POUR DRIVEWAYS, DRIVEWAYS 9TH SPRING TO MAD WEST SIDE | 1d | 2023-10-14 | 2023-10-14 | 1-0554 SS |  | -47d |
|  | 22 | **SPRING AND 1ST NE CORNER** |  | 2023-06-12 | 2023-08-22 |  |  |  |
| 1-0557 |  | REM SIDEWALK, SPRING & 1ST NE CORNER | 1d | 2023-06-12 A | 2023-06-12 A | 1-2825 SS+24d | 100% |  |
| 1-0577 |  | DSC 518 - Unknown Conduit Conflicts | 20d | 2023-06-12 A | 2023-08-04 A | 1-0557 SS | 100% |  |
| 1-0617 |  | DSC 519 - Unmarked Conduits | 20d | 2023-06-12 A | 2023-08-04 A | 1-0557 SS | 100% |  |
| 1-0558 |  | INST CONDUIT, SPRING & 1ST NE CORNER | 1d | 2023-08-07 A | 2023-08-18 | 1-0557, 1-0617, 1-0577 |  | -32d |
| 1-0559 |  | POUR SIDEWALK, SPRING AND 1ST NE CORNER | 2d | 2023-08-21 | 2023-08-22 | 1-0558 |  | -32d |
|  | 34 | **MADISON 9TH TO TERRY NORTH SIDE** |  | 2022-09-01 | 2022-11-04 |  |  |  |
| PCO367.01 |  | DSC 268-Water Valve Vault Conflict with Confuid 9th to Terry North | 5d | 2022-09-01 A | 2022-09-07 A |  | 100% |  |
| PCO370.01 |  | DSC 269-Unlocated comm line 9th to Terry North side | 5d | 2022-09-07 A | 2022-09-22 A |  | 100% |  |
| PCO371.01 |  | DSC 271-Water meter Conflict 9th to Terry North | 5d | 2022-09-07 A | 2022-10-08 A |  | 100% |  |
| PCO373.01 |  | DSC 270-Unlocated Com Line Terry North side | 5d | 2022-09-07 A | 2022-10-26 A |  | 100% |  |
| PCO374.01 |  | DSC 272-Electrical Vault Lid NE Terry & Madison | 5d | 2022-09-08 A | 2022-09-23 A |  | 100% |  |
| PCO375.01 |  | DSC 273-Unlocated, Cut Conduit on NE Terry & Madison | 5d | 2022-09-08 A | 2022-09-21 A |  | 100% |  |
| PCO382.01 |  | DSC 278-Multiple conduit conflicts Terry and Madison | 5d | 2022-09-09 A | 2022-09-10 A |  | 100% |  |
| PCO384.01 |  | DSC 280-Unlocated Conduit Terry & Madison | 5d | 2022-09-09 A | 2022-10-25 A |  | 100% |  |
| PCO385.01 |  | DSC 281-Unlocated Gas Lines Terry & Madison | 5d | 2022-09-09 A | 2022-09-10 A |  | 100% |  |
| 1-0612 |  | REMOVE SIDEWALK, 9TH TO TERRY NORTH SIDE | 2d | 2022-09-12 A | 2022-09-13 A | 1-0179 | 100% |  |
| 1-0613 |  | TRENCH CONDUIT, 9TH TO TERRY NORTH SIDE | 3d | 2022-09-14 A | 2022-09-16 A | 1-0612 | 100% |  |
| 1-0614 |  | INST CONDUIT, 9TH TO TERRY NORTH SIDE | 3d | 2022-09-14 A | 2022-09-16 A | 1-0613 SS | 100% |  |
| PCO397.01 |  | DSC 289-Zao Conduit Conflict with Pavement Terry and Madison | 5d | 2022-09-15 A | 2022-09-21 A |  | 100% |  |
| 1-1270 |  | MULTIPLE DSC'S | 2d | 2022-09-19 A | 2022-10-10 A | 1-0614 | 100% |  |
| 1-0615 |  | GRADE SIDEWALK, 9TH TO TERRY NORTH SIDE | 2d | 2022-10-10 A | 2022-10-11 A | 1-0614, 1-1270 | 100% |  |
| 1-0616 |  | POUR SIDEWALK, 9TH TO TERRY NORTH SIDE | 6d | 2022-10-20 A | 2022-11-04 A | 1-0179 | 100% |  |
|  | 53 | **MADISON 9TH TO TERRY SOUTH SIDE** |  | 2023-10-16 | 2023-10-30 |  |  |  |
| 1-0716 |  | REM SIDEWALK, MAD 9TH TO TERRY SOUTH SIDE | 2d | 2023-10-16 | 2023-10-17 | 1-0713, 1-0234, 1-0555 |  | -116d |
| 1-0717 |  | TRENCH CONDUIT, MAD 9TH TO TERRY SOUTH SIDE | 2d | 2023-10-18 | 2023-10-19 | 1-0716 |  | -116d |
| 1-0718 |  | INST CONDUIT, MAD 9TH TO TERRY SOUTH SIDE | 2d | 2023-10-18 | 2023-10-19 | 1-0717 SS |  | -116d |
| 1-0719 |  | GRADE SIDEWALK, MAD 9TH TO TERRY SOUTH SIDE | 2d | 2023-10-20 | 2023-10-23 | 1-0718 |  | -116d |
| 1-0720 |  | POUR SIDEWALK, MAD 9TH TO TERRY SOUTH SIDE | 5d | 2023-10-24 | 2023-10-30 | 1-0719, 1-0714 |  | -116d |
|  | 35 | **TERRY TO BOREN NORTH SIDE** |  | 2022-10-05 | 2023-05-18 |  |  |  |
| PCO405.01 |  | DSC 296-Old Foundation NW Terry | 5d | 2022-10-05 A | 2022-10-26 A |  | 100% |  |
| PCO409.01 |  | DSC 299-Design Bust NW Terry | 5d | 2022-10-07 A | 2022-10-07 A |  | 100% |  |
| 1-0618 |  | REM SIDEWALK, TERRY TO BOREN NORTH SIDE | 3d | 2023-01-30 A | 2023-02-10 A | 1-0186 | 100% |  |
| 1-0619 |  | TRENCH CONDUIT, TERRY TO BOREN NORTH SIDE | 2d | 2023-01-30 A | 2023-02-10 A | 1-0618, 1-1275 | 100% |  |
| 1-0620 |  | INST CONDUIT, TERRY TO BOREN NORTH SIDE | 2d | 2023-01-30 A | 2023-02-10 A | 1-0619 SS | 100% |  |
| PCO550.01 |  | DSC 387-Delapitated water service Terry to Boren | 5d | 2023-02-03 A | 2023-02-04 A |  | 100% |  |
| PCO551.01 |  | DSC 388-Delapitated side sewer alley Terry to Boren | 5d | 2023-02-03 A | 2023-02-03 A |  | 100% |  |
| 1-0621 |  | GRADE SIDEWALK, TERRY TO BOREN NORTH SIDE | 2d | 2023-02-06 A | 2023-02-10 A | 1-0620 | 100% |  |
| 1-0622 |  | POUR SIDEWALK, TERRY TO BOREN NORTH SIDE | 6d | 2023-02-06 A | 2023-02-17 A | 1-0621, 1-0616 | 100% |  |
| 1-1380 |  | CITY CAUSED DELAY - NE TERRY DESIGN ISSUES | 2d | 2023-02-13 A | 2023-03-03 A | 1-0619 | 100% |  |
| 1-1385 |  | FINISH ELECTRICAL AFTER DELAY | 6d | 2023-03-13 A | 2023-03-31 A | 1-1380 | 100% |  |
| 1-2710 |  | CITY CAUSED DELAY - AWAITING COMCAST AND SDOT TO COMPLETE ELECTRICAL | 2d | 2023-04-03 A | 2023-04-12 A | 1-1385 | 100% |  |
| 1-2715 |  | COMPLETE ELECTRICAL AFTER COMCAST DELAY | 2d | 2023-04-13 A | 2023-04-17 A | 1-2710 | 100% |  |
| 1-2840 |  | DELAY HH ADJUSTMENT AWAITING SCL | 10d | 2023-04-18 A | 2023-05-08 A | 1-2715 SS | 100% |  |
| 1-2845 |  | ADJUST HH | 2d | 2023-05-09 A | 2023-05-09 A | 1-2840 | 100% |  |
| 1-1390 |  | GRADE REMAINING SIDEWALKS AFTER DELAY | 2d | 2023-05-10 A | 2023-05-10 A | 1-1385, 1-2715, 1-2845 | 100% |  |
| PCO676.01 |  | DSC 479-COMCAST HH TOO LOW | 2d | 2023-05-11 A | 2023-05-12 A | 1-2845 | 100% |  |
| 1-3150 |  | RAISE COMCAST HH | 2d | 2023-05-15 A | 2023-05-15 A | PCO676.01 | 100% |  |

| ID | WBS | Task | Duration | Start | Finish | Predecessors | Complete | Total float | Constraint |
| --- | --- | --- | --- | --- | --- | --- | --- | --- | --- |
| 1-1395 |  | POUR REMAINING SIDEWALKS AND RAMPS AFTER DELAY | 3d | 2023-05-16 A | 2023-05-18 A | 1-1390, 1-3150 | 100% |  |  |
|  | 36 | **DRIVEWAYS TERRY TO BOREN NORTH SIDE** |  | 2023-06-03 | 2023-06-04 |  |  |  |  |
| 1-0624 |  | REM SIDEWALK, DRIVEWAYS TERRY TO BOREN NORTH SIDE | 1d | 2023-06-03 A | 2023-06-03 A | 1-0620, 1-0622, 1-1395 | 100% |  |  |
| 1-0625 |  | POUR DRIVEWAY, DRIVEWAYS TERRY TO BOREN NORTH SIDE | 1d | 2023-06-04 A | 2023-06-04 A | 1-0624 | 100% |  |  |
|  | 37 | **BOREN TO MINOR NORTH SIDE** |  | 2022-09-15 | 2022-10-26 |  |  |  |  |
| PCO398.01 |  | DSC 290-Pole Foundation under Sidewalk NW Minor | 5d | 2022-09-15 A | 2022-09-21 A |  | 100% |  |  |
| 1-0627 |  | REM SIDEWALK, BOREN TO MINOR NORTH SIDE | 2d | 2022-09-19 A | 2022-09-21 A | 1-0191 | 100% |  |  |
| 1-1275 |  | TREE ROOT OBSTRUCTIONS | 3d | 2022-09-22 A | 2022-09-27 A | 1-0627 | 100% |  |  |
| 1-0628 |  | TRENCH CONDUIT, BOREN TO MINOR NORTH SIDE | 2d | 2022-09-28 A | 2022-09-30 A | 1-0627, 1-1275 | 100% |  |  |
| 1-0629 |  | INST CONDUIT, BOREN TO MINOR NORTH SIDE | 2d | 2022-09-28 A | 2022-09-30 A | 1-0628 SS | 100% |  |  |
| 1-0630 |  | GRADE SIDEWALK, BOREN TO MINOR NORTH SIDE | 1d | 2022-10-03 A | 2022-10-04 A | 1-0629 | 100% |  |  |
| 1-0631 |  | POUR SIDEWALK, BOREN TO MINOR NORTH SIDE | 6d | 2022-10-19 A | 2022-10-26 A | 1-0630 | 100% |  |  |
|  | 38 | **BOREN MADISON TO SPRING WEST SIDE** |  | 2023-08-21 | 2023-09-05 |  |  |  |  |
| 1-0633 |  | REM SIDEWALK, BOREN MAD TO SPRING WEST SIDE | 2d | 2023-08-21 | 2023-08-22 | 1-0630, 1-0615, 1-0625, 1-2985, 1-3215 |  | 246d |  |
| 1-0634 |  | TRENCH CONDUIT, BOREN MAD TO SPRING WEST SIDE | 2d | 2023-08-23 | 2023-08-24 | 1-0633 |  | 246d |  |
| 1-0635 |  | INST CONDUIT, BOREN MAD TO SPRING WEST SIDE | 2d | 2023-08-23 | 2023-08-24 | 1-0634 SS |  | 246d |  |
| 1-0636 |  | GRADE SIDEWALK, BOREN MAD TO SPRING WEST SIDE | 1d | 2023-08-25 | 2023-08-25 | 1-0635 |  | 246d |  |
| 1-0637 |  | POUR SIDEWALK, BOREN MAD TO SPRING WEST SIDE | 6d | 2023-08-28 | 2023-09-05 | 1-0636 |  | 246d |  |
|  | 39 | **BOREN MADISON TO SPRING EAST SIDE** |  | 2023-09-06 | 2023-09-19 |  |  |  |  |
| 1-0639 |  | REM SIDEWALK, BOREN MAD TO SPRING EAST SIDE | 2d | 2023-09-06 | 2023-09-07 | 1-0637 |  | 246d |  |
| 1-0640 |  | TRENCH CONDUIT, BOREN MAD TO SPRING EAST SIDE | 2d | 2023-09-08 | 2023-09-11 | 1-0639 |  | 246d |  |
| 1-0641 |  | INST CONDUIT, BOREN MAD TO SPRING EAST SIDE | 2d | 2023-09-08 | 2023-09-11 | 1-0640 SS |  | 246d |  |
| 1-0642 |  | GRADE SIDEWALK, BOREN MAD TO SPRING EAST SIDE | 1d | 2023-09-12 | 2023-09-12 | 1-0641 |  | 246d |  |
| 1-0643 |  | POUR SIDEWALK, BOREN MAD TO SPRING EAST SIDE | 5d | 2023-09-13 | 2023-09-19 | 1-0642 |  | 246d |  |
|  | 40 | **MINOR TO SUMMIT NORTH SIDE** |  | 2023-02-08 | 2023-04-07 |  |  |  |  |
| 1-0645 |  | REM SIDEWALK, MINOR TO SUMMIT NORTH SIDE | 2d | 2023-02-08 A | 2023-03-10 A | 1-0198, 1-2870 | 100% |  |  |
| 1-0646 |  | TRENCH CONDUIT, MINOR TO SUMMIT NORTH SIDE | 2d | 2023-02-10 A | 2023-03-10 A | 1-0645 SS | 100% |  |  |
| 1-0647 |  | INST CONDUIT, MINOR TO SUMMIT NORTH SIDE | 2d | 2023-02-10 A | 2023-04-07 A | 1-0646 SS | 100% |  |  |
| 1-0648 |  | GRADE SIDEWALK, MINOR TO SUMMIT NORTH SIDE | 1d | 2023-02-24 A | 2023-02-24 A | 1-0647 SS | 100% |  |  |
| 1-0649 |  | POUR SIDEWALK, MINOR TO SUMMIT NORTH SIDE | 5d | 2023-03-01 A | 2023-03-03 A | 1-0648, 1-0631 | 100% |  |  |
|  | 41 | **SUMMIT TO BOYLSON NORTH SIDE** |  | 2023-06-07 | 2023-06-12 |  |  |  |  |
| 1-0651 |  | REM SIDEWALK, SUMMIT TO BOYLSON NORTH SIDE | 1d | 2023-06-07 A | 2023-06-07 A | 1-0203, 1-0648 | 100% |  | start on or after 2023-06-07 |
| 1-0652 |  | TRENCH CONDUIT, SUMMIT TO BOYLSON NORTH SIDE | 1d | 2023-06-08 A | 2023-06-08 A | 1-0651 | 100% |  |  |
| 1-0653 |  | INST CONDUIT, SUMMIT TO BOYLSON NORTH SIDE | 1d | 2023-06-08 A | 2023-06-08 A | 1-0652 SS | 100% |  |  |
| 1-0654 |  | GRADE SIDEWALK, SUMMIT TO BOYLSON NORTH SIDE | 1d | 2023-06-09 A | 2023-06-09 A | 1-0653 | 100% |  |  |
| 1-0655 |  | POUR SIDEWALK, SUMMIT TO BOYLSON NORTH SIDE | 1d | 2023-06-12 A | 2023-06-12 A | 1-0654, 1-0649 | 100% |  |  |
|  | 54 | **TERRY TO BOREN SOUTH SIDE** |  | 2023-05-17 | 2023-06-14 |  |  |  |  |
| 1-0722 |  | REM SIDEWALK, TERRY TO BOREN SOUTH SIDE | 2d | 2023-05-17 A | 2023-05-18 A | 1-0241 | 100% |  |  |
| 1-0723 |  | TRENCH CONDUIT, TERRY TO BOREN SOUTH SIDE | 3d | 2023-05-19 A | 2023-06-02 A | 1-0722 | 100% |  |  |
| 1-0724 |  | INST CONDUIT, TERRY TO BOREN SOUTH SIDE | 3d | 2023-05-31 A | 2023-06-02 A | 1-0723 SS | 100% |  |  |
| 1-0725 |  | GRADE SIDEWALK, TERRY TO BOREN SOUTH SIDE | 2d | 2023-06-05 A | 2023-06-06 A | 1-0724 | 100% |  |  |
| 1-0726 |  | POUR SIDEWALK, TERRY TO BOREN SOUTH SIDE | 6d | 2023-06-07 A | 2023-06-14 A | 1-0725 | 100% |  |  |
|  | 55 | **BOREN TO MINOR SOUTH SIDE** |  | 2023-04-24 | 2023-08-30 |  |  |  |  |
| PCO644.01 |  | DSC 454-SIDE SEWER CONFLICT WITH POLE 40W-107-7 | 2d | 2023-04-24 A | 2023-06-30 A |  | 100% |  |  |
| 1-3155 |  | RE-ROUTE SIDE SEWER | 1d | 2023-06-20 A | 2023-06-20 A | PCO644.01 FS-9d | 100% |  |  |
| PCO644.06 |  | INSTALL POLE FOUNDATIONS | 5d | 2023-07-19 A | 2023-07-25 A | 1-3155 | 100% |  |  |
| 1-0728 |  | REM SIDEWALK, BOREN TO MINOR SOUTH SIDE | 2d | 2023-08-14 | 2023-08-15 | 1-0725, PCO644.01 SS, 1-3155, 1-3155 FF, PCO644.01, PCO644.06 |  | -68d |  |
| 1-0729 |  | TRENCH CONDUIT, BOREN TO MINOR SOUTH SIDE | 3d | 2023-08-16 | 2023-08-18 | 1-0728 |  | -68d |  |
| 1-0730 |  | INST CONDUIT, BOREN TO MINOR SOUTH SIDE | 3d | 2023-08-16 | 2023-08-18 | 1-0729 SS |  | -68d |  |
| 1-0731 |  | GRADE SIDEWALK, BOREN TO MINOR SOUTH SIDE | 2d | 2023-08-21 | 2023-08-22 | 1-0730 |  | -68d |  |
| 1-0732 |  | POUR SIDEWALK, BOREN TO MINOR SOUTH SIDE | 6d | 2023-08-23 | 2023-08-30 | 1-0731, 1-3245, 1-3215 |  | -68d |  |
|  | 61 | **BOREN NE CORNER** |  | 2022-09-19 | 2022-10-26 |  |  |  |  |
| 1-2850 |  | REM SIDEWALK, BOREN NE CORNER | 2d | 2022-09-19 A | 2022-09-21 A | 1-0627 SS | 100% |  |  |
| 1-2855 |  | TRENCH CONDUIT, BOREN NE CORNER | 3d | 2022-09-22 A | 2022-09-27 A | 1-2850 | 100% |  |  |
| 1-2900 |  | TREE ROOT OBSTRUCTIONS | 2d | 2022-09-22 A | 2022-09-27 A | 1-2855 | 100% |  |  |
| 1-2860 |  | INST CONDUIT, BOREN NE CORNER | 3d | 2022-09-28 A | 2022-09-30 A | 1-2855 SS, 1-2900 | 100% |  |  |
| 1-2865 |  | GRADE SIDEWALK, BOREN NE CORNER | 2d | 2022-10-03 A | 2022-10-04 A | 1-2860 | 100% |  |  |
| 1-2870 |  | POUR SIDEWALK, BOREN NE CORNER | 6d | 2022-10-19 A | 2022-10-26 A | 1-2865 | 100% |  |  |
|  | 63 | **TERRY SW CORNER** |  | 2023-04-27 | 2023-05-18 |  |  |  |  |
| 1-2910 |  | REM SIDEWALK, TERRY SW CORNER | 2d | 2023-04-27 A | 2023-04-27 A | 1-0622 | 100% |  |  |
| 1-2915 |  | TRENCH CONDUIT, TERRY SW CORNER | 3d | 2023-04-28 A | 2023-04-28 A | 1-2910 | 100% |  |  |
| 1-2920 |  | INST CONDUIT, TERRY SW CORNER | 3d | 2023-05-01 A | 2023-05-05 A | 1-2915 SS | 100% |  |  |
| 1-2925 |  | GRADE SIDEWALK, TERRY SW CORNER | 2d | 2023-05-08 A | 2023-05-08 A | 1-2920, PCO668.01 SS | 100% |  |  |
| PCO668.01 |  | DSC 471-OLD LIGHT POLE FOUNDATION | 3d | 2023-05-08 A | 2023-05-08 A | 1-2910 | 100% |  |  |
| 1-2930 |  | POUR SIDEWALK, TERRY SW CORNER | 6d | 2023-05-16 A | 2023-05-18 A | 1-2925 | 100% |  |  |
|  | 62 | **MINOR NW CORNER** |  | 2023-02-13 | 2023-05-04 |  |  |  |  |
| 1-2875 |  | REM SIDEWALK, MINOR NW CORNER | 2d | 2023-02-13 A | 2023-02-14 A | 1-0645 SS | 100% |  |  |
| 1-2880 |  | TRENCH CONDUIT, MINOR NW CORNER | 3d | 2023-02-15 A | 2023-02-16 A | 1-2875 | 100% |  |  |
| PCO606.01 |  | DSC 424-MULTIPLE CONFLICTS | 3d | 2023-02-17 A | 2023-04-13 A | 1-2880 | 100% |  |  |
| 1-2890 |  | GRADE SIDEWALK, MINOR NW CORNER | 2d | 2023-04-14 A | 2023-04-14 A | PCO606.01 | 100% |  |  |

| ID | WBS | Task | Duration | Start | Finish | Predecessors | Complete | Total float | Constraint |
| --- | --- | --- | --- | --- | --- | --- | --- | --- | --- |
| PCO636.01 |  | DSC 447-EXISTING HH CONFLICT WITH CURB RAMP | 3d | 2023-04-17 A | 2023-04-28 A | 1-2890 | 100% |  |  |
| 1-2905 |  | CURB RAMPS, MINOR NW CORNER | 6d | 2023-05-01 A | 2023-05-02 A | PCO606.01 | 100% |  |  |
| 1-2895 |  | POUR SIDEWALK, MINOR NW CORNER | 6d | 2023-05-03 A | 2023-05-04 A | 1-2905 | 100% |  |  |
|  | 56 | **MINOR TO SUMMIT SOUTH SIDE** |  | 2023-05-11 | 2023-06-28 |  |  |  |  |
| 1-0734 |  | REM SIDEWALK, MINOR TO SUMMIT SOUTH SIDE | 2d | 2023-05-11 A | 2023-05-17 A | 1-0253, 1-2895 | 100% |  |  |
| PCO684.01 |  | DSC 486-DUCT BANK CONFLICT WITH CONDUIT | 2d | 2023-05-13 A | 2023-05-16 A | 1-0734 | 100% |  |  |
| PCO695.01 |  | DSC 497-MINOR POLE PL 10-07 LOCATION CHANGE | 2d | 2023-05-17 A | 2023-05-17 A | 1-0734 | 100% |  |  |
| 1-0735 |  | TRENCH CONDUIT, MINOR TO SUMMIT SOUTH SIDE | 3d | 2023-05-18 A | 2023-05-19 A | 1-0734, PCO696.01, PCO695.01, PCO684.01 | 100% |  |  |
| PCO696.01 |  | DSC 498-UKNOWN UNLOCATED CONDUIT | 2d | 2023-05-20 A | 2023-05-22 A | 1-0734 | 100% |  |  |
| 1-0736 |  | INST CONDUIT, MINOR TO SUMMIT SOUTH SIDE | 3d | 2023-05-22 A | 2023-06-06 A | 1-0735 SS | 100% |  |  |
| 1-0775 |  | DSC 514-NEC Minor Type 3R Conflict wWith Existing Utilities | 1d | 2023-06-05 A | 2023-06-05 A | 1-0736 SS, 1-0736 FS-2d | 100% |  |  |
| 1-0737 |  | GRADE SIDEWALK, MINOR TO SUMMIT SOUTH SIDE | 2d | 2023-06-07 A | 2023-06-08 A | 1-0736, 1-0775 | 100% |  |  |
| 1-0758 |  | Additional Spare Conduit Installation | 1d | 2023-06-19 A | 2023-06-19 A | 1-0737 FS+6d, 1-0736 | 100% |  |  |
| 1-0738 |  | POUR SIDEWALK, MINOR TO SUMMIT SOUTH SIDE | 5d | 2023-06-22 A | 2023-06-28 A | 1-0737, 1-0758 FS+2d | 100% |  |  |
|  | 68 | **SUMMIT SW CORNER TO ALLOW PED ACCESS** |  | 2023-06-29 | 2023-08-16 |  |  |  |  |
| 1-3160 |  | REM SIDEWALK, SUMMIT SW CORNER | 1d | 2023-06-29 A | 2023-06-29 A | 1-0738 | 100% |  |  |
| 1-3165 |  | TRENCH CONDUIT, SUMMIT SW CORNER | 1d | 2023-06-30 A | 2023-06-30 A | 1-3160 | 100% |  |  |
| 1-3185 |  | INSTALL CONDUIT, SUMMIT SW CORNER | 4d | 2023-07-03 A | 2023-07-12 A | 1-3165 | 100% |  |  |
| 1-3170 |  | GRADE SIDEWALK, SUMMIT SW CORNER | 1d | 2023-08-10 A | 2023-08-10 A | 1-3165, 1-3185 | 100% |  |  |
| 1-3180 |  | CURB RAMPS, SUMMIT SW CORNER | 2d | 2023-08-14 | 2023-08-15 | 1-3170 |  | -1d |  |
| 1-3175 |  | POUR SIDEWALK, SUMMIT SW CORNER | 1d | 2023-08-16 | 2023-08-16 | 1-3180, 1-3170 |  | -1d |  |
|  | 72 | **SUMMIT SE CORNER TO ALLOW PED ACCESS** |  | 2023-06-29 | 2023-08-17 |  |  |  |  |
| 1-3310 |  | REM SIDEWALK, SUMMIT SE CORNER | 1d | 2023-06-29 A | 2023-06-29 A | 1-3160 SS | 100% |  |  |
| 1-3315 |  | TRENCH CONDUIT, SUMMIT SE CORNER | 1d | 2023-06-30 A | 2023-06-30 A | 1-3310 | 100% |  |  |
| 1-3335 |  | INSTALL CONDUIT, SUMMIT SE CORNER | 4d | 2023-07-03 A | 2023-07-07 A | 1-3315 | 100% |  |  |
| DSC-554 |  | DSC 554 POLE 40E-776-7 CONFLICT | 5d | 2023-07-07 A | 2023-07-28 A | 1-3335 | 100% |  |  |
| 1-3320 |  | GRADE SIDEWALK, SUMMIT SE CORNER | 1d | 2023-07-31 A | 2023-07-31 A | 1-3315, 1-3335, DSC-554 | 100% |  |  |
| 1-3330 |  | CURB RAMPS, SUMMIT SE CORNER | 2d | 2023-08-14 | 2023-08-15 | 1-3320 |  | 0d |  |
| 1-3325 |  | POUR SIDEWALK, SUMMIT SE CORNER | 1d | 2023-08-17 | 2023-08-17 | 1-3330, 1-3320, 1-3175 |  | -1d |  |
|  | 42 | **BOYLSTON TO BROADWAY NORTH SIDE** |  | 2022-11-18 | 2023-02-27 |  |  |  |  |
| PCO466.01 |  | DSC 338-Existing Conduit Boyleston alley | 5d | 2022-11-18 A | 2022-11-20 A |  | 100% |  |  |
| 1-0657 |  | REM SIDEWALK, BOYLSTON TO BROADWAY NORTH SIDE | 3d | 2023-01-31 A | 2023-02-02 A | 1-0210 | 100% |  |  |
| 1-0658 |  | TRENCH CONDUIT, BOYLSTON TO BROADWAY NORTH SIDE | 3d | 2023-01-31 A | 2023-02-02 A | 1-0657 SS | 100% |  |  |
| 1-0659 |  | INST CONDUIT, BOYLSTON TO BROADWAY NORTH SIDE | 3d | 2023-01-31 A | 2023-02-16 A | 1-0658 SS | 100% |  |  |
| 1-0660 |  | GRADE SIDEWALK, BOYLSTON TO BROADWAY NORTH SIDE | 1d | 2023-02-17 A | 2023-02-17 A | 1-0659 | 100% |  |  |
| 1-0661 |  | POUR SIDEWALK, BOYLSTON TO BROADWAY NORTH SIDE | 6d | 2023-02-20 A | 2023-02-27 A | 1-0660 | 100% |  |  |
|  | 57 | **SUMMIT TO BOYLSTON SOUTH SIDE** |  | 2023-06-07 | 2023-06-12 |  |  |  |  |
| 1-0740 |  | REM SIDEWALK, SUMMIT TO BOYLSTON SOUTH SIDE | 1d | 2023-06-07 A | 2023-06-07 A | 1-0258, 1-0737 SS, 1-0418 | 100% |  |  |
| 1-0741 |  | TRENCH CONDUIT, SUMMIT TO BOYLSTON SOUTH SIDE | 1d | 2023-06-08 A | 2023-06-08 A | 1-0740 | 100% |  |  |
| 1-0742 |  | INST CONDUIT, SUMMIT TO BOYLSTON SOUTH SIDE | 1d | 2023-06-08 A | 2023-06-08 A | 1-0741 SS | 100% |  |  |
| 1-0743 |  | GRADE SIDEWALK, SUMMIT TO BOYLSTON SOUTH SIDE | 1d | 2023-06-09 A | 2023-06-09 A | 1-0742 | 100% |  |  |
| 1-0744 |  | POUR SIDEWALK, SUMMIT TO BOYLSTON SOUTH SIDE | 1d | 2023-06-12 A | 2023-06-12 A | 1-0743 | 100% |  |  |
|  | 75 | **SW BOYLESTON** |  | 2023-07-03 | 2023-08-28 |  |  |  |  |
| 1-9089 |  | REMOVE SIDEWALK | 1d | 2023-07-03 A | 2023-07-03 A | 1-0744 | 100% |  |  |
| 1-9090 |  | TRENCH ELECTRICAL | 1d | 2023-07-05 A | 2023-07-06 A | 1-9089 | 100% |  |  |
| DSC-551 |  | DSC 551 CONDUIT CONFLICT WITH FOUNDATION | 5d | 2023-07-05 A | 2023-07-12 A | 1-9090 SS | 100% |  |  |
| 1-9091 |  | INSTALL ELECTRICAL | 3d | 2023-07-07 A | 2023-08-22 | 1-9090 |  | -7d |  |
| 1-9092 |  | GRADE SIDEWALKS | 1d | 2023-08-23 | 2023-08-23 | 1-9091, DSC-551 |  | -7d |  |
| 1-9093 |  | CURB RAMPS | 2d | 2023-08-24 | 2023-08-25 | 1-9092 |  | -7d |  |
| 1-9094 |  | SIDEWALKS | 1d | 2023-08-28 | 2023-08-28 | 1-9093, 1-3325 |  | -7d |  |
|  | 58 | **BOYLSTON TO BROADWAY SOUTH SIDE** |  | 2023-07-10 | 2023-07-24 |  |  |  |  |
| 1-0746 |  | REM SIDEWALK, BOYLSTON TO BW SOUTH SIDE | 2d | 2023-07-10 A | 2023-07-10 A | 1-0743, 1-0655 | 100% |  |  |
| DSC-555 |  | DSC 555 SEC BOYLESTON MULTIPLE CONFLICTS | 5d | 2023-07-10 A | 2023-07-10 A | 1-0746 SS | 100% |  |  |
| DSC-557 |  | DSC 557 PS POLE CONFLICT WITH CONDUITS | 5d | 2023-07-10 A | 2023-07-10 A | 1-0746 SS | 100% |  |  |
| 1-0747 |  | TRENCH CONDUIT, BOYLSTON TO BW SOUTH SIDE | 2d | 2023-07-11 A | 2023-07-11 A | 1-0746, DSC-557, DSC-555 | 100% |  |  |
| 1-0748 |  | INST CONDUIT, BOYLSTON TO BW SOUTH SIDE | 3d | 2023-07-11 A | 2023-07-17 A | 1-0747 SS | 100% |  |  |
| 1-0749 |  | GRADE SIDEWALK, BOYLSTON TO BW SOUTH SIDE | 3d | 2023-07-18 A | 2023-07-20 A | 1-0748 | 100% |  |  |
| 1-0750 |  | POUR SIDEWALK, BOYLSTON TO BW SOUTH SIDE | 6d | 2023-07-21 A | 2023-07-24 A | 1-0749, 1-0744 | 100% |  |  |
|  | 9 | **MILLING AND PAVING** |  | 2023-07-12 | 2023-09-15 |  |  |  |  |
| 1-0752 |  | MILL SPRING 1ST TO 6TH, MILLING & PAVING | 3d | 2023-07-12 A | 2023-07-17 A | 1-0616, 1-1315, 1-2945, 1-0286 | 100% |  |  |
| 1-0753 |  | MILL SPRING 6TH TO 9TH, MILLING & PAVING | 3d | 2023-07-12 A | 2023-07-17 A | 1-0752 | 100% |  |  |
| 1-0754 |  | MILL MAD 1ST TO 6TH, MILLING & PAVING | 1d | 2023-07-12 A | 2023-07-17 A | 1-0753 | 100% |  |  |
| DSC-561 |  | DSC 561 SINK HOLE | 5d | 2023-07-14 A | 2023-07-28 A | 1-0753 SS | 100% |  |  |
| 1-0756 |  | PREP FOR PAVING, MILLING AND PAVING | 10d | 2023-07-18 A | 2023-07-28 A | DSC-561 SS, DSC-561 FF | 100% |  |  |
| 1-0757 |  | PAVE SPRING 1ST TO 9TH, MADISON 1ST TO 3RD, 7TH MADISON TO SPRING AND 6TH MADISON TO SPRING | 5d | 2023-07-31 A | 2023-08-03 A | 1-0756, DSC-561 | 100% |  |  |
| 1-0755 |  | MILL MAD 6TH TO BROADWAY, MILLING & PAVING | 3d | 2023-09-13 | 2023-09-15 | 1-0754 FS+40d |  | -18d | start on or after 2023-09-13 |
|  | 10 | **MEDIAN STATION PLATFORMS** |  | 2023-09-18 | 2023-11-17 |  |  |  |  |
|  | 1 | **MADISON AND 8TH WB** |  | 2023-09-18 | 2023-10-05 |  |  |  |  |
| 1-0760 |  | REMOVE TEMP PAVING, MAD AND 8TH WB | 2d | 2023-09-18 | 2023-09-19 | 1-0749, 1-0755 |  | -18d |  |
| 1-0761 |  | TRENCH CONDUIT, MAD AND 8TH WB | 2d | 2023-09-20 | 2023-09-21 | 1-0760 |  | -18d |  |

| ID | WBS | Task | Duration | Start | Finish | Predecessors | Complete | Total float |
| --- | --- | --- | --- | --- | --- | --- | --- | --- |
| 1-0762 |  | INST CONDUIT, MAD AND 8TH WB | 2d | 2023-09-20 | 2023-09-21 | 1-0761 SS |  | -18d |
| 1-0763 |  | STATION FOUNDATIONS, MAD AND 8TH WB | 3d | 2023-09-22 | 2023-09-26 | 1-0762 |  | -18d |
| 1-0764 |  | STATION NOSING, MAD AND 8TH WB | 2d | 2023-09-27 | 2023-09-28 | 1-0763 |  | -18d |
| 1-0765 |  | GRADE FOR CONCRETE, MAD AND 8TH WB | 2d | 2023-09-29 | 2023-10-02 | 1-0764 |  | -18d |
| 1-0766 |  | STATION SIDEWALKS, MAD AND 8TH WB | 3d | 2023-10-03 | 2023-10-05 | 1-0765 |  | -17d |
|  | 2 | **MADISON AND TERRY** |  | 2023-10-03 | 2023-10-25 |  |  |  |
| 1-0768 |  | REMOVE TEMP PAVING, MAD AND TERRY | 2d | 2023-10-03 | 2023-10-04 | 1-0765 |  | -18d |
| 1-0769 |  | TRENCH CONDUIT, MAD AND TERRY | 2d | 2023-10-05 | 2023-10-06 | 1-0768 |  | -18d |
| 1-0770 |  | INST CONDUIT, MAD AND TERRY | 2d | 2023-10-05 | 2023-10-06 | 1-0769 SS |  | -18d |
| 1-0771 |  | STATION FOUNDATIONS, MAD AND TERRY | 3d | 2023-10-09 | 2023-10-11 | 1-0770, 1-0766 |  | -18d |
| 1-0772 |  | STATION NOSING, MAD AND TERRY | 2d | 2023-10-12 | 2023-10-13 | 1-0771 |  | -18d |
| 1-0773 |  | GRADE FOR CONCRETE, MAD AND TERRY | 3d | 2023-10-16 | 2023-10-18 | 1-0772 |  | -18d |
| 1-0774 |  | STATION SIDEWALKS, MAD AND TERRY | 5d | 2023-10-19 | 2023-10-25 | 1-0773 |  | -18d |
|  | 3 | **MADISON AND BOYLSTON** |  | 2023-10-19 | 2023-11-17 |  |  |  |
| 1-0776 |  | REMOVE TEMP PAVING, MAD AND BOYLSTON | 3d | 2023-10-19 | 2023-10-23 | 1-0773 |  | -18d |
| 1-0777 |  | TRENCH CONDUIT, MAD AND BOYLSTON | 2d | 2023-10-24 | 2023-10-25 | 1-0776 |  | -18d |
| 1-0778 |  | INST CONDUIT, MAD AND BOYLSTON | 2d | 2023-10-24 | 2023-10-25 | 1-0777 SS |  | -18d |
| 1-0779 |  | STATION FOUNDATIONS, MAD & BOYLSTON | 4d | 2023-10-26 | 2023-10-31 | 1-0778, 1-0774 |  | -18d |
| 1-0780 |  | STATION NOSING, MAD AND BOYLSTON | 2d | 2023-11-01 | 2023-11-02 | 1-0779 |  | -18d |
| 1-0781 |  | GRADE FOR CONCRETE, MAD AND BOYLSTON | 4d | 2023-11-03 | 2023-11-08 | 1-0780 |  | -18d |
| 1-0782 |  | STATION SIDEWALKS, MAD AND BOYLSTON | 6d | 2023-11-09 | 2023-11-17 | 1-0781, 1-2765 |  | -18d |
|  | 11 | **STRIPING AND SIGNS** |  | 2023-08-04 | 2023-09-25 |  |  |  |
| 1-0784 |  | CURE TIME, STRIPING AND SIGNS | 21d | 2023-08-04 A | 2023-09-03 | 1-0757 |  | 87d |
| 1-0786 |  | INST SIGNS, STRIPING AND SIGNS | 15d | 2023-08-14 | 2023-09-01 | 1-0784 SS |  | 74d |
| 1-0785 |  | CHANNELIZATION, STRIPING AND SIGNS | 15d | 2023-09-05 | 2023-09-25 | 1-0784, 1-0506 |  | 59d |
|  | 12 | **I-5 ENHANCEMENTS** |  | 2023-11-09 | 2023-11-22 |  |  |  |
| 1-0788 |  | INST PLANTERS, I-5 ENHANCEMENTS | 2d | 2023-11-09 | 2023-11-10 | 1-0781, 1-0785, 1-0786, LS-1480 FF |  | 27d |
| 1-0789 |  | INST DECORATIVE METAL, I-5 ENHANCEMENTS | 4d | 2023-11-14 | 2023-11-17 | 1-0788, LS-1485 FF |  | 27d |
| 1-0790 |  | PLANT PLANTERS, I-5 ENHANCEMENTS | 3d | 2023-11-20 | 2023-11-22 | 1-0789, LS-1490 FF |  | 27d |
|  | 13 | **LANDSCAPING** |  | 2022-10-12 | 2023-12-05 |  |  |  |
| 1-0792 |  | LANDSCAPE, INST FLEXIBLE POUROUS PAVMENT | 15d | 2022-10-12 A | 2023-06-20 A | 1-0546 | 100% |  |
| 1-0822 |  | INSTALL TREES AND SHRUBS | 10d | 2023-11-20 | 2023-12-05 | 1-0782 |  | 20d |
|  | 14 | **SIGNALS** |  | 2022-12-08 | 2024-03-11 |  |  |  |
|  | 1 | **1ST AND SPRING** |  | 2023-08-23 | 2023-11-03 |  |  |  |
| 1-9867 |  | INST SERVICE CABINET, SPRING AND 9TH | 1d | 2023-08-23 | 2023-08-23 | 1-0559 |  | -32d |
| 1-9882 |  | SDCI INSPECTION | 1d | 2023-08-24 | 2023-08-24 | 1-9867 |  | -32d |
| 1-9927 |  | SDOT INSPECTION | 1d | 2023-08-24 | 2023-08-24 | 1-9867 |  | -32d |
| 1-9873 |  | SCL INSPECTION REQUEST | 0d | 2023-08-25 | 2023-08-25 | 1-9882, 1-9927 |  | -32d |
| 1-9874 |  | 30 DAY WAIT FOR SCL TO INSPECT | 30d | 2023-08-25 | 2023-10-06 | 1-9873 |  | -32d |
| 1-9942 |  | SCL INSPECTION | 1d | 2023-10-09 | 2023-10-09 | 1-9874 |  | -32d |
| 1-0797 |  | SCL COMMISION NOTIFICATION, 1ST AND SPRING | 0d | 2023-10-10 | 2023-10-10 | 1-9942, 1-9942 FF |  | -32d |
| 1-0798 |  | 30 DAY WAIT FOR SCL TO COMMISION | 10d | 2023-10-10 | 2023-10-23 | 1-0797 |  | -32d |
| 1-0799 |  | SCL COMMISION SERVICE, 1ST AND SPRING | 1d | 2023-10-24 | 2023-10-24 | 1-0798 |  | -32d |
| 1-0795 |  | INST TRAFFIC SIGNAL CABINET, 1ST & SPRING | 1d | 2023-10-25 | 2023-10-25 | 1-0559, 1-0799 |  | -32d |
| 1-0796 |  | INST WIRING, 1ST AND SPRING | 1d | 2023-10-26 | 2023-10-26 | 1-0795 |  | -32d |
| 1-0800 |  | NOTIFY SDOT, 1ST AND SPRING | 0d | 2023-10-27 | 2023-10-27 | 1-0799, 1-0796 |  | -32d |
| 1-0801 |  | SDOT INSPECTION, 1ST AND SPRING | 5d | 2023-10-27 | 2023-11-02 | 1-0800 |  | -32d |
| 1-0802 |  | COMM SIGNAL, 1ST AND SPRING | 1d | 2023-11-03 | 2023-11-03 | 1-0801 |  | -32d |
|  | 10 | **MADISON AND 1ST** |  | 2023-07-24 | 2023-10-10 |  |  |  |
| 1-1887 |  | INST SERVICE CABINET, MAD AND 1ST | 1d | 2023-07-24 A | 2023-07-24 A |  | 100% |  |
| 1-1882 |  | SDCI INSPECTION | 1d | 2023-07-25 A | 2023-07-25 A | 1-1887 | 100% |  |
| 1-1873 |  | SCL INSPECTION REQUEST | 0d | 2023-07-26 A | 2023-07-27 A | 1-1882, 1-1927 | 100% |  |
| 1-1927 |  | SDOT INSPECTION | 1d | 2023-07-26 A | 2023-07-26 A | 1-1882 | 100% |  |
| 1-1874 |  | 30 DAY WAIT FOR SCL TO INSPECT | 30d | 2023-07-28 A | 2023-08-18 | 1-1873 |  | -16d |
| 1-1445 |  | INST MAST ARM POLES, MAD AND 1ST | 2d | 2023-08-14 | 2023-08-15 | PMP-0016, 1-1440 |  | -10d |
| 1-1942 |  | SCL INSPECTION | 1d | 2023-08-21 | 2023-08-21 | 1-1874 |  | -16d |
| 1-0885 |  | SCL COMMISION NOTIFICATION, MAD AND 1ST | 0d | 2023-08-22 | 2023-08-22 | 1-1942 |  | -16d |
| 1-0886 |  | 30 DAY WAIT FOR SCL TO COMMISION | 20d | 2023-08-22 | 2023-09-19 | 1-0885 |  | -16d |
| 1-0887 |  | COMM SERVICE, MAD AND 1ST | 1d | 2023-09-20 | 2023-09-20 | 1-0886 |  | -16d |
| 1-0880 |  | SIGNAL CABINET, MAD AND 1ST | 1d | 2023-09-21 | 2023-09-21 | 1-0666, PMP-0016, 1-0887 |  | -16d |
| 1-0881 |  | INST MAST ARM, MAD AND 1ST | 2d | 2023-09-22 | 2023-09-25 | 1-0880, 1-1445 |  | -16d |
| 1-2005 |  | INSTALL SERVICE CABINET, MAD AND 1ST | 1d | 2023-09-26 | 2023-09-26 | 1-0880, 1-0881, 1-1445 |  | -16d |
| 1-0883 |  | INST PPB POST, MAD AND 1ST | 1d | 2023-09-27 | 2023-09-27 | 1-2005 |  | -16d |
| 1-0884 |  | INST WIRING, MAD AND 1ST | 3d | 2023-09-28 | 2023-10-02 | 1-0883 |  | -16d |
| 1-0888 |  | NOTIFY SDOT, MAD AND 1ST | 0d | 2023-10-03 | 2023-10-03 | 1-0887, 1-0884 |  | -16d |
| 1-0889 |  | SDOT INSPECTION, MAD AND 1ST | 5d | 2023-10-03 | 2023-10-09 | 1-0888 |  | -16d |
| 1-0890 |  | COMM SIGNAL, MAD AND 1ST | 1d | 2023-10-10 | 2023-10-10 | 1-0889 |  | -16d |
|  | 11 | **MADISON AND 2ND** |  | 2023-08-24 | 2023-09-05 |  |  |  |
| 1-0892 |  | INST MAGNEMETORS & ACCESS POINT, MAD & 2ND | 2d | 2023-08-24 | 2023-08-25 | 1-0677, 1-0671 |  | 16d |
| 1-0893 |  | NOTIFY SDOT, MAD AND 2ND | 0d | 2023-08-28 | 2023-08-28 | 1-0892 |  | 16d |

| ID | WBS | Task | Duration | Start | Finish | Predecessors | Complete | Total float | Constraint |
| --- | --- | --- | --- | --- | --- | --- | --- | --- | --- |
| 1-0894 |  | SDOT INSPECTION, MAD AND 2ND | 5d | 2023-08-28 | 2023-09-01 | 1-0893 |  | 16d |  |
| 1-0895 |  | COMM SIGNAL, MAD AND 2ND | 1d | 2023-09-05 | 2023-09-05 | 1-0894 |  | 16d |  |
|  | 12 | **MADISON AND 3RD** |  | 2023-05-01 | 2023-10-30 |  |  |  |  |
| 1-0898 |  | INSTALL SERVICE CABINET, MAD AND 3RD | 1d | 2023-05-01 A | 2023-05-01 A | PCO316.01 | 100% |  |  |
| 1-2165 |  | SDCI INSPECTION, MAD AND 3RD | 1d | 2023-06-02 A | 2023-06-02 A | 1-0898 | 100% |  |  |
| 1-2166 |  | SDOT INSPECTION, MAD AND 3RD | 1d | 2023-06-14 A | 2023-06-14 A | 1-2165 | 100% |  |  |
| 1-0902 |  | SCL INSPECTION REQUEST | 0d | 2023-07-03 A | 2023-07-03 A | 1-2166 | 100% |  |  |
| 1-0903 |  | 30 DAY WAIT FOR SCL TO INSPECT | 30d | 2023-07-03 A | 2023-08-14 | 1-0902 |  | -33d |  |
| 1-2169 |  | SCL INSPECTION | 1d | 2023-08-15 | 2023-08-15 | 1-0903 |  | -33d |  |
| 1-2179 |  | COMMISION NOTIFICATION | 1d | 2023-08-16 | 2023-08-16 | 1-2169 |  | -33d |  |
| 1-2171 |  | 30 DAY WAIT FOR SCL TO COMMISION | 30d | 2023-08-17 | 2023-09-28 | 1-2179 |  | -33d |  |
| 1-0904 |  | COMM SERVICE, MAD AND 3RD | 1d | 2023-09-29 | 2023-09-29 | 1-2171 |  | -33d |  |
| 1-0897 |  | INST SIGNAL CABINET, MAD AND 3RD | 1d | 2023-10-12 | 2023-10-12 | 1-0682, 1-0904 |  | -41d |  |
| 1-0899 |  | INST OCS POLE, MAD AND 3RD | 2d | 2023-10-13 | 2023-10-16 | PMP-0016, 1-0897 |  | -41d |  |
| 1-0900 |  | INST PPB POST, MAD AND 3RD | 1d | 2023-10-17 | 2023-10-17 | 1-0899 |  | -41d |  |
| 1-0901 |  | INST WIRING & SIGNAL GEAR, MAD & 3RD | 3d | 2023-10-18 | 2023-10-20 | 1-0900 |  | -41d |  |
| 1-0905 |  | NOTIFY SDOT, MAD AND 3RD | 0d | 2023-10-23 | 2023-10-23 | 1-0904, 1-0901 |  | -22d |  |
| 1-0906 |  | SDOT INSPECTION, MAD AND 3RD | 5d | 2023-10-23 | 2023-10-27 | 1-0905 |  | -22d |  |
| 1-0907 |  | COMM SIGNAL, MAD AND 3RD | 1d | 2023-10-30 | 2023-10-30 | 1-0906, 1-0895 |  | -22d |  |
|  | 13 | **MADISON AND 4TH** |  | 2023-10-23 | 2023-11-03 |  |  |  |  |
| 1-0909 |  | INST PEDISTAL, MAD AND 4TH | 1d | 2023-10-23 | 2023-10-23 | 1-0687 |  | -26d |  |
| 1-0910 |  | INST MAGNOMETERS & ACCESS POINT, MAD & 4TH | 2d | 2023-10-24 | 2023-10-25 | 1-0909 |  | -26d |  |
| 1-0911 |  | INST SIGNAL GEAR, MAD AND 4TH | 1d | 2023-10-26 | 2023-10-26 | 1-0910 |  | -26d |  |
| 1-0912 |  | NOTIFY SDOT, MAD AND 4TH | 0d | 2023-10-27 | 2023-10-27 | 1-0911 |  | -26d |  |
| 1-0913 |  | SDOT INSPECTION, MAD AND 4TH | 5d | 2023-10-27 | 2023-11-02 | 1-0912 |  | -26d |  |
| 1-0914 |  | COMM SIGNAL, MAD AND 4TH | 1d | 2023-11-03 | 2023-11-03 | 1-0913 |  | -26d |  |
|  | 14 | **MADISON AND 5TH** |  | 2023-09-08 | 2023-11-06 |  |  |  |  |
| 1-0916 |  | INST SIGNAL GEAR, MAD AND 5TH | 1d | 2023-09-08 | 2023-09-08 | 1-0697 |  | 9d |  |
| 1-0917 |  | NOTIFY SDOT, MAD AND 5TH | 0d | 2023-09-11 | 2023-09-11 | 1-0916 |  | 9d |  |
| 1-0918 |  | SDOT INSPECTION, MAD AND 5TH | 5d | 2023-09-11 | 2023-09-15 | 1-0917 |  | 9d |  |
| 1-0919 |  | COMM SIGNAL, MAD AND 5TH | 1d | 2023-11-06 | 2023-11-06 | 1-0918, 1-0914 |  | -26d |  |
|  | 15 | **MADISON AND 6TH** |  | 2023-05-18 | 2023-12-04 |  |  |  |  |
| 1-0922 |  | INST SERVICE CABINET, MAD & 6TH | 1d | 2023-05-18 A | 2023-05-18 A | 1-2800 | 100% |  |  |
| 1-3194 |  | SDCI INSPECTION | 1d | 2023-06-02 A | 2023-06-02 A | 1-0922 | 100% |  |  |
| 1-3199 |  | SDOT INSPECTION | 1d | 2023-06-14 A | 2023-06-14 A | 1-3194 | 100% |  |  |
| 1-3196 |  | SCL INSPECTION REQUEST | 1d | 2023-08-14 | 2023-08-14 | 1-3199 |  | 14d | start on or after 2023-07-03 |
| 1-3197 |  | 30 DAY WAIT FOR SCL TO INSPECT | 30d | 2023-08-15 | 2023-09-26 | 1-3196 |  | 14d |  |
| 1-0924 |  | INTSALL OCS POLE, MAD AND 6TH | 2d | 2023-08-16 | 2023-08-17 | PMP-0016, 1-1445 |  | 77d |  |
| 1-1450 |  | INST MAST ARM POLES, MAD AND 6TH | 2d | 2023-08-16 | 2023-08-17 | PMP-0016, 1-1445 |  | -10d |  |
| 1-4198 |  | SCL INSPECTION | 1d | 2023-09-27 | 2023-09-27 | 1-3197 |  | 14d |  |
| 1-4199 |  | COMMISION NOTIFICATION | 1d | 2023-09-28 | 2023-09-28 | 1-4198 |  | 14d |  |
| 1-4200 |  | 30 DAY WAIT FOR SCL TO COMMISION | 30d | 2023-09-29 | 2023-11-09 | 1-4199 |  | 14d |  |
| 1-0929 |  | COMM SERVICE, MAD AND 6TH | 1d | 2023-11-10 | 2023-11-10 | 1-4200 |  | 14d |  |
| 1-0921 |  | INST SIGNAL CABINET, MAD AND 6TH | 1d | 2023-11-14 | 2023-11-14 | 1-0702, 1-0929 |  | 14d |  |
| 1-0923 |  | INST MAST ARM, MAD AND 6TH | 2d | 2023-11-15 | 2023-11-16 | 1-0921 |  | 14d |  |
| 1-0925 |  | INST SIGNAL GEAR, MAD AND 6TH | 1d | 2023-11-17 | 2023-11-17 | 1-0924, 1-0921, 1-0923 |  | 14d |  |
| 1-0926 |  | INST WIRING, MAD AND 6TH | 3d | 2023-11-20 | 2023-11-22 | 1-0925, 1-0923 |  | 14d |  |
| 1-0930 |  | NOTIFY SDOT, MAD AND 6TH | 0d | 2023-11-27 | 2023-11-27 | 1-0929, 1-0926 |  | 14d |  |
| 1-0931 |  | SDOT INSPECTION, MAD AND 6TH | 5d | 2023-11-27 | 2023-12-01 | 1-0930 |  | 14d |  |
| 1-0932 |  | COMM SIGNAL, MAD AND 6TH | 1d | 2023-12-04 | 2023-12-04 | 1-0931, 1-0919 |  | 14d |  |
|  | 16 | **MADISON AND 7TH** |  | 2023-04-27 | 2023-09-26 |  |  |  |  |
| 1-0934 |  | INST SERVICE CABINET, MAD & 7TH | 1d | 2023-04-27 A | 2023-04-27 A | 1-2800 | 100% |  |  |
| 1-0935 |  | INST STRAIN POLE, MAD AND 7TH | 2d | 2023-05-31 A | 2023-06-01 A | PMP-41 | 100% |  |  |
| 1-4211 |  | SDCI INSPECTION | 1d | 2023-06-02 A | 2023-06-02 A | 1-0934 | 100% |  |  |
| 1-4212 |  | SDOT INSPECTION | 1d | 2023-06-14 A | 2023-06-14 A | 1-4211 | 100% |  |  |
| 1-5196 |  | SCL INSPECTION REQUEST | 1d | 2023-08-01 A | 2023-08-01 A | 1-4212 | 100% |  | start on or after 2023-07-03 |
| 1-5197 |  | 30 DAY WAIT FOR SCL TO INSPECT | 30d | 2023-08-02 A | 2023-08-07 A | 1-5196 | 100% |  |  |
| 1-4215 |  | SCL INSPECTION | 1d | 2023-08-08 A | 2023-08-08 A | 1-5197 | 100% |  |  |
| 1-4216 |  | COMMISION NOTIFICATION | 1d | 2023-08-09 A | 2023-08-09 A | 1-4215, 1-4215 FF | 100% |  |  |
| 1-4217 |  | 30 DAY WAIT FOR SCL TO COMMISION | 20d | 2023-08-10 A | 2023-09-07 | 1-4216 |  | -10d |  |
| 1-0936 |  | INST OCS POLE, MAD AND 7TH | 2d | 2023-08-18 | 2023-08-21 | 1-0935, PMP-0016, 1-1450 |  | -10d |  |
| 1-0943 |  | COMM SERVICE, MAD AND 7TH | 1d | 2023-09-08 | 2023-09-08 | 1-4217 |  | -10d |  |
| 1-0937 |  | INST SIGNAL CABINET, MAD AND 6TH | 1d | 2023-09-11 | 2023-09-11 | 1-0943 |  | -10d |  |
| 1-0938 |  | INST PEDISTAL & PPB POST, MAD & 7TH | 1d | 2023-09-12 | 2023-09-12 | 1-0937 |  | -10d |  |
| 1-0939 |  | INST MAGNOMETERS, MAD AND 7TH | 1d | 2023-09-13 | 2023-09-13 | 1-0938 |  | -10d |  |
| 1-0940 |  | INST WIRING, MAD AND 7TH | 3d | 2023-09-14 | 2023-09-18 | 1-0939 |  | -10d |  |
| 1-0944 |  | NOTIFY SDOT, MAD AND 7TH | 0d | 2023-09-19 | 2023-09-19 | 1-0943, 1-0940 |  | 39d |  |
| 1-0945 |  | SDOT INSPECTION, MAD AND 7TH | 5d | 2023-09-19 | 2023-09-25 | 1-0944 |  | 39d |  |
| 1-0946 |  | COMM SIGNAL, MAD AND 7TH | 1d | 2023-09-26 | 2023-09-26 | 1-0945 |  | 39d |  |
|  | 17 | **MADISON AND 8TH** |  | 2023-07-24 | 2023-10-19 |  |  |  |  |

| ID | WBS | Task | Duration | Start | Finish | Predecessors | Complete | Total float | Constraint |
| --- | --- | --- | --- | --- | --- | --- | --- | --- | --- |
| 1-0949 |  | INST SERVICE CABINET, MAD AND 8TH | 1d | 2023-07-24 A | 2023-07-24 A | 1-0708 | 100% |  |  |
| 1-4882 |  | SDCI INSPECTION | 1d | 2023-07-25 A | 2023-07-25 A | 1-0949 | 100% |  |  |
| 1-0955 |  | SCL INSPECTION REQUEST | 0d | 2023-07-26 A | 2023-07-26 A | 1-4927 | 100% |  |  |
| 1-4927 |  | SDOT INSPECTION | 1d | 2023-07-26 A | 2023-07-26 A | 1-4882 | 100% |  |  |
| 1-0956 |  | 30 DAY WAIT FOR SCL TO INSPECT | 30d | 2023-07-27 A | 2023-08-22 | 1-0955 |  | 23d |  |
| 1-1455 |  | INST MAST ARM POLES, MAD AND 8TH | 2d | 2023-08-22 | 2023-08-23 | 1-0936, PMP-0016 |  | -10d |  |
| 1-5215 |  | SCL INSPECTION | 1d | 2023-08-23 | 2023-08-23 | 1-0956 |  | 23d |  |
| 1-5216 |  | COMMISION NOTIFICATION | 1d | 2023-08-24 | 2023-08-24 | 1-5215 |  | 23d |  |
| 1-5217 |  | 30 DAY WAIT FOR SCL TO COMMISION | 23d | 2023-08-25 | 2023-09-27 | 1-5216 |  | 23d |  |
| 1-0957 |  | COMM SERVICE, MAD AND 8TH | 1d | 2023-09-28 | 2023-09-28 | 1-5217 |  | 23d |  |
| 1-0948 |  | INST SIGNAL CABINET, MAD AND 8TH | 1d | 2023-09-29 | 2023-09-29 | 1-0714, 1-0957 |  | 23d |  |
| 1-0950 |  | INST MAST ARMS, MAD AND 8TH | 2d | 2023-10-02 | 2023-10-03 | 1-0949, 1-1455, 1-0948 |  | 23d |  |
| 1-0951 |  | INST PPB POSTS, MAD AND 8TH | 1d | 2023-10-04 | 2023-10-04 | 1-0950, 1-1455 |  | 23d |  |
| 1-0952 |  | INST PEDISTALS, MAD AND 8TH | 1d | 2023-10-05 | 2023-10-05 | 1-0951 |  | 23d |  |
| 1-0953 |  | INST SIGNAL GEAR, MAD AND 8TH | 1d | 2023-10-06 | 2023-10-06 | 1-0952 |  | 23d |  |
| 1-0954 |  | INST WIRING, MAD AND 8TH | 3d | 2023-10-09 | 2023-10-11 | 1-0953 |  | 23d |  |
| 1-0958 |  | NOTIFY SDOT, MAD AND 8TH | 0d | 2023-10-12 | 2023-10-12 | 1-0957, 1-0954 |  | 23d |  |
| 1-0959 |  | SDOT INSPECTION, MAD AND 8TH | 5d | 2023-10-12 | 2023-10-18 | 1-0958 |  | 23d |  |
| 1-0960 |  | COMM SIGNAL, MAD AND 8TH | 1d | 2023-10-19 | 2023-10-19 | 1-0959, 1-0946 |  | 23d |  |
|  | 18 | **MADISON AND 9TH** |  | 2023-08-24 | 2024-03-11 |  |  |  |  |
| 1-0964 |  | INST MAST ARM POLES , MAD & 9TH | 8d | 2023-08-24 | 2023-09-05 | PMP-0016, 1-1455 |  | -10d |  |
| 1-0963 |  | INST SERVICE CABINET, MAD AND 9TH | 1d | 2023-10-31 | 2023-10-31 | 1-0720 |  | -116d |  |
| 1-3882 |  | SDCI INSPECTION | 1d | 2023-11-01 | 2023-11-01 | 1-0963 |  | -116d |  |
| 1-3927 |  | SDOT INSPECTION | 1d | 2023-11-02 | 2023-11-02 | 1-3882 |  | -116d |  |
| 1-9955 |  | SCL INSPECTION REQUEST | 0d | 2023-11-03 | 2023-11-03 | 1-3927 |  | -116d |  |
| 1-9956 |  | 30 DAY WAIT FOR SCL TO INSPECT | 30d | 2023-11-03 | 2023-12-19 | 1-9955 |  | -116d |  |
| 1-4218 |  | SCL INSPECTION | 1d | 2023-12-20 | 2023-12-20 | 1-9956 |  | -116d |  |
| 1-4219 |  | COMMISION NOTIFICATION | 1d | 2023-12-21 | 2023-12-21 | 1-4218 |  | -116d |  |
| 1-0971 |  | 30 DAY WAIT FOR SCL TO COMMISION | 30d | 2023-12-22 | 2024-02-06 | 1-4219 |  | -116d |  |
| 1-0972 |  | COMM SERVICE, MAD AND 9TH | 1d | 2024-02-07 | 2024-02-07 | 1-0971 |  | -116d |  |
| 1-0962 |  | INST SIGNAL CABINET, MAD AND 9TH | 1d | 2024-02-08 | 2024-02-08 | 1-0720, 1-0972 |  | -116d |  |
| 1-1460 |  | INST MAST ARMS, MAD & 9TH | 8d | 2024-02-09 | 2024-02-21 | 1-0964, 1-0962, 1-0962 FF |  | -116d |  |
| 1-0965 |  | INST PPB POSTS, MAD AND 9TH | 1d | 2024-02-22 | 2024-02-22 | 1-0964, 1-1460 |  | -116d |  |
| 1-0966 |  | INST PEDISTALS, MAD AND 9TH | 1d | 2024-02-23 | 2024-02-23 | 1-0965 |  | -116d |  |
| 1-0967 |  | INST SIGNAL GEAR, MAD AND 9TH | 1d | 2024-02-26 | 2024-02-26 | 1-0966 |  | -116d |  |
| 1-0968 |  | INST MAGNOMETERS, MAD AND 9TH | 1d | 2024-02-27 | 2024-02-27 | 1-0967 |  | -116d |  |
| 1-0969 |  | INST WIRING, MAD AND 9TH | 3d | 2024-02-28 | 2024-03-01 | 1-0968 |  | -116d |  |
| 1-0973 |  | NOTIFY SDOT, MAD AND 9TH | 0d | 2024-03-04 | 2024-03-04 | 1-0972, 1-0969 |  | -70d |  |
| 1-0974 |  | SDOT INSPECTION, MAD AND 9TH | 5d | 2024-03-04 | 2024-03-08 | 1-0973 |  | -70d |  |
| 1-0975 |  | COMM SIGNAL, MAD AND 9TH | 1d | 2024-03-11 | 2024-03-11 | 1-0974, 1-0960, 1-0878 |  | -70d |  |
|  | 19 | **MADISON AND TERRY** |  | 2023-05-18 | 2023-10-13 |  |  |  |  |
| 1-0978 |  | INST SERVICE CABINET, MAD & TERRY | 1d | 2023-05-18 A | 2023-05-18 A | 1-2930 | 100% |  |  |
| 1-2262 |  | SDCI INSPECTION | 1d | 2023-06-02 A | 2023-06-02 A | 1-0978 | 100% |  |  |
| 1-2263 |  | SDOT INSPECTION | 1d | 2023-06-14 A | 2023-06-14 A | 1-2262 | 100% |  |  |
| 1-2264 |  | SCL INSPECTION REQUEST | 1d | 2023-07-20 A | 2023-07-20 A | 1-0978, 1-2263 | 100% |  | start on or after 2023-07-03 |
| 1-2269 |  | 30 DAY WAIT FOR SCL TO INSPECT | 30d | 2023-07-21 A | 2023-08-18 | 1-2264 |  | 41d |  |
| 1-0979 |  | INST MAST ARM POLES, MAD & TERRY | 4d | 2023-08-14 | 2023-08-17 | PMP-0016 |  | 66d |  |
| 1-2266 |  | SCL INSPECTION | 1d | 2023-08-21 | 2023-08-21 | 1-2269 |  | 41d |  |
| 1-2267 |  | COMMISION NOTIFICATION | 1d | 2023-08-22 | 2023-08-22 | 1-2266 |  | 41d |  |
| 1-2268 |  | 30 DAY WAIT FOR SCL TO COMMISION | 20d | 2023-08-23 | 2023-09-20 | 1-2267 |  | 41d |  |
| 1-0985 |  | COMM SERVICE, MAD AND TERRY | 1d | 2023-09-21 | 2023-09-21 | 1-2268 |  | 41d |  |
| 1-0977 |  | INST SIGNAL CABINET, MAD & TERRY | 1d | 2023-09-22 | 2023-09-22 | 1-0726, 1-0985 |  | 41d |  |
| 1-1465 |  | INST MAST ARM, MAD & TERRY | 4d | 2023-09-25 | 2023-09-28 | 1-0979, 1-0977 |  | 41d |  |
| 1-0980 |  | INST PPB POSTS, MAD AND TERRY | 1d | 2023-09-29 | 2023-09-29 | 1-0979, 1-1465 |  | 41d |  |
| 1-0981 |  | INST SIGNAL GEAR, MAD AND TERRY | 1d | 2023-10-02 | 2023-10-02 | 1-0980 |  | 41d |  |
| 1-0982 |  | INST WIRING, MAD AND TERRY | 3d | 2023-10-03 | 2023-10-05 | 1-0981 |  | 41d |  |
| 1-0986 |  | NOTIFY SDOT, MAD AND TERRY | 0d | 2023-10-06 | 2023-10-06 | 1-0985, 1-0982 |  | 41d |  |
| 1-0987 |  | SDOT INSPECTION, MAD AND TERRY | 5d | 2023-10-06 | 2023-10-12 | 1-0986 |  | 41d |  |
| 1-0988 |  | COMM SIGNAL, MAD AND TERRY | 1d | 2023-10-13 | 2023-10-13 | 1-0987 |  | 41d |  |
|  | 2 | **2ND AND SPRING** |  | 2023-02-09 | 2023-06-01 |  |  |  |  |
| 1-0804 |  | INST SIGNAL GEAR, 2ND AND SPRING | 1d | 2023-02-09 A | 2023-02-09 A | 1-0442 | 100% |  |  |
| 1-0806 |  | INST WIRING, 2ND AND SPRING | 1d | 2023-02-13 A | 2023-02-13 A | 1-0804 | 100% |  |  |
| 1-0808 |  | SDOT INSPECTION, 2ND AND SPRING | 5d | 2023-02-14 A | 2023-02-21 A | 1-0806 | 100% |  |  |
| 1-1400 |  | DELAY AWAITING SDOT | 5d | 2023-02-22 A | 2023-03-01 A | 1-0808 | 100% |  |  |
| 1-0809 |  | COMM SIGNAL, 2ND AND SPRING | 1d | 2023-03-02 A | 2023-03-02 A | 1-0808, 1-1400 | 100% |  |  |
| 1-0805 |  | INST MAGNOMETERS, 2ND AND SPRING | 1d | 2023-05-31 A | 2023-05-31 A | 1-0806 | 100% |  |  |
| 1-0807 |  | NOTIFY SDOT, 2ND AND SPRING | 0d | 2023-06-01 A | 2023-06-01 A | 1-0806, 1-0805 | 100% |  |  |
|  | 20 | **MADISON AND BOREN** |  | 2023-08-14 | 2024-01-09 |  |  |  |  |
| 1-0992 |  | INST MAST ARM POLES, MAD & BOREN | 8d | 2023-08-14 | 2023-08-23 |  |  | 4d |  |
| 1-0991 |  | INST SERVICE CABINET, MAD & BOREN | 1d | 2023-08-31 | 2023-08-31 | 1-0732 |  | -68d |  |

| ID | WBS | Task | Duration | Start | Finish | Predecessors | Complete | Total float |
| --- | --- | --- | --- | --- | --- | --- | --- | --- |
| 1-8882 |  | SDCI INSPECTION | 1d | 2023-09-01 | 2023-09-01 | 1-0991 |  | -68d |
| 1-8927 |  | SDOT INSPECTION | 1d | 2023-09-05 | 2023-09-05 | 1-8882 |  | -68d |
| 1-0998 |  | SCL INSPECTION REQUEST | 0d | 2023-09-06 | 2023-09-06 | 1-8927 |  | -68d |
| 1-0999 |  | 30 DAY WAIT FOR SCL TO INSPECT | 30d | 2023-09-06 | 2023-10-17 | 1-0998 |  | -68d |
| 1-3266 |  | SCL INSPECTION | 1d | 2023-10-18 | 2023-10-18 | 1-0999 |  | -68d |
| 1-3267 |  | COMMISION NOTIFICATION | 1d | 2023-10-19 | 2023-10-19 | 1-3266 |  | -68d |
| 1-3268 |  | 30 DAY WAIT FOR SCL TO COMMISION | 30d | 2023-10-20 | 2023-12-05 | 1-3267 |  | -68d |
| 1-1000 |  | COMM SERVICE, MAD AND BOREN | 1d | 2023-12-06 | 2023-12-06 | 1-0999, 1-3268 |  | -68d |
| 1-0990 |  | INST SIGNAL CABINET, MAD & BOREN | 1d | 2023-12-07 | 2023-12-07 | 1-0732, 1-1000 |  | -68d |
| 1-1470 |  | INST MAST ARMS, MAD & BOREN | 8d | 2023-12-08 | 2023-12-19 | 1-0992, 1-0991, 1-0990 |  | -68d |
| 1-0993 |  | INST PPB POSTS, MAD AND BOREN | 1d | 2023-12-20 | 2023-12-20 | 1-1470, 1-0990 |  | -68d |
| 1-0994 |  | INST PEDISTALS, MAD AND BOREN | 1d | 2023-12-21 | 2023-12-21 | 1-0993 |  | -68d |
| 1-0995 |  | INST SIGNAL GEAR, MAD AND BOREN | 1d | 2023-12-22 | 2023-12-22 | 1-0994 |  | -68d |
| 1-0996 |  | INST MEGNOMETERS, MAD AND BOREN | 1d | 2023-12-26 | 2023-12-26 | 1-0995 |  | -68d |
| 1-0997 |  | INST WIRING, MAD AND BOREN | 3d | 2023-12-27 | 2023-12-29 | 1-0996 |  | -68d |
| 1-1001 |  | NOTIFY SDOT, MAD AND BOREN | 0d | 2024-01-02 | 2024-01-02 | 1-1000, 1-0997 |  | -30d |
| 1-1002 |  | SDOT INSPECTION, MAD AND BOREN | 5d | 2024-01-02 | 2024-01-08 | 1-1001 |  | -30d |
| 1-1003 |  | COMM SIGNAL, MAD AND BOREN | 1d | 2024-01-09 | 2024-01-09 | 1-1002 |  | -30d |
|  | 21 | **MADISON AND MINOR** |  | 2023-05-16 | 2023-10-17 |  |  |  |
| 1-1006 |  | INST SERVICE CABINET, MAD & MINOR | 1d | 2023-05-16 A | 2023-05-16 A | 1-2895 | 100% |  |
| 1-6297 |  | SDCI INSPECTION | 1d | 2023-06-02 A | 2023-06-02 A | 1-1006 | 100% |  |
| 1-6298 |  | SDOT INSPECTION | 1d | 2023-06-14 A | 2023-06-14 A | 1-6297 | 100% |  |
| 1-6299 |  | SCL INSPECTION REQUEST | 1d | 2023-06-14 A | 2023-06-14 A | 1-1006, 1-6298 | 100% |  |
| 1-6300 |  | 30 DAY WAIT FOR SCL TO INSPECT | 30d | 2023-06-15 A | 2023-08-11 A | 1-6299 | 100% |  |
| 1-1017 |  | INST OCS POLE, MAD AND MINOR | 5d | 2023-06-29 A | 2023-07-06 A | 1-0738 | 100% |  |
| 1-6301 |  | SCL INSPECTION | 1d | 2023-08-14 | 2023-08-14 | 1-6300 |  | 1d |
| 1-6302 |  | COMMISION NOTIFICATION | 1d | 2023-08-15 | 2023-08-15 | 1-6301 |  | 1d |
| 1-6303 |  | 30 DAY WAIT FOR SCL TO COMMISION | 30d | 2023-08-16 | 2023-09-27 | 1-6302 |  | 1d |
| 1-1013 |  | COMM SERVICE, MAD AND MINOR | 1d | 2023-09-28 | 2023-09-28 | 1-6303 |  | 1d |
| 1-1005 |  | INST SIGNAL CABINET, MAD & MINOR | 1d | 2023-09-29 | 2023-09-29 | 1-0738, 1-1013 |  | 1d |
| 1-1007 |  | INST PPB POSTS, MAD AND MINOR | 1d | 2023-10-02 | 2023-10-02 | 1-1005 |  | 1d |
| 1-1008 |  | INST PEDISTALS, MAD AND MINOR | 1d | 2023-10-03 | 2023-10-03 | 1-1007 |  | 1d |
| 1-1009 |  | INST SIGNAL GEAR, MAD AND MINOR | 1d | 2023-10-04 | 2023-10-04 | 1-1008 |  | 1d |
| 1-1010 |  | INST WIRING, MAD AND MINOR | 3d | 2023-10-05 | 2023-10-09 | 1-1009 |  | 1d |
| 1-1014 |  | NOTIFY SDOT, MAD AND MINOR | 0d | 2023-10-10 | 2023-10-10 | 1-1013, 1-1010 |  | 42d |
| 1-1015 |  | SDOT INSPECTION, MAD AND MINOR | 5d | 2023-10-10 | 2023-10-16 | 1-1014 |  | 42d |
| 1-1016 |  | COMM SIGNAL, MAD AND MINOR | 1d | 2023-10-17 | 2023-10-17 | 1-1015 |  | 42d |
|  | 22 | **MADISON AND SUMMIT** |  | 2023-08-14 | 2023-12-08 |  |  |  |
| 1-1019 |  | INST SERVICE CABINET, MAD & SUMMIT | 1d | 2023-08-14 | 2023-08-14 | 1-0744 |  | -37d |
| 1-7882 |  | SDCI INSPECTION | 1d | 2023-08-15 | 2023-08-15 | 1-1019 |  | -37d |
| 1-7927 |  | SDOT INSPECTION | 1d | 2023-08-16 | 2023-08-16 | 1-7882 |  | -37d |
| 1-1025 |  | SCL INSPECTION REQUEST | 0d | 2023-08-17 | 2023-08-17 | 1-7927 |  | -37d |
| 1-1026 |  | 30 DAY WAIT FOR SCL TO INSPECT | 30d | 2023-08-17 | 2023-09-28 | 1-1025 |  | -37d |
| 1-7301 |  | SCL INSPECTION | 1d | 2023-09-29 | 2023-09-29 | 1-1026 |  | -37d |
| 1-7302 |  | COMMISION NOTIFICATION | 1d | 2023-10-02 | 2023-10-02 | 1-7301 |  | -37d |
| 1-7303 |  | 30 DAY WAIT FOR SCL TO COMMISION | 30d | 2023-10-03 | 2023-11-14 | 1-7302 |  | -37d |
| 1-1027 |  | COMM SERVICE, MAD AND SUMMIT | 1d | 2023-11-15 | 2023-11-15 | 1-1026, 1-7303 |  | -37d |
| 1-1018 |  | INST SIGNAL CABINET, MAD & SUMMIT | 1d | 2023-11-16 | 2023-11-16 | 1-0744, 1-1027 |  | -37d |
| 1-1020 |  | INST MAST ARM POLES, MAD & SUMMIT | 2d | 2023-11-17 | 2023-11-20 | PMP-0016, 1-1018 |  | -33d |
| 1-1475 |  | INST MAST ARMS, MAD & SUMMIT | 2d | 2023-11-17 | 2023-11-20 | 1-1019, 1-0456, 1-1018 |  | -37d |
| 1-1021 |  | INST PPB POSTS, MAD AND SUMMIT | 1d | 2023-11-21 | 2023-11-21 | 1-1475 |  | -37d |
| 1-1022 |  | INST PEDISTALS, MAD AND SUMMIT | 1d | 2023-11-22 | 2023-11-22 | 1-1021 |  | -37d |
| 1-1023 |  | INST SIGNAL GEAR, MAD AND SUMMIT | 1d | 2023-11-27 | 2023-11-27 | 1-1022 |  | -37d |
| 1-1024 |  | INST WIRING, MAD AND SUMMIT | 3d | 2023-11-28 | 2023-11-30 | 1-1023 |  | -37d |
| 1-1028 |  | NOTIFY SDOT, MAD AND SUMMIT | 0d | 2023-12-01 | 2023-12-01 | 1-1027, 1-1024 |  | 8d |
| 1-1029 |  | SDOT INSPECTION, MAD AND SUMMIT | 5d | 2023-12-01 | 2023-12-07 | 1-1028 |  | 8d |
| 1-1030 |  | COMM SIGNAL, MAD AND SUMMIT | 1d | 2023-12-08 | 2023-12-08 | 1-1029, 1-1016 |  | 8d |
|  | 23 | **MADISON AND BOYLSTON** |  | 2023-07-25 | 2023-12-22 |  |  |  |
| 1-1047 |  | INST OCS POLES, MAD AND BOYLSTON | 5d | 2023-07-25 A | 2023-07-31 A | 1-0750 | 100% |  |
| 1-1033 |  | INST SERVICE CABINET, MAD & BOYLSTON | 1d | 2023-08-29 | 2023-08-29 | 1-0661, 1-0750, 1-9094 |  | -7d |
| 1-1050 |  | SDCI INSPECTION | 1d | 2023-08-30 | 2023-08-30 | 1-1033 |  | -7d |
| 1-1070 |  | SDOT INSPECTION | 1d | 2023-08-31 | 2023-08-31 | 1-1050 |  | -7d |
| 1-1038 |  | SCL INSPECTION REQUEST | 0d | 2023-09-01 | 2023-09-01 | 1-1070 |  | -7d |
| 1-1039 |  | 30 DAY WAIT FOR SCL TO INSPECT | 30d | 2023-09-01 | 2023-10-13 | 1-1038 |  | -7d |
| 1-1079 |  | SCL INSPECTION | 1d | 2023-10-16 | 2023-10-16 | 1-1039 |  | -7d |
| 1-1091 |  | COMMISION NOTIFICATION | 1d | 2023-10-17 | 2023-10-17 | 1-1079 |  | -7d |
| 1-1099 |  | 30 DAY WAIT FOR SCL TO COMMISION | 30d | 2023-10-18 | 2023-12-01 | 1-1091 |  | -7d |
| 1-1040 |  | COMM SERVICE, MAD AND BOYLSTON | 1d | 2023-12-04 | 2023-12-04 | 1-1039, 1-1099 |  | -7d |
| 1-1032 |  | INST SIGNAL CABINET, MAD & BOYLSTON | 1d | 2023-12-05 | 2023-12-05 | 1-0750 FF, 1-0661, 1-1040 |  | -7d |
| 1-1034 |  | INST PPB POSTS, MAD AND BOYLSTON | 1d | 2023-12-06 | 2023-12-06 | 1-1033, 1-1032 |  | -7d |

| ID | WBS | Task | Duration | Start | Finish | Predecessors | Complete | Total float | Constraint |
| --- | --- | --- | --- | --- | --- | --- | --- | --- | --- |
| 1-1035 |  | INST PEDISTALS, MAD AND BOYLSTON | 2d | 2023-12-07 | 2023-12-08 | 1-1034 |  | -7d |  |
| 1-1036 |  | INST SIGNAL GEAR, MAD & BOYLSTON | 1d | 2023-12-11 | 2023-12-11 | 1-1035 |  | -7d |  |
| 1-1037 |  | INST WIRING, MAD AND BOYLSTON | 3d | 2023-12-12 | 2023-12-14 | 1-1036 |  | -7d |  |
| 1-1041 |  | NOTIFY SDOT, MAD AND BOYLSTON | 0d | 2023-12-15 | 2023-12-15 | 1-1040, 1-1037 |  | -1d |  |
| 1-1042 |  | SDOT INSPECTION, MAD AND BOYLSTON | 5d | 2023-12-15 | 2023-12-21 | 1-1041 |  | -1d |  |
| 1-1043 |  | COMM SIGNAL, MAD AND BOYLSTON | 1d | 2023-12-22 | 2023-12-22 | 1-1042, 1-1030 |  | -1d |  |
|  | 3 | **3RD AND SPRING** |  | 2022-12-08 | 2023-03-02 |  |  |  |  |
| 1-0816 |  | SCL INSPECTION REQUEST | 0d | 2022-12-08 A | 2022-12-08 A | 1-0564 | 100% |  |  |
| 1-0817 |  | SCL INSPECTION | 10d | 2022-12-23 A | 2023-01-05 A | 1-0816 | 100% |  |  |
| 1-0811 |  | INST OCS POLE, 3RD AND SPRING | 1d | 2022-12-30 A | 2022-12-30 A | 1-0816 | 100% |  |  |
| 1-0812 |  | INST PPB POSTS, 3RD AND SPRING | 1d | 2023-01-03 A | 2023-01-03 A | 1-0811 | 100% |  |  |
| 1-0813 |  | INST OWNER FURNISHED CABINET, 3RD & SPRING | 1d | 2023-01-04 A | 2023-01-04 A | 1-0812 | 100% |  |  |
| 1-0814 |  | INST SIGNAL GEAR, 3RD AND SPRING | 1d | 2023-01-05 A | 2023-01-05 A | 1-0813 | 100% |  |  |
| 1-0815 |  | INST WIRING, 3RD AND SPRING | 2d | 2023-01-06 A | 2023-01-06 A | 1-0814 | 100% |  |  |
| 1-0818 |  | SCL COMMISION SERVICE, 3RD AND SPRING | 1d | 2023-01-06 A | 2023-01-06 A | 1-0817 | 100% |  |  |
| 1-0819 |  | NOTIFY SDOT, 3RD AND SPRING | 0d | 2023-01-06 A | 2023-01-09 A | 1-0818 | 100% |  |  |
| 1-0820 |  | SDOT INSPECTION, 3RD AND SPRING | 5d | 2023-01-31 A | 2023-02-21 A | 1-0819 | 100% |  |  |
| PCO552.01 |  | DSC 389-Prime 3rd and Spring traffic wiring existing conditions | 5d | 2023-02-03 A | 2023-02-23 A |  | 100% |  |  |
| 1-1405 |  | DELAY - SDOT PROGRAMMED CABINET INCORRECTLY | 5d | 2023-02-22 A | 2023-03-01 A | 1-0820 | 100% |  |  |
| 1-0821 |  | COMM SIGNAL, 3RD AND SPRING | 1d | 2023-03-02 A | 2023-03-02 A | 1-0820, 1-0809 SS, 1-1405 | 100% |  |  |
|  | 4 | **4TH AND SPRING** |  | 2023-04-05 | 2023-06-01 |  |  |  |  |
| 1-0824 |  | NOTIFY SDOT, 4TH AND SPRING | 0d | 2023-04-05 A | 2023-04-05 A | 1-0815 | 100% |  |  |
| 1-0825 |  | SDOT INSPECTION, 4TH AND SPRING | 5d | 2023-04-06 A | 2023-04-12 A | 1-0824 | 100% |  |  |
| 1-0826 |  | COMM SIGNAL, 4TH AND SPRING | 1d | 2023-04-13 A | 2023-04-13 A | 1-0825 | 100% |  |  |
| 1-0823 |  | INST MAGNOMETERS & ACCESS POINT, 4TH & SPRING | 2d | 2023-05-31 A | 2023-06-01 A | 1-0576, 1-0815 | 100% |  |  |
|  | 5 | **5TH AND SPRING** |  | 2023-03-31 | 2023-04-13 |  |  |  |  |
| 1-0829 |  | INST SIGNAL GEAR, 5TH AND SPRING | 1d | 2023-03-31 A | 2023-03-31 A | 1-0828 | 100% |  |  |
| 1-0830 |  | SPLICE LOOP LEAN IN, 5TH AND SPRING | 1d | 2023-04-03 A | 2023-04-03 A | 1-0829 | 100% |  |  |
| 1-0831 |  | NOTIFY SDOT, 5TH AND SPRING | 0d | 2023-04-03 A | 2023-04-03 A | 1-0830 | 100% |  |  |
| 1-0828 |  | INST OWNER FURNISHED CABINET, 5TH & SPRING | 1d | 2023-04-04 A | 2023-04-04 A | 1-0093 | 100% |  |  |
| 1-0832 |  | SDOT INSPECTION, 5TH AND SPRING | 5d | 2023-04-04 A | 2023-04-12 A | 1-0831 | 100% |  |  |
| 1-0833 |  | COMM SIGNAL, 5TH AND SPRING | 1d | 2023-04-13 A | 2023-04-13 A | 1-0832 | 100% |  |  |
|  | 6 | **SPRING AND 6TH** |  | 2023-04-03 | 2023-04-13 |  |  |  |  |
| 1-0836 |  | NOTIFY SDOT, SPRING AND 6TH | 0d | 2023-04-03 A | 2023-04-03 A | 1-0835 | 100% |  |  |
| 1-0835 |  | INST SIGNAL CAMERA, SPRING AND 6TH | 1d | 2023-04-04 A | 2023-04-04 A | 1-0584, 1-0830 | 100% |  |  |
| 1-0837 |  | COMM SIGNAL, SPRING AND 6TH | 1d | 2023-04-13 A | 2023-04-13 A | 1-0836 | 100% |  |  |
|  | 7 | **SPRING AND 7TH** |  | 2023-04-27 | 2023-12-07 |  |  |  |  |
| 1-0839 |  | INST SERVICE CABINET, SPRING AND 7TH | 1d | 2023-04-27 A | 2023-04-27 A | 1-0588, PMP-0016 | 100% |  |  |
| 1-9082 |  | SDCI INSPECTION | 1d | 2023-06-02 A | 2023-06-02 A |  | 100% |  |  |
| 1-9083 |  | SDOT INSPECTION | 1d | 2023-06-14 A | 2023-06-14 A | 1-9082 | 100% |  |  |
| 1-9084 |  | SCL INSPECTION REQUEST | 1d | 2023-08-14 | 2023-08-14 | 1-9083 |  | -52d | start on or after 2023-07-03 |
| 1-8095 |  | 30 DAY WAIT FOR SCL TO INSPECT | 30d | 2023-08-15 | 2023-09-26 | 1-9084 |  | -52d |  |
| 1-8096 |  | SCL INSPECTION | 1d | 2023-09-27 | 2023-09-27 | 1-8095 |  | -52d |  |
| 1-8097 |  | COMMISION NOTIFICATION | 1d | 2023-09-28 | 2023-09-28 | 1-8096 |  | -52d |  |
| 1-8098 |  | 30 DAY WAIT FOR SCL TO COMMISION | 30d | 2023-09-29 | 2023-11-09 | 1-8097 |  | -52d |  |
| 1-0846 |  | COMM SERVICE, SPRING AND 7TH | 1d | 2023-11-10 | 2023-11-10 | 1-0839, 1-8098 |  | -52d |  |
| 1-0864 |  | Install Owner-Furnished Signal Cabinet | 1d | 2023-11-14 | 2023-11-14 | 1-0846 |  | -52d |  |
| 1-0840 |  | INST MAST ARM POLE, SPRING AND 7TH | 2d | 2023-11-15 | 2023-11-16 | PMP-0016, 1-0864 |  | -52d |  |
| 1-1430 |  | INST MAST ARMS, SPRING AND 7TH | 2d | 2023-11-17 | 2023-11-20 | 1-0840, 1-0864 |  | -52d |  |
| 1-0841 |  | INST PPB POST, SPRING AND 7TH | 1d | 2023-11-21 | 2023-11-21 | 1-0840, 1-1430 |  | -52d |  |
| 1-0842 |  | INST PEDISTAL, SPRING AND 7TH | 1d | 2023-11-22 | 2023-11-22 | 1-0841 |  | -52d |  |
| 1-0843 |  | INST WIRING, SPRING AND 7TH | 3d | 2023-11-27 | 2023-11-29 | 1-0842 |  | -52d |  |
| 1-0847 |  | NOTIFY SDOT, SPRING AND 7TH | 0d | 2023-11-30 | 2023-11-30 | 1-0843 |  | -52d |  |
| 1-0848 |  | SDOT INSPECTION, SPRING AND 7TH | 5d | 2023-11-30 | 2023-12-06 | 1-0847 |  | -52d |  |
| 1-0849 |  | COMM SIGNAL, SPRING AND 7TH | 1d | 2023-12-07 | 2023-12-07 | 1-0848, 1-0833, 1-0837, 1-0802 |  | -52d |  |
|  | 8 | **SPRING AND 8TH** |  | 2023-04-28 | 2023-12-08 |  |  |  |  |
| 1-0852 |  | INST SERVICE CABINET, SPRING AND 8TH | 1d | 2023-04-28 A | 2023-04-28 A | 1-0599 | 100% |  |  |
| 1-0854 |  | INST STRAIN POLE, SPRING AND 8TH | 1d | 2023-05-02 A | 2023-05-02 A | PMP-36 | 100% |  |  |
| 1-7110 |  | SDCI INSPECTION | 1d | 2023-06-02 A | 2023-06-02 A |  | 100% |  |  |
| 1-7111 |  | SDOT INSPECTION | 1d | 2023-06-14 A | 2023-06-14 A | 1-7110 FS+7d | 100% |  |  |
| 1-1435 |  | INST MAST ARM POLES, SPRING AND 8TH | 6d | 2023-07-26 A | 2023-08-02 A | PMP-0016, PMP-36 | 100% |  |  |
| 1-0858 |  | SCL INSPECTION REQUEST | 1d | 2023-08-02 A | 2023-08-02 A | 1-7111, 1-0852 | 100% |  | start on or after 2023-07-03 |
| 1-0859 |  | 30 DAY WAIT FOR SCL TO INSPECT | 30d | 2023-08-03 A | 2023-08-29 | 1-0858 |  | -34d |  |
| 1-6114 |  | SCL INSPECTION | 1d | 2023-08-30 | 2023-08-30 | 1-0859 |  | -34d |  |
| 1-6115 |  | SCL COMMISION NOTIFICATION | 1d | 2023-08-31 | 2023-08-31 | 1-6114 |  | -34d |  |
| 1-6116 |  | 30 DAY WAIT FOR SCL TO COMMISION | 30d | 2023-09-01 | 2023-10-13 | 1-6115 |  | -34d |  |
| 1-0860 |  | SCL COMMISION SERVICE, SPRING AND 8TH | 1d | 2023-10-16 | 2023-10-16 | 1-0859, 1-6116 |  | -34d |  |
| 1-0851 |  | INST OWNER FURNISHED SIGNAL CABINET, SPRING & 8TH | 1d | 2023-10-17 | 2023-10-17 | 1-0599, 1-0860 |  | -34d |  |
| 1-0853 |  | INST MAST ARMS, SPRING AND 8TH | 6d | 2023-10-18 | 2023-10-25 | 1-0852, 1-1435, 1-0851 |  | -34d |  |
| 1-0855 |  | INST PPB POST, SPRING AND 8TH | 1d | 2023-10-26 | 2023-10-26 | 1-0854, 1-0853, 1-0851 |  | -34d |  |

| ID | WBS | Task | Duration | Start | Finish | Predecessors | Complete | Total float |
| --- | --- | --- | --- | --- | --- | --- | --- | --- |
| 1-0856 |  | INST PEDISTALS, SPRING AND 8TH | 1d | 2023-10-27 | 2023-10-27 | 1-0855 |  | -34d |
| 1-0857 |  | INST WIRING, SPRING AND 8TH | 3d | 2023-10-30 | 2023-11-01 | 1-0856 |  | -34d |
| 1-0861 |  | NOTIFY SDOT, SPRING AND 8TH | 0d | 2023-11-02 | 2023-11-02 | 1-0860, 1-0857 |  | -34d |
| 1-0862 |  | SDOT INSPECTION, SPRING AND 8TH | 5d | 2023-11-02 | 2023-11-08 | 1-0861 |  | -34d |
| 1-0863 |  | SDOT COMM SIGNAL, SPRING AND 8TH | 1d | 2023-12-08 | 2023-12-08 | 1-0862, 1-0849 |  | -52d |
|  | 9 | **SPRING AND 9TH** |  | 2023-05-09 | 2024-02-01 |  |  |  |
| 1-0869 |  | INST OCS POLES, SPRING AND 9TH | 2d | 2023-05-09 A | 2023-05-10 A | PMP-36 | 100% |  |
| 1-1440 |  | INST MAST ARM POLES, SPRING AND 9TH | 19d | 2023-06-08 A | 2023-07-17 A | PMP-0016 | 100% |  |
| 1-0868 |  | INST MAST ARMS, SPRING AND 9TH | 6d | 2023-07-18 A | 2023-07-25 A | 1-1440 | 100% |  |
| 1-0867 |  | INST SERVICE CABINET, SPRING AND 9TH | 1d | 2023-10-10 | 2023-10-10 | 1-0552 |  | -69d |
| 1-0882 |  | SDCI INSPECTION | 1d | 2023-10-11 | 2023-10-11 | 1-0867 |  | -69d |
| 1-0927 |  | SDOT INSPECTION | 1d | 2023-10-11 | 2023-10-11 | 1-0867 |  | -69d |
| 1-0873 |  | SCL INSPECTION REQUEST | 0d | 2023-10-12 | 2023-10-12 | 1-0882, 1-0927 |  | -69d |
| 1-0874 |  | 30 DAY WAIT FOR SCL TO INSPECT | 30d | 2023-10-12 | 2023-11-27 | 1-0873 |  | -69d |
| 1-0942 |  | SCL INSPECTION | 1d | 2023-11-28 | 2023-11-28 | 1-0874 |  | -69d |
| 1-0947 |  | SCL COMMISION NOTIFICATION | 1d | 2023-11-29 | 2023-11-29 | 1-0942 |  | -69d |
| 1-1012 |  | 30 DAY WAIT FOR SCL TO COMMISION | 30d | 2023-11-30 | 2024-01-12 | 1-0947 |  | -69d |
| 1-0879 |  | SCL COMMISION SERVICE, SPRING AND 9TH | 1d | 2024-01-16 | 2024-01-16 | 1-1012 |  | -69d |
| 1-0865 |  | INST OWNER FURNISHED SIGNAL CABINET, SPRING & 9TH | 1d | 2024-01-17 | 2024-01-17 | 1-0857, 1-0605, 1-0326, 1-0879 |  | -69d |
| 1-0866 |  | SPLICE LOOP LEED IN, SPRING AND 9TH | 1d | 2024-01-18 | 2024-01-18 | 1-0865 |  | -68d |
| 1-0870 |  | INST PPB POST, SPRING AND 9TH | 1d | 2024-01-18 | 2024-01-18 | 1-0869, 1-0867, 1-0868, 1-0865 |  | -69d |
| 1-0871 |  | INST PEDESTAL, SPRING AND 9TH | 1d | 2024-01-19 | 2024-01-19 | 1-0870 |  | -69d |
| 1-0872 |  | INST WIRING, SPRING AND 9TH | 3d | 2024-01-22 | 2024-01-24 | 1-0871, 1-0866 |  | -69d |
| 1-0876 |  | NOTIFY SDOT, SPRING AND 9TH | 0d | 2024-01-25 | 2024-01-25 | 1-0872 |  | -45d |
| 1-0877 |  | SDOT INSPECTION, SPRING AND 9TH | 5d | 2024-01-25 | 2024-01-31 | 1-0876 |  | -45d |
| 1-0878 |  | COMM SIGNAL, SPRING AND 9TH | 1d | 2024-02-01 | 2024-02-01 | 1-0877, 1-0863 |  | -45d |
|  | 15 | **ITS WIRING** |  | 2023-12-15 | 2024-01-16 |  |  |  |
| 1-1045 |  | INST ITS WIRING, ITS WIRING | 20d | 2023-12-15 | 2024-01-16 | 1-1037 |  | -7d |
|  | 16 | **LIGHTING** |  | 2022-09-30 | 2024-05-17 |  |  |  |
|  | 1 | **SPRING AND 3RD** |  | 2023-05-05 | 2023-10-19 |  |  |  |
| 1-1048 |  | INST PED POLE, SPRING AND 3RD | 1d | 2023-05-05 A | 2023-05-05 A | 1-0815 SS | 100% |  |
| 1-1049 |  | INST WIRING, SPRING AND 3RD | 2d | 2023-08-14 | 2023-08-15 | 1-1048, 1-0815 |  | 50d |
| 1-1480 |  | NOTIFY SCL, SPRING AND 3RD | 2d | 2023-08-16 | 2023-08-17 | 1-1049 |  | 50d |
| 1-1485 |  | SCL INSPECTION BEFORE SERVICE, SPRING AND 3RD | 30d | 2023-08-18 | 2023-09-29 | 1-1480 |  | 50d |
| 1-1490 |  | NOTIFY SCL, SPRING AND 3RD | 2d | 2023-10-02 | 2023-10-03 | 1-1485 |  | 50d |
| 1-1495 |  | SCL FINAL LIGHTING INSPECTION, SPRING AND 3RD | 10d | 2023-10-04 | 2023-10-17 | 1-1490 |  | 50d |
| 1-1500 |  | COMMISSION LIGHTING, SPRING AND 3RD | 2d | 2023-10-18 | 2023-10-19 | 1-1495 |  | 50d |
|  | 2 | **SPRING AND 7TH** |  | 2023-05-22 | 2024-02-08 |  |  |  |
| 1-1051 |  | INST POLE, SPRING AND 7TH | 1d | 2023-05-22 A | 2023-05-23 A | PMP-0016 | 100% |  |
| 1-1052 |  | INST WIRING, SPRING AND 7TH | 2d | 2023-11-30 | 2023-12-01 | 1-1051, 1-0843 |  | -36d |
| 1-1510 |  | NOTIFY SCL, SPRING AND 7TH | 2d | 2023-12-04 | 2023-12-05 | 1-1052 |  | -36d |
| 1-1505 |  | SCL INSPECTION BEFORE SERVICE, SPRING AND 7TH | 30d | 2023-12-06 | 2024-01-19 | 1-1510 |  | -36d |
| 1-1745 |  | NOTIFY SCL, SPRING AND 7TH | 2d | 2024-01-22 | 2024-01-23 | 1-1505 |  | -36d |
| 1-1515 |  | SCL FINAL LIGHTING INSPECTION, SPRING AND 7TH | 10d | 2024-01-24 | 2024-02-06 | 1-1745 |  | -36d |
| 1-1520 |  | COMMISSION LIGHTING, SPRING AND 7TH | 2d | 2024-02-07 | 2024-02-08 | 1-1515 |  | -36d |
|  | 3 | **SPRING AND 8TH** |  | 2023-06-08 | 2024-01-17 |  |  |  |
| 1-1054 |  | INST POLES, SPRING AND 8TH | 2d | 2023-06-08 A | 2023-06-09 A | 1-1435 | 100% |  |
| 1-1055 |  | INST WIRING, SPRING AND 8TH | 3d | 2023-11-02 | 2023-11-06 | 1-1054, 1-0857 |  | -18d |
| 1-1530 |  | NOTIFY SCL, SPRING AND 8TH | 2d | 2023-11-07 | 2023-11-08 | 1-1055 |  | -18d |
| 1-1525 |  | SCL INSPECTION BEFORE SERVICE, SPRING AND 8TH | 30d | 2023-11-09 | 2023-12-26 | 1-1530 |  | -18d |
| 1-1750 |  | NOTIFY SCL, SPRING AND 8TH | 2d | 2023-12-27 | 2023-12-28 | 1-1525 |  | -18d |
| 1-1535 |  | SCL FINAL LIGHTING INSPECTION, SPRING AND 8TH | 10d | 2023-12-29 | 2024-01-12 | 1-1750 |  | -18d |
| 1-1540 |  | COMMISSION LIGHTING, SPRING AND 8TH | 2d | 2024-01-16 | 2024-01-17 | 1-1535 |  | -18d |
|  | 4 | **SPRING AND 9TH** |  | 2023-07-18 | 2024-04-01 |  |  |  |
| 1-1850 |  | INSTALL POLES, SPRING AND 9TH | 2d | 2023-07-18 A | 2023-07-19 A | 1-1440, 1-1074 | 100% |  |
| 1-1057 |  | INST WIRING, SPRING AND 9TH | 1d | 2024-01-25 | 2024-01-25 | 1-0872 SS, 1-1055, 1-1850, 1-0872 |  | -69d |
| 1-1830 |  | NOTIFY SCL, SPRING AND 9TH | 2d | 2024-01-26 | 2024-01-29 | 1-1057 |  | -69d |
| 1-1825 |  | SCL INSPECTION BEFORE SERVICE, SPRING AND 9TH | 30d | 2024-01-30 | 2024-03-12 | 1-1830 |  | -69d |
| 1-1845 |  | NOTIFY SCL, SPRING AND 9TH | 2d | 2024-03-13 | 2024-03-14 | 1-1825 |  | -69d |
| 1-1835 |  | SCL FINAL LIGHTING INSPECTION, SPRING AND 9TH | 10d | 2024-03-15 | 2024-03-28 | 1-1845 |  | -69d |
| 1-1840 |  | COMMISSION LIGHTING, SPRING AND 9TH | 2d | 2024-03-29 | 2024-04-01 | 1-1835 |  | -69d |
|  | 5 | **MADISON AND 3RD** |  | 2023-06-05 | 2024-01-03 |  |  |  |
| 1-1059 |  | INST POLES, MAD AND 3RD | 1d | 2023-06-05 A | 2023-06-05 A | PMP-0016 | 100% |  |
| 1-1060 |  | INST WIRING, MAD AND 3RD | 2d | 2023-10-23 | 2023-10-24 | 1-1059, 1-0901 |  | -41d |
| 1-1760 |  | NOTIFY SCL, MAD AND 3RD | 2d | 2023-10-25 | 2023-10-26 | 1-1060 |  | 1d |
| 1-1755 |  | SCL INSPECTION BEFORE SERVICE, MAD AND 3RD | 30d | 2023-10-27 | 2023-12-12 | 1-1760 |  | 1d |
| 1-1775 |  | NOTIFY SCL, MAD AND 3RD | 2d | 2023-12-13 | 2023-12-14 | 1-1755 |  | 1d |
| 1-1765 |  | SCL FINAL LIGHTING INSPECTION, MAD AND 3RD | 10d | 2023-12-15 | 2023-12-29 | 1-1775 |  | 1d |
| 1-1770 |  | COMMISSION LIGHTING, MAD AND 3RD | 2d | 2024-01-02 | 2024-01-03 | 1-1765 |  | 1d |
|  | 6 | **MADISON AND 5TH** |  | 2023-10-25 | 2023-11-17 |  |  |  |

| ID | WBS | Task | Duration | Start | Finish | Predecessors | Complete | Total float |
| --- | --- | --- | --- | --- | --- | --- | --- | --- |
| 1-1062 |  | INST POLES, MAD AND 5TH | 1d | 2023-10-25 | 2023-10-25 | 1-1060, PMP-0016 |  | -41d |
| 1-1063 |  | INST WIRING, MAD AND 5TH | 2d | 2023-10-26 | 2023-10-27 | 1-1062 |  | -41d |
| 1-1785 |  | NOTIFY SCL, MAD AND 5TH | 2d | 2023-10-30 | 2023-10-31 | 1-1063 |  | 25d |
| 1-1790 |  | SCL FINAL LIGHTING INSPECTION, MAD AND 5TH | 10d | 2023-11-01 | 2023-11-15 | 1-1785 |  | 25d |
| 1-1795 |  | COMMISSION LIGHTING, MAD AND 5TH | 2d | 2023-11-16 | 2023-11-17 | 1-1790 |  | 25d |
|  | 7 | **MADISON 7TH TO 8TH** |  | 2023-10-30 | 2024-01-16 |  |  |  |
| 1-1065 |  | INST POLES, MAD 7TH TO 8TH | 2d | 2023-10-30 | 2023-10-31 | 1-1063, 1-1455 |  | -41d |
| 1-1066 |  | INST WIRING, MAD 7TH TO 8TH | 3d | 2023-11-01 | 2023-11-03 | 1-1065, 1-0940 |  | -41d |
| 1-1805 |  | NOTIFY SCL, MAD 7TH TO 8TH | 2d | 2023-11-06 | 2023-11-07 | 1-1066 |  | -12d |
| 1-1800 |  | SCL INSPECTION BEFORE SERVICE, MAD 7TH TO 8TH | 30d | 2023-11-08 | 2023-12-22 | 1-1805 |  | -12d |
| 1-1820 |  | NOTIFY SCL, MAD 7TH TO 8TH | 2d | 2023-12-26 | 2023-12-27 | 1-1800 |  | -12d |
| 1-1810 |  | SCL FINAL LIGHTING INSPECTION, MAD 7TH TO 8TH | 10d | 2023-12-28 | 2024-01-11 | 1-1820 |  | -12d |
| 1-1815 |  | COMMISSION LIGHTING, MAD 7TH TO 8TH | 2d | 2024-01-12 | 2024-01-16 | 1-1810 |  | -12d |
|  | 8 | **MADISON AND 9TH** |  | 2024-02-28 | 2024-03-01 |  |  |  |
| 1-1068 |  | INST POLES, MAD AND 9TH | 1d | 2024-02-28 | 2024-02-28 | 1-0969 SS, 1-1066, 1-0964 |  | -116d |
| 1-1069 |  | INST WIRING, MAD AND 9TH | 2d | 2024-02-29 | 2024-03-01 | 1-1068 |  | -116d |
|  | 9 | **MADISON AND TERRY** |  | 2024-03-04 | 2024-03-14 |  |  |  |
| 1-1071 |  | INST POLES, MAD AND TERRY | 4d | 2024-03-04 | 2024-03-07 | 1-1069 |  | -116d |
| 1-1072 |  | INST WIRING, MAD AND TERRY | 5d | 2024-03-08 | 2024-03-14 | 1-1071 |  | -116d |
|  | 10 | **MADISON AND BOREN** |  | 2023-07-14 | 2024-05-17 |  |  |  |
| 1-1074 |  | INST POLES, MAD AND BOREN | 2d | 2023-07-14 A | 2023-07-17 A | 1-1054 | 100% |  |
| 1-1075 |  | INST WIRING, MAD AND BOREN | 3d | 2024-01-02 | 2024-01-04 | 1-1074, 1-0997 |  | -68d |
| 1-1860 |  | NOTIFY SCL, MAD AND BOREN | 2d | 2024-03-15 | 2024-03-18 | 1-1075, 1-1072, 1-1069 |  | -116d |
| 1-1855 |  | SCL INSPECTION BEFORE SERVICE, MAD AND BOREN | 30d | 2024-03-19 | 2024-04-29 | 1-1860 |  | -116d |
| 1-1875 |  | NOTIFY SCL, MAD AND BOREN | 2d | 2024-04-30 | 2024-05-01 | 1-1855 |  | -116d |
| 1-1865 |  | SCL FINAL LIGHTING MAD AND BOREN | 10d | 2024-05-02 | 2024-05-15 | 1-1875 |  | -116d |
| 1-1870 |  | COMMISSION LIGHTING, MAD AND BOREN | 2d | 2024-05-16 | 2024-05-17 | 1-1865 |  | -116d |
|  | 11 | **MADISON AND MINOR** |  | 2023-11-21 | 2023-11-29 |  |  |  |
| 1-1077 |  | INST POLES, MAD AND MINOR | 2d | 2023-11-21 | 2023-11-22 | 1-1020 |  | -30d |
| 1-1078 |  | INST WIRING, MAD AND MINOR | 3d | 2023-11-27 | 2023-11-29 | 1-1077, 1-1010 |  | -30d |
|  | 12 | **MADISON AND SUMMIT** |  | 2023-11-21 | 2024-02-12 |  |  |  |
| 1-1080 |  | INST POLES, MAD AND SUMMIT | 2d | 2023-11-21 | 2023-11-22 | 1-1020 |  | -33d |
| 1-1081 |  | INST WIRING, MAD AND SUMMIT | 3d | 2023-12-01 | 2023-12-05 | 1-1080, 1-1024 |  | -37d |
| 1-1885 |  | NOTIFY SCL, MAD AND SUMMIT | 2d | 2023-12-06 | 2023-12-07 | 1-1081, 1-1078 |  | -34d |
| 1-1880 |  | SCL INSPECTION BEFORE SERVICE, MAD AND SUMMIT | 30d | 2023-12-08 | 2024-01-23 | 1-1885 |  | -34d |
| 1-1900 |  | NOTIFY SCL, MAD AND SUMMIT | 2d | 2024-01-24 | 2024-01-25 | 1-1880 |  | -34d |
| 1-1890 |  | SCL FINAL LIGHTING INSPECTION, MAD AND SUMMIT | 10d | 2024-01-26 | 2024-02-08 | 1-1900 |  | -34d |
| 1-1895 |  | COMMISSION LIGHTING, MAD AND SUMMIT | 2d | 2024-02-09 | 2024-02-12 | 1-1890 |  | -34d |
|  | 13 | **MADISON AND BOYLSTON** |  | 2022-09-30 | 2024-02-20 |  |  |  |
| 1-1295 |  | INST WIRING, MAD AND BOYLSTON (25% OF LUMP SUM) | 1d | 2022-09-30 A | 2022-09-30 A | 1-0206 | 100% |  |
| 1-1083 |  | INST POLES, MAD AND BOYLSTON | 2d | 2023-12-06 | 2023-12-07 | 1-1081 |  | -37d |
| 1-1084 |  | INST WIRING, MAD AND BOYLSTON (75% OF LUMP SUM) | 3d | 2023-12-08 | 2023-12-12 | 1-1083, 1-1295 |  | -37d |
| 1-1910 |  | NOTIFY SCL, MAD AND BOYLSTON | 2d | 2023-12-13 | 2023-12-14 | 1-1084 |  | -37d |
| 1-1905 |  | SCL INSPECTION BEFORE SERVICE, MAD AND BOYLSTON | 30d | 2023-12-15 | 2024-01-30 | 1-1910 |  | -37d |
| 1-1925 |  | NOTIFY SCL, MAD AND BOYLSTON | 2d | 2024-01-31 | 2024-02-01 | 1-1905 |  | -37d |
| 1-1915 |  | SCL FINAL LIGHTING INSPECTION, MAD AND BOYLSTON | 10d | 2024-02-02 | 2024-02-15 | 1-1925 |  | -37d |
| 1-1920 |  | COMMISSION LIGHTING, MAD AND BOYLSTON | 2d | 2024-02-16 | 2024-02-20 | 1-1915 |  | -37d |
|  | 14 | **MADISON AND 8TH CENTER ISLAND** |  | 2023-12-13 | 2024-02-22 |  |  |  |
| 1-1086 |  | INST POLES, MAD & 8TH CENTER ISLAND | 1d | 2023-12-13 | 2023-12-13 | 1-0766, 1-1084 |  | -37d |
| 1-1087 |  | INST WIRING, MAD & 8TH CENTER ISLAND | 1d | 2023-12-14 | 2023-12-14 | 1-1086, 1-0766 |  | -37d |
| 1-1935 |  | NOTIFY SCL, MAD & 8TH CENTER ISLAND | 2d | 2023-12-15 | 2023-12-18 | 1-1087 |  | -33d |
| 1-1930 |  | SCL INSPECTION BEFORE SERVICE, MAD & 8TH CENTER ISLAND | 30d | 2023-12-19 | 2024-02-01 | 1-1935 |  | -33d |
| 1-1950 |  | NOTIFY SCL, MAD & 8TH CENTER ISLAND | 2d | 2024-02-02 | 2024-02-05 | 1-1930 |  | -33d |
| 1-1940 |  | SCL FINAL LIGHTING INSPECTION, MAD & 8TH CENTER ISLAND | 10d | 2024-02-06 | 2024-02-20 | 1-1950 |  | -33d |
| 1-1945 |  | COMMISSION LIGHTING, MAD & 8TH CENTER ISLAND | 2d | 2024-02-21 | 2024-02-22 | 1-1940 |  | -33d |
|  | 15 | **MADISON AND TERRY CENTER ISLAND** |  | 2023-12-15 | 2024-02-26 |  |  |  |
| 1-1089 |  | INST POLES, MAD & TERRY CENTER ISLAND | 1d | 2023-12-15 | 2023-12-15 | 1-0774, 1-1087 |  | -37d |
| 1-1090 |  | INST WIRING, MAD & TERRY CENTER ISLAND | 1d | 2023-12-18 | 2023-12-18 | 1-1089 |  | -37d |
| 1-1960 |  | NOTIFY SCL, MAD & TERRY CENTER ISLAND | 2d | 2023-12-19 | 2023-12-20 | 1-1090 |  | -35d |
| 1-1955 |  | SCL INSPECTION BEFORE SERVICE, MAD & TERRY CENTER ISLAND | 30d | 2023-12-21 | 2024-02-05 | 1-1960 |  | -35d |
| 1-1975 |  | NOTIFY SCL, MAD & TERRY CENTER ISLAND | 2d | 2024-02-06 | 2024-02-07 | 1-1955 |  | -35d |
| 1-1965 |  | SCL FINAL LIGHTING INSPECTION, MAD & TERRY CENTER ISLAND | 10d | 2024-02-08 | 2024-02-22 | 1-1975 |  | -35d |
| 1-1970 |  | COMMISSION LIGHTING, MAD & TERRY CENTER ISLAND | 2d | 2024-02-23 | 2024-02-26 | 1-1965 |  | -35d |
|  | 16 | **MADISON AND BOYLSTON CENTER ISLAND** |  | 2023-12-19 | 2024-02-28 |  |  |  |
| 1-1092 |  | INST POLES, MAD & BOYLSTON CENTER ISLAND | 1d | 2023-12-19 | 2023-12-19 | 1-0782, 1-1090 |  | -37d |
| 1-1093 |  | INST WIRING, MAD & BOYLSTON CENTER ISLAND | 1d | 2023-12-20 | 2023-12-20 | 1-1092, 1-0782 |  | -37d |
| 1-1985 |  | NOTIFY SCL, MAD & BOYLSTON CENTER ISLAND | 2d | 2023-12-21 | 2023-12-22 | 1-1093 |  | -37d |
| 1-1980 |  | SCL INSPECTION BEFORE SERVICE, MAD & BOYLSTON CENTER ISLAND | 30d | 2023-12-26 | 2024-02-07 | 1-1985 |  | -37d |
| 1-2000 |  | NOTIFY SCL, MAD & BOYLSTON CENTER ISLAND | 2d | 2024-02-08 | 2024-02-09 | 1-1980 |  | -37d |
| 1-1990 |  | SCL FINAL LIGHTING INSPECTION, MAD & BOYLSTON CENTER ISLAND | 10d | 2024-02-12 | 2024-02-26 | 1-2000 |  | -37d |

| ID | WBS | Task | Duration | Start | Finish | Predecessors | Total float |
| --- | --- | --- | --- | --- | --- | --- | --- |
| 1-1995 |  | COMMISSION LIGHTING, MAD & BOYLSTON CENTER ISLAND | 2d | 2024-02-27 | 2024-02-28 | 1-1990 | -37d |
|  | 21 | **WORK TO COMPLETE AFTER SIGNAL AND LIGHTING IS COMMISSIONED** |  | 2023-09-27 | 2024-06-19 |  |  |
|  | 20 | **7TH AND SPRING** |  | 2024-02-09 | 2024-02-16 |  |  |
| 1-2015 |  | REMOVE POLES AND CABINETS | 2d | 2024-02-09 | 2024-02-12 | 1-1520, 1-0849 | -36d |
| 1-2020 |  | REMOVE POLE FOUNDATIONS | 1d | 2024-02-13 | 2024-02-13 | 1-2015 | -36d |
| 1-2025 |  | GRADE SIDEWALK | 1d | 2024-02-14 | 2024-02-14 | 1-2020 | -36d |
| 1-2030 |  | POUR REMAINING SIDEWALK | 2d | 2024-02-15 | 2024-02-16 | 1-2025 | -36d |
|  | 1 | **8TH AND SPRING** |  | 2024-01-18 | 2024-02-22 |  |  |
| 1-2035 |  | REMOVE TEMP LIGHTING | 1d | 2024-01-18 | 2024-01-18 | 1-1540, 1-0863 | -18d |
| 1-2040 |  | REMOVE LIGHT POLES | 1d | 2024-01-19 | 2024-01-19 | 1-2035 | -18d |
| 1-2045 |  | REMOVE FOUNDATION | 1d | 2024-02-15 | 2024-02-15 | 1-2040, 1-2025 | -36d |
| 1-2050 |  | GRADE SIDEWALKS | 1d | 2024-02-20 | 2024-02-20 | 1-2045, 1-2030 | -36d |
| 1-2075 |  | POUR SIDEWALKS | 2d | 2024-02-21 | 2024-02-22 | 1-2050 | -36d |
|  | 2 | **9TH AND SPRING** |  | 2024-04-02 | 2024-04-05 |  |  |
| 1-2055 |  | REMOVE TEMP LIGHTING | 1d | 2024-04-02 | 2024-04-02 | 1-1840 | -69d |
| 1-2060 |  | REMOVE LIGHT POLE NE CORNER | 1d | 2024-04-03 | 2024-04-03 | 1-2055 | -69d |
| 1-2065 |  | REMOVE FOUNDATION | 1d | 2024-04-04 | 2024-04-04 | 1-2060, 1-2045 | -69d |
| 1-2070 |  | COMPLETE LANDSCAPE | 1d | 2024-04-05 | 2024-04-05 | 1-2065 | -64d |
|  | 3 | **1ST AND MADISON** |  | 2023-10-11 | 2024-04-12 |  |  |
| 1-2080 |  | REMOVE PEDESTAL | 1d | 2023-10-11 | 2023-10-11 | 1-0890 | 50d |
| 1-2085 |  | REMOVE PEDESTAL FOUNDATION | 1d | 2024-04-05 | 2024-04-05 | 1-2080, 1-2065 | -69d |
| 1-2090 |  | REMOVE SIDEWALKS | 1d | 2024-04-08 | 2024-04-08 | 1-2085 | -69d |
| 1-2095 |  | GRADE SIDEWALKS | 1d | 2024-04-09 | 2024-04-09 | 1-2090 | -69d |
| 1-2100 |  | CURB RAMP | 2d | 2024-04-10 | 2024-04-11 | 1-2095, 1-2075 | -69d |
| 1-2105 |  | POUR SIDEWALKS | 1d | 2024-04-12 | 2024-04-12 | 1-2100 | -69d |
|  | 4 | **3RD AND MADISON** |  | 2023-10-31 | 2023-11-06 |  |  |
| 1-2110 |  | REMOVE SIGNAL CABINET | 1d | 2023-10-31 | 2023-10-31 | 1-0907 | 38d |
| 1-2115 |  | REMOVE SIGNAL CABINET FOUNDATION | 1d | 2023-11-01 | 2023-11-01 | 1-2110 | 38d |
| 1-2125 |  | GRADE SIDEWALKS | 1d | 2023-11-02 | 2023-11-02 | 1-2115, 1-2115 FF | 38d |
| 1-2135 |  | POUR SIDEWALKS | 2d | 2023-11-03 | 2023-11-06 | 1-2125 | 38d |
|  | 5 | **5TH AND MADISON** |  | 2023-11-20 | 2023-11-28 |  |  |
| 1-2140 |  | REMOVE TEMP LIGHTING | 2d | 2023-11-20 | 2023-11-21 | 1-1795, 1-0919 | 25d |
| 1-2145 |  | GRADE SIDEWALKS | 1d | 2023-11-22 | 2023-11-22 | 1-2140 | 25d |
| 1-2150 |  | POUR SIDEWALKS | 2d | 2023-11-27 | 2023-11-28 | 1-2145 | 25d |
|  | 6 | **6TH AND MADISON** |  | 2023-12-05 | 2023-12-13 |  |  |
| 1-2170 |  | REMOVE TEMP SIGNAL | 2d | 2023-12-05 | 2023-12-06 | 1-0932 | 14d |
| 1-2175 |  | REMOVE SIGNAL CABINET | 1d | 2023-12-07 | 2023-12-07 | 1-2170 | 14d |
| 1-2180 |  | REMOVE SIGNAL CABINET FOUNDATION | 1d | 2023-12-08 | 2023-12-08 | 1-2175 | 14d |
| 1-2185 |  | GRADE SIDEWALKS | 1d | 2023-12-11 | 2023-12-11 | 1-2180 | 14d |
| 1-2195 |  | POUR SIDEWALKS | 2d | 2023-12-12 | 2023-12-13 | 1-2185 | 14d |
|  | 7 | **7TH AND MADISON** |  | 2023-09-27 | 2024-01-23 |  |  |
| 1-2200 |  | REMOVE OLD SIGNAL SYSTEM | 3d | 2023-09-27 | 2023-09-29 | 1-0946 | 59d |
| 1-2205 |  | REMOVE TEMP LIGHITNG | 2d | 2024-01-17 | 2024-01-18 | 1-2200, 1-1815 | -12d |
| 1-2215 |  | GRADE SIDEWALKS | 1d | 2024-01-19 | 2024-01-19 | 1-2205 | -12d |
| 1-2225 |  | POUR SIDEWALKS | 2d | 2024-01-22 | 2024-01-23 | 1-2215 | -12d |
|  | 8 | **8TH AND MADISON** |  | 2023-10-20 | 2023-11-30 |  |  |
| 1-2230 |  | REMOVE EXISTING SIGNAL SYSTEM | 3d | 2023-10-20 | 2023-10-24 | 1-0960 | 23d |
| 1-2235 |  | REMOVE STRAIN POLES | 2d | 2023-10-25 | 2023-10-26 | 1-2230 | 23d |
| 1-2240 |  | REMOVE TEMP LIGHTING | 2d | 2023-10-27 | 2023-10-30 | 1-2235 | 23d |
| 1-2245 |  | REMOVE FOUNDATION 1ST CORNER | 1d | 2023-10-31 | 2023-10-31 | 1-2240 | 23d |
| 1-2250 |  | GRADE SIDEWALKS 1ST CORNER | 1d | 2023-11-01 | 2023-11-01 | 1-2245 | 23d |
| 1-2255 |  | CURB RAMP 1ST CORNER | 2d | 2023-11-02 | 2023-11-03 | 1-2250 | 23d |
| 1-2260 |  | POUR SIDEWALKS 1ST CORNER | 1d | 2023-11-06 | 2023-11-06 | 1-2255 | 23d |
| 1-2265 |  | REMOVE FOUNDATION 2ND CORNER | 1d | 2023-11-07 | 2023-11-07 | 1-2260 | 23d |
| 1-2270 |  | GRADE SIDEWALKS 2ND CORNER | 1d | 2023-11-08 | 2023-11-08 | 1-2265 | 23d |
| 1-2275 |  | CURB RAMP 2ND CORNER | 2d | 2023-11-09 | 2023-11-10 | 1-2270 | 23d |
| 1-2280 |  | POUR SIDEWALKS 2ND CORNER | 1d | 2023-11-14 | 2023-11-14 | 1-2275 | 23d |
| 1-2285 |  | REMOVE FOUNDATION 3RD CORNER | 1d | 2023-11-15 | 2023-11-15 | 1-2280 | 23d |
| 1-2290 |  | GRADE SIDEWALKS 3RD CORNER | 1d | 2023-11-16 | 2023-11-16 | 1-2285 | 23d |
| 1-2295 |  | CURB RAMP 3RD CORNER | 2d | 2023-11-17 | 2023-11-20 | 1-2290 | 23d |
| 1-2300 |  | POUR SIDEWALKS 3RD CORNER | 1d | 2023-11-21 | 2023-11-21 | 1-2295 | 23d |
| 1-2305 |  | REMOVE FOUNDATION 4TH CORNER | 1d | 2023-11-22 | 2023-11-22 | 1-2300 | 23d |
| 1-2310 |  | GRADE SIDEWALKS 4TH CORNER | 1d | 2023-11-27 | 2023-11-27 | 1-2305 | 23d |
| 1-2315 |  | CURB RAMP 4TH CORNER | 2d | 2023-11-28 | 2023-11-29 | 1-2310 | 23d |
| 1-2320 |  | POUR SIDEWALKS 4TH CORNER | 1d | 2023-11-30 | 2023-11-30 | 1-2315 | 23d |
|  | 9 | **9TH AND MADISON** |  | 2024-03-12 | 2024-05-23 |  |  |
| 1-2325 |  | REMOVE EXISTING SIGNAL SYSTEM | 3d | 2024-03-12 | 2024-03-14 | 1-0975 | -70d |
| 1-2330 |  | REMOVE STRAIN POLES | 2d | 2024-03-15 | 2024-03-18 | 1-2325 | -70d |
| 1-2340 |  | REMOVE FOUNDATION 1ST CORNER | 1d | 2024-03-19 | 2024-03-19 | 1-2330 | -70d |
| 1-2345 |  | GRADE SIDEWALKS 1ST CORNER | 1d | 2024-03-20 | 2024-03-20 | 1-2340 | -70d |

| ID | WBS | Task | Duration | Start | Finish | Predecessors | Total float |
| --- | --- | --- | --- | --- | --- | --- | --- |
| 1-2350 |  | CURB RAMP 1ST CORNER | 2d | 2024-03-21 | 2024-03-22 | 1-2345 | -70d |
| 1-2355 |  | POUR SIDEWALKS 1ST CORNER | 1d | 2024-03-25 | 2024-03-25 | 1-2350 | -70d |
| 1-2360 |  | REMOVE FOUNDATION 2ND CORNER | 1d | 2024-03-26 | 2024-03-26 | 1-2355 | -70d |
| 1-2365 |  | GRADE SIDEWALKS 2ND CORNER | 1d | 2024-03-27 | 2024-03-27 | 1-2360 | -70d |
| 1-2370 |  | CURB RAMP 2ND CORNER | 2d | 2024-03-28 | 2024-03-29 | 1-2365 | -70d |
| 1-2375 |  | POUR SIDEWALKS 2ND CORNER | 1d | 2024-04-01 | 2024-04-01 | 1-2370 | -70d |
| 1-2380 |  | REMOVE FOUNDATION 3RD CORNER | 1d | 2024-04-02 | 2024-04-02 | 1-2375 | -70d |
| 1-2385 |  | GRADE SIDEWALKS 3RD CORNER | 1d | 2024-04-03 | 2024-04-03 | 1-2380 | -70d |
| 1-2390 |  | CURB RAMP 3RD CORNER | 2d | 2024-04-04 | 2024-04-05 | 1-2385 | -70d |
| 1-2395 |  | POUR SIDEWALKS 3RD CORNER | 1d | 2024-04-08 | 2024-04-08 | 1-2390 | -70d |
| 1-2400 |  | REMOVE FOUNDATION 4TH CORNER | 1d | 2024-04-09 | 2024-04-09 | 1-2395 | -70d |
| 1-2405 |  | GRADE SIDEWALKS 4TH CORNER | 1d | 2024-04-10 | 2024-04-10 | 1-2400 | -70d |
| 1-2410 |  | CURB RAMP 4TH CORNER | 2d | 2024-04-11 | 2024-04-12 | 1-2405 | -70d |
| 1-2415 |  | POUR SIDEWALKS 4TH CORNER | 1d | 2024-04-15 | 2024-04-15 | 1-2410 | -70d |
| 1-2335 |  | REMOVE TEMP LIGHTING | 2d | 2024-05-20 | 2024-05-21 | 1-2330, 1-1870 | -98d |
| 1-2420 |  | GRADE SIDEWALK AFTER TEMP LIGHTING IS REMOVED | 1d | 2024-05-22 | 2024-05-22 | 1-2335 | -98d |
| 1-2425 |  | POUR REMAINING SIDEWALKS | 1d | 2024-05-23 | 2024-05-23 | 1-2580, 1-2420 | -98d |
|  | 11 | **TERRY AND MADISON** |  | 2023-10-16 | 2024-05-24 |  |  |
| 1-2525 |  | REMOVE EXISTING SIGNAL SYSTEM | 2d | 2023-10-16 | 2023-10-17 | 1-0988 | 41d |
| 1-2530 |  | REMOVE STRAIN POLES | 1d | 2023-10-18 | 2023-10-18 | 1-2525 | 41d |
| 1-2540 |  | REMOVE FOUNDATION 1ST CORNER | 1d | 2023-10-19 | 2023-10-19 | 1-2530 | 41d |
| 1-2545 |  | GRADE SIDEWALKS 1ST CORNER | 1d | 2023-10-20 | 2023-10-20 | 1-2540 | 41d |
| 1-2550 |  | CURB RAMP 1ST CORNER | 2d | 2023-10-23 | 2023-10-24 | 1-2545 | 41d |
| 1-2555 |  | POUR SIDEWALKS 1ST CORNER | 1d | 2023-10-25 | 2023-10-25 | 1-2550 | 41d |
| 1-2560 |  | REMOVE FOUNDATION 2ND CORNER | 1d | 2023-10-26 | 2023-10-26 | 1-2555 | 41d |
| 1-2565 |  | GRADE SIDEWALKS 2ND CORNER | 1d | 2023-10-27 | 2023-10-27 | 1-2560 | 41d |
| 1-2570 |  | CURB RAMP 2ND CORNER | 2d | 2023-10-30 | 2023-10-31 | 1-2565 | 41d |
| 1-2575 |  | POUR SIDEWALKS 2ND CORNER | 1d | 2023-11-01 | 2023-11-01 | 1-2570 | 41d |
| 1-2535 |  | REMOVE TEMP LIGHTING | 2d | 2024-05-20 | 2024-05-21 | 1-2530, 1-1870 | -99d |
| 1-2580 |  | GRADE SIDEWALK AFTER TEMP LIGHITNG IS REMOVED | 1d | 2024-05-22 | 2024-05-22 | 1-2535 | -99d |
| 1-2585 |  | POUR REMAINING SIDEWALKS | 2d | 2024-05-23 | 2024-05-24 | 1-2580 | -99d |
|  | 10 | **BOREN AND MADISON** |  | 2024-01-10 | 2024-06-19 |  |  |
| 1-2430 |  | REMOVE EXISTING SIGNAL SYSTEM | 3d | 2024-01-10 | 2024-01-12 | 1-1003 | -30d |
| 1-2435 |  | REMOVE STRAIN POLES | 2d | 2024-01-16 | 2024-01-17 | 1-2430 | -30d |
| 1-2440 |  | REMOVE TEMP LIGHTING | 2d | 2024-05-20 | 2024-05-21 | 1-2435, 1-1870 | -116d |
| 1-2445 |  | REMOVE FOUNDATION 1ST CORNER | 1d | 2024-05-22 | 2024-05-22 | 1-2440, 1-2435 | -116d |
| 1-2450 |  | GRADE SIDEWALKS 1ST CORNER | 1d | 2024-05-23 | 2024-05-23 | 1-2445 | -116d |
| 1-2455 |  | CURB RAMP 1ST CORNER | 2d | 2024-05-24 | 2024-05-28 | 1-2450 | -116d |
| 1-2460 |  | POUR SIDEWALKS 1ST CORNER | 1d | 2024-05-29 | 2024-05-29 | 1-2455 | -116d |
| 1-2465 |  | REMOVE FOUNDATION 2ND CORNER | 1d | 2024-05-30 | 2024-05-30 | 1-2460 | -116d |
| 1-2470 |  | GRADE SIDEWALKS 2ND CORNER | 1d | 2024-05-31 | 2024-05-31 | 1-2465 | -116d |
| 1-2475 |  | CURB RAMP 2ND CORNER | 2d | 2024-06-03 | 2024-06-04 | 1-2470 | -116d |
| 1-2480 |  | POUR SIDEWALKS 2ND CORNER | 1d | 2024-06-05 | 2024-06-05 | 1-2475 | -116d |
| 1-2485 |  | REMOVE FOUNDATION 3RD CORNER | 1d | 2024-06-06 | 2024-06-06 | 1-2480 | -116d |
| 1-2490 |  | GRADE SIDEWALKS 3RD CORNER | 1d | 2024-06-07 | 2024-06-07 | 1-2485 | -116d |
| 1-2495 |  | CURB RAMP 3RD CORNER | 2d | 2024-06-10 | 2024-06-11 | 1-2490 | -116d |
| 1-2500 |  | POUR SIDEWALKS 3RD CORNER | 1d | 2024-06-12 | 2024-06-12 | 1-2495 | -116d |
| 1-2505 |  | REMOVE FOUNDATION 4TH CORNER | 1d | 2024-06-13 | 2024-06-13 | 1-2500 | -116d |
| 1-2510 |  | GRADE SIDEWALKS 4TH CORNER | 1d | 2024-06-14 | 2024-06-14 | 1-2505 | -116d |
| 1-2515 |  | CURB RAMP 4TH CORNER | 2d | 2024-06-17 | 2024-06-18 | 1-2510 | -116d |
| 1-2520 |  | POUR SIDEWALKS 4TH CORNER | 1d | 2024-06-19 | 2024-06-19 | 1-2515 | -116d |
|  | 13 | **MINOR AND MADISON** |  | 2023-12-11 | 2023-12-15 |  |  |
| 1-2650 |  | REMOVE SIGNAL CABINET | 1d | 2023-12-11 | 2023-12-11 | 1-1030 | 12d |
| 1-2655 |  | REMOVE SIGNAL CABINET FOUNDATION | 1d | 2023-12-12 | 2023-12-12 | 1-2650 | 12d |
| 1-2660 |  | GRADE SIDEWALKS | 1d | 2023-12-13 | 2023-12-13 | 1-2655 | 12d |
| 1-2665 |  | POUR SIDEWALKS | 2d | 2023-12-14 | 2023-12-15 | 1-2660 | 12d |
|  | 12 | **SUMMIT AND MADISON** |  | 2023-12-11 | 2024-02-23 |  |  |
| 1-2620 |  | REMOVE SIGNAL CABINET | 1d | 2023-12-11 | 2023-12-11 | 1-1030 | 8d |
| 1-2625 |  | REMOVE POLE | 1d | 2023-12-12 | 2023-12-12 | 1-2620 | 8d |
| 1-2630 |  | REMOVE TEMP LIGHITNG | 1d | 2024-02-13 | 2024-02-13 | 1-1895 | -34d |
| 1-2635 |  | REMOVE CABINET FOUNDATION | 1d | 2024-02-14 | 2024-02-14 | 1-2630, 1-2625 | -34d |
| 1-2640 |  | REMOVE MAST ARM FOUNDATION | 1d | 2024-02-15 | 2024-02-15 | 1-2635 | -34d |
| 1-2695 |  | GRADE SIDEWALK | 2d | 2024-02-16 | 2024-02-20 | 1-2640 | -34d |
| 1-2700 |  | POUR SIDEWALK | 3d | 2024-02-21 | 2024-02-23 | 1-2695 | -34d |
|  | 14 | **BOYLSTON AND MADISON** |  | 2023-12-26 | 2024-02-28 |  |  |
| 1-2670 |  | REMOVE CABINET | 1d | 2023-12-26 | 2023-12-26 | 1-1043 | -1d |
| 1-2675 |  | REMOVE PEDESTALS | 1d | 2023-12-27 | 2023-12-27 | 1-2670 | -1d |
| 1-2680 |  | REMOVE TEMP LIGHTING | 2d | 2024-02-21 | 2024-02-22 | 1-2675, 1-1920 | -37d |
| 1-2685 |  | REMOVE FOUNDATIONS | 1d | 2024-02-23 | 2024-02-23 | 1-2680 | -37d |
| 1-2690 |  | GRADE SIDEWALKS | 1d | 2024-02-26 | 2024-02-26 | 1-2685 | -37d |

| ID | WBS | Task | Duration | Start | Finish | Predecessors | Complete | Total float | Constraint |
| --- | --- | --- | --- | --- | --- | --- | --- | --- | --- |
| 1-2705 |  | POUR SIDEWALKS | 2d | 2024-02-27 | 2024-02-28 | 1-2690 |  | -37d |  |
|  | 20 | **KCM SERVICE CONECTIONS** |  | 2022-12-14 | 2023-10-17 |  |  |  |  |
|  | 7 | **8TH AND MADISON** |  | 2023-07-07 | 2023-10-17 |  |  |  |  |
| 1-9961 |  | SERVICE CABINET | 1d | 2023-07-07 A | 2023-07-07 A | 1-3130 | 100% |  |  |
| 1-9976 |  | SDCI INSPECTION | 1d | 2023-07-10 A | 2023-07-10 A | 1-9961 | 100% |  |  |
| 1-9966 |  | REQUEST KCM INSPECTION | 1d | 2023-07-11 A | 2023-07-11 A | 1-9961 | 100% |  |  |
| 1-9971 |  | WAIT FOR KCM TO INSPECT | 4d | 2023-07-12 A | 2023-07-18 A | 1-9966 | 100% |  |  |
| 1-9981 |  | NOTIFY SCL FOR INSPECTION | 1d | 2023-08-14 | 2023-08-14 | 1-9976 |  | 52d | start on or after 2023-07-03 |
| 1-9986 |  | 30 DAY WAIT FOR SCL TO INSPECT | 22d | 2023-08-15 | 2023-09-14 | 1-9981 |  | 52d |  |
| 1-9991 |  | SCL INSPECTION | 1d | 2023-09-15 | 2023-09-15 | 1-9986, 1-9971 |  | 52d |  |
| 1-9996 |  | NOTIFY SCL TO COMMISION | 1d | 2023-09-18 | 2023-09-18 | 1-9991 |  | 52d |  |
| 1-10001 |  | 30 DAY WAIT FOR SCL TO COMMISION | 20d | 2023-09-19 | 2023-10-16 | 1-9996 |  | 52d |  |
| 1-10006 |  | COMMISION SERVICE | 1d | 2023-10-17 | 2023-10-17 | 1-10001 |  | 52d |  |
|  | 1 | **1ST AVE** |  | 2023-05-16 | 2023-10-06 |  |  |  |  |
| 1-6598 |  | SERVICE CABINET | 1d | 2023-05-16 A | 2023-05-16 A | 1-0496 | 100% |  |  |
| 1-6601 |  | SDCI INSPECTION | 1d | 2023-06-02 A | 2023-06-02 A | 1-6598 | 100% |  |  |
| 1-6599 |  | REQUEST KCM INSPECTION | 1d | 2023-06-08 A | 2023-06-08 A | 1-6598 | 100% |  |  |
| 1-6600 |  | WAIT FOR KCM TO INSPECT | 4d | 2023-06-09 A | 2023-06-14 A | 1-6599 | 100% |  |  |
| 1-6602 |  | NOTIFY SCL FOR INSPECTION | 1d | 2023-07-24 A | 2023-07-24 A | 1-6601, 1-6600 | 100% |  | start on or after 2023-07-03 |
| 1-6603 |  | 30 DAY WAIT FOR SCL TO INSPECT | 30d | 2023-07-25 A | 2023-09-05 | 1-6602 |  | 59d |  |
| 1-6604 |  | SCL INSPECTION | 1d | 2023-09-06 | 2023-09-06 | 1-6603 |  | 59d |  |
| 1-6605 |  | NOTIFY SCL TO COMMISION | 1d | 2023-09-07 | 2023-09-07 | 1-6604 |  | 59d |  |
| 1-6606 |  | 30 DAY WAIT FOR SCL TO COMMISION | 20d | 2023-09-08 | 2023-10-05 | 1-6605 |  | 59d |  |
| 1-6607 |  | COMMISION SERVICE | 1d | 2023-10-06 | 2023-10-06 | 1-6606 |  | 59d |  |
|  | 3 | **4TH AND SPRING** |  | 2023-05-01 | 2023-09-22 |  |  |  |  |
| 1-6620 |  | SERVICE CABINET | 1d | 2023-05-01 A | 2023-05-01 A | 1-0572 | 100% |  |  |
| 1-6623 |  | SDCI INSPECTION | 1d | 2023-06-02 A | 2023-06-02 A | 1-6620 | 100% |  |  |
| 1-6621 |  | REQUEST KCM INSPECTION | 1d | 2023-06-08 A | 2023-06-08 A | 1-6620 | 100% |  |  |
| 1-6622 |  | WAIT FOR KCM TO INSPECT | 4d | 2023-06-09 A | 2023-06-14 A | 1-6621 | 100% |  |  |
| 1-6624 |  | NOTIFY SCL FOR INSPECTION | 1d | 2023-07-03 A | 2023-07-03 A | 1-6623 | 100% |  | start on or after 2023-07-03 |
| 1-6625 |  | 30 DAY WAIT FOR SCL TO INSPECT | 22d | 2023-07-05 A | 2023-08-03 A | 1-6624 | 100% |  |  |
| 1-6626 |  | SCL INSPECTION | 1d | 2023-08-04 A | 2023-08-04 A | 1-6625, 1-6622 | 100% |  |  |
| 1-6627 |  | NOTIFY SCL TO COMMISION | 1d | 2023-08-09 A | 2023-08-09 A | 1-6626 | 100% |  |  |
| 1-6628 |  | 30 DAY WAIT FOR SCL TO COMMISION | 20d | 2023-08-10 A | 2023-09-21 | 1-6627 |  | 69d |  |
| 1-6629 |  | COMMISION SERVICE | 1d | 2023-09-22 | 2023-09-22 | 1-6628 |  | 69d |  |
|  | 4 | **8TH AND SPRING** |  | 2023-05-31 | 2023-10-06 |  |  |  |  |
| 1-6631 |  | SERVICE CABINET | 1d | 2023-05-31 A | 2023-05-31 A | 1-0599 | 100% |  |  |
| 1-6632 |  | REQUEST KCM INSPECTION | 1d | 2023-06-01 A | 2023-06-01 A | 1-6631 | 100% |  |  |
| 1-6633 |  | WAIT FOR KCM TO INSPECT | 5d | 2023-06-02 A | 2023-06-08 A | 1-6632 | 100% |  |  |
| 1-6634 |  | SDCI INSPECTION | 1d | 2023-06-09 A | 2023-06-09 A | 1-6633 | 100% |  |  |
| 1-6635 |  | NOTIFY SCL FOR INSPECTION | 1d | 2023-06-12 A | 2023-06-12 A | 1-6634 | 100% |  |  |
| 1-6636 |  | 30 DAY WAIT FOR SCL TO INSPECT | 22d | 2023-06-13 A | 2023-09-05 | 1-6635 |  | 59d |  |
| 1-6637 |  | SCL INSPECTION | 1d | 2023-09-06 | 2023-09-06 | 1-6636 |  | 59d |  |
| 1-6638 |  | NOTIFY SCL TO COMMISION | 1d | 2023-09-07 | 2023-09-07 | 1-6637 |  | 59d |  |
| 1-6639 |  | 30 DAY WAIT FOR SCL TO COMMISION | 20d | 2023-09-08 | 2023-10-05 | 1-6638 |  | 59d |  |
| 1-6640 |  | COMMISION SERVICE | 1d | 2023-10-06 | 2023-10-06 | 1-6639 |  | 59d |  |
|  | 5 | **3RD AND MADISON** |  | 2023-05-01 | 2023-09-22 |  |  |  |  |
| 1-6642 |  | SERVICE CABINET | 1d | 2023-05-01 A | 2023-05-01 A | 1-0677 | 100% |  |  |
| 1-6645 |  | SDCI INSPECTION | 1d | 2023-06-02 A | 2023-06-02 A | 1-6642 | 100% |  |  |
| 1-6643 |  | REQUEST KCM INSPECTION | 1d | 2023-06-08 A | 2023-06-08 A | 1-6642 | 100% |  |  |
| 1-6644 |  | WAIT FOR KCM TO INSPECT | 4d | 2023-06-09 A | 2023-06-14 A | 1-6643 | 100% |  |  |
| 1-6646 |  | NOTIFY SCL FOR INSPECTION | 1d | 2023-07-03 A | 2023-07-03 A | 1-6645 | 100% |  | start on or after 2023-07-03 |
| 1-6647 |  | 30 DAY WAIT FOR SCL TO INSPECT | 22d | 2023-07-05 A | 2023-08-03 A | 1-6646 | 100% |  |  |
| 1-6648 |  | SCL INSPECTION | 1d | 2023-08-04 A | 2023-08-04 A | 1-6647, 1-6644 | 100% |  |  |
| 1-6649 |  | NOTIFY SCL TO COMMISION | 1d | 2023-08-09 A | 2023-08-09 A | 1-6648 | 100% |  |  |
| 1-6650 |  | 30 DAY WAIT FOR SCL TO COMMISION | 20d | 2023-08-10 A | 2023-09-21 | 1-6649 |  | 69d |  |
| 1-6651 |  | COMMISION SERVICE | 1d | 2023-09-22 | 2023-09-22 | 1-6650 |  | 69d |  |
|  | 6 | **5TH AND MADISON** |  | 2023-05-01 | 2023-09-22 |  |  |  |  |
| 1-6653 |  | SERVICE CABINET | 1d | 2023-05-01 A | 2023-05-31 A | 1-0692 | 100% |  |  |
| 1-6656 |  | SDCI INSPECTION | 1d | 2023-06-02 A | 2023-06-02 A | 1-6653 | 100% |  |  |
| 1-6654 |  | REQUEST KCM INSPECTION | 1d | 2023-06-08 A | 2023-06-08 A | 1-6653 | 100% |  |  |
| 1-6655 |  | WAIT FOR KCM TO INSPECT | 4d | 2023-06-09 A | 2023-06-14 A | 1-6654 | 100% |  |  |
| 1-6657 |  | NOTIFY SCL FOR INSPECTION | 1d | 2023-07-03 A | 2023-07-03 A | 1-6656 | 100% |  | start on or after 2023-07-03 |
| 1-6658 |  | 30 DAY WAIT FOR SCL TO INSPECT | 22d | 2023-07-05 A | 2023-08-03 A | 1-6657 | 100% |  |  |
| 1-6659 |  | SCL INSPECTION | 1d | 2023-08-04 A | 2023-08-04 A | 1-6658, 1-6655 | 100% |  |  |
| 1-6660 |  | NOTIFY SCL TO COMMISION | 1d | 2023-08-09 A | 2023-08-09 A | 1-6659 | 100% |  |  |
| 1-6661 |  | 30 DAY WAIT FOR SCL TO COMMISION | 20d | 2023-08-10 A | 2023-09-21 | 1-6660 |  | 69d |  |
| 1-6662 |  | COMMISION SERVICE | 1d | 2023-09-22 | 2023-09-22 | 1-6661 |  | 69d |  |
|  | 2 | **3RD AND SPRING** |  | 2022-12-14 | 2023-10-17 |  |  |  |  |
| 1-6609 |  | SERVICE CABINET | 1d | 2022-12-14 A | 2023-05-31 A | 1-0568 | 100% |  |  |

| ID | WBS | Task | Duration | Start | Finish | Predecessors | Complete | Total float | Constraint |
| --- | --- | --- | --- | --- | --- | --- | --- | --- | --- |
| 1-6612 |  | SDCI INSPECTION | 1d | 2023-06-02 A | 2023-06-02 A | 1-6609 | 100% |  |  |
| 1-6610 |  | REQUEST KCM INSPECTION | 1d | 2023-06-08 A | 2023-06-08 A | 1-6609 | 100% |  |  |
| 1-6611 |  | WAIT FOR KCM TO INSPECT | 4d | 2023-06-09 A | 2023-06-14 A | 1-6610 | 100% |  |  |
| 1-6613 |  | NOTIFY SCL FOR INSPECTION | 1d | 2023-08-14 | 2023-08-14 | 1-6612 |  | 52d | start on or after 2023-07-03 |
| 1-6614 |  | 30 DAY WAIT FOR SCL TO INSPECT | 22d | 2023-08-15 | 2023-09-14 | 1-6613 |  | 52d |  |
| 1-6615 |  | SCL INSPECTION | 1d | 2023-09-15 | 2023-09-15 | 1-6614, 1-6611 |  | 52d |  |
| 1-6616 |  | NOTIFY SCL TO COMMISION | 1d | 2023-09-18 | 2023-09-18 | 1-6615 |  | 52d |  |
| 1-6617 |  | 30 DAY WAIT FOR SCL TO COMMISION | 20d | 2023-09-19 | 2023-10-16 | 1-6616 |  | 52d |  |
| 1-6618 |  | COMMISION SERVICE | 1d | 2023-10-17 | 2023-10-17 | 1-6617 |  | 52d |  |
|  | 17 | **STATIONS** |  | 2023-10-19 | 2024-03-20 |  |  |  |  |
|  | 1 | **SPRING AND 3RD EB STATION** |  | 2023-10-19 | 2023-10-27 |  |  |  |  |
| 1-1096 |  | INST SHELTER, SPRING & 3RD EB STATION | 4d | 2023-10-19 | 2023-10-24 | 1-0821, PMP-0022, PMP-51 |  | -30d |  |
| 1-1097 |  | INST TEC PYLON, SPRING & 3RD EB STATION | 2d | 2023-10-25 | 2023-10-26 | 1-1096 |  | -18d |  |
| 1-1098 |  | INST AMENITIES, SPRING & 3RD EB STATION | 1d | 2023-10-27 | 2023-10-27 | 1-1097 |  | -18d |  |
|  | 2 | **SPRING AND 4TH EB** |  | 2023-10-25 | 2023-11-02 |  |  |  |  |
| 1-1100 |  | INST SHELTER, SPRING AND 4TH EB | 4d | 2023-10-25 | 2023-10-30 | 1-0826, 1-1096 |  | -30d |  |
| 1-1101 |  | INST TEC PYLON, SPRING AND 4TH EB | 2d | 2023-10-31 | 2023-11-01 | 1-1100 |  | -21d |  |
| 1-1102 |  | INST AMENITIES, SPRING AND 4TH EB | 1d | 2023-11-02 | 2023-11-02 | 1-1101, 1-1098 |  | -21d |  |
|  | 3 | **SPRING AND 8TH EB** |  | 2023-12-11 | 2023-12-19 |  |  |  |  |
| 1-1104 |  | INST SHELTER, SPRING AND 8TH EB | 4d | 2023-12-11 | 2023-12-14 | 1-0863, 1-1108 |  | -52d |  |
| 1-1105 |  | INST TEC PYLON, SPRING AND 8TH EB | 2d | 2023-12-15 | 2023-12-18 | 1-1104 |  | -49d |  |
| 1-1106 |  | INST AMENITIES, SPRING AND 8TH EB | 1d | 2023-12-19 | 2023-12-19 | 1-1105, 1-1110 |  | -49d |  |
|  | 4 | **1ST AVE** |  | 2023-10-31 | 2023-11-08 |  |  |  |  |
| 1-1108 |  | INST SHELTER, 1ST AVE | 4d | 2023-10-31 | 2023-11-03 | 1-0890, 1-1100 |  | -30d |  |
| 1-1109 |  | INST TEC PYLON, 1ST AVE | 2d | 2023-11-06 | 2023-11-07 | 1-1108 |  | -24d |  |
| 1-1110 |  | INST AMENITIES, 1ST AVE | 1d | 2023-11-08 | 2023-11-08 | 1-1109, 1-1102 |  | -24d |  |
|  | 5 | **MADISON AND 3RD WB** |  | 2023-12-15 | 2023-12-26 |  |  |  |  |
| 1-1112 |  | INST SHELTER, MAD AND 3RD WB | 4d | 2023-12-15 | 2023-12-20 | 1-0907, 1-1104 |  | -52d |  |
| 1-1113 |  | INST TEC PYLON, MAD AND 3RD WB | 2d | 2023-12-21 | 2023-12-22 | 1-1112 |  | -52d |  |
| 1-1114 |  | INST AMENITIES, MAD AND 3RD WB | 1d | 2023-12-26 | 2023-12-26 | 1-1113, 1-1106 |  | -52d |  |
|  | 6 | **MADISON AND 5TH WB** |  | 2023-11-07 | 2023-12-27 |  |  |  |  |
| 1-1116 |  | INST SHELTER, MAD AND 5TH | 4d | 2023-11-07 | 2023-11-10 | 1-0919 |  | -26d |  |
| 1-1117 |  | INST TEC PYLON, MAD AND 5TH | 2d | 2023-11-14 | 2023-11-15 | 1-1116 |  | -26d |  |
| 1-1118 |  | INST AMENITIES, MAD AND 5TH | 1d | 2023-12-27 | 2023-12-27 | 1-1117, 1-1114 |  | -52d |  |
|  | 7 | **MADISON AND 8TH WB** |  | 2023-12-28 | 2024-01-11 |  |  |  |  |
| 1-1120 |  | INST SHELTER, MAD AND 8TH WB | 4d | 2023-12-28 | 2024-01-03 | 1-1118 |  | -52d |  |
| 1-1121 |  | INST TEC PYLON, MAD AND 8TH WB | 2d | 2024-01-04 | 2024-01-05 | 1-1120 |  | -52d |  |
| 1-1122 |  | INST AMENITIES, MAD AND 8TH WB | 1d | 2024-01-08 | 2024-01-08 | 1-1121 |  | -52d |  |
| 1-1123 |  | INST HANDRAIL, MAD AND 8TH WB | 3d | 2024-01-09 | 2024-01-11 | 1-1122 |  | -52d |  |
|  | 8 | **MADISON AND TERRY** |  | 2024-01-12 | 2024-02-06 |  |  |  |  |
| 1-1125 |  | INST SHELTER, MAD AND TERRY | 8d | 2024-01-12 | 2024-01-24 | 1-1090, 1-1123 |  | -52d |  |
| 1-1126 |  | INST TEC PYLON, MAD AND TERRY | 4d | 2024-01-25 | 2024-01-30 | 1-1125 |  | -52d |  |
| 1-1127 |  | INST AMENITIES, MAD AND TERRY | 2d | 2024-01-31 | 2024-02-01 | 1-1126 |  | -52d |  |
| 1-1128 |  | INST HANDRAIL, MAD AND TERRY | 3d | 2024-02-02 | 2024-02-06 | 1-1127 |  | -52d |  |
|  | 9 | **MADISON AND BOYLSTON** |  | 2024-02-07 | 2024-03-20 |  |  |  |  |
| 1-1130 |  | INST SHELTER, MAD AND BOYLSTON | 16d | 2024-02-07 | 2024-02-29 | 1-1093, 1-1128 |  | -52d |  |
| 1-1131 |  | INST TEC PYLON, MAD AND BOYLSTON | 6d | 2024-03-01 | 2024-03-08 | 1-1130 |  | -52d |  |
| 1-1132 |  | INST AMENITIES, MAD AND BOYLSTON | 2d | 2024-03-11 | 2024-03-12 | 1-1131 |  | -52d |  |
| 1-1133 |  | INST HANDRAIL, MAD AND BOYLSTON | 6d | 2024-03-13 | 2024-03-20 | 1-1132 |  | -52d |  |
|  | 18 | **OCS POLES** |  | 2023-08-14 | 2023-09-13 |  |  |  |  |
| 1-1135 |  | INST REMAINING POLES, OCS POLES | 22d | 2023-08-14 | 2023-09-13 | 1-0750, OCS-0037, PMP-36, PMP-41 |  | 76d |  |
|  | 5 | **ZONE 2 - BROADWAY TO 15TH** |  | 2021-10-19 | 2024-07-10 |  |  |  |  |
|  | 1 | **POTHOLING FOUNDATIONS** |  | 2021-11-12 | 2023-06-06 |  |  |  |  |
| 2-1140 |  | POTHOLE FOUNDATIONS ZONE 2, POTHOLING FOUNDATIONS | 20d | 2021-11-12 A | 2022-01-20 A | MS-0026 | 100% |  |  |
| 2-1141 |  | SUBMITAL REVIEW, POTHOLING FOUNDATIONS | 10d | 2022-01-21 A | 2022-02-03 A | 2-1140 | 100% |  |  |
| 2-1181 |  | FOUNDATION ONGOING CONFLICT RESOLUTION | 5d | 2022-02-04 A | 2023-06-06 A | 2-1141 | 100% |  |  |
|  | 2 | **STORM WORK** |  | 2021-10-19 | 2023-06-06 |  |  |  |  |
| 2-1154 |  | MAD AND 15TH, STORM WORK | 1d | 2021-10-19 A | 2021-10-19 A | 3-1844 FF | 100% |  |  |
| PCO010.01 |  | DSC 5-Unlocated 3" conduit under storm @ 15th/Madison | 5d | 2021-10-26 A | 2021-10-28 A |  | 100% |  |  |
| PCO080.01 |  | DSC 49-Existing MH 002 invert coflict | 5d | 2022-01-04 A | 2022-02-01 A |  | 100% |  |  |
| PCO085.01 |  | DSC 53-CB 18 conflicts | 5d | 2022-01-06 A | 2022-01-13 A |  | 100% |  |  |
| PCO096.01 |  | DSC 59-CB 19 conflicts | 5d | 2022-01-13 A | 2022-01-14 A |  | 100% |  |  |
| PCO159.01 |  | DSC 112-Inlet 22 Conflict | 5d | 2022-03-04 A | 2022-03-06 A |  | 100% |  |  |
| 2-1152 |  | MAD AND 13TH, STORM WORK | 4d | 2022-03-18 A | 2022-03-23 A | 2-1154 | 100% |  |  |
| PCO176.01 |  | DSC 124- Inlet 17 conflict | 5d | 2022-03-22 A | 2022-03-24 A |  | 100% |  |  |
| PCO180.01 |  | DSC 126-Power Conflict at Inlet 14 | 5d | 2022-03-23 A | 2022-03-24 A |  | 100% |  |  |
| 2-1150 |  | MAD AND 12TH, STORM WORK | 3d | 2022-03-23 A | 2022-03-25 A | 2-1152 SS | 100% |  |  |
| 2-1153 |  | MAD AND 14TH, STORM WORK | 4d | 2022-03-24 A | 2022-03-25 A | 2-1152, 2-1150 SS | 100% |  |  |
| 2-1148 |  | MAD AND 11TH, STORM WORK | 1d | 2022-04-04 A | 2022-04-04 A | 2-1153 | 100% |  |  |
| PCO201.01 |  | DSC 144-Inlet 12 conflict | 5d | 2022-04-07 A | 2022-04-15 A |  | 100% |  |  |

| ID | WBS | Task | Duration | Start | Finish | Predecessors | Complete | Total float |
| --- | --- | --- | --- | --- | --- | --- | --- | --- |
| 2-1146 |  | MH6 TO MH9, STORM WORK | 15d | 2022-04-13 A | 2022-05-20 A | LS-1460 FF | 100% |  |
| PCO217.01 |  | DSC 155-Ductbank conflict @ MH 6 | 5d | 2022-04-18 A | 2022-04-19 A |  | 100% |  |
| PCO220.01 |  | DSC 158-MH7 Conflicts | 5d | 2022-04-18 A | 2022-04-29 A |  | 100% |  |
| PCO225.01 |  | DSC 161-CB 007 Conflicts | 5d | 2022-04-22 A | 2022-04-23 A |  | 100% |  |
| PCO231.01 |  | DSC 166-CB 7 conflicts | 5d | 2022-04-25 A | 2022-05-18 A |  | 100% |  |
| PCO232.01 |  | DSC 167-Unknown unlocated Steel Line MH 6 to MH 7 | 5d | 2022-04-26 A | 2022-04-30 A |  | 100% |  |
| PCO234.01 |  | DSC 169-Ductbank conflict MH7 | 5d | 2022-04-27 A | 2022-04-28 A |  | 100% |  |
| PCO237.01 |  | DSC 171-Unlocated 2" steel Line 12th-13th | 5d | 2022-04-29 A | 2022-04-30 A |  | 100% |  |
| PCO240.01 |  | DSC 174-Lack of Locates, Madison & 13th | 5d | 2022-05-05 A | 2022-05-20 A |  | 100% |  |
| PCO251.01 |  | DSC 183-Union & 11th, Irrigation conflict @ Inlet 15 | 5d | 2022-05-18 A | 2022-05-19 A |  | 100% |  |
| 2-1144 |  | SENECA AND 10TH, STORM WORK | 3d | 2022-05-23 A | 2022-05-25 A | SC-0031 | 100% |  |
| PCO257.01 |  | DSC 187-Leaking waterline CB 13 | 5d | 2022-05-24 A | 2022-05-25 A |  | 100% |  |
| PCO259.01 |  | DSC 189-Unkown Utility CB 11 Cor Tap location | 5d | 2022-05-25 A | 2022-05-26 A |  | 100% |  |
| 2-1149 |  | UNION AND 11TH, STORM WORK | 3d | 2022-05-25 A | 2022-05-27 A | 2-1148 | 100% |  |
| 2-1147 |  | MAD AND 10TH, STORM WORK | 2d | 2022-05-31 A | 2022-06-06 A | 2-1145, 2-1146 | 100% |  |
| PCO264.01 |  | DSC 190-CB 6 Conflict | 5d | 2022-06-02 A | 2022-06-03 A |  | 100% |  |
| PCO269.01 |  | DSC 195-Duct Bank Conflict with CB 6A | 5d | 2022-06-03 A | 2022-06-04 A |  | 100% |  |
| PCO273.01 |  | DSC 199-CB 6A Concrete Obstruction | 5d | 2022-06-07 A | 2022-06-08 A |  | 100% |  |
| PCO274.01 |  | DSC 200-Unknown signal conduit in conflict Inlet 14 | 5d | 2022-06-09 A | 2022-06-10 A |  | 100% |  |
| 2-1145 |  | MH1 TO MH2, STORM WORK | 3d | 2022-06-10 A | 2022-06-21 A | SC-0031, 2-1144, LS-1450 FF | 100% |  |
| 2-1151 |  | MAD & UNION SOUTH, STORM WORK | 8d | 2022-06-16 A | 2022-06-22 A | 2-1149 | 100% |  |
| 2-1158 |  | MAD AND UNION, SEWER CONNECTION | 2d | 2022-06-22 A | 2022-06-29 A | 2-1152 SS, 2-1153, 2-1151 | 100% |  |
| PCO294.01 |  | DSC 216-Inlet 21 conduit conflict | 5d | 2022-06-27 A | 2022-06-28 A |  | 100% |  |
| PCO343.01 |  | DSC 252-Unlocated Conduit Under Existing Storm Stg 2 | 5d | 2022-08-08 A | 2022-08-11 A |  | 100% |  |
| 2-1143 |  | MH2 TO MH4 (10TH AVE), STORM WORK | 20d | 2023-05-01 A | 2023-06-06 A | MS-0026, PMP-0020, SC-0037, LS-1455 FF, 2-1146, 2-1147 | 100% |  |
| PCO697.01 |  | DSC 499-CONTAMINATED SOILS | 5d | 2023-05-22 A | 2023-06-06 A | 2-1143 SS | 100% |  |
|  | 3 | **DUCT BANK WORK** |  | 2022-06-20 | 2023-08-28 |  |  |  |
| PCO285.01 |  | DSC 210-Prime Ductbank Union St. - Timbers | 5d | 2022-06-20 A | 2022-06-22 A |  | 100% |  |
| 2-1157 |  | UNION, DUCT BANK WORK | 5d | 2022-06-21 A | 2022-07-11 A | 2-1152 | 100% |  |
| 2-1156 |  | MAD AND 11TH, DUCT BANK WORK - PRIOR TO DELAY | 15d | 2022-09-06 A | 2022-09-26 A | SC-0031, 2-1152, 2-1157 | 100% |  |
| PCO379.01 |  | DSC 276-power line in conflict with Vault at 11th | 5d | 2022-09-09 A | 2022-09-24 A |  | 100% |  |
| PCO383.01 |  | DSC 279-Unkown conduit in conflict with vault at 11th | 5d | 2022-09-09 A | 2022-09-16 A |  | 100% |  |
| PCO386.01 |  | DSC 282-Buried Sidewalk 11th Ave Ductbank | 5d | 2022-09-09 A | 2022-09-14 A |  | 100% |  |
| PCO388.01 |  | DSC 284-Steel Pipe in conflict with Vault at 11th | 5d | 2022-09-12 A | 2022-09-13 A |  | 100% |  |
| PCO395.01 |  | DSC 288-Artifacts at 11th Electrical Vault | 5d | 2022-09-14 A | 2022-09-17 A |  | 100% |  |
| PCO399.01 |  | DSC 291-Existing DB Conflict with new, 11th Avenue | 5d | 2022-09-16 A | 2022-10-05 A |  | 100% |  |
| PCO404.01 |  | DSC 295-Prime 444 Vault Conflict at 11th | 5d | 2022-09-27 A | 2022-09-30 A |  | 100% |  |
| 2-1732 |  | MAD AND 11TH, DUCT BANK WORK - CITY CAUSED DELAY | 15d | 2022-09-27 A | 2022-11-11 A | 2-1156 | 100% |  |
| 2-1737 |  | MAD AND 11TH, DUCT BANK WORK - AFTER DELAY | 15d | 2022-11-15 A | 2022-12-29 A | 2-1732 | 100% |  |
| PCO467.01 |  | DSC 339-Prime Notice of unsuatable soils DB at 11th | 5d | 2022-11-18 A | 2022-11-29 A |  | 100% |  |
| PCO468.01 |  | DSC 340-Prime electic unkown utility DB at 11th | 5d | 2022-11-18 A | 2022-12-17 A |  | 100% |  |
| PCO471.01 |  | DSC 343-Prime Electric Unknown Utility DB at 11th #2 | 5d | 2022-11-21 A | 2022-11-24 A |  | 100% |  |
| PCO472.01 |  | DSC 344-Steel Structure Conflict DB at 11th | 5d | 2022-11-21 A | 2022-11-22 A |  | 100% |  |
| PCO490.01 |  | DSC 351-11th Ave Ductbank Rail conflicts | 5d | 2022-12-09 A | 2022-12-11 A |  | 100% |  |
| PCO494.01 |  | DSC 353-Prime DSC Soils caving 11th duct bank | 5d | 2022-12-21 A | 2022-12-30 A |  | 100% |  |
| 2-1742 |  | EASEMENT - CITY CAUSED DELAY | 15d | 2022-12-30 A | 2023-08-21 | 2-1737 |  | -106d |
| 2-2662 |  | KCM DUCT BANK BEFORE DSC 455 | 15d | 2023-04-25 A | 2023-04-25 A | 2-1737 | 100% |  |
| PCO645.01 |  | DSC 455-KCM DUCT BANK CONFLICT WITH OLD VAULT | 15d | 2023-04-26 A | 2023-04-26 A | 2-2662 | 100% |  |
| 2-2667 |  | KCM DUCT BANK AFTER DSC 455 | 15d | 2023-04-27 A | 2023-05-02 A | PCO645.01 | 100% |  |
| 2-1747 |  | MAD AND 11TH, DUCT BANK WORK - AFTER EASEMENT DELAY | 5d | 2023-08-22 | 2023-08-28 | 2-1742 |  | -106d |
|  | 4 | **WATERLINE WORK** |  | 2022-05-23 | 2023-04-21 |  |  |  |
|  | 1 | **STAGE 2 (BROADWAY TO 11TH)** |  | 2022-05-23 | 2022-09-08 |  |  |  |
| 2-1160 |  | TEMP MAIN, SERVICES & LATERALS, STAGE 2 (BROADWAY TO 11TH) | 4d | 2022-05-23 A | 2022-06-24 A | PMP-0017, SC-0031, 2-1146 | 100% |  |
| 2-1161 |  | FLUSH, PRESSURE TEST & DISINFECT TEMP MAIN, STAGE 2 (BROADWAY TO 11TH) | 2d | 2022-06-03 A | 2022-06-06 A | 2-1160 | 100% |  |
| 2-1162 |  | BAC T RESULTS, STAGE 2 (BROADWAY TO 11TH) | 3d | 2022-06-07 A | 2022-06-09 A | 2-1161 | 100% |  |
| 2-1163 |  | SPU CUSTOMER NOTIFICATON, STAGE 2 (BROADWAY TO 11TH) | 5d | 2022-06-10 A | 2022-06-10 A | 2-1162 | 100% |  |
| 2-1164 |  | TAP TEM MAIN 1/CC01, STAGE 2 (BROADWAY TO 11TH) | 1d | 2022-06-11 A | 2022-06-11 A | 2-1163 | 100% |  |
| 2-1165 |  | TAP TEMP MAIN 2 & 3 / CC03, STAGE 2 (BROADWAY TO 11TH) | 1d | 2022-06-12 A | 2022-06-12 A | 2-1164 | 100% |  |
| 2-1166 |  | TRANSFER SERVICES TO TEMP MAIN, STAGE 2 (BROADWAY TO 11TH) | 2d | 2022-06-13 A | 2022-06-13 A | 2-1165 | 100% |  |
| 2-1167 |  | CUT & CAP CCO1, CC02 STAGE 2 (BROADWAY TO 11TH) | 1d | 2022-06-14 A | 2022-06-23 A | 2-1166 | 100% |  |
| 2-1667 |  | SPU DELAY CC04, STAGE 2 (BROADWAY TO 11TH) | 1d | 2022-06-15 A | 2022-07-22 A | 2-1167 | 100% |  |
| 2-1168 |  | INST MAIN TO STA 253+78 INCLUDING VALVE CHAMBERS, STAGE 2 (BROADWAY TO 11TH) | 14d | 2022-06-27 A | 2022-07-13 A | 2-1167, PMP-0017, PMP-0023, PMP-0019 | 100% |  |
| PCO296.01 |  | DSC 218-I-beams in roadway zone 2 waterline | 5d | 2022-06-29 A | 2022-07-01 A |  | 100% |  |
| 2-1239 |  | NOTIFY SPU, TEST STATIONS | 3d | 2022-07-14 A | 2022-07-18 A | 2-1168 | 100% |  |
| PCO333.01 |  | DSC 243-Re-Excavate Cut & Cap Stage 2 | 5d | 2022-07-25 A | 2022-07-26 A |  | 100% |  |
| 2-1662 |  | CUT & CAP CC04, STAGE 2 (BROADWAY TO 11TH) | 1d | 2022-07-25 A | 2022-07-25 A | 2-1667 | 100% |  |
| 2-1672 |  | INST MAIN TO STA 253+78 INCLUDING ADDED VALVE CHAMBER, STAGE 2 (BROADWAY TO 11TH) AFTER SPU DELAY | 14d | 2022-07-26 A | 2022-08-05 A | 2-1168 | 100% |  |
| 2-1169 |  | INST MAIN AT BROADWAY, STAGE 2 (BROADWAY TO 11TH) | 1d | 2022-08-08 A | 2022-08-08 A | 2-1168, 2-1672 | 100% |  |
| PCO345.01 |  | DSC 254-Stage 2 Water Main, CDF obstructions | 5d | 2022-08-09 A | 2022-08-26 A |  | 100% |  |
| 2-1170 |  | INST MAIN AT 11TH, STAGE 2 (BROADWAY TO 11TH) | 1d | 2022-08-09 A | 2022-08-09 A | 2-1169, 2-1672 | 100% |  |

| ID | WBS | Task | Duration | Start | Finish | Predecessors | Complete | Constraint |
| --- | --- | --- | --- | --- | --- | --- | --- | --- |
| 2-1171 |  | INST THRUST BLOCKS & THRUST COLLARS, STAGE 2 (BROADWAY TO 11TH) | 2d | 2022-08-10 A | 2022-08-11 A | 2-1170 | 100% |  |
| 2-1172 |  | INST FIRE HYDRANTS, STAGE 2 (BROADWAY TO 11TH) | 2d | 2022-08-12 A | 2022-08-12 A | 2-1171, 2-1662 | 100% |  |
| 2-1173 |  | FLUSH, TEST & DISINFECT MAIN, STAGE 2 (BROADWAY TO 11TH) | 2d | 2022-08-15 A | 2022-08-16 A | 2-1172 | 100% |  |
| 2-1174 |  | BAC T RESULTS, STAGE 2 (BROADWAY TO 11TH) | 3d | 2022-08-17 A | 2022-08-19 A | 2-1173 | 100% |  |
| 2-1175 |  | 5d NOTICE FOR SPU, STAGE 2 (BROADWAY TO 11TH) | 5d | 2022-08-22 A | 2022-08-26 A | 2-1174 | 100% |  |
| 2-1176 |  | CONNECT NEW MAIN AT CC02, STAGE 2 (BROADWAY TO 11TH) | 1d | 2022-08-31 A | 2022-09-01 A | 2-1175 | 100% |  |
| 2-1177 |  | TRANSFER ALL SERVICES: TEMP MAIN 01,02 & 03 TO NEW MAIN, STAGE 2 (BROADWAY TO 11TH) | 3d | 2022-09-01 A | 2022-09-02 A | 2-1176 | 100% |  |
| 2-1178 |  | CONNECT AT CC01 & CC03, STAGE 2 (BROADWAY TO 11TH) | 1d | 2022-09-01 A | 2022-09-01 A | 2-1177 | 100% |  |
| 2-1179 |  | TEST STATIONS, STAGE 2 (BROADWAY TO 11TH) | 2d | 2022-09-02 A | 2022-09-02 A | 2-1178, 2-1239 FF | 100% |  |
| 2-1180 |  | REM TEMP MAIN, STAGE 2 (BROADWAY TO 11TH) | 3d | 2022-09-06 A | 2022-09-08 A | 2-1179 | 100% |  |
|  | 2 | **STAGE 3 (11TH TO 12TH)** |  | 2022-06-02 | 2022-12-14 |  |  |  |
| PCO267.01 |  | DSC 193-duct bank conflict with temp main at 11th | 5d | 2022-06-02 A | 2022-06-04 A |  | 100% |  |
| 2-1182 |  | TEMP MAIN, SERVICES & LATERALS, TO3B, T04, & T05, STAGE 3 (11TH TO 12TH) | 4d | 2022-08-22 A | 2022-09-09 A | 2-1173 | 100% |  |
| PCO363.01 |  | DSC 264-Seattle U Fire Service Coroded Pipe | 5d | 2022-08-28 A | 2022-09-04 A |  | 100% |  |
| PCO377.01 |  | DSC 275-Stage 3 WM Ductbank Conflict | 5d | 2022-09-08 A | 2022-09-09 A |  | 100% |  |
| 2-1183 |  | FLUSH, TEST, DISINFECT TEMP MAIN, STAGE 3 (11TH TO 12TH) | 2d | 2022-09-12 A | 2022-09-13 A | 2-1182 | 100% |  |
| 2-1184 |  | BAC T RESULTS, STAGE 3 (11TH TO 12TH) | 3d | 2022-09-14 A | 2022-09-16 A | 2-1183 | 100% |  |
| 2-1677 |  | FM300 ISSUED | 1d | 2022-09-15 A | 2022-09-15 A |  | 100% | start on or after 2022-09-15 |
| 2-1682 |  | CITY/JANSEN NEGOTIATE FM300 CHANGE ORDER | 1d | 2022-09-16 A | 2022-10-03 A | 2-1677 | 100% |  |
| 2-1185 |  | 5d NOTICE FOR SPU, STAGE 3 (11TH TO 12TH) | 5d | 2022-09-19 A | 2022-09-23 A | 2-1184 | 100% |  |
| 2-1186 |  | TAP MAIN AT CC06/CONNECT TO T04, STAGE 3 (11TH TO 12TH) | 1d | 2022-09-24 A | 2022-09-25 A | 2-1178, 2-1185 | 100% |  |
| 2-1187 |  | TAP MAIN AT CC07/ CONNECTION TO T05, STAGE 3 (11TH TO 12TH) | 1d | 2022-09-24 A | 2022-09-25 A | 2-1186 | 100% |  |
| 2-1188 |  | TAP HYDRANT & MAKE CONNECTION TO T03B, STAGE 3 (11TH TO 12TH) | 1d | 2022-09-24 A | 2022-09-25 A | 2-1187 | 100% |  |
| 2-1687 |  | FM300 UTILITY VERIFICATION | 1d | 2022-09-26 A | 2022-09-26 A | 2-1682 | 100% |  |
| 2-1717 |  | 10 DAY DELAY - SPU CREW AVAILABILITY | 10d | 2022-09-26 A | 2022-10-07 A | 2-1188 | 100% |  |
| 2-1692 |  | INSTALL FM300 TEMP MAIN | 2d | 2022-09-27 A | 2022-09-28 A | 2-1687 SS | 100% |  |
| 2-1697 |  | FM300 TESTING/FLUSHING | 2d | 2022-09-28 A | 2022-09-29 A | 2-1692 | 100% |  |
| 2-1702 |  | FM300 BAC-T RESULTS | 3d | 2022-09-30 A | 2022-10-04 A | 2-1697 | 100% |  |
| 2-1707 |  | FM300 5 DAY NOTIFICATION FOR SPU | 2d | 2022-10-05 A | 2022-10-06 A | 2-1702 | 100% |  |
| PCO407.01 |  | DSC 298-Unknown unlocated Water Service Stage 3 | 5d | 2022-10-06 A | 2022-10-06 A |  | 100% |  |
| 2-1712 |  | FM300 TIE-IN TEMP MAIN | 1d | 2022-10-07 A | 2022-10-07 A | 2-1707 | 100% |  |
| 2-1189 |  | CC05, CC06 & CC07, STAGE 3 (11TH TO 12TH) | 1d | 2022-10-08 A | 2022-10-08 A | 2-1188, 2-1712, 2-1717 | 100% |  |
| 2-1190 |  | INST NEW MAIN 253+95 TO 257+41, STAGE 3 (11TH TO 12TH) - PRIOR TO DELAY | 5d | 2022-10-10 A | 2022-10-14 A | 2-1189 | 100% |  |
| PCO417.01 |  | DSC 307-42" Watermain leaking at 12th | 5d | 2022-10-17 A | 2022-10-24 A |  | 100% |  |
| 2-1727 |  | OWNER DELAY - LEAKING 48' MAIN; COULD NOT COMPLETE ON 1ST WEEKEND | 5d | 2022-10-17 A | 2022-10-21 A | 2-1190 | 100% |  |
| 2-1722 |  | INST NEW MAIN 253+95 TO 257+41, STAGE 3 (11TH TO 12TH) - AFTER DELAY | 5d | 2022-10-22 A | 2022-10-22 A | 2-1727 | 100% |  |
| 2-1191 |  | INST MAIN 12A 8+05 TO 11+32 INCLUDING VALVE CHAMBERS, STAGE 3 (11TH TO 12TH) | 6d | 2022-10-24 A | 2022-11-15 A | 2-1190, 2-1722 | 100% |  |
| PCO437.01 |  | DSC 319-Unknown Unlocated Conduit 12th and Union | 5d | 2022-10-25 A | 2022-10-27 A |  | 100% |  |
| PCO446.01 |  | DSC 326-Unlocated Ductbanks Stage 3 Watermain | 5d | 2022-11-02 A | 2022-11-11 A |  | 100% |  |
| 2-1192 |  | INST THRUST BLOCKS, STAGE 3 (11TH TO 12TH) | 2d | 2022-11-02 A | 2022-11-11 A | 2-1191 | 100% |  |
| PCO450.01 |  | DSC 329-unknown unlocated utilitiy in conflict with valve vault on 12th | 5d | 2022-11-07 A | 2022-11-09 A |  | 100% |  |
| 2-1251 |  | NOTIFY SPU, TEST STATIONS 72HOURS | 3d | 2022-11-08 A | 2022-11-10 A | 2-1191 | 100% |  |
| PCO458.01 |  | DSC 335-8" Service conflict with 48" transition main | 5d | 2022-11-14 A | 2022-11-25 A |  | 100% |  |
| PCO461.01 |  | DSC 336-Unknown Ductbanks Stage 3 | 5d | 2022-11-15 A | 2022-11-17 A |  | 100% |  |
| 2-1193 |  | INST FIRE HYDRANTS, STAGE 3 (11TH TO 12TH) | 1d | 2022-11-15 A | 2022-11-15 A | 2-1192 | 100% |  |
| 2-1194 |  | FLUSH, TEST & DISINFECT MAIN, STAGE 3 (11TH TO 12TH) | 2d | 2022-11-16 A | 2022-11-17 A | 2-1193 | 100% |  |
| 2-1195 |  | BAC T RESULTS, STAGE 3 (11TH TO 12TH) | 3d | 2022-11-18 A | 2022-11-20 A | 2-1194 | 100% |  |
| 2-1196 |  | 5d NOTICE FOR SPU, STAGE 3 (11TH TO 12TH) | 5d | 2022-11-21 A | 2022-11-29 A | 2-1195 | 100% |  |
| 2-1197 |  | SPU CONNECT MAIN AT 253+95, STAGE 3 (11TH TO 12TH) | 1d | 2022-11-29 A | 2022-11-29 A | 2-1196 | 100% |  |
| 2-1198 |  | SPU TRANSFER SERVICES FROM T04 TO MAIN, STAGE 3 (11TH TO 12TH) | 2d | 2022-11-29 A | 2022-11-29 A | 2-1197 | 100% |  |
| 2-1907 |  | OWNER DELAY - WAIT FOR SPU TO COMPLETE WORK, STAGE 3 (11TH TO 12TH) | 2d | 2022-11-30 A | 2022-12-09 A | 2-1198 | 100% |  |
| 2-1199 |  | SPU CONECT AT CC06 & CC07, STAGE 3 (11TH TO 12TH) | 1d | 2022-12-12 A | 2022-12-12 A | 2-1198, 2-1907 | 100% |  |
| 2-1200 |  | SPU TRANFER SERVICES FROM T06 TO MAIN, STAGE 3 (11TH TO 12TH) | 2d | 2022-12-13 A | 2022-12-13 A | 2-1199 | 100% |  |
| 2-1201 |  | TEST STATIONS, STAGE 3 (11TH TO 12TH) | 1d | 2022-12-13 A | 2022-12-13 A | 2-1200, 2-1251 | 100% |  |
| 2-1202 |  | REMOVE TEMP MAIN, STAGE 3 (11TH TO 12TH) | 3d | 2022-12-14 A | 2022-12-14 A | 2-1201 | 100% |  |
|  | 3 | **STAGE 4 (12TH TO 13TH)** |  | 2022-12-05 | 2023-02-20 |  |  |  |
| 2-1204 |  | TEMP MAIN, SERVICES & LATERALS, T10 & T07, STAGE 4 (12TH TO 13) | 4d | 2022-12-05 A | 2022-12-05 A | 2-1193, 2-1154, 2-1194, 3-1749 | 100% |  |
| 2-1205 |  | FLUSH, TEST & DISINFECT TEMP MAIN, STAGE 4 (12TH TO 13) | 2d | 2022-12-06 A | 2022-12-07 A | 2-1204 | 100% |  |
| 2-1206 |  | BAC T RESULTS, STAGE 4 (12TH TO 13) | 3d | 2022-12-08 A | 2022-12-12 A | 2-1205 | 100% |  |
| 2-1207 |  | 5d NOTICE FOR SPU, STAGE 4 (12TH TO 13) | 5d | 2022-12-13 A | 2022-12-19 A | 2-1206 | 100% |  |
| 2-1208 |  | SPU TAP HYDRANT CONECT TO T16, STAGE 4 (12TH TO 13) | 1d | 2022-12-13 A | 2022-12-13 A | 2-1207 | 100% |  |
| 2-1211 |  | SPU TRANSFER SERVICES TO TEMP MAIN, STAGE 4 (12TH TO 13) | 3d | 2022-12-13 A | 2022-12-13 A | 2-1208 | 100% |  |
| 2-1897 |  | FIRST DELAY WAITING FOR SPU TRANSFER SERVICES TO TEMP MAIN, STAGE 4 (12TH TO 13) | 3d | 2022-12-20 A | 2022-12-23 A | 2-1211 | 100% |  |
| 2-1902 |  | SECOND DELAY WAITING FOR SPU TO PERFORM CUT AND CAPS, STAGE 4 (12TH TO 13) | 3d | 2022-12-27 A | 2023-01-06 A | 2-1897 | 100% |  |
| 2-1212 |  | SPU CUT & CAPS, STAGE 4 (12TH TO 13) | 1d | 2023-01-07 A | 2023-01-07 A | 2-1211, 2-1902 | 100% |  |
| 2-1214 |  | INST MAIN FROM STA 257+55 TO 269+00, STAGE 4 & 5 (12TH TO 13) | 14d | 2023-01-09 A | 2023-01-13 A | 2-1212 | 100% |  |
| 2-1220 |  | INST THRUST BLOCKS, STAGE 4 (12TH TO 13) | 2d | 2023-01-12 A | 2023-01-13 A | 2-1214 | 100% |  |
| 2-1221 |  | INST THRUST COLLARS, STAGE 4 (12TH TO 13) | 3d | 2023-01-12 A | 2023-01-13 A | 2-1220 | 100% |  |
| 2-1222 |  | FLUSH, TEST & DISINFECT MAIN, STAGE 4 (12TH TO 13) | 2d | 2023-01-14 A | 2023-01-15 A | 2-1221 | 100% |  |
| 2-1223 |  | BAC T RESULTS, STAGE 4 (12TH TO 13) | 3d | 2023-01-17 A | 2023-01-19 A | 2-1222 | 100% |  |

| ID | WBS | Task | Duration | Start | Finish | Predecessors | Complete |
| --- | --- | --- | --- | --- | --- | --- | --- |
| 2-1224 |  | 5d NOTICE FOR SPU, STAGE 4 (12TH TO 13) | 5d | 2023-01-20 A | 2023-01-26 A | 2-1223 | 100% |
| 2-1225 |  | PRIOR TO DELAY - SPU CONECT AT MAIN, STAGE 4 (12TH TO 13) | 1d | 2023-01-27 A | 2023-01-27 A | 2-1224 | 100% |
| PCO544.01 |  | DSC 384-Stage 4 crossing at Union conflict with duct bank | 5d | 2023-01-28 A | 2023-02-08 A |  | 100% |
| 2-1227 |  | SPU TRANSFER SERVICES, STAGE 4 (12TH TO 13) | 2d | 2023-01-28 A | 2023-01-28 A | 2-1225, 2-1922 | 100% |
| 2-1228 |  | SPU CONNECT AT 13TH (12TH TO 13) | 1d | 2023-01-28 A | 2023-01-28 A | 2-1227 | 100% |
| 2-1230 |  | TEST STATIONS, STAGE 4 (12TH TO 13) | 3d | 2023-01-30 A | 2023-01-30 A | 2-1228 | 100% |
| 2-1912 |  | OWNER CAUSED DELAY - SPU CONECT AT MAIN, STAGE 4 (12TH TO 13) | 1d | 2023-01-30 A | 2023-02-18 A | 2-1225 | 100% |
| 2-1917 |  | OWNER DIRECTION TO PERFORM INVESTIGATIVE EXCAVATION, STAGE 4 (12TH TO 13) | 1d | 2023-02-06 A | 2023-02-07 A | 2-1912 | 100% |
| 2-1922 |  | AFTER DELAY - SPU CONNECT AT UNION , STAGE 4 (12TH TO 13) | 1d | 2023-02-19 A | 2023-02-19 A | 2-1917 | 100% |
| 2-1231 |  | REM TEMP WATER MAINS, STAGE 4 (12TH TO 13) | 4d | 2023-02-20 A | 2023-02-20 A | 2-1230 | 100% |
|  | 5 | **STAGE 4B (13TH TO 14TH)** |  | 2023-02-15 | 2023-03-28 |  |  |
| 2-1927 |  | INSTALL MAIN LINE, STAGE 4B (13TH TO 14TH) | 1d | 2023-02-15 A | 2023-03-14 A | 2-1802 | 100% |
| 2-1932 |  | TESTING AND FLUSHING, STAGE 4B (13TH TO 14TH) | 2d | 2023-03-15 A | 2023-03-17 A | 2-1927, 2-1231 | 100% |
| 2-1937 |  | 5 DAY WAIT FOR SPU, STAGE 4B (13TH TO 14TH) | 1d | 2023-03-20 A | 2023-03-24 A | 2-1932 | 100% |
| 2-1942 |  | COMMISSION STAGE 4B, STAGE 4B (13TH TO 14TH) | 4d | 2023-03-27 A | 2023-03-28 A | 2-1937 | 100% |
|  | 4 | **STAGE 5 (13TH TO 15TH)** |  | 2022-12-27 | 2023-04-21 |  |  |
| 2-1752 |  | TEMP MAIN, SERVICES & LATERALS, T16, T17, T06 & T11 STAGE 5 (12TH TO 15) | 4d | 2022-12-27 A | 2023-01-05 A | 2-1897 | 100% |
| 2-1757 |  | FLUSH, TEST & DISINFECT TEMP MAIN, STAGE 5 (12TH TO 15) | 2d | 2023-01-06 A | 2023-01-10 A | 2-1752 | 100% |
| 2-1762 |  | BAC T RESULTS, STAGE 5 (12TH TO 15) | 3d | 2023-01-11 A | 2023-01-13 A | 2-1757 | 100% |
| 2-1767 |  | 5d NOTICE FOR SPU, STAGE 5 (12TH TO 15) | 5d | 2023-01-17 A | 2023-01-23 A | 2-1762 | 100% |
| PCO519.01 |  | DSC 371-Stage 5 Temp Connection at 15th | 5d | 2023-01-19 A | 2023-01-26 A |  | 100% |
| PCO521.01 |  | DSC 373-Stage 5 Cut and Cap Concrete Obstruction | 5d | 2023-01-19 A | 2023-01-20 A |  | 100% |
| 2-1772 |  | SPU TAP HYDRANT CONECT TO T16, T17, T06 & T16 STAGE 5 (12TH TO 15) | 1d | 2023-01-25 A | 2023-01-25 A | 2-1767 | 100% |
| 2-1782 |  | SPU TRANSFER SERVICES TO TEMP MAIN, STAGE 5 (12TH TO 15) | 3d | 2023-01-26 A | 2023-01-26 A | 2-1772 | 100% |
| 2-1802 |  | SPU CUT & CAP AT STAGE 5 (12TH TO 15) | 1d | 2023-01-30 A | 2023-01-31 A | 2-1782 | 100% |
| 2-1792 |  | INST MAIN, STAGE 5 (12TH TO 15) | 14d | 2023-02-15 A | 2023-04-04 A | 2-1802 | 100% |
| 2-1837 |  | INST THRUST COLLARS, STAGE 5 (12TH TO 15) | 3d | 2023-02-22 A | 2023-04-04 A | 2-1792 SS | 100% |
| PCO627.01 |  | DSC 439-WATERMAIN CONFLICT WITH MAIN AT 15TH | 14d | 2023-04-03 A | 2023-04-04 A | 2-1792, 2-1837 | 100% |
| 2-1832 |  | INST THRUST BLOCKS, STAGE 5 (12TH TO 15) | 2d | 2023-04-05 A | 2023-04-05 A | 2-1792 | 100% |
| 2-1842 |  | FLUSH, TEST & DISINFECT MAIN, STAGE 5 (12TH TO 15) | 2d | 2023-04-06 A | 2023-04-07 A | 2-1837, 2-1832 | 100% |
| 2-1847 |  | BAC T RESULTS, STAGE 5 (12TH TO 15) | 3d | 2023-04-07 A | 2023-04-09 A | 2-1842 | 100% |
| 2-1852 |  | 5d NOTICE FOR SPU, STAGE 5 (12TH TO 15) | 5d | 2023-04-10 A | 2023-04-14 A | 2-1847 | 100% |
| 2-1857 |  | SPU CONECT AT 13TH NEW MAIN, STAGE 5 (12TH TO 15) | 1d | 2023-04-15 A | 2023-04-19 A | 2-1852 | 100% |
| 2-1867 |  | SPU TRANSFER SERVICES, STAGE 5 (12TH TO 15) | 2d | 2023-04-15 A | 2023-04-19 A | 2-1857 | 100% |
| 2-1872 |  | SPU CONNECT AT CC08 & CC09, STAGE 5 (12TH TO 15) | 1d | 2023-04-15 A | 2023-04-19 A | 2-1867 | 100% |
| 2-1882 |  | REM TEMP WATER MAIN, STAGE 5 (12TH TO 15) | 4d | 2023-04-20 A | 2023-04-21 A | 2-1872 | 100% |
|  | 5 | **TEMP SIGNALS** |  | 2022-03-22 | 2022-09-24 |  |  |
| 2-1233 |  | 11TH AVE TEMP SIGNALS, TEMP SIGNALS | 3d | 2022-03-22 A | 2022-03-24 A | SC-0031 | 100% |
| 2-1234 |  | 12TH AVE TEMP SIGNALS, TEMP SIGNALS | 3d | 2022-03-25 A | 2022-03-29 A | 2-1233 | 100% |
| 2-1235 |  | 13TH AVE TEMP SIGNALS, TEMP SIGNALS | 3d | 2022-03-30 A | 2022-04-01 A | 2-1234 | 100% |
| 2-1236 |  | 14TH AVE TEMP SIGNALS, TEMP SIGNALS | 3d | 2022-04-04 A | 2022-04-06 A | 2-1235 | 100% |
| 2-1237 |  | 15TH AVE TEMP SIGNALS, TEMP SIGNALS | 3d | 2022-04-07 A | 2022-04-11 A | 2-1236 | 100% |
| PCO355.01 |  | DSC 260-Temp Signals 14th tied to Pike ST | 5d | 2022-08-23 A | 2022-09-24 A |  | 100% |
|  | 6 | **ROADWAY WORK** |  | 2022-07-07 | 2023-09-29 |  |  |
|  | 1 | **ROADWAY BETWEEN INTERSECTIONS** |  | 2022-07-07 | 2023-09-29 |  |  |
|  | 1 | **10TH AVE** |  | 2023-02-14 | 2023-06-22 |  |  |
| PCO565.01 |  | DSC 399-Unknown unlocated conduit roadway 10th to 11th south | 5d | 2023-02-14 A | 2023-02-24 A |  | 100% |
| PCO566.01 |  | DSC 400-Comm Vault intertwined with cable car 10th ave | 5d | 2023-02-14 A | 2023-02-24 A |  | 100% |
| 2-1241 |  | DEMO ROAD - COMMON EX - TYPE 2, 10TH AVE | 6d | 2023-06-07 A | 2023-06-14 A | 2-1145, 2-1143, 2-1144 | 100% |
| 2-1242 |  | F/P CURB AND GUTTER, 10TH AVE | 4d | 2023-06-15 A | 2023-06-20 A | 2-1241 | 100% |
| 2-1243 |  | ASPHALT PAVING, 10TH AVE | 2d | 2023-06-21 A | 2023-06-22 A | 2-1242 | 100% |
|  | 4 | **BROADWAY TO 11TH NORTH SIDE** |  | 2022-09-26 | 2022-11-23 |  |  |
| 2-1259 |  | DEMO ROAD - COMMON EX - TYPE 2, BROADWAY TO 11TH NORTH SIDE | 10d | 2022-09-26 A | 2022-10-07 A | 2-1180, 2-1237 | 100% |
| 2-1260 |  | CONDUIT RD CROSSING, BROADWAY TO 11TH NORTH SIDE | 10d | 2022-09-26 A | 2022-10-07 A | 2-1259 SS | 100% |
| PCO413.01 |  | DSC 303-counduit directly under concretre NW 10th | 5d | 2022-10-10 A | 2022-10-11 A |  | 100% |
| 2-1261 |  | ROADWAY PAVING - 6 POURS, BROADWAY TO 11TH NORTH SIDE | 12d | 2022-10-28 A | 2022-11-11 A | 2-1260 | 100% |
| 2-1262 |  | CONCRETE CURE, BROADWAY TO 11TH NORTH SIDE | 3d | 2022-11-11 A | 2022-11-14 A | 2-1261 | 100% |
| 2-1263 |  | F/P CURB BROADWAY TO 11TH NORTH SIDE, BROADWAY TO 11TH NORTH SIDE | 3d | 2022-11-15 A | 2022-11-22 A | 2-1262 | 100% |
| 2-1264 |  | TEMP PATCH BROADWAY TO 11TH NORTH SIDE, BROADWAY TO 11TH NORTH SIDE | 1d | 2022-11-23 A | 2022-11-23 A | 2-1263 | 100% |
|  | 6 | **BROADWAY TO 11TH SOUTH SIDE** |  | 2023-01-31 | 2023-08-10 |  |  |
| 2-1947 |  | OWNER DELAY - RESEQUENCE PAVING NEEDED FOR KCM TO ALLOW WORK | 10d | 2023-01-31 A | 2023-02-03 A | 2-1245 | 100% |
| 2-1273 |  | DEMO ROAD - COMMON EX - TYPE 2, BROADWAY TO 11TH SOUTH SIDE | 10d | 2023-02-06 A | 2023-02-28 A | 2-1270, 2-1947 | 100% |
| 2-1274 |  | CONDUIT RD CROSSING, BROADWAY TO 11TH SOUTH SIDE | 10d | 2023-02-06 A | 2023-02-22 A | 2-1273 SS | 100% |
| 2-1952 |  | DELAY AWAITING SCL TO INSPECT CONDUIT | 10d | 2023-02-23 A | 2023-03-01 A | 2-1274 | 100% |
| 2-1957 |  | DELAY EAST OF BROADWAY TO ALLOW COMCAST TO BORE | 8d | 2023-03-01 A | 2023-07-10 A | 2-1273 | 100% |
| 2-1275 |  | ROADWAY PAVING - OTHER THAN DELAYED PORTION | 8d | 2023-03-02 A | 2023-04-07 A | 2-1274, 2-1271, 2-1952 | 100% |
| 2-1277 |  | F/P CURB, BROADWAY TO 11TH SOUTH SIDE | 3d | 2023-04-03 A | 2023-04-03 A | 2-1275 | 100% |
| 2-1278 |  | TEMP PATCH, BROADWAY TO 11TH SOUTH SIDE | 1d | 2023-04-04 A | 2023-04-04 A | 2-1277, 2-1257 | 100% |
| 2-1276 |  | CONCRETE CURE, BROADWAY TO 11TH SOUTH SIDE | 3d | 2023-04-08 A | 2023-04-10 A | 2-1275 | 100% |
| 2-2262 |  | REMOVE ROADWAY TYPE 2 DELAYED PORTION | 5d | 2023-07-11 A | 2023-07-14 A | 2-1957 | 100% |

| ID | WBS | Task | Duration | Start | Finish | Predecessors | Complete | Total float |
| --- | --- | --- | --- | --- | --- | --- | --- | --- |
| DSC-558 |  | DSC 558 INLET PIPE PRE EXISITNG BROKEN | 5d | 2023-07-12 A | 2023-07-14 A | 2-2262 SS | 100% |  |
| DSC-559 |  | DSC 559 UNKNOWN UNLOCATED CONDUIT | 5d | 2023-07-12 A | 2023-07-14 A | 2-2262 SS | 100% |  |
| 2-1962 |  | ROADWAY PAVING - DELAYED PORTION | 4d | 2023-08-09 A | 2023-08-10 A | 2-1957, DSC-559, DSC-558, 2-2262 | 100% |  |
|  | 2 | **UNION ST NORTH** |  | 2023-01-17 | 2023-02-20 |  |  |  |
| 2-1245 |  | DEMO ROAD - COMMON EX - TYPE 2, UNION ST NORTH | 10d | 2023-01-17 A | 2023-01-30 A | 2-1157, 2-1149, 2-1158, 2-1737 | 100% |  |
| 2-1246 |  | CONDUIT ROAD CROSSINGS, UNION ST NORTH | 10d | 2023-01-17 A | 2023-01-25 A | 2-1245 SS | 100% |  |
| 2-1247 |  | ROADWAY PAVING - 4 POURS, UNION ST NORTH | 8d | 2023-02-06 A | 2023-02-15 A | 2-1246 | 100% |  |
| 2-1249 |  | F/P CURB UNION ST NORTH, UNION ST NORTH | 3d | 2023-02-15 A | 2023-02-17 A | 2-1248 | 100% |  |
| 2-1248 |  | CONCRETE CURE, UNION ST NORTH | 3d | 2023-02-16 A | 2023-02-18 A | 2-1247 | 100% |  |
| 2-1250 |  | TEMP PATCH UNION ST NORTH, UNION ST NORTH | 1d | 2023-02-20 A | 2023-02-20 A | 2-1249 | 100% |  |
|  | 3 | **UNION ST SOUTH** |  | 2022-07-07 | 2022-08-23 |  |  |  |
| 2-1252 |  | DEMO ROAD - COMMON EX - TYPE 2, UNION ST SOUTH | 12d | 2022-07-07 A | 2022-07-29 A | 2-1151 | 100% |  |
| 2-1253 |  | CONDUIT ROAD CROSSINGS, UNION ST SOUTH | 12d | 2022-07-07 A | 2022-07-29 A | 2-1252 SS | 100% |  |
| 2-1254 |  | ROADWAY PAVING - 8 POURS, UNION ST SOUTH | 16d | 2022-08-01 A | 2022-08-16 A | 2-1253 | 100% |  |
| 2-1255 |  | CONCRETE CURE, UNION ST SOUTH | 3d | 2022-08-17 A | 2022-08-19 A | 2-1254 | 100% |  |
| 2-1256 |  | F/P CURB, UNION ST SOUTH | 6d | 2022-08-18 A | 2022-08-19 A | 2-1255 | 100% |  |
| 2-1257 |  | TEMP PATCH, UNION ST SOUTH | 1d | 2022-08-22 A | 2022-08-23 A | 2-1256 | 100% |  |
|  | 5 | **11TH TO 12TH NORTH SIDE** |  | 2022-12-27 | 2023-02-06 |  |  |  |
| 2-1266 |  | DEMO ROAD - COMMON EX - TYPE 2, 11TH TO 12TH NORTH SIDE | 6d | 2022-12-27 A | 2023-01-13 A | 2-1264, 2-1233, 2-1234, 2-1253, 2-1202 | 100% |  |
| 2-1267 |  | CONDUIT RD CROSSING, 11TH TO 12TH NORTH SIDE | 6d | 2022-12-27 A | 2023-01-13 A | 2-1266 SS | 100% |  |
| PCO516.01 |  | DSC 368-Unknown unlocated conduit Union North side | 5d | 2023-01-17 A | 2023-01-19 A |  | 100% |  |
| PCO517.01 |  | DSC 369-CDF Obstruction Union north side | 5d | 2023-01-17 A | 2023-01-18 A |  | 100% |  |
| PCO536.01 |  | DSC 378-unknown abandoned Catch Basin 12th north side | 5d | 2023-01-24 A | 2023-01-25 A |  | 100% |  |
| 2-1268 |  | ROADWAY PAVING - 4 POURS, 11TH TO 12TH NORTH SIDE | 8d | 2023-01-24 A | 2023-02-03 A | 2-1267 | 100% |  |
| 2-1269 |  | CONCRETE CURE, 11TH TO 12TH NORTH SIDE | 3d | 2023-02-03 A | 2023-02-05 A | 2-1268 | 100% |  |
| 2-1270 |  | F/P CURB, 11TH TO 12TH NORTH SIDE | 2d | 2023-02-03 A | 2023-02-03 A | 2-1269 | 100% |  |
| 2-1271 |  | TEMP PATCH, 11TH TO 12TH NORTH SIDE | 1d | 2023-02-06 A | 2023-02-06 A | 2-1270 | 100% |  |
|  | 7 | **11TH TO 12TH SOUTH SIDE** |  | 2023-03-01 | 2023-04-21 |  |  |  |
| 2-1280 |  | DEMO ROAD - COMMON EX - TYPE 2, 11TH TO 12TH SOUTH SIDE | 5d | 2023-03-01 A | 2023-03-09 A | 2-1274 | 100% |  |
| 2-1281 |  | CONDUIT RD CROSSING, 11TH TO 12TH SOUTH SIDE | 6d | 2023-03-06 A | 2023-03-08 A | 2-1280 SS+1d | 100% |  |
| 2-1282 |  | ROADWAY PAVING - 4 POURS, 11TH TO 12TH SOUTH SIDE | 8d | 2023-03-10 A | 2023-04-18 A | 2-1281 | 100% |  |
| 2-1284 |  | F/P CURB, 11TH TO 12TH SOUTH SIDE | 2d | 2023-04-05 A | 2023-04-06 A | 2-1282 SS | 100% |  |
| 2-1285 |  | TEMP PATCH, 11TH TO 12TH SOUTH SIDE | 1d | 2023-04-07 A | 2023-04-07 A | 2-1284 | 100% |  |
| 2-1283 |  | CONCRETE CURE, 11TH TO 12TH SOUTH SIDE | 3d | 2023-04-18 A | 2023-04-21 A | 2-1282 | 100% |  |
|  | 11 | **12TH TO 13TH NORTH SIDE** |  | 2023-04-24 | 2023-05-17 |  |  |  |
| 2-1308 |  | DEMO ROAD - COMMON EX - TYPE 2, 12TH TO 13TH NORTH SIDE | 5d | 2023-04-24 A | 2023-05-08 A | 2-1245, 2-1922, 2-1283, 2-1276, 2-1882 | 100% |  |
| 2-1309 |  | CONDUIT RD CROSSING, 12TH TO 13TH NORTH SIDE | 5d | 2023-04-24 A | 2023-05-03 A | 2-1308 SS | 100% |  |
| 2-1310 |  | ROADWAY PAVING - 4 POURS, 12TH TO 13TH NORTH SIDE | 7d | 2023-05-09 A | 2023-05-12 A | 2-1309, 2-1249 | 100% |  |
| 2-2722 |  | OWNER DIRECTED CHANGE TO JOINTS | 5d | 2023-05-11 A | 2023-05-11 A | 2-1308 | 100% |  |
| 2-1311 |  | CONCRETE CURE, 12TH TO 13TH NORTH SIDE | 3d | 2023-05-13 A | 2023-05-15 A | 2-1310, PCO682.01 | 100% |  |
| PCO682.01 |  | DSC 484-EXISTING CONCRETE DB CONFLICT WITH ROADWAY | 5d | 2023-05-13 A | 2023-05-15 A | 2-2722 | 100% |  |
| 2-1312 |  | F/P CURB, 12TH TO 13TH NORTH SIDE | 2d | 2023-05-15 A | 2023-05-16 A | 2-1311 | 100% |  |
| 2-1313 |  | TEMP PATCH, 12TH TO 13TH NORTH SIDE | 1d | 2023-05-17 A | 2023-05-17 A | 2-1312 | 100% |  |
|  | 8 | **12TH TO 13TH SOUTH SIDE** |  | 2023-03-10 | 2023-07-11 |  |  |  |
| 2-1967 |  | DELAY AWAITING COMCAST TO FINISH | 6d | 2023-03-10 A | 2023-04-21 A | 2-1280, 2-1283 | 100% |  |
| 2-1287 |  | DEMO ROAD - COMMON EX - TYPE 2, 12TH TO 13TH SOUTH SIDE | 6d | 2023-05-22 A | 2023-06-14 A | 2-1280, 2-1281, 2-1967 | 100% |  |
| 2-1288 |  | CONDUIT RD CROSSING, 12TH TO 13TH SOUTH SIDE | 6d | 2023-05-22 A | 2023-06-06 A | 2-1287 SS | 100% |  |
| PCO699.01 |  | DSC 501-CONDUIT ENCASED IN ROADWAY | 6d | 2023-05-23 A | 2023-05-24 A | 2-1287 SS | 100% |  |
| PCO703.01 |  | DSC 504-DUCTBANK CONFLICT WITH ROADWAY | 6d | 2023-05-24 A | 2023-05-31 A | 2-1287 SS | 100% |  |
| 2-2289 |  | MH 13 LID CONFLICT WITH ADA RAMP-ROTATE BARREL SECTION | 1d | 2023-06-14 A | 2023-06-14 A | 2-1287 | 100% |  |
| 2-1289 |  | ROADWAY PAVING - 4 POURS, 12TH TO 13TH SOUTH SIDE | 16d | 2023-06-15 A | 2023-07-07 A | 2-1288, 2-1282, PCO699.01, PCO703.01, 2-1287, 2-2289 | 100% |  |
| 2-1290 |  | CONCRETE CURE, 12TH TO 13TH SOUTH SIDE | 3d | 2023-07-07 A | 2023-07-07 A | 2-1289 | 100% |  |
| 2-1291 |  | F/P CURB, 12TH TO 13TH SOUTH SIDE | 2d | 2023-07-10 A | 2023-07-10 A | 2-1290 | 100% |  |
| 2-1292 |  | TEMP PATCH, 12TH TO 13TH SOUTH SIDE | 1d | 2023-07-11 A | 2023-07-11 A | 2-1291 | 100% |  |
|  | 12 | **13TH TO 14TH NORTH SIDE** |  | 2023-08-14 | 2023-09-06 |  |  |  |
| 2-1315 |  | DEMO ROAD - COMMON EX - TYPE 2, 13TH TO 14TH NORTH SIDE | 6d | 2023-08-14 | 2023-08-21 | 2-1308, 2-1292, 2-1962 SS+1d |  | -124d |
| 2-1316 |  | CONDUIT RD CROSSING, 13TH TO 14TH NORTH SIDE | 6d | 2023-08-14 | 2023-08-21 | 2-1315 SS |  | -124d |
| 2-1317 |  | ROADWAY PAVING - 2 POURS, 13TH TO 14TH NORTH SIDE | 8d | 2023-08-22 | 2023-08-31 | 2-1316, 2-1310 |  | -124d |
| 2-1318 |  | CONCRETE CURE, 13TH TO 14TH NORTH SIDE | 3d | 2023-09-01 | 2023-09-03 | 2-1317 |  | -174d |
| 2-1319 |  | F/P CURB, 13TH TO 14TH NORTH SIDE | 1d | 2023-09-05 | 2023-09-05 | 2-1318 |  | -122d |
| 2-1320 |  | TEMP PATCH, 13TH TO 14TH NORTH SIDE | 1d | 2023-09-06 | 2023-09-06 | 2-1319, 2-1306 |  | -122d |
|  | 9 | **13TH TO 14TH SOUTH SIDE** |  | 2023-05-25 | 2023-07-12 |  |  |  |
| 2-1294 |  | DEMO ROAD - COMMON EX - TYPE 2, 13TH TO 14TH SOUTH SIDE | 6d | 2023-05-25 A | 2023-06-14 A | 2-1942, 2-1288 SS | 100% |  |
| 2-1295 |  | CONDUIT RD CROSSING, 13TH TO 14TH SOUTH SIDE | 6d | 2023-05-25 A | 2023-06-07 A | 2-1294 SS, PCO707.01 FF | 100% |  |
| PCO707.01 |  | DSC 507-LEAKING WATER SERVICE | 6d | 2023-05-25 A | 2023-05-30 A | 2-1294 SS | 100% |  |
| 2-2290 |  | DSC 508 Duct Bank Cast in Yoke To Be Removed | 2d | 2023-05-30 A | 2023-05-31 A | 2-1294 SS | 100% |  |
| 2-1296 |  | ROADWAY PAVING - 4 POURS, 13TH TO 14TH SOUTH SIDE | 8d | 2023-06-20 A | 2023-07-07 A | 2-1295, 2-1289 SS, 2-2290 | 100% |  |
| 2-1297 |  | CONCRETE CURE, 13TH TO 14TH SOUTH SIDE | 3d | 2023-07-07 A | 2023-07-07 A | 2-1296 | 100% |  |
| 2-1298 |  | F/P CURB, 13TH TO 14TH SOUTH SIDE | 2d | 2023-07-10 A | 2023-07-10 A | 2-1297 | 100% |  |
| 2-1299 |  | TEMP PATCH, 13TH TO 14TH SOUTH SIDE | 1d | 2023-07-12 A | 2023-07-12 A | 2-1298 | 100% |  |

| ID | WBS | Task | Duration | Start | Finish | Predecessors | Complete | Total float | Constraint |
| --- | --- | --- | --- | --- | --- | --- | --- | --- | --- |
|  | 13 | **14TH TO 15TH NORTH SIDE** |  | 2023-08-22 | 2023-09-20 |  |  |  |  |
| 2-1322 |  | DEMO ROAD - COMMON EX - TYPE 2, 14TH TO 15TH NORTH SIDE | 6d | 2023-08-22 | 2023-08-29 | 2-1315, 2-1237 |  | -122d |  |
| 2-1323 |  | CONDUIT RD CROSSING, 14TH TO 15TH NORTH SIDE | 6d | 2023-08-22 | 2023-08-29 | 2-1322 SS |  | -122d |  |
| 2-1324 |  | ROADWAY PAVING - 2 POURS, 14TH TO 15TH NORTH SIDE | 8d | 2023-09-01 | 2023-09-13 | 2-1323, 2-1317 |  | -124d |  |
| 2-1325 |  | CONCRETE CURE, 14TH TO 15TH NORTH SIDE | 3d | 2023-09-14 | 2023-09-16 | 2-1324 |  | -177d |  |
| 2-1326 |  | F/P CURB, 14TH TO 15TH NORTH SIDE | 2d | 2023-09-18 | 2023-09-19 | 2-1325, 2-1313 |  | -123d |  |
| 2-1327 |  | TEMP PATCH, 14TH TO 15TH NORTH SIDE | 1d | 2023-09-20 | 2023-09-20 | 2-1326 |  | -123d |  |
|  | 10 | **14TH TO 15TH SOUTH SIDE** |  | 2023-06-15 | 2023-08-23 |  |  |  |  |
| 2-1301 |  | DEMO ROAD - COMMON EX - TYPE 2, 14TH TO 15TH SOUTH SIDE | 6d | 2023-06-15 A | 2023-06-22 A | 2-1295, 2-1288, 2-1294 | 100% |  |  |
| 2-1302 |  | CONDUIT RD CROSSING, 14TH TO 15TH SOUTH SIDE | 6d | 2023-06-15 A | 2023-06-22 A | 2-1301 SS | 100% |  |  |
| 2-2915 |  | DSC 529 UNKNOWN UNLOCATED CONDUITS | 11d | 2023-06-19 A | 2023-07-10 A | 2-1302 SS | 100% |  | start on or after 2023-06-19 |
| 2-2916 |  | DSC 531 DUCT BANK CONFLICT WITH MH 9 | 10d | 2023-06-20 A | 2023-08-07 A | 2-2915 SS+1d | 100% |  |  |
| 2-2917 |  | DSC 533 WATERLINE CAST INTO CONCRETE | 1d | 2023-06-20 A | 2023-06-20 A | 2-2921 SS | 100% |  |  |
| 2-2918 |  | DSC 534 Shallow Conduit 8" below surface damaged by breaker | 10d | 2023-06-20 A | 2023-08-07 A | 2-2916 SS | 100% |  |  |
| 2-2921 |  | DSC 540 14th East Side Crossing Conflict with Ductbank | 10d | 2023-06-20 A | 2023-08-07 A | 2-2916 SS | 100% |  |  |
| 2-1303 |  | ROADWAY PAVING - 4 POURS, 14TH TO 15TH SOUTH SIDE | 8d | 2023-08-08 A | 2023-08-17 | 2-1302, 2-2921, 2-2918, 2-2916, 2-2915, 2-2917 |  | -116d |  |
| 2-1304 |  | CONCRETE CURE, 14TH TO 15TH SOUTH SIDE | 3d | 2023-08-18 | 2023-08-20 | 2-1303 |  | -164d |  |
| 2-1305 |  | F/P CURB, 14TH TO 15TH SOUTH SIDE | 2d | 2023-08-21 | 2023-08-22 | 2-1304 |  | -114d |  |
| 2-1306 |  | TEMP PATCH, 14TH TO 15TH SOUTH SIDE | 1d | 2023-08-23 | 2023-08-23 | 2-1305 |  | -114d |  |
|  | 14 | **14TH AND EAST PIKE** |  | 2023-08-30 | 2023-09-29 |  |  |  |  |
| 2-1329 |  | DEMO ROAD - COMMON EX - TYPE 2, 14TH & EAST PIKE | 6d | 2023-08-30 | 2023-09-07 | 2-1323, 2-1322 |  | -107d |  |
| 2-1330 |  | CONDUIT RD CROSSING, 14TH & EAST PIKE | 6d | 2023-08-30 | 2023-09-07 | 2-1329 SS, 2-1747 |  | -107d |  |
| 2-1331 |  | ROADWAY PAVING - 2 POURS, 14TH & EAST PIKE | 6d | 2023-09-14 | 2023-09-21 | 2-1330, 2-1324 |  | -111d |  |
| 2-1332 |  | CONCRETE CURE, 14TH AND EAST PIKE | 3d | 2023-09-22 | 2023-09-24 | 2-1331 |  | -158d |  |
| 2-1333 |  | F/P CURB, 14TH AND EAST PIKE | 4d | 2023-09-25 | 2023-09-28 | 2-1332 |  | -109d |  |
| 2-1334 |  | TEMP PATCH, 14TH AND EAST PIKE | 1d | 2023-09-29 | 2023-09-29 | 2-1333 |  | -109d |  |
|  | 2 | **INTERSECTION** |  | 2022-10-01 | 2023-09-03 |  |  |  |  |
|  | 1 | **11TH NORTH SIDE** |  | 2022-10-01 | 2022-10-02 |  |  |  |  |
| 2-1337 |  | DEMO ROAD - COMMON EX - TYPE 2, 11TH NORTH SIDE | 1d | 2022-10-01 A | 2022-10-01 A | 2-1259 SS | 100% |  |  |
| 2-1338 |  | TRENCH CONDUIT, 11TH NORTH SIDE | 1d | 2022-10-01 A | 2022-10-01 A | 2-1337 SS | 100% |  |  |
| 2-1339 |  | ROADWAY PAVING, 11TH NORTH SIDE | 1d | 2022-10-02 A | 2022-10-02 A | 2-1338 | 100% |  |  |
|  | 10 | **14TH NORTH SIDE** |  | 2023-08-26 | 2023-08-27 |  |  |  |  |
| 2-1373 |  | DEMO ROAD - COMMON EX - TYPE 2, 14TH NORTH SIDE | 1d | 2023-08-26 | 2023-08-26 | 2-1322 SS, 2-1371 |  | 16d |  |
| 2-1374 |  | TRENCH CONDUIT, 14TH NORTH SIDE | 1d | 2023-08-26 | 2023-08-26 | 2-1373 SS |  | 16d |  |
| 2-1375 |  | ROADWAY PAVING, 14TH NORTH SIDE | 1d | 2023-08-27 | 2023-08-27 | 2-1374 |  | 16d |  |
|  | 11 | **15TH NORTH SIDE** |  | 2023-09-02 | 2023-09-03 |  |  |  |  |
| 2-1377 |  | DEMO ROAD - COMMON EX - TYPE 2, 15TH NORTH SIDE | 1d | 2023-09-02 | 2023-09-02 | 2-1375 |  | 16d |  |
| 2-1378 |  | TRENCH CONDUIT, 15TH NORTH SIDE | 1d | 2023-09-02 | 2023-09-02 | 2-1377 SS |  | 16d |  |
| 2-1379 |  | ROADWAY PAVING, 15TH NORTH SIDE | 1d | 2023-09-03 | 2023-09-03 | 2-1378 |  | 16d |  |
|  | 2 | **12TH NORTH SIDE PHASE 1** |  | 2023-05-13 | 2023-05-13 |  |  |  |  |
| 2-1341 |  | DEMO ROAD - COMMON EX - TYPE 2, 12TH NORTH SIDE PHASE 1 | 1d | 2023-05-13 A | 2023-05-13 A | 2-1339 | 100% |  |  |
| 2-1342 |  | TRENCH CONDUIT, 12TH NORTH SIDE PHASE 1 | 1d | 2023-05-13 A | 2023-05-13 A | 2-1341 SS | 100% |  |  |
| 2-1343 |  | ROADWAY PAVING, 12TH NORTH SIDE PHASE 1 | 1d | 2023-05-13 A | 2023-05-13 A | 2-1342 | 100% |  |  |
|  | 3 | **12TH NORTH SIDE PHASE 2** |  | 2023-06-03 | 2023-06-04 |  |  |  |  |
| 2-1345 |  | DEMO ROAD - COMMON EX - TYPE 2, 12TH NORTH SIDE PHASE 2 | 1d | 2023-06-03 A | 2023-06-03 A | 2-1343, 2-1266 SS | 100% |  |  |
| 2-1346 |  | TRENCH CONDUIT, 12TH NORTH SIDE PHASE 2 | 1d | 2023-06-03 A | 2023-06-03 A | 2-1345 SS | 100% |  |  |
| 2-1347 |  | ROADWAY PAVING, 12TH NORTH SIDE PHASE 2 | 1d | 2023-06-04 A | 2023-06-04 A | 2-1346 | 100% |  |  |
|  | 4 | **11TH SOUTH SIDE** |  | 2023-06-10 | 2023-06-11 |  |  |  |  |
| 2-1349 |  | DEMO ROAD - COMMON EX - TYPE 2, 11TH SOUTH SIDE | 1d | 2023-06-10 A | 2023-06-10 A | 2-1273 SS, 2-1347 | 100% |  |  |
| 2-1350 |  | TRENCH CONDUIT, 11TH SOUTH SIDE | 1d | 2023-06-10 A | 2023-06-10 A | 2-1349 SS | 100% |  |  |
| 2-1351 |  | ROADWAY PAVING, 11TH SOUTH SIDE | 1d | 2023-06-11 A | 2023-06-11 A | 2-1350 | 100% |  |  |
|  | 5 | **12TH SOUTH SIDE** |  | 2023-04-01 | 2023-04-30 |  |  |  |  |
| 2-1354 |  | TRENCH CONDUIT, 12TH SOUTH SIDE | 1d | 2023-04-01 A | 2023-04-01 A | 2-1353 SS | 100% |  |  |
| 2-1353 |  | DEMO ROAD - COMMON EX - TYPE 2, 12TH SOUTH SIDE | 1d | 2023-04-08 A | 2023-04-30 A | 2-1280 SS | 100% |  |  |
| 2-1355 |  | ROADWAY PAVING, 12TH SOUTH SIDE | 1d | 2023-04-08 A | 2023-04-30 A | 2-1354 | 100% |  |  |
| PCO625.01 |  | DSC 437-WATERLINE IN CONFLICT WITH CONDUIT CROSSING | 1d | 2023-04-08 A | 2023-04-30 A | 2-1353 SS | 100% |  |  |
|  | 6 | **13TH SOUTH SIDE** |  | 2023-06-17 | 2023-06-18 |  |  |  |  |
| 2-1357 |  | DEMO ROAD - COMMON EX - TYPE 2, 13TH SOUTH SIDE | 1d | 2023-06-17 A | 2023-06-17 A | 2-1287 | 100% |  |  |
| 2-1358 |  | TRENCH CONDUIT, 13TH SOUTH SIDE | 1d | 2023-06-17 A | 2023-06-17 A | 2-1357 SS | 100% |  |  |
| 2-1359 |  | ROADWAY PAVING, 13TH SOUTH SIDE | 1d | 2023-06-18 A | 2023-06-18 A | 2-1358 | 100% |  |  |
|  | 7 | **14TH SOUTH SIDE** |  | 2023-06-18 | 2023-06-24 |  |  |  |  |
| 2-1361 |  | DEMO ROAD - COMMON EX - TYPE 2, 14TH SOUTH SIDE | 1d | 2023-06-18 A | 2023-06-18 A | 2-1357 | 100% |  |  |
| 2-1362 |  | TRENCH CONDUIT, 14TH SOUTH SIDE | 1d | 2023-06-18 A | 2023-06-18 A | 2-1361 SS | 100% |  |  |
| 2-1363 |  | ROADWAY PAVING, 14TH SOUTH SIDE | 1d | 2023-06-24 A | 2023-06-24 A | 2-1362, 2-1351 | 100% |  |  |
|  | 8 | **15TH SOUTH SIDE** |  | 2023-06-25 | 2023-08-08 |  |  |  |  |
| 2-1365 |  | DEMO ROAD - COMMON EX - TYPE 2, 15TH SOUTH SIDE | 1d | 2023-06-25 A | 2023-06-25 A | 2-1363 | 100% |  |  |
| 2-1366 |  | TRENCH CONDUIT, 15TH SOUTH SIDE | 1d | 2023-06-25 A | 2023-06-25 A | 2-1365 SS | 100% |  |  |
| 2-1367 |  | ROADWAY PAVING, 15TH SOUTH SIDE | 1d | 2023-08-08 A | 2023-08-08 A | 2-1366 | 100% |  |  |
|  | 9 | **13TH NORTH SIDE** |  | 2023-06-30 | 2023-07-02 |  |  |  |  |
| 2-1369 |  | DEMO ROAD - COMMON EX - TYPE 2, 13TH NORTH SIDE | 1d | 2023-06-30 A | 2023-07-01 A | 2-1308 SS | 100% |  |  |

| ID | WBS | Task | Duration | Start | Finish | Predecessors | Complete | Total float |
| --- | --- | --- | --- | --- | --- | --- | --- | --- |
| 2-1370 |  | TRENCH CONDUIT, 13TH NORTH SIDE | 1d | 2023-07-01 A | 2023-07-01 A | 2-1369 SS | 100% |  |
| 2-1371 |  | ROADWAY PAVING, 13TH NORTH SIDE | 1d | 2023-07-02 A | 2023-07-02 A | 2-1370 | 100% |  |
|  | 7 | **POLE FOUNDATIONS** |  | 2023-02-01 | 2023-07-20 |  |  |  |
| 2-1381 |  | INST POLE FOUNDATIONS, BROADWAY TO 10TH | 20d | 2023-02-01 A | 2023-07-20 A | 2-1141, MS-2571, 2-1181 SS | 100% |  |
| 2-1471 |  | INST POLE FOUNDATIONS, 10TH TO 12TH | 20d | 2023-02-01 A | 2023-07-20 A | 2-1381 SS | 100% |  |
| 2-1496 |  | INST POLE FOUNDATIONS, 12TH TO 14TH | 20d | 2023-02-01 A | 2023-07-20 A | 2-1471 SS | 100% |  |
| 2-1641 |  | INST POLE FOUNDATIONS, 14TH TO 15TH | 20d | 2023-02-01 A | 2023-07-20 A | 2-1496 SS | 100% |  |
|  | 8 | **SIDEWALKS** |  | 2022-08-17 | 2023-11-14 |  |  |  |
|  | 29 | **SEC 12TH BEFORE POLE IS SET** |  | 2023-07-10 | 2023-09-18 |  |  |  |
| 2-7000 |  | REMOVE SIDEWALK | 2d | 2023-07-10 A | 2023-07-11 A | 2-1371 | 100% |  |
| 2-7005 |  | TRENCH ELECTRICAL | 2d | 2023-07-10 A | 2023-07-11 A | 2-7000 SS | 100% |  |
| 2-7010 |  | DSC 556 EXISTING CONDUIT TO INTERSECEPT IS NOT THERE | 5d | 2023-07-10 A | 2023-07-14 A | 2-7005 SS | 100% |  |
| 2-7015 |  | DSC 566 POLE 40W-128-2 | 3d | 2023-07-21 A | 2023-07-25 A | 2-7010 | 100% |  |
| 2-7020 |  | DSC 575 UNKNOWN UNLOCATED CONDUITS | 1d | 2023-08-07 A | 2023-08-07 A | 2-7015 | 100% |  |
| 2-7025 |  | INSTALL ELECTRICAL | 18d | 2023-08-09 A | 2023-09-01 | 2-7020 SS+4d | 17% | -110d |
| 2-7030 |  | CHANGE SCL REQUIRNG ENGINEERING FOR POLE HOLDER | 20d | 2023-08-14 | 2023-09-11 | 2-7025 SS |  | -110d |
| 2-7035 |  | GRADE SIDEWALKS | 1d | 2023-09-12 | 2023-09-12 | 2-7030 |  | -110d |
| 2-7040 |  | CURB RAMP | 2d | 2023-09-13 | 2023-09-14 | 2-7035 |  | -110d |
| 2-7045 |  | SIDEWALKS | 2d | 2023-09-15 | 2023-09-18 | 2-7040, 2-7140 |  | -110d |
|  | 30 | **SEC 12TH AFTER POLE IS SET** |  | 2023-06-30 | 2023-08-30 |  |  |  |
| 2-7100 |  | DELAY AWAITING SCL TO SLEEVE OR TURN OF POWER | 48d | 2023-06-30 A | 2023-08-18 | 2-1369 SS | 90% | -100d |
| 2-7105 |  | SCL SLEAVE OR TURN OFF POWER | 1d | 2023-08-21 | 2023-08-21 | 2-7100 |  | -100d |
| 2-7110 |  | INSTALL POLE | 1d | 2023-08-22 | 2023-08-22 | 2-7105 |  | -100d |
| 2-7115 |  | TRANSFER SPAN SIGNAL WIRES | 1d | 2023-08-23 | 2023-08-23 | 2-7110 |  | -100d |
| 2-7120 |  | TRENCH ELECTRICAL | 1d | 2023-08-24 | 2023-08-24 | 2-7115 |  | -100d |
| 2-7125 |  | INSTALL ELECTRICAL | 1d | 2023-08-25 | 2023-08-25 | 2-7120 |  | -100d |
| 2-7130 |  | GRADE SIDEWALKS | 1d | 2023-08-28 | 2023-08-28 | 2-7125 |  | -100d |
| 2-7135 |  | CURB RAMP | 1d | 2023-08-29 | 2023-08-29 | 2-7130 |  | -100d |
| 2-7140 |  | SIDEWALKS | 1d | 2023-08-30 | 2023-08-30 | 2-7135 |  | -100d |
|  | 31 | **Broadway CRT to 11th North Sdie** |  | 2023-08-09 | 2023-10-03 |  |  |  |
| 2-7200 |  | Remvove Sidewalk | 8d | 2023-08-09 A | 2023-08-18 | 2-7000 | 38% | -118d |
| 2-7205 |  | DSC 579 10TH NORTH DUCT BANK CONFICT | 14d | 2023-08-10 A | 2023-08-29 | 2-7200 SS | 14% | -118d |
| 2-7210 |  | DSC 578 Broadway CRT to 10th North Duct Bank Conflicts | 14d | 2023-08-10 A | 2023-08-29 | 2-7200 SS | 14% | -118d |
| 2-7215 |  | DSC 584 10th to Seneca Thick Sidewalk | 1d | 2023-08-14 | 2023-08-14 | 2-7200 SS |  | -107d |
| 2-7225 |  | DSC 587 NWC Seneca Unknown Conduit | 12d | 2023-08-14 | 2023-08-29 | 2-7200 SS |  | -106d |
| 2-7230 |  | DSC 588 Duct Bank Conflict 11th North Side | 12d | 2023-08-14 | 2023-08-29 | 2-7200 SS |  | -106d |
| 2-7220 |  | DSC 586 NEC 10th Duct Bank Conflict with with Ped Pole | 10d | 2023-08-15 | 2023-08-28 | 2-7200 SS, 2-7215 |  | -105d |
| 2-7235 |  | Trench Conduit | 14d | 2023-08-30 | 2023-09-19 | 2-7200, 2-7215, 2-7210, 2-7205, 2-7200 FF |  | -118d |
| 2-7240 |  | DSC 590 NWC 11th Duct Bank Conflict with Conduit | 7d | 2023-09-07 | 2023-09-15 | 2-7235 SS+5d |  | -118d |
| 2-7245 |  | Install Conduit | 7d | 2023-09-18 | 2023-09-26 | 2-7240, 2-7230, 2-7225, 2-7220, 2-7240 FF |  | -118d |
| 2-7250 |  | Curb Ramps | 2d | 2023-09-27 | 2023-09-28 | 2-7245 |  | -118d |
| 2-7255 |  | Sidewalks | 3d | 2023-09-29 | 2023-10-03 | 2-7250, 2-7045 |  | -118d |
|  | 1 | **10TH AVE WEST SIDE** |  | 2023-08-17 | 2023-08-30 |  |  |  |
| 2-1384 |  | REMOVE SIDEWALKS, 10TH AVE WEST SIDE | 2d | 2023-08-17 | 2023-08-18 | 2-1243, 2-2080 FS-1d |  | -131d |
| 2-1385 |  | TRENCH CONDUIT, 10TH AVE WEST SIDE | 2d | 2023-08-21 | 2023-08-22 | 2-1384 |  | -131d |
| 2-1386 |  | INST CONDUIT, 10TH AVE WEST SIDE | 2d | 2023-08-21 | 2023-08-22 | 2-1385 SS |  | -131d |
| 2-1387 |  | GRADE SIDEWALK, 10TH AVE WEST SIDE | 2d | 2023-08-23 | 2023-08-24 | 2-1386 |  | -131d |
| 2-1388 |  | F/P CURB RAMPS, 10TH AVE WEST SIDE | 1d | 2023-08-25 | 2023-08-25 | 2-1387 |  | -131d |
| 2-1389 |  | SIDEWALK, 10TH AVE WEST SIDE | 3d | 2023-08-28 | 2023-08-30 | 2-1388 |  | -131d |
|  | 2 | **10TH AVE EAST SIDE** |  | 2023-08-31 | 2023-09-14 |  |  |  |
| 2-1391 |  | REMOVE SIDEWALKS, 10TH AVE EAST SIDE | 2d | 2023-08-31 | 2023-09-01 | 2-1389 |  | -131d |
| 2-1392 |  | TRENCH CONDUIT, 10TH AVE EAST SIDE | 2d | 2023-08-31 | 2023-09-01 | 2-1391 SS |  | -131d |
| 2-1393 |  | INST CONDUIT, 10TH AVE EAST SIDE | 2d | 2023-09-05 | 2023-09-06 | 2-1392 |  | -131d |
| 2-1394 |  | GRADE SIDEWALK, 10TH AVE EAST SIDE | 2d | 2023-09-07 | 2023-09-08 | 2-1393, 2-1641 |  | -131d |
| 2-1395 |  | F/P CURB RAMPS, 10TH AVE EAST SIDE | 1d | 2023-09-11 | 2023-09-11 | 2-1394 |  | -131d |
| 2-1396 |  | SIDEWALK, 10TH AVE EAST SIDE | 3d | 2023-09-12 | 2023-09-14 | 2-1395 |  | -131d |
|  | 5 | **UNION ST 12TH TO 11TH NORTH SIDE** |  | 2023-02-21 | 2023-09-06 |  |  |  |
| 2-1406 |  | REM SIDEWALK, UNION ST 12TH TO 11TH NORTH SIDE | 2d | 2023-02-21 A | 2023-02-27 A | 2-1271 | 100% |  |
| 2-1407 |  | GRADE SIDEWALK, UNION ST 12TH TO 11TH NORTH SIDE | 2d | 2023-02-23 A | 2023-02-28 A | 2-1406 | 100% |  |
| 2-1409 |  | SIDEWALK, UNION ST 12TH TO 11TH NORTH SIDE | 3d | 2023-02-27 A | 2023-03-15 A | 2-1407 | 100% |  |
| 2-2672 |  | REMOVE SIDEWALK; 12TH AND UNION | 3d | 2023-04-07 A | 2023-04-07 A | 2-1409 | 100% |  |
| PCO632.01 |  | DSC 444-PRIMARY POWER BACKFILLED WITH CONCRETE | 3d | 2023-04-10 A | 2023-08-22 | 2-2672 |  | -84d |
| 2-2682 |  | TRENCH ELECTRICAL; 12TH AND UNION | 1d | 2023-08-23 | 2023-08-23 | PCO632.01 |  | -84d |
| 2-2687 |  | INSTALL ELECTRICAL; 12TH AND UNION | 4d | 2023-08-24 | 2023-08-29 | 2-2682 |  | -84d |
| 2-2692 |  | GRADE SIDEWALKS; 12TH AND UNION | 2d | 2023-08-30 | 2023-08-31 | 2-2687 |  | -84d |
| 2-2697 |  | CURB RAMPS; 12TH AND UNION | 2d | 2023-09-01 | 2023-09-05 | 2-2692 |  | -84d |
| 2-2702 |  | POUR SIDEWALKS; 12TH AND UNION | 1d | 2023-09-06 | 2023-09-06 | 2-2697 |  | -84d |
|  | 4 | **UNION ST 12TH TO 11TH SOUTH SIDE DRIVEWAYS** |  | 2023-04-22 | 2023-04-23 |  |  |  |
| 2-1403 |  | REM DRIVEWAY, UNION ST 12TH TO 11TH SOUTH SIDE DRIVEWAYS | 1d | 2023-04-22 A | 2023-04-22 A | 2-1398 SS | 100% |  |
| 2-1404 |  | POUR DRIVEWAY, UNION ST 12TH TO 11TH SOUTH SIDE DRIVEWAYS | 1d | 2023-04-23 A | 2023-04-23 A | 2-1403 | 100% |  |

| ID | WBS | Task | Duration | Start | Finish | Predecessors | Complete | Total float | Constraint |
| --- | --- | --- | --- | --- | --- | --- | --- | --- | --- |
|  | 6 | **UNION 12TH TO 11TH NORTH SIDE DRIVEWAYS** |  | 2023-09-01 | 2023-09-05 |  |  |  |  |
| 2-1411 |  | REM DRIVEWAY, UNION 12TH TO 11TH NORTH SIDE DRIVEWAYS | 1d | 2023-09-01 | 2023-09-01 | 2-1406 SS, 2-1404, 2-2692 |  | -18d |  |
| 2-1412 |  | POUR DRIVEWAY, UNION 12TH TO 11TH NORTH SIDE DRIVEWAYS | 1d | 2023-09-05 | 2023-09-05 | 2-1411 |  | -18d |  |
|  | 7 | **EAST UNION AND 12TH STATION PLATFORM** |  | 2023-04-19 | 2023-04-28 |  |  |  |  |
| 2-1414 |  | TRENCH CONDUIT, EAST UNION & 12TH STATION PLATFORM | 1d | 2023-04-19 A | 2023-04-19 A | 2-2672 | 100% |  |  |
| 2-1415 |  | INST CONDUIT, EAST UNION & 12TH STATION PLATFORM | 1d | 2023-04-20 A | 2023-04-20 A | 2-1414 | 100% |  |  |
| 2-1416 |  | POUR STATION FOUNDATION, EAST UNION & 12TH STATION PLATFORM | 3d | 2023-04-21 A | 2023-04-25 A | 2-1415 | 100% |  |  |
| 2-1417 |  | GRADE SIDEWALK, EAST UNION & 12TH STATION PLATFORM | 1d | 2023-04-26 A | 2023-04-26 A | 2-1416 | 100% |  |  |
| 2-1418 |  | POUR SIDEWALK, EAST UNION & 12TH STATION PLATFORM | 2d | 2023-04-27 A | 2023-04-28 A | 2-1417 | 100% |  |  |
|  | 8 | **UNION 12TH TO 13TH SOUTH SIDE** |  | 2022-08-17 | 2022-08-30 |  |  |  |  |
| 2-1420 |  | REM SIDEWALK, UNION 12TH TO 13TH SOUTH SIDE | 2d | 2022-08-17 A | 2022-08-18 A | 2-1257 | 100% |  |  |
| 2-1421 |  | GRADE SIDEWALK, UNION 12TH TO 13TH SOUTH SIDE | 1d | 2022-08-19 A | 2022-08-19 A | 2-1420 | 100% |  |  |
| 2-1422 |  | SIDEWALK, UNION 12TH TO 13TH SOUTH SIDE | 2d | 2022-08-22 A | 2022-08-30 A | 2-1421 | 100% |  |  |
|  | 9 | **UNION 12TH TO 13TH NORTH SIDE** |  | 2023-07-06 | 2023-07-19 |  |  |  |  |
| 2-1424 |  | REM SIDEWALK, UNION 12TH TO 13TH NORTH SIDE | 2d | 2023-07-06 A | 2023-07-07 A | 2-1422, 2-1418 | 100% |  | start on or after 2023-07-05 |
| 2-1425 |  | GRADE SIDEWALK, UNION 12TH TO 13TH NORTH SIDE | 2d | 2023-07-12 A | 2023-07-12 A | 2-1424 | 100% |  |  |
| 2-1426 |  | SIDEWALK, UNION 12TH TO 13TH NORTH SIDE | 4d | 2023-07-14 A | 2023-07-19 A | 2-1425 | 100% |  |  |
|  | 10 | **13th AVE MADISON TO UNION WEST SIDE** |  | 2023-07-26 | 2023-08-08 |  |  |  |  |
| 2-1428 |  | REM SIDEWALK, 13th AVE MAD TO UNION WEST SIDE | 1d | 2023-07-26 A | 2023-07-27 A | 2-1425, 3-2238 | 100% |  |  |
| 2-1429 |  | GRADE SIDEWALK, 13th AVE MAD TO UNION WEST SIDE | 1d | 2023-08-04 A | 2023-08-04 A | 2-1428 | 100% |  |  |
| 2-1430 |  | F/P CURB RAMPS, 13th AVE MAD TO UNION WEST SIDE | 1d | 2023-08-07 A | 2023-08-07 A | 2-1429, 2-1426 | 100% |  |  |
| 2-1431 |  | SIDEWALK, 13th AVE MAD TO UNION WEST SIDE | 3d | 2023-08-08 A | 2023-08-08 A | 2-1430 | 100% |  |  |
|  | 11 | **13TH AVE MADISON TO UNION EAST SIDE** |  | 2023-07-12 | 2023-07-19 |  |  |  |  |
| 2-1433 |  | REM SIDEWALK, 13TH AVE MAD TO UNION EAST SIDE | 1d | 2023-07-12 A | 2023-07-12 A | 2-1424 | 100% |  |  |
| 2-1434 |  | GRADE SIDEWALK, 13TH AVE MAD TO UNION EAST SIDE | 1d | 2023-07-13 A | 2023-07-13 A | 2-1433 | 100% |  |  |
| 2-1435 |  | F/P CURB RAMPS, 13TH AVE MAD TO UNION EAST SIDE | 1d | 2023-07-14 A | 2023-07-14 A | 2-1434 | 100% |  |  |
| 2-1436 |  | SIDEWALK, 13TH AVE MAD TO UNION EAST SIDE | 3d | 2023-07-17 A | 2023-07-19 A | 2-1435 | 100% |  |  |
|  | 12 | **BROADWAY TO 11TH SOUTH SIDE** |  | 2023-06-05 | 2023-09-12 |  |  |  |  |
| 2-2055 |  | DSC 513 POLE FOUDNATION 40W-788-2 GROUNDWATER | 10d | 2023-06-05 A | 2023-06-16 A |  | 100% |  | start on or after 2023-06-05 |
| 2-2056 |  | DSC 537 Pole 40W-137-1 Tunnel Obstruction | 12d | 2023-06-21 A | 2023-08-25 | 2-2055 FS+2d |  | -99d |  |
| 2-2059 |  | DSC 538 Pole 40W-790-3 Conduit Obstruction | 12d | 2023-06-21 A | 2023-08-25 | 2-2055 FS+2d |  | -99d |  |
| 2-1438 |  | REM SIDEWALK, BROADWAY TO 11TH SOUTH SIDE | 1d | 2023-08-28 | 2023-08-28 | 2-1278, 2-2667, 2-2059, 2-2056 |  | -99d |  |
| 2-1439 |  | TRENCH CONDUIT, BROADWAY TO 11TH SOUTH SIDE | 3d | 2023-08-29 | 2023-08-31 | 2-1438 |  | -99d |  |
| 2-1440 |  | INST CONDUIT, BROADWAY TO 11TH SOUTH SIDE | 3d | 2023-08-29 | 2023-08-31 | 2-1439 SS |  | -99d |  |
| 2-1441 |  | GRADE SIDEWALK, BROADWAY TO 11TH SOUTH SIDE | 2d | 2023-09-01 | 2023-09-05 | 2-1440 |  | -99d |  |
| 2-1442 |  | F/P CURB RAMPS, BROADWAY TO 11TH SOUTH SIDE | 2d | 2023-09-06 | 2023-09-07 | 2-1441 |  | -99d |  |
| 2-1443 |  | SIDEWALK, BROADWAY TO 11TH SOUTH SIDE | 3d | 2023-09-08 | 2023-09-12 | 2-1442, 2-1431 |  | -99d |  |
|  | 13 | **11TH TO 12TH SOUTH SIDE** |  | 2023-05-11 | 2023-08-17 |  |  |  |  |
| PCO674.01 |  | DSC 477-POLE 40W-130-1 FOUNDATION CONFLICTS | 3d | 2023-05-11 A | 2023-06-02 A |  | 100% |  |  |
| PCO675.01 |  | DSC 478-POLE 40W-788-5 FOUNDATION CONFLICTS | 3d | 2023-05-11 A | 2023-06-02 A |  | 100% |  |  |
| PCO693.01 |  | DSC 495-CONTAMINATED SOILS POLE FND 40W-12-2 | 3d | 2023-05-16 A | 2023-06-06 A |  | 100% |  |  |
| 2-2068 |  | DSC 524 POLE 40W-128-1 FOUNDATION CONFLCIT | 13d | 2023-06-15 A | 2023-08-11 A | PCO693.01 FS+6d | 100% |  |  |
| 2-1445 |  | REM SIDEWALK, 11TH TO 12TH SOUTH SIDE BEFORE DSC | 1d | 2023-06-29 A | 2023-06-29 A | 2-1285, 2-1355 | 100% |  |  |
| 2-2069 |  | DSC 545 Water Vault Conflict | 3d | 2023-06-29 A | 2023-07-03 A | 2-2068 SS | 100% |  |  |
| 2-2071 |  | DSC 546 void under sidewalks | 3d | 2023-06-29 A | 2023-07-03 A | 2-2068 SS | 100% |  |  |
| 2-1446 |  | TRENCH CONDUIT, 11TH TO 12TH SOUTH SIDE | 2d | 2023-06-30 A | 2023-07-03 A | 2-1445 | 100% |  |  |
| 2-1447 |  | INST CONDUIT, 11TH TO 12TH SOUTH SIDE BEFORE DSC | 2d | 2023-06-30 A | 2023-07-19 A | 2-1446 SS | 100% |  |  |
| 2-2073 |  | DSC 548 UNKNOWN UNLOCATED CODUIT CONFLCIT WITH HH | 2d | 2023-06-30 A | 2023-07-10 A | 2-2068 SS | 100% |  |  |
| 2-1448 |  | GRADE SIDEWALK, 11TH TO 12TH SOUTH SIDE BEFORE DSC | 3d | 2023-07-20 A | 2023-07-20 A | 2-1447, 2-2071, 2-2069, 2-2073 | 100% |  |  |
| 2-1449 |  | SIDEWALK, 11TH TO 12TH SOUTH SIDE BEFORE DSC | 4d | 2023-07-21 A | 2023-07-26 A | 2-1448 | 100% |  |  |
| 2-2089 |  | TRENCH CONDUIT AFTER DSC 524 | 2d | 2023-08-10 A | 2023-08-10 A | 2-2068 FF, 2-1449 | 100% |  |  |
| 2-2078 |  | INSTALL CONDUIT AFTER DSC 524 | 2d | 2023-08-11 A | 2023-08-14 | 2-2089 |  | -131d |  |
| 2-2099 |  | GRADE SIDEWALKS AFTER DSC 524 | 1d | 2023-08-15 | 2023-08-15 | 2-2078 |  | -131d |  |
| 2-2080 |  | SIDEWALK AFTER DSC 524 | 2d | 2023-08-16 | 2023-08-17 | 2-2099 |  | -131d |  |
|  | 14 | **12TH TO 13TH SOUTH SIDE** |  | 2023-08-14 | 2023-09-05 |  |  |  |  |
| 2-1451 |  | REM SIDEWALK, 12TH TO 13TH SOUTH SIDE | 2d | 2023-08-14 | 2023-08-15 | 2-1449 FS-1d, 2-1367 |  | -25d |  |
| 2-1452 |  | TRENCH CONDUIT, 12TH TO 13TH SOUTH SIDE | 2d | 2023-08-16 | 2023-08-17 | 2-1451 |  | -25d |  |
| 2-1453 |  | INST CONDUIT, 12TH TO 13TH SOUTH SIDE | 2d | 2023-08-18 | 2023-08-21 | 2-1452 |  | -25d |  |
| 2-1454 |  | GRADE SIDEWALK, 12TH TO 13TH SOUTH SIDE | 3d | 2023-08-22 | 2023-08-24 | 2-1453 |  | -25d |  |
| 2-1455 |  | BIKE RAMP, 12TH TO 13TH SOUTH SIDE | 2d | 2023-08-25 | 2023-08-28 | 2-1454 |  | -25d |  |
| 2-1457 |  | SIDEWALK, 12TH TO 13TH SOUTH SIDE | 3d | 2023-08-29 | 2023-08-31 | 2-1455 |  | -25d |  |
| 2-1456 |  | INST WOOD RAMP, 12TH TO 13TH SOUTH SIDE | 2d | 2023-09-01 | 2023-09-05 | 2-1457 |  | -18d |  |
|  | 15 | **13TH TO 14TH SOUTH SIDE** |  | 2023-09-01 | 2023-09-14 |  |  |  |  |
| 2-1459 |  | REM SIDEWALK, 13TH TO 14TH SOUTH SIDE | 2d | 2023-09-01 | 2023-09-05 | 2-1299, 2-1457 |  | -25d |  |
| 2-1460 |  | TRENCH CONDUIT, 13TH TO 14TH SOUTH SIDE | 2d | 2023-09-01 | 2023-09-05 | 2-1459 SS |  | -25d |  |
| 2-1461 |  | INST CONDUIT, 13TH TO 14TH SOUTH SIDE | 2d | 2023-09-06 | 2023-09-07 | 2-1460 |  | -25d |  |
| 2-1462 |  | GRADE SIDEWALK, 13TH TO 14TH SOUTH SIDE | 2d | 2023-09-08 | 2023-09-11 | 2-1461 |  | -25d |  |
| 2-1463 |  | SIDEWALK, 13TH TO 14TH SOUTH SIDE | 3d | 2023-09-12 | 2023-09-14 | 2-1462 |  | -25d |  |
|  | 16 | **14TH TO 15TH SOUTH SIDE** |  | 2023-09-21 | 2023-10-04 |  |  |  |  |
| 2-1465 |  | REM SIDEWALK, 14TH TO 15TH SOUTH SIDE | 3d | 2023-09-21 | 2023-09-25 | 2-1306, 2-1463, 2-1456, 2-1327, 2-1412 |  | -29d |  |

| ID | WBS | Task | Duration | Start | Finish | Predecessors | Complete | Total float |
| --- | --- | --- | --- | --- | --- | --- | --- | --- |
| 2-1466 |  | TRENCH CONDUIT, 14TH TO 15TH SOUTH SIDE | 1d | 2023-09-26 | 2023-09-26 | 2-1465 |  | -29d |
| 2-1467 |  | INST CONDUIT, 14TH TO 15TH SOUTH SIDE | 1d | 2023-09-26 | 2023-09-26 | 2-1466 SS |  | -29d |
| 2-1468 |  | GRADE SIDEWALK, 14TH TO 15TH SOUTH SIDE | 2d | 2023-09-27 | 2023-09-28 | 2-1467 |  | -29d |
| 2-1469 |  | F/P CURB RAMPS, 14TH TO 15TH SOUTH SIDE | 1d | 2023-09-29 | 2023-09-29 | 2-1468 |  | -29d |
| 2-1470 |  | SIDEWALK, 14TH TO 15TH SOUTH SIDE | 3d | 2023-10-02 | 2023-10-04 | 2-1469 |  | -29d |
|  | 17 | **BROADWAY TO Broadway CRT NORTH SIDE** |  | 2023-05-05 | 2023-07-11 |  |  |  |
| PCO661.01 |  | DSC 466-POLE FND 40E-845-1 UNSUITABLE SOILS | 4d | 2023-05-05 A | 2023-05-08 A |  | 100% |  |
| 2-1472 |  | REM SIDEWALK, BROADWAY TO 11TH NORTH SIDE | 4d | 2023-06-06 A | 2023-06-07 A | 2-1409 | 100% |  |
| 2-1473 |  | TRENCH CONDUIT, BROADWAY TO 11TH NORTH SIDE | 2d | 2023-06-08 A | 2023-06-14 A | 2-1472 | 100% |  |
| 2-2104 |  | DSC 515 BROADWAY TO BROADWAY COURT DUCT BANK CONFLCIT WITH CONDUIT | 0.75d | 2023-06-08 A | 2023-06-08 A | 2-1472 | 100% |  |
| 2-2105 |  | DSC 516 BROADWAY TO BROADWAY COURT NORTH SIDE BRICK WALL CONFLICT | 11d | 2023-06-09 A | 2023-06-23 A | 2-1473 SS | 100% |  |
| 2-2106 |  | DSC 517 BROADWAY TO BROADWAY COURT NORTH SIDE 8" THICK SIDEWALK | 1.75d | 2023-06-09 A | 2023-06-12 A | 2-1473 SS | 100% |  |
| 2-2111 |  | BROADWAY TO BROADWAY COURT MH CONFLICT | 0.75d | 2023-06-12 A | 2023-06-12 A | 2-1473 SS | 100% |  |
| 2-1474 |  | INST CONDUIT, BROADWAY TO 11TH NORTH SIDE | 2d | 2023-06-15 A | 2023-06-23 A | 2-1473 SS, 2-2104, 2-2106, 2-2111 | 100% |  |
| 2-1475 |  | GRADE SIDEWALK, BROADWAY TO 11TH NORTH SIDE | 2d | 2023-06-26 A | 2023-06-27 A | 2-1474, 2-2105 | 100% |  |
| 2-1476 |  | F/P CURB RAMPS, BROADWAY TO 11TH NORTH SIDE | 3d | 2023-06-30 A | 2023-07-05 A | 2-1475 FS+4d, 2-1472 | 100% |  |
| 2-1477 |  | SIDEWALK, BROADWAY TO 11TH NORTH SIDE | 4d | 2023-07-06 A | 2023-07-11 A | 2-1476, 2-2123 | 100% |  |
|  | 27 | **11TH NE Corner** |  | 2023-05-30 | 2023-06-14 |  |  |  |
| 2-2091 |  | REMOVE SIDEWALK | 1d | 2023-05-30 A | 2023-05-30 A |  | 100% |  |
| 2-2093 |  | DSC 510 THICK SIDEWALS | 1d | 2023-05-30 A | 2023-05-30 A | 2-2091 SS | 100% |  |
| 2-2094 |  | DSC 511 OLD LIGHT POLE UNDER SIDEWALKS | 1d | 2023-05-31 A | 2023-05-31 A | 2-2091, 2-2093 FF, 2-2091 FF | 100% |  |
| 2-2118 |  | DSC 512 MULTIPLE UNKNOWN UTILITIES | 1d | 2023-06-01 A | 2023-06-01 A | 2-2094 | 100% |  |
| 2-2119 |  | TRENCH ELECTRICAL | 1d | 2023-06-02 A | 2023-06-02 A | 2-2091, 2-2094, 2-2118 | 100% |  |
| 2-2120 |  | ELECTRICAL | 4d | 2023-06-05 A | 2023-06-08 A | 2-2119 | 100% |  |
| 2-2121 |  | GRADE SIDEWALKS | 1d | 2023-06-09 A | 2023-06-09 A | 2-2120 | 100% |  |
| 2-2129 |  | CURB RAMPS | 2d | 2023-06-12 A | 2023-06-13 A | 2-2121 | 100% |  |
| 2-2123 |  | SIDEWALKS | 1d | 2023-06-14 A | 2023-06-14 A | 2-2129 | 100% |  |
|  | 28 | **12TH NW Corner** |  | 2023-04-25 | 2023-07-26 |  |  |  |
| 2-3125 |  | DSC 456 POLE 40W-787-3 TIE BACK CONFLICT | 5d | 2023-04-25 A | 2023-05-01 A |  | 100% |  |
| 2-3126 |  | DSC 463 40w-787-3 CONDUIT CONFLICTS | 5d | 2023-04-25 A | 2023-05-01 A | 2-3125 SS | 100% |  |
| 2-3127 |  | DSC 464 POLE 40w-787-2 UNSUATABLE SOILS | 3d | 2023-05-01 A | 2023-05-03 A |  | 100% |  |
| 2-3128 |  | COMPLETE POLE 40W-787-3 AFTER DSC'S | 2d | 2023-05-04 A | 2023-05-05 A | 2-3126, 2-3127 | 100% |  |
| 2-3129 |  | REMOVE SIDEWALKS | 2d | 2023-05-24 A | 2023-05-25 A | 2-3128 FS-34d | 100% |  |
| 2-3131 |  | TRENCH CONDUIT Prior to Pride Parade | 2d | 2023-05-24 A | 2023-05-25 A | 2-3129 SS | 100% |  |
| 2-3130 |  | DSC 505 INTERCONTECT CONFLICT WITH ELECTRICAL | 16d | 2023-05-25 A | 2023-06-16 A |  | 100% |  |
| 2-3132 |  | Pride parade delay | 5d | 2023-06-19 A | 2023-06-23 A | 2-3130 | 100% |  |
| 2-3133 |  | trenching after pride parade | 3d | 2023-06-26 A | 2023-06-28 A | 2-3132 | 100% |  |
| 2-3134 |  | DSC 542 unknown foundation conflict | 1d | 2023-06-28 A | 2023-06-28 A | 2-3133 SS | 100% |  |
| 2-3135 |  | INSTALL CONDUIT | 2d | 2023-06-29 A | 2023-07-12 A | 2-3131, 2-3130, 2-3134 | 100% |  |
| 2-3136 |  | GRADE SIDEWALKS | 2d | 2023-07-13 A | 2023-07-13 A | 2-3135 | 100% |  |
| 2-3137 |  | SIDEWALK | 4d | 2023-07-24 A | 2023-07-26 A | 2-3136 | 100% |  |
|  | 18 | **11TH TO 12TH NORTH SIDE** |  | 2023-04-01 | 2023-06-13 |  |  |  |
| PCO658.01 |  | DSC 464-POLE 40W-787-2 UNSUITABLE SOILS | 2d | 2023-04-01 A | 2023-06-02 A |  | 100% |  |
| PCO646.01 |  | DSC 456-POLE 40W-787-3 TIE BACK CONFLICT | 2d | 2023-04-25 A | 2023-05-01 A | 2-1140 | 100% |  |
| PCO657.01 |  | DSC 463-POLE 40W-787-3 CONDUIT CONFLICT | 2d | 2023-04-25 A | 2023-05-01 A | 2-1140 | 100% |  |
| 2-2717 |  | COMPLETE POLE 40W-787-3 AFTER CONFLICTS | 2d | 2023-05-04 A | 2023-05-05 A | PCO646.01 SS, PCO657.01 SS | 100% |  |
| 2-1479 |  | REM SIDEWALK, 11TH TO 12TH NORTH SIDE | 2d | 2023-05-24 A | 2023-06-01 A | PCO646.01, PCO657.01, 2-2717, 2-1401 | 100% |  |
| 2-1480 |  | TRENCH CONDUIT, 11TH TO 12TH NORTH SIDE | 2d | 2023-05-24 A | 2023-06-01 A | 2-1479 SS | 100% |  |
| PCO704.01 |  | DSC 505-INTERCONNECT CONFLICT WITH ELECTRICAL | 2d | 2023-05-24 A | 2023-06-01 A | 2-1479 | 100% |  |
| 2-1481 |  | INST CONDUIT, 11TH TO 12TH NORTH SIDE | 2d | 2023-06-02 A | 2023-06-05 A | 2-1480 SS, PCO704.01 | 100% |  |
| 2-1482 |  | GRADE SIDEWALK, 11TH TO 12TH NORTH SIDE | 2d | 2023-06-06 A | 2023-06-07 A | 2-1481 | 100% |  |
| 2-1483 |  | SIDEWALK, 11TH TO 12TH NORTH SIDE | 4d | 2023-06-08 A | 2023-06-13 A | 2-1482 | 100% |  |
|  | 19 | **12TH TO 13TH NORTH SIDE** |  | 2023-08-14 | 2023-08-24 |  |  |  |
| 2-1485 |  | REM SIDEWALK, 12TH TO 13TH NORTH SIDE | 2d | 2023-08-14 | 2023-08-15 | 2-1480, 2-3137 |  | -114d |
| 2-1486 |  | TRENCH CONDUIT, 12TH TO 13TH NORTH SIDE | 2d | 2023-08-16 | 2023-08-17 | 2-1485 |  | -114d |
| 2-1487 |  | INST CONDUIT, 12TH TO 13TH NORTH SIDE | 2d | 2023-08-16 | 2023-08-17 | 2-1486 SS |  | -114d |
| 2-1488 |  | GRADE SIDEWALK, 12TH TO 13TH NORTH SIDE | 2d | 2023-08-18 | 2023-08-21 | 2-1487 |  | -114d |
| 2-1489 |  | SIDEWALK, 12TH TO 13TH NORTH SIDE | 3d | 2023-08-22 | 2023-08-24 | 2-1488 |  | -114d |
|  | 20 | **13TH TO 14TH NORTH SIDE** |  | 2023-06-30 | 2023-09-19 |  |  |  |
| 2-1314-SCL |  | DELAY AWAITING SCL TO SLEEVE OR TURN OF POWER LINE SO THE SIGNAL POLE CAN BE SET | 31d | 2023-06-30 A | 2023-08-14 | 2-3134 | 97% | -106d |
| 2-1491 |  | REM SIDEWALK, 13TH TO 14TH NORTH SIDE | 2d | 2023-09-07 | 2023-09-08 | 2-1489, 2-1320, 2-1314-SCL |  | -122d |
| 2-1492 |  | TRENCH CONDUIT, 13TH TO 14TH NORTH SIDE | 2d | 2023-09-11 | 2023-09-12 | 2-1491 |  | -122d |
| 2-1493 |  | INST CONDUIT, 13TH TO 14TH NORTH SIDE | 2d | 2023-09-11 | 2023-09-12 | 2-1492 SS |  | -122d |
| 2-1494 |  | GRADE SIDEWALK, 13TH TO 14TH NORTH SIDE | 2d | 2023-09-13 | 2023-09-14 | 2-1493 |  | -122d |
| 2-1495 |  | SIDEWALK, 13TH TO 14TH NORTH SIDE | 3d | 2023-09-15 | 2023-09-19 | 2-1494 |  | -122d |
|  | 22 | **14TH TO 15TH NORTH SIDE** |  | 2023-09-21 | 2023-10-05 |  |  |  |
| 2-1500 |  | REM SIDEWALK, 14TH TO 15TH NORTH SIDE | 2d | 2023-09-21 | 2023-09-22 | 2-1306, 2-1495, 2-1327 |  | -123d |
| 2-1501 |  | TRENCH CONDUIT, 14TH TO 15TH NORTH SIDE | 2d | 2023-09-25 | 2023-09-26 | 2-1500 |  | -123d |
| 2-1502 |  | INST CONDUIT, 14TH TO 15TH NORTH SIDE | 2d | 2023-09-25 | 2023-09-26 | 2-1501 SS |  | -123d |
| 2-1503 |  | GRADE SIDEWALK, 14TH TO 15TH NORTH SIDE | 2d | 2023-09-27 | 2023-09-28 | 2-1502 |  | -123d |

| ID | WBS | Task | Duration | Start | Finish | Predecessors | Complete | Total float | Constraint |
| --- | --- | --- | --- | --- | --- | --- | --- | --- | --- |
| 2-1504 |  | SIDEWALK, 14TH TO 15TH NORTH SIDE | 5d | 2023-09-29 | 2023-10-05 | 2-1503, 2-1498 |  | -123d |  |
|  | 21 | **DRIVEWAYS 13TH TO 14TH NORTH SIDE** |  | 2023-09-23 | 2023-09-24 |  |  |  |  |
| 2-1497 |  | REM SIDEWALK, DRIVEWAYS 13TH TO 14TH NORTH SIDE | 1d | 2023-09-23 | 2023-09-23 | 2-1495 |  | -50d |  |
| 2-1498 |  | POUR DRIVEWAYS, DRIVEWAYS 13TH TO 14TH NORTH SIDE | 1d | 2023-09-24 | 2023-09-24 | 2-1497 |  | -50d |  |
|  | 23 | **DRIVEWAYS 14TH TO 15TH NORTH SIDE** |  | 2023-10-07 | 2023-10-08 |  |  |  |  |
| 2-1506 |  | REM SIDEWALK, DRIVEWAYS 14TH TO 15TH NORTH SIDE | 1d | 2023-10-07 | 2023-10-07 | 2-1498, 2-1504 |  | -14d |  |
| 2-1507 |  | INST CONDUIT, DRIVEWAYS 14TH TO 15TH NORTH SIDE | 1d | 2023-10-07 | 2023-10-07 | 2-1506 SS |  | -14d |  |
| 2-1508 |  | F/P CURB RAMPS & SIDEWALK, DRIVEWAYS 14TH TO 15TH NORTH SIDE | 1d | 2023-10-08 | 2023-10-08 | 2-1507 |  | -14d |  |
|  | 24 | **12TH MADISON TO PIKE NORTH WEST SIDE** |  | 2023-10-06 | 2023-10-12 |  |  |  |  |
| 2-1510 |  | REM SIDEWALK, 12TH MAD TO PIKE NORTH WEST SIDE | 2d | 2023-10-06 | 2023-10-09 | 2-1504, 2-1313 |  | -123d |  |
| 2-1511 |  | GRADE SIDEWALK, 12TH MAD TO PIKE NORTH WEST SIDE | 1d | 2023-10-10 | 2023-10-10 | 2-1510 |  | -123d |  |
| 2-1512 |  | SIDEWALK, 12TH MAD TO PIKE NORTH WEST SIDE | 2d | 2023-10-11 | 2023-10-12 | 2-1511, 2-7255 |  | -123d |  |
|  | 25 | **12TH MADISON TO PIKE SOUTH EAST SIDE** |  | 2023-10-13 | 2023-10-19 |  |  |  |  |
| 2-1514 |  | REM SIDEWALK, 12TH MAD TO PIKE SOUTH EAST SIDE | 2d | 2023-10-13 | 2023-10-16 | 2-1512 |  | -123d |  |
| 2-1515 |  | GRADE SIDEWALK, 12TH MAD TO PIKE SOUTH EAST SIDE | 1d | 2023-10-17 | 2023-10-17 | 2-1514 |  | -123d |  |
| 2-1516 |  | SIDEWALK, 12TH MAD TO PIKE SOUTH EAST SIDE | 2d | 2023-10-18 | 2023-10-19 | 2-1515 |  | -123d |  |
|  | 26 | **14TH AND EAST PIKE** |  | 2023-10-20 | 2023-11-14 |  |  |  |  |
| 2-1518 |  | REMOVE SIDEWALK, 14TH AND EAST PIKE | 2d | 2023-10-20 | 2023-10-23 | 2-1516, 2-1334 |  | -123d |  |
| 2-1519 |  | TRENCH CONDUIT, 14TH AND EAST PIKE | 2d | 2023-10-24 | 2023-10-25 | 2-1518 |  | -123d |  |
| 2-1520 |  | INST CONDUIT, 14TH AND EAST PIKE | 2d | 2023-10-24 | 2023-10-25 | 2-1519 SS |  | -123d |  |
| 2-1521 |  | GRADE SIDEWALK, 14TH AND EAST PIKE | 2d | 2023-10-26 | 2023-10-27 | 2-1520 |  | -123d |  |
| 2-1522 |  | F/P CURB RAMPS, 14TH AND EAST PIKE | 4d | 2023-10-30 | 2023-11-02 | 2-1521 |  | -123d |  |
| 2-1523 |  | SIDEWALK, 14TH AND EAST PIKE | 4d | 2023-11-03 | 2023-11-08 | 2-1522 |  | -123d |  |
| 2-1524 |  | ART FOUNDATIONS, 14TH AND EAST PIKE | 3d | 2023-11-09 | 2023-11-14 | 2-1523 |  | 33d |  |
|  | 3 | **UNION ST 12TH TO 11TH SOUTH SIDE** |  | 2023-04-21 | 2023-05-02 |  |  |  |  |
| 2-1398 |  | REM SIDEWALK, UNION ST 12TH TO 11TH SOUTH SIDE | 2d | 2023-04-21 A | 2023-04-24 A | 2-1250 | 100% |  |  |
| 2-1399 |  | GRADE SIDEWALK, UNION ST 12TH TO 11TH SOUTH SIDE | 2d | 2023-04-25 A | 2023-04-26 A | 2-1398 | 100% |  |  |
| 2-1400 |  | F/P CURB RAMPS, UNION ST 12TH TO 11TH SOUTH SIDE | 1d | 2023-04-27 A | 2023-04-27 A | 2-1399 | 100% |  |  |
| 2-1401 |  | SIDEWALK, UNION ST 12TH TO 11TH SOUTH SIDE | 3d | 2023-04-28 A | 2023-05-02 A | 2-1400 | 100% |  |  |
|  | 9 | **MILLING AND PAVING** |  | 2024-04-01 | 2024-04-08 |  |  |  |  |
| 2-1526 |  | MILL ZONE 2, MILLING AND PAVING | 2d | 2024-04-01 | 2024-04-02 | 2-1334, 2-1442, 2-1651 SS |  | -109d |  |
| 2-1651 |  | HOLD FOR WEATHER - PAVING | 0d | 2024-04-01 | 2024-04-01 |  |  | -109d | start on or after 2024-04-01 |
| 2-1527 |  | PREP FOR PAVING, MILLING AND PAVING | 2d | 2024-04-03 | 2024-04-04 | 2-1526 |  | -109d |  |
| 2-1528 |  | PAVE ZONE 2, MILLING AND PAVING | 2d | 2024-04-05 | 2024-04-08 | 2-1527 |  | -109d |  |
|  | 10 | **MEDIAN STATION PLATFORMS** |  | 2023-10-30 | 2023-11-22 |  |  |  |  |
|  | 1 | **MADISON AND EAST UNION STREET** |  | 2023-10-30 | 2023-11-22 |  |  |  |  |
| 2-1531 |  | REM TEMP PAVING, MAD & EAST UNION STREET | 1d | 2023-10-30 | 2023-10-30 | 2-1489, 2-1521 |  | 7d |  |
| 2-1532 |  | TRENCH CONDUIT, MAD & EAST UNION STREET | 2d | 2023-10-31 | 2023-11-01 | 2-1531 |  | 7d |  |
| 2-1533 |  | INST CONDUIT, MAD & EAST UNION STREET | 2d | 2023-10-31 | 2023-11-01 | 2-1532 SS |  | 7d |  |
| 2-1534 |  | STATION FOUNDATIONS, MAD & EAST UNION STREET | 4d | 2023-11-02 | 2023-11-07 | 2-1533 |  | 7d |  |
| 2-1535 |  | STATION NOSING, MAD & EAST UNION STREET | 2d | 2023-11-08 | 2023-11-09 | 2-1534 |  | 7d |  |
| 2-1536 |  | GRADE FOR CONCRETE, MAD & EAST UNION STREET | 4d | 2023-11-10 | 2023-11-16 | 2-1535 |  | 7d |  |
| 2-1537 |  | STATION SIDEWALK, MAD & EAST UNION STREET | 4d | 2023-11-17 | 2023-11-22 | 2-1536 |  | 7d |  |
|  | 11 | **STRIPING AND SIGNS** |  | 2024-04-09 | 2024-06-11 |  |  |  |  |
| 2-1539 |  | CURE TIME, STRIPING AND SIGNS | 21d | 2024-04-09 | 2024-04-29 | 2-1379, 2-1528 |  | -162d |  |
| 2-1540 |  | CHANNELIZATION, STRIPING AND SIGNS | 15d | 2024-04-30 | 2024-05-20 | 2-1539 |  | -110d |  |
| 2-1541 |  | INST SIGNS, STRIPING AND SIGNS | 15d | 2024-05-21 | 2024-06-11 | 2-1540 |  | -110d |  |
|  | 13 | **SIGNALS** |  | 2023-06-03 | 2024-03-06 |  |  |  |  |
|  | 1 | **MADISON AND BROADWAY** |  | 2023-06-03 | 2023-12-11 |  |  |  |  |
| 2-1972 |  | INST POLES, MAD AND BROADWAY | 1d | 2023-06-03 A | 2023-06-03 A | PMP-0016 | 100% |  |  |
| 2-1547 |  | INST SERVICE CABINET, MAD & BROADWAY | 1d | 2023-08-14 | 2023-08-14 | 2-1477 |  | -123d |  |
| 2-2050 |  | SDCI INSPECTION | 1d | 2023-08-15 | 2023-08-15 | 2-1547 |  | -123d |  |
| 2-2070 |  | SDOT INSPECTION | 1d | 2023-08-16 | 2023-08-16 | 2-2050 |  | -123d |  |
| 2-2038 |  | SCL INSPECTION REQUEST | 1d | 2023-08-17 | 2023-08-17 | 2-2070 |  | -123d |  |
| 2-2039 |  | 30 DAY WAIT FOR SCL TO INSPECT, MAD AND BOYLSTON | 30d | 2023-08-18 | 2023-09-29 | 2-2038 |  | -123d |  |
| 2-2079 |  | SCL INSPECTION | 1d | 2023-10-02 | 2023-10-02 | 2-2039 |  | -123d |  |
| 2-1553 |  | COMMISION NOTIFICATION | 1d | 2023-10-03 | 2023-10-03 | 2-2079 |  | -123d |  |
| 2-1554 |  | 30 DAY WAIT FOR SCL TO COMMISION | 30d | 2023-10-04 | 2023-11-15 | 2-1553 |  | -123d |  |
| 2-1555 |  | COMM SERVICE, MAD AND BROADWAY | 1d | 2023-11-16 | 2023-11-16 | 2-1554 |  | -123d |  |
| 2-1546 |  | INST SIGNAL CABINET, MAD & BROADWAY | 1d | 2023-11-17 | 2023-11-17 | 2-1477, 2-1641, 2-1555 |  | -123d |  |
| 2-1548 |  | INST MAGNOMETETERS, MAD & BROADWAY | 1d | 2023-11-20 | 2023-11-20 | 2-1546 |  | -123d |  |
| 2-1549 |  | INST MAST ARMS, MAD AND BROADWAY | 1d | 2023-11-21 | 2023-11-21 | 2-1548 |  | -123d |  |
| 2-1550 |  | INST SIGNAL GEAR, MAD & BROADWAY | 1d | 2023-11-22 | 2023-11-22 | 2-1549 |  | -60d |  |
| 2-1551 |  | INST PEDISTALS, MAD AND BROADWAY | 1d | 2023-11-27 | 2023-11-27 | 2-1550 |  | -60d |  |
| 2-1552 |  | INST WIRING, MAD AND BROADWAY | 3d | 2023-11-28 | 2023-11-30 | 2-1551 |  | -60d |  |
| 2-1556 |  | NOTIFY SDOT, MAD AND BROADWAY | 1d | 2023-12-01 | 2023-12-01 | 2-1555, 2-1552 |  | -21d |  |
| 2-1557 |  | SDOT INSPECTION, MAD AND BROADWAY | 5d | 2023-12-04 | 2023-12-08 | 2-1556 |  | -21d |  |
| 2-1558 |  | COMM SIGNAL, MAD AND BROADWAY | 1d | 2023-12-11 | 2023-12-11 | 2-1557 |  | -21d |  |
|  | 2 | **10TH AND MADISON** |  | 2023-06-05 | 2024-01-17 |  |  |  |  |
| 2-1977 |  | INST POLES, 10TH AND MAD | 2d | 2023-06-05 A | 2023-06-06 A | 2-1972 | 100% |  |  |

| ID | WBS | Task | Duration | Start | Finish | Predecessors | Complete | Total float |
| --- | --- | --- | --- | --- | --- | --- | --- | --- |
| 2-1561 |  | INST SERVICE CABINET, 10TH & MAD | 1d | 2023-09-15 | 2023-09-15 | 2-1477, 2-1396 |  | -131d |
| 2-1050 |  | SDCI INSPECTION | 1d | 2023-09-18 | 2023-09-18 | 2-1561 |  | -131d |
| 2-1070 |  | SDOT INSPECTION | 1d | 2023-09-19 | 2023-09-19 | 2-1050 |  | -131d |
| 2-1038 |  | SCL INSPECTION REQUEST | 1d | 2023-09-20 | 2023-09-20 | 2-1070 |  | -131d |
| 2-1039 |  | 30 DAY WAIT FOR SCL TO INSPECT, MAD AND BOYLSTON | 30d | 2023-09-21 | 2023-11-01 | 2-1038 |  | -131d |
| 2-1079 |  | SCL INSPECTION | 1d | 2023-11-02 | 2023-11-02 | 2-1039 |  | -131d |
| 2-1566 |  | COMMISION NOTIFICATION | 1d | 2023-11-03 | 2023-11-03 | 2-1079 |  | -131d |
| 2-1567 |  | 30 DAY WAIT FOR SCL TO COMMISION | 30d | 2023-11-06 | 2023-12-20 | 2-1566 |  | -131d |
| 2-1568 |  | COMM SERVICE, 10TH AND MAD | 1d | 2023-12-21 | 2023-12-21 | 2-1567 |  | -131d |
| 2-1560 |  | INST SIGNAL CABINET, 10TH AND MAD | 1d | 2023-12-22 | 2023-12-22 | 2-1568 |  | -131d |
| 2-1562 |  | INST MAST ARMS, 10TH AND MAD | 2d | 2023-12-26 | 2023-12-27 | 2-1977, 2-1560 |  | -131d |
| 2-1563 |  | INST PPB POST, 10TH AND MAD | 2d | 2023-12-28 | 2023-12-29 | 2-1562 |  | -55d |
| 2-1564 |  | INST PEDESTALS, 10TH AND MAD | 1d | 2024-01-02 | 2024-01-02 | 2-1563 |  | -55d |
| 2-1565 |  | INST WIRING, 10TH AND MAD | 3d | 2024-01-03 | 2024-01-05 | 2-1564 |  | -55d |
| 2-1569 |  | NOTIFY SDOT, 10TH AND MAD | 1d | 2024-01-08 | 2024-01-08 | 2-1568, 2-1565 |  | -55d |
| 2-1570 |  | SDOT INSPECTION, 10TH AND MAD | 5d | 2024-01-09 | 2024-01-16 | 2-1569 |  | -55d |
| 2-1571 |  | COMM SIGNAL, 10TH AND MAD | 1d | 2024-01-17 | 2024-01-17 | 2-1570 |  | -55d |
|  | 3 | **MADISON AND 11TH** |  | 2023-06-07 | 2024-01-18 |  |  |  |
| 2-2217 |  | INST POLES, MAD AND 11TH | 2d | 2023-06-07 A | 2023-06-08 A | 2-1977 | 100% |  |
| 2-1574 |  | INST SERVICE CABINET, MAD & 11TH | 1d | 2023-09-13 | 2023-09-13 | 2-1443, 2-2080 |  | -99d |
| 2-3050 |  | SDCI INSPECTION | 1d | 2023-09-14 | 2023-09-14 | 2-1574 |  | -99d |
| 2-3070 |  | SDOT INSPECTION | 1d | 2023-09-15 | 2023-09-15 | 2-3050 |  | -99d |
| 2-3038 |  | SCL INSPECTION REQUEST | 1d | 2023-09-18 | 2023-09-18 | 2-3070 |  | -99d |
| 2-3039 |  | 30 DAY WAIT FOR SCL TO INSPECT, MAD AND BOYLSTON | 30d | 2023-09-19 | 2023-10-30 | 2-3038 |  | -99d |
| 2-3079 |  | SCL INSPECTION | 1d | 2023-10-31 | 2023-10-31 | 2-3039 |  | -99d |
| 2-1579 |  | COMMISION NOTIFICATION | 1d | 2023-11-01 | 2023-11-01 | 2-3079 |  | -99d |
| 2-1580 |  | 30 DAY WAIT FOR SCL TO COMMISION | 30d | 2023-11-02 | 2023-12-18 | 2-1579 |  | -99d |
| 2-1581 |  | COMM SERVICE, MAD AND 11TH | 1d | 2023-12-19 | 2023-12-19 | 2-1580 |  | -99d |
| 2-1573 |  | INST SIGNAL CABINET, MAD AND 11TH | 1d | 2023-12-20 | 2023-12-20 | 2-1483, 2-1581 |  | -99d |
| 2-1575 |  | INST MAST ARMS, MAD AND 11TH | 2d | 2023-12-21 | 2023-12-22 | PMP-36, 2-2217, 2-1573 |  | -99d |
| 2-1576 |  | INST PPB POST, MAD AND 11TH | 2d | 2023-12-26 | 2023-12-27 | 2-1575 |  | -99d |
| 2-1577 |  | INST PEDESTAL, MAD AND 11TH | 1d | 2023-12-28 | 2023-12-28 | 2-1576 |  | -99d |
| 2-1578 |  | INST WIRING, MAD AND 11TH | 3d | 2023-12-29 | 2024-01-03 | 2-1577 |  | -99d |
| 2-1582 |  | NOTIFY SDOT, MAD AND 11TH | 1d | 2024-01-04 | 2024-01-04 | 2-1581, 2-1578 |  | -52d |
| 2-1583 |  | SDOT INSPECTION, MAD AND 11TH | 5d | 2024-01-05 | 2024-01-11 | 2-1582 |  | -52d |
| 2-1584 |  | COMM SIGNAL, MAD AND 11TH | 1d | 2024-01-18 | 2024-01-18 | 2-1583, 2-1571 |  | -55d |
|  | 4 | **MADISON AND 12TH** |  | 2023-08-14 | 2024-01-19 |  |  |  |
| 2-1982 |  | INST MAST ARM POLES, MAD AND 12TH | 2d | 2023-08-14 | 2023-08-15 | 2-2217 |  | -8d |
| 2-1590 |  | INST OCS POLES, MAD AND 12TH | 2d | 2023-08-16 | 2023-08-17 | 2-1982 |  | -8d |
| 2-1587 |  | INST SERVICE CABINET, MAD & 12TH | 1d | 2023-09-07 | 2023-09-07 | 2-1489, 2-2702 |  | -84d |
| 2-4050 |  | SDCI INSPECTION | 1d | 2023-09-08 | 2023-09-08 | 2-1587 |  | -84d |
| 2-4070 |  | SDOT INSPECTION | 1d | 2023-09-11 | 2023-09-11 | 2-4050 |  | -84d |
| 2-4038 |  | SCL INSPECTION REQUEST | 0d | 2023-09-12 | 2023-09-12 | 2-4070 |  | -84d |
| 2-4039 |  | 30 DAY WAIT FOR SCL TO INSPECT, MAD AND BOYLSTON | 30d | 2023-09-12 | 2023-10-23 | 2-4038 |  | -84d |
| 2-4079 |  | SCL INSPECTION | 1d | 2023-10-24 | 2023-10-24 | 2-4039 |  | -84d |
| 2-1594 |  | COMMISION NOTIFICATION | 1d | 2023-10-25 | 2023-10-25 | 2-4079 |  | -84d |
| 2-1595 |  | 30 DAY WAIT FOR SCL TO COMMISION | 30d | 2023-10-26 | 2023-12-11 | 2-1594 |  | -84d |
| 2-1596 |  | COMM SERVICE, MAD AND 12TH | 1d | 2023-12-12 | 2023-12-12 | 2-1595 |  | -84d |
| 2-1586 |  | INST SIGNAL CABINET, MAD AND 12TH | 1d | 2023-12-13 | 2023-12-13 | 2-1489, 2-1596 |  | -84d |
| 2-1588 |  | INST MAGNOMETERS, MAD AND 12TH | 1d | 2023-12-14 | 2023-12-14 | 2-1586 |  | -84d |
| 2-1589 |  | INST MAST ARMS, MAD AND 12TH | 2d | 2023-12-15 | 2023-12-18 | 2-1588 |  | -84d |
| 2-1591 |  | INST PPB POST, MAD AND 12TH | 2d | 2023-12-19 | 2023-12-20 | 2-1590, 2-1589, 2-1982 |  | -72d |
| 2-1592 |  | INST PEDISTAL, MAD AND 12TH | 2d | 2023-12-21 | 2023-12-22 | 2-1591 |  | -72d |
| 2-1593 |  | INST WIRING, MAD AND 12TH | 2d | 2023-12-26 | 2023-12-27 | 2-1592 |  | -72d |
| 2-1597 |  | NOTIFY SDOT, MAD AND 12TH | 1d | 2023-12-28 | 2023-12-28 | 2-1596, 2-1593 |  | -27d |
| 2-1598 |  | SDOT INSPECTION, MAD AND 12TH | 5d | 2023-12-29 | 2024-01-05 | 2-1597 |  | -27d |
| 2-1599 |  | COMM SIGNAL, MAD AND 12TH | 1d | 2024-01-19 | 2024-01-19 | 2-1598, 2-1584 |  | -35d |
|  | 5 | **MADISON AND 13TH** |  | 2023-08-18 | 2024-01-23 |  |  |  |
| 2-1987 |  | INST MAST ARM POLES, MAD AND 13TH | 2d | 2023-08-18 | 2023-08-21 | 2-1590 |  | -8d |
| 2-1604 |  | INST OCS POLES, MAD AND 13TH | 2d | 2023-08-22 | 2023-08-23 | 2-1359, PMP-36, 2-1987 |  | -8d |
| 2-1602 |  | INST SERVICE CABINET, MAD & 13TH | 1d | 2023-09-20 | 2023-09-20 | 2-1495, 2-1436 |  | -89d |
| 2-5050 |  | SDCI INSPECTION | 1d | 2023-09-21 | 2023-09-21 | 2-1602 |  | -89d |
| 2-5070 |  | SDOT INSPECTION | 1d | 2023-09-22 | 2023-09-22 | 2-5050 |  | -89d |
| 2-5038 |  | SCL INSPECTION REQUEST | 1d | 2023-09-25 | 2023-09-25 | 2-5070 |  | -89d |
| 2-5039 |  | 30 DAY WAIT FOR SCL TO INSPECT, MAD AND BOYLSTON | 30d | 2023-09-26 | 2023-11-06 | 2-5038 |  | -89d |
| 2-5079 |  | SCL INSPECTION | 1d | 2023-11-07 | 2023-11-07 | 2-5039 |  | -89d |
| 2-1608 |  | COMMISION NOTIFICATION | 0d | 2023-11-08 | 2023-11-08 | 2-5079 |  | -89d |
| 2-1609 |  | 30 DAY WAIT FOR SCL TO COMMISION | 30d | 2023-11-08 | 2023-12-22 | 2-1608 |  | -89d |
| 2-1610 |  | COMM SERVICE, MAD AND 13TH | 1d | 2023-12-26 | 2023-12-26 | 2-1609 |  | -89d |
| 2-1601 |  | INST SIGNAL CABINET, MAD AND 13TH | 1d | 2023-12-27 | 2023-12-27 | 2-1495, 2-1610 |  | -89d |

| ID | WBS | Task | Duration | Start | Finish | Predecessors | Total float |
| --- | --- | --- | --- | --- | --- | --- | --- |
| 2-1603 |  | INST MAST ARMS, MAD AND 13TH | 2d | 2023-12-28 | 2023-12-29 | 2-1987, 2-1601 | -89d |
| 2-1605 |  | INST PPB POST, MAD AND 13TH | 1d | 2024-01-02 | 2024-01-02 | 2-1604, 2-1603 | -76d |
| 2-1606 |  | INST PEDISTAL, MAD AND 13TH | 1d | 2024-01-03 | 2024-01-03 | 2-1605 | -76d |
| 2-1607 |  | INST WIRING, MAD AND 13TH | 3d | 2024-01-04 | 2024-01-08 | 2-1606 | -76d |
| 2-1611 |  | NOTIFY SDOT, MAD AND 13TH | 1d | 2024-01-09 | 2024-01-09 | 2-1610, 2-1607 | -32d |
| 2-1612 |  | SDOT INSPECTION, MAD AND 13TH | 4d | 2024-01-10 | 2024-01-16 | 2-1611 | -32d |
| 2-1613 |  | COMM SIGNAL, MAD AND 13TH | 2d | 2024-01-22 | 2024-01-23 | 2-1612, 2-1599 | -35d |
|  | 6 | **MADISON AND 14TH** |  | 2023-08-24 | 2024-03-06 |  |  |
| 2-1992 |  | INST POLES, MAD AND 14TH | 3d | 2023-08-24 | 2023-08-28 | 2-1604 | -8d |
| 2-1616 |  | INST SERVICE CABINET, MAD & 14TH | 1d | 2023-11-09 | 2023-11-09 | 2-1504, 2-1523 | -123d |
| 2-6050 |  | SDCI INSPECTION | 1d | 2023-11-09 | 2023-11-09 | 2-1616 SS | -123d |
| 2-6070 |  | SDOT INSPECTION | 1d | 2023-11-09 | 2023-11-09 | 2-6050 SS | -123d |
| 2-6038 |  | SCL INSPECTION REQUEST | 0d | 2023-11-10 | 2023-11-10 | 2-6070 | -123d |
| 2-6039 |  | 30 DAY WAIT FOR SCL TO INSPECT, MAD AND BOYLSTON | 30d | 2023-11-10 | 2023-12-27 | 2-6038 | -123d |
| 2-6079 |  | SCL INSPECTION | 1d | 2023-12-28 | 2023-12-28 | 2-6039 | -123d |
| 2-1621 |  | COMMISION NOTIFICATION | 0d | 2023-12-29 | 2023-12-29 | 2-6079 | -123d |
| 2-1622 |  | 30 DAY WAIT FOR SCL TO COMMISION | 30d | 2023-12-29 | 2024-02-12 | 2-1621 | -123d |
| 2-1623 |  | COMM SERVICE, MAD AND 14TH | 1d | 2024-02-13 | 2024-02-13 | 2-1622 | -123d |
| 2-1615 |  | INST SIGNAL CABINET, MAD AND 14TH | 1d | 2024-02-14 | 2024-02-14 | 2-1504, 2-1623 | -123d |
| 2-1617 |  | INST MAST ARMS, MAD AND 14TH | 1d | 2024-02-15 | 2024-02-15 | 2-1992, 2-1615 | -123d |
| 2-1618 |  | INST PPB POST, MAD AND 14TH | 2d | 2024-02-16 | 2024-02-20 | 2-1617 | -112d |
| 2-1619 |  | INST PEDISTAL, MAD AND 14TH | 2d | 2024-02-21 | 2024-02-22 | 2-1618 | -112d |
| 2-1620 |  | INST WIRING, MAD AND 14TH | 2d | 2024-02-23 | 2024-02-26 | 2-1619 | -112d |
| 2-1624 |  | NOTIFY SDOT, MAD AND 14TH | 1d | 2024-02-27 | 2024-02-27 | 2-1623, 2-1620 | -42d |
| 2-1625 |  | SDOT INSPECTION, MAD AND 14TH | 5d | 2024-02-28 | 2024-03-05 | 2-1624 | -42d |
| 2-1626 |  | COMM SIGNAL, MAD AND 14TH | 1d | 2024-03-06 | 2024-03-06 | 2-1625 | -42d |
|  | 7 | **MADISON AND 15TH** |  | 2023-08-29 | 2024-02-12 |  |  |
| 2-1997 |  | INST POLES, MAD AND 15TH | 2d | 2023-08-29 | 2023-08-30 | 2-1992 | 15d |
| 2-1629 |  | INST SERVICE CABINET, MAD & 15TH | 1d | 2023-10-09 | 2023-10-09 | 2-1508, 2-1470 | -31d |
| 2-7050 |  | SDCI INSPECTION | 1d | 2023-10-10 | 2023-10-10 | 2-1629 | -31d |
| 2-7070 |  | SDOT INSPECTION | 1d | 2023-10-11 | 2023-10-11 | 2-7050 | -31d |
| 2-7038 |  | SCL INSPECTION REQUEST | 0d | 2023-10-12 | 2023-10-12 | 2-7070 | -31d |
| 2-7039 |  | 30 DAY WAIT FOR SCL TO INSPECT, MAD AND BOYLSTON | 30d | 2023-10-12 | 2023-11-27 | 2-7038 | -31d |
| 2-7079 |  | SCL INSPECTION | 1d | 2023-11-28 | 2023-11-28 | 2-7039 | -31d |
| 2-1635 |  | COMMISION NOTIFICATION | 0d | 2023-11-29 | 2023-11-29 | 2-7079 | -31d |
| 2-1636 |  | 30 DAY WAIT FOR SCL TO COMMISION | 30d | 2023-11-29 | 2024-01-11 | 2-1635 | -31d |
| 2-1637 |  | COMM SERVICE, MAD AND 15TH | 1d | 2024-01-12 | 2024-01-12 | 2-1636 | -31d |
| 2-1628 |  | INST SIGNAL CABINET, MAD AND 15TH | 1d | 2024-01-16 | 2024-01-16 | 2-1508, 2-1637 | -31d |
| 2-1630 |  | INST MAGNOMETERS, MAD AND 15TH | 1d | 2024-01-17 | 2024-01-17 | 2-1628 | -31d |
| 2-1631 |  | INST MAST ARMS, MAD AND 15TH | 3d | 2024-01-18 | 2024-01-22 | 2-1630 | -31d |
| 2-1632 |  | INST PPB POST, MAD AND 15TH | 3d | 2024-01-23 | 2024-01-25 | 2-1631 | -31d |
| 2-1633 |  | INST PEDISTAL, MAD AND 15TH | 2d | 2024-01-26 | 2024-01-29 | 2-1632 | -31d |
| 2-1634 |  | INST WIRING, MAD AND 15TH | 3d | 2024-01-30 | 2024-02-01 | 2-1633 | -31d |
| 2-1638 |  | NOTIFY SDOT, MAD AND 15TH | 1d | 2024-02-02 | 2024-02-02 | 2-1637, 2-1634 | -31d |
| 2-1639 |  | SDOT INSPECTION, MAD AND 15TH | 5d | 2024-02-05 | 2024-02-09 | 2-1638 | -31d |
| 2-1640 |  | COMM SIGNAL, MAD AND 15TH | 1d | 2024-02-12 | 2024-02-12 | 2-1639 | -31d |
|  | 12 | **LANDSCAPING** |  | 2023-11-27 | 2023-12-22 |  |  |
| 2-1543 |  | INST POUROUS PAVMENT, POROUS PAVMENT | 10d | 2023-11-27 | 2023-12-08 | 2-1537 | 17d |
| 2-1643 |  | INSTALL TREES, LANDSCAPING & SHRUBS | 20d | 2023-11-27 | 2023-12-22 | 2-1537 | 7d |
|  | 14 | **ITS WIRING** |  | 2024-02-13 | 2024-02-20 |  |  |
| 2-1642 |  | INST WIRING, ITS, ITS WIRING | 5d | 2024-02-13 | 2024-02-20 | 2-1640 | -31d |
|  | 15 | **LIGHTING** |  | 2023-11-22 | 2024-05-23 |  |  |
|  | 1 | **BROADWAY** |  | 2023-11-22 | 2024-03-01 |  |  |
| 2-1645 |  | INST POLES, BROADWAY | 15d | 2023-11-22 | 2023-12-14 | 2-1549 | -123d |
| 2-1646 |  | INST WIRING, BROADWAY | 10d | 2023-12-15 | 2023-12-29 | 2-1645, 2-1552 | -70d |
| 2-1647 |  | NOTIFY SCL, BROADWAY | 0d | 2024-01-02 | 2024-01-02 | 2-1646 | -70d |
| 2-1648 |  | SCL INSPECTION, BROADWAY | 30d | 2024-01-02 | 2024-02-13 | 2-1647 | -70d |
| 2-1649 |  | COMM SERVICE,BROADWAY | 1d | 2024-02-14 | 2024-02-14 | 2-1648 | -70d |
| 2-2127 |  | NOTIFY SCL, BROADWAY | 0d | 2024-02-15 | 2024-02-15 | 2-1649 | -70d |
| 2-2132 |  | SCL INSPECTION, BROADWAY | 10d | 2024-02-15 | 2024-02-29 | 2-2127 | -70d |
| 2-2137 |  | COMM LIGHTING, BROADWAY | 1d | 2024-03-01 | 2024-03-01 | 2-2132 | -70d |
|  | 2 | **10TH** |  | 2023-12-28 | 2024-04-08 |  |  |
| 2-2002 |  | INST POLES, 10TH | 18d | 2023-12-28 | 2024-01-24 | 2-1645, 2-1562 | -131d |
| 2-2007 |  | INST WIRING, 10TH | 10d | 2024-01-25 | 2024-02-07 | 2-2002, 2-1565 | -65d |
| 2-2012 |  | NOTIFY SCL, 10TH | 0d | 2024-02-08 | 2024-02-08 | 2-2007 | -65d |
| 2-2017 |  | SCL INSPECTION, 10TH | 30d | 2024-02-08 | 2024-03-21 | 2-2012 | -65d |
| 2-2022 |  | COMM SERVICE, 10TH | 1d | 2024-03-22 | 2024-03-22 | 2-2017 | -65d |
| 2-2142 |  | NOTIFY SCL, 10TH | 0d | 2024-03-25 | 2024-03-25 | 2-2022 | -65d |
| 2-2147 |  | SCL INSPECTION, 10TH | 10d | 2024-03-25 | 2024-04-05 | 2-2142 | -65d |
| 2-2152 |  | COMM LIGHTING, 10TH | 1d | 2024-04-08 | 2024-04-08 | 2-2147 | -65d |

| ID | WBS | Task | Duration | Start | Finish | Predecessors | Total float |
| --- | --- | --- | --- | --- | --- | --- | --- |
|  | 3 | **11TH** |  | 2024-01-25 | 2024-05-02 |  |  |
| 2-2027 |  | INST POLES, 11TH | 18d | 2024-01-25 | 2024-02-20 | 2-2217, 2-2002 | -131d |
| 2-2032 |  | INST WIRING, 11TH | 10d | 2024-02-21 | 2024-03-05 | 2-2027, 2-1578 | -131d |
| 2-2037 |  | NOTIFY SCL, 11TH | 0d | 2024-03-06 | 2024-03-06 | 2-2032 | -131d |
| 2-2042 |  | SCL INSPECTION, 11TH | 30d | 2024-03-06 | 2024-04-16 | 2-2037 | -131d |
| 2-2047 |  | COMM SERVICE, 11TH | 1d | 2024-04-17 | 2024-04-17 | 2-2042 | -131d |
| 2-2157 |  | NOTIFY SCL, 11TH | 0d | 2024-04-18 | 2024-04-18 | 2-2047 | -131d |
| 2-2162 |  | SCL INSPECTION, 11TH | 10d | 2024-04-18 | 2024-05-01 | 2-2157 | -131d |
| 2-2167 |  | COMM LIGHTING, 11TH | 1d | 2024-05-02 | 2024-05-02 | 2-2162 | -131d |
|  | 4 | **12TH** |  | 2023-12-19 | 2024-03-29 |  |  |
| 2-2052 |  | INST POLES, 12TH | 18d | 2023-12-19 | 2024-01-16 | 2-1589 | -84d |
| 2-2057 |  | INST WIRING, 12TH | 10d | 2024-01-17 | 2024-01-30 | 2-2052, 2-1593 | -84d |
| 2-2062 |  | NOTIFY SCL, 12TH | 0d | 2024-01-31 | 2024-01-31 | 2-2057 | -84d |
| 2-2067 |  | SCL INSPECTION, 12TH | 30d | 2024-01-31 | 2024-03-13 | 2-2062 | -84d |
| 2-2072 |  | COMM SERVICE, 12TH | 1d | 2024-03-14 | 2024-03-14 | 2-2067 | -84d |
| 2-2172 |  | NOTIFY SCL, 12TH | 0d | 2024-03-15 | 2024-03-15 | 2-2072 | -84d |
| 2-2177 |  | SCL INSPECTION, 12TH | 10d | 2024-03-15 | 2024-03-28 | 2-2172 | -84d |
| 2-2182 |  | COMM LIGHTING, 12TH | 1d | 2024-03-29 | 2024-03-29 | 2-2177 | -84d |
|  | 5 | **13TH** |  | 2024-01-02 | 2024-04-10 |  |  |
| 2-2077 |  | INST POLES, 13TH | 18d | 2024-01-02 | 2024-01-26 | 2-1603 | -89d |
| 2-2082 |  | INST WIRING, 13TH | 10d | 2024-01-29 | 2024-02-09 | 2-2077, 2-1607 | -89d |
| 2-2087 |  | NOTIFY SCL, 13TH | 0d | 2024-02-12 | 2024-02-12 | 2-2082 | -89d |
| 2-2092 |  | SCL INSPECTION, 13TH | 30d | 2024-02-12 | 2024-03-25 | 2-2087 | -89d |
| 2-2097 |  | COMM SERVICE, 13TH | 1d | 2024-03-26 | 2024-03-26 | 2-2092 | -89d |
| 2-2187 |  | NOTIFY SCL, 13TH | 0d | 2024-03-27 | 2024-03-27 | 2-2097 | -89d |
| 2-2192 |  | SCL INSPECTION, 13TH | 10d | 2024-03-27 | 2024-04-09 | 2-2187 | -89d |
| 2-2197 |  | COMM LIGHTING, 13TH | 1d | 2024-04-10 | 2024-04-10 | 2-2192 | -89d |
|  | 6 | **14TH** |  | 2024-02-15 | 2024-05-23 |  |  |
| 2-2102 |  | INST POLES, 14TH | 18d | 2024-02-15 | 2024-03-12 | 2-1617 SS | -123d |
| 2-2107 |  | INST WIRING, 14TH | 10d | 2024-03-13 | 2024-03-26 | 2-2102, 2-1620 | -123d |
| 2-2112 |  | NOTIFY SCL, 14TH | 0d | 2024-03-27 | 2024-03-27 | 2-2107 | -123d |
| 2-2117 |  | SCL INSPECTION, 14TH | 30d | 2024-03-27 | 2024-05-07 | 2-2112 | -123d |
| 2-2122 |  | COMM SERVICE, 14TH | 1d | 2024-05-08 | 2024-05-08 | 2-2117 | -123d |
| 2-2202 |  | NOTIFY SCL, 14TH | 0d | 2024-05-09 | 2024-05-09 | 2-2122 | -123d |
| 2-2207 |  | SCL INSPECTION, 14TH | 10d | 2024-05-09 | 2024-05-22 | 2-2202 | -123d |
| 2-2212 |  | COMM LIGHTING, 14TH | 1d | 2024-05-23 | 2024-05-23 | 2-2207 | -123d |
|  | 19 | **WORK TO COMPLETE AFTER SIGNAL/LIGHTING COMMISSIONING** |  | 2023-12-01 | 2024-06-28 |  |  |
|  | 27 | **BROADWAY** |  | 2023-12-01 | 2024-03-06 |  |  |
| 2-2222 |  | KCM RELOCATE OCS LINE | 10d | 2023-12-01 | 2023-12-14 | 2-1552 | -18d |
| 2-2232 |  | REMOVE POLES | 2d | 2023-12-12 | 2023-12-13 | 2-1558 | -21d |
| 2-2237 |  | REMOVE CABINET | 1d | 2023-12-14 | 2023-12-14 | 2-2232 | -21d |
| 2-2242 |  | REMOVE FOUNDATIONS | 2d | 2023-12-15 | 2023-12-18 | 2-2237 | -21d |
| 2-2247 |  | GRADE SIDEWALK | 1d | 2023-12-19 | 2023-12-19 | 2-2242 | -21d |
| 2-2252 |  | CURB RAMP | 2d | 2023-12-20 | 2023-12-21 | 2-2247 | -21d |
| 2-2227 |  | REMOVE TEMP LIGHTING | 2d | 2024-03-04 | 2024-03-05 | 2-2222, 2-2137 | -70d |
| 2-2257 |  | SIDEWALKS | 1d | 2024-03-06 | 2024-03-06 | 2-2227, 2-2252 | -70d |
|  | 1 | **MADISON AND 11TH** |  | 2024-05-03 | 2024-05-31 |  |  |
| 2-2267 |  | REMOVE TEMP LIGHTING | 2d | 2024-05-03 | 2024-05-06 | 2-2167 | -131d |
| 2-2272 |  | REMOVE POLES | 2d | 2024-05-07 | 2024-05-08 | 2-2267, 2-1584 | -131d |
| 2-2277 |  | REMOVE CABINET | 1d | 2024-05-09 | 2024-05-09 | 2-2272 | -131d |
| 2-2282 |  | REMOVE FOUNDATIONS 1ST CORNER | 1d | 2024-05-10 | 2024-05-10 | 2-2277 | -131d |
| 2-2287 |  | GRADE SIDEWALK 1ST CORNER | 1d | 2024-05-13 | 2024-05-13 | 2-2282 | -131d |
| 2-2292 |  | CURB RAMPS 1ST CORNER | 2d | 2024-05-14 | 2024-05-15 | 2-2287 | -131d |
| 2-2297 |  | SIDEWALKS 1ST CORNER | 1d | 2024-05-16 | 2024-05-16 | 2-2292 | -131d |
| 2-2302 |  | REMOVE FOUNDATIONS 2ND CORNER | 1d | 2024-05-17 | 2024-05-17 | 2-2297 | -131d |
| 2-2307 |  | GRADE SIDEWALKS 2ND CORNER | 1d | 2024-05-20 | 2024-05-20 | 2-2302 | -131d |
| 2-2312 |  | CURB RAMPS 2ND CORNER | 2d | 2024-05-21 | 2024-05-22 | 2-2307 | -131d |
| 2-2317 |  | SIDEWALKS 2ND CORNER | 1d | 2024-05-23 | 2024-05-23 | 2-2312 | -131d |
| 2-2322 |  | REMOVE FOUNDATIONS 3RD CORNER | 1d | 2024-05-24 | 2024-05-24 | 2-2317 | -131d |
| 2-2327 |  | GRADE SIDEWALKS 3RD CORNER | 1d | 2024-05-28 | 2024-05-28 | 2-2322 | -131d |
| 2-2332 |  | CURB RAMPS 3RD CORNER | 2d | 2024-05-29 | 2024-05-30 | 2-2327 | -131d |
| 2-2337 |  | SIDEWALKS 3RD CORNER | 1d | 2024-05-31 | 2024-05-31 | 2-2332 | -131d |
|  | 2 | **MADISON AND 12TH** |  | 2024-04-01 | 2024-05-03 |  |  |
| 2-2342 |  | REMOVE TEMP LIGHTING | 2d | 2024-04-01 | 2024-04-02 | 2-2182 | -84d |
| 2-2347 |  | REMOVE POLES | 2d | 2024-04-03 | 2024-04-04 | 2-2342, 2-1599 | -84d |
| 2-2352 |  | REMOVE CABINET | 1d | 2024-04-05 | 2024-04-05 | 2-2347 | -84d |
| 2-2357 |  | REMOVE FOUNDATIONS 1ST CORNER | 1d | 2024-04-08 | 2024-04-08 | 2-2352 | -84d |
| 2-2362 |  | GRADE SIDEWALK 1ST CORNER | 1d | 2024-04-09 | 2024-04-09 | 2-2357, 2-2342 | -84d |
| 2-2367 |  | CURB RAMPS 1ST CORNER | 2d | 2024-04-10 | 2024-04-11 | 2-2362 | -84d |
| 2-2372 |  | SIDEWALKS 1ST CORNER | 1d | 2024-04-12 | 2024-04-12 | 2-2367 | -84d |

| ID | WBS | Task | Duration | Start | Finish | Predecessors | Complete | Total float |
| --- | --- | --- | --- | --- | --- | --- | --- | --- |
| 2-2377 |  | REMOVE FOUNDATIONS 2ND CORNER | 1d | 2024-04-15 | 2024-04-15 | 2-2372 |  | -84d |
| 2-2382 |  | GRADE SIDEWALKS 2ND CORNER | 1d | 2024-04-16 | 2024-04-16 | 2-2377 |  | -84d |
| 2-2387 |  | CURB RAMPS 2ND CORNER | 2d | 2024-04-17 | 2024-04-18 | 2-2382 |  | -84d |
| 2-2392 |  | SIDEWALKS 2ND CORNER | 1d | 2024-04-19 | 2024-04-19 | 2-2387 |  | -84d |
| 2-2397 |  | REMOVE FOUNDATIONS 3RD CORNER | 1d | 2024-04-22 | 2024-04-22 | 2-2392 |  | -84d |
| 2-2402 |  | GRADE SIDEWALKS 3RD CORNER | 1d | 2024-04-23 | 2024-04-23 | 2-2397 |  | -84d |
| 2-2407 |  | CURB RAMPS 3RD CORNER | 2d | 2024-04-24 | 2024-04-25 | 2-2402 |  | -84d |
| 2-2412 |  | SIDEWALKS 3RD CORNER | 1d | 2024-04-26 | 2024-04-26 | 2-2407 |  | -84d |
| 2-2417 |  | REMOVE FOUNDATIONS 4TH CORNER | 1d | 2024-04-29 | 2024-04-29 | 2-2412 |  | -84d |
| 2-2422 |  | GRADE SIDEWALKS 4TH CORNER | 1d | 2024-04-30 | 2024-04-30 | 2-2417 |  | -84d |
| 2-2427 |  | CURB RAMPS 4TH CORNER | 2d | 2024-05-01 | 2024-05-02 | 2-2422 |  | -84d |
| 2-2432 |  | SIDEWALKS 4TH CORNER | 1d | 2024-05-03 | 2024-05-03 | 2-2427 |  | -84d |
|  | 3 | **MADISON AND 13TH** |  | 2024-01-24 | 2024-05-10 |  |  |  |
| 2-2442 |  | REMOVE POLES | 2d | 2024-01-24 | 2024-01-25 | 2-1613 |  | -35d |
| 2-2447 |  | REMOVE CABINET | 1d | 2024-01-26 | 2024-01-26 | 2-2442 |  | -35d |
| 2-2437 |  | REMOVE TEMP LIGHTING | 2d | 2024-04-11 | 2024-04-12 | 2-2197 |  | -89d |
| 2-2452 |  | REMOVE FOUNDATIONS 1ST CORNER | 1d | 2024-04-15 | 2024-04-15 | 2-2447, 2-2437 |  | -89d |
| 2-2457 |  | GRADE SIDEWALK 1ST CORNER | 1d | 2024-04-16 | 2024-04-16 | 2-2452 |  | -89d |
| 2-2462 |  | CURB RAMPS 1ST CORNER | 2d | 2024-04-17 | 2024-04-18 | 2-2457 |  | -89d |
| 2-2467 |  | SIDEWALKS 1ST CORNER | 1d | 2024-04-19 | 2024-04-19 | 2-2462 |  | -89d |
| 2-2472 |  | REMOVE FOUNDATIONS 2ND CORNER | 1d | 2024-04-22 | 2024-04-22 | 2-2467 |  | -89d |
| 2-2477 |  | GRADE SIDEWALKS 2ND CORNER | 1d | 2024-04-23 | 2024-04-23 | 2-2472 |  | -89d |
| 2-2482 |  | CURB RAMPS 2ND CORNER | 2d | 2024-04-24 | 2024-04-25 | 2-2477 |  | -89d |
| 2-2487 |  | SIDEWALKS 2ND CORNER | 1d | 2024-04-26 | 2024-04-26 | 2-2482 |  | -89d |
| 2-2492 |  | REMOVE FOUNDATIONS 3RD CORNER | 1d | 2024-04-29 | 2024-04-29 | 2-2487 |  | -89d |
| 2-2497 |  | GRADE SIDEWALKS 3RD CORNER | 1d | 2024-04-30 | 2024-04-30 | 2-2492 |  | -89d |
| 2-2502 |  | CURB RAMPS 3RD CORNER | 2d | 2024-05-01 | 2024-05-02 | 2-2497 |  | -89d |
| 2-2507 |  | SIDEWALKS 3RD CORNER | 1d | 2024-05-03 | 2024-05-03 | 2-2502 |  | -89d |
| 2-2512 |  | REMOVE FOUNDATIONS 4TH CORNER | 1d | 2024-05-06 | 2024-05-06 | 2-2507 |  | -89d |
| 2-2517 |  | GRADE SIDEWALKS 4TH CORNER | 1d | 2024-05-07 | 2024-05-07 | 2-2512 |  | -89d |
| 2-2522 |  | CURB RAMPS 4TH CORNER | 2d | 2024-05-08 | 2024-05-09 | 2-2517 |  | -89d |
| 2-2527 |  | SIDEWALKS 4TH CORNER | 1d | 2024-05-10 | 2024-05-10 | 2-2522 |  | -89d |
|  | 4 | **MADISON AND 14TH** |  | 2024-05-24 | 2024-06-28 |  |  |  |
| 2-2532 |  | REMOVE TEMP LIGHTING | 2d | 2024-05-24 | 2024-05-28 | 2-2212 |  | -123d |
| 2-2537 |  | REMOVE POLES | 2d | 2024-05-29 | 2024-05-30 | 2-2532 |  | -123d |
| 2-2542 |  | REMOVE CABINET | 1d | 2024-05-31 | 2024-05-31 | 2-2537 |  | -123d |
| 2-2547 |  | REMOVE FOUNDATIONS 1ST CORNER | 1d | 2024-06-03 | 2024-06-03 | 2-2542 |  | -123d |
| 2-2552 |  | GRADE SIDEWALK 1ST CORNER | 1d | 2024-06-04 | 2024-06-04 | 2-2547 |  | -123d |
| 2-2557 |  | CURB RAMPS 1ST CORNER | 2d | 2024-06-05 | 2024-06-06 | 2-2552 |  | -123d |
| 2-2562 |  | SIDEWALKS 1ST CORNER | 1d | 2024-06-07 | 2024-06-07 | 2-2557 |  | -123d |
| 2-2567 |  | REMOVE FOUNDATIONS 2ND CORNER | 1d | 2024-06-10 | 2024-06-10 | 2-2562 |  | -123d |
| 2-2572 |  | GRADE SIDEWALKS 2ND CORNER | 1d | 2024-06-11 | 2024-06-11 | 2-2567 |  | -123d |
| 2-2577 |  | CURB RAMPS 2ND CORNER | 2d | 2024-06-12 | 2024-06-13 | 2-2572 |  | -123d |
| 2-2582 |  | SIDEWALKS 2ND CORNER | 1d | 2024-06-14 | 2024-06-14 | 2-2577 |  | -123d |
| 2-2587 |  | REMOVE FOUNDATIONS 3RD CORNER | 1d | 2024-06-17 | 2024-06-17 | 2-2582 |  | -123d |
| 2-2592 |  | GRADE SIDEWALKS 3RD CORNER | 1d | 2024-06-18 | 2024-06-18 | 2-2587 |  | -123d |
| 2-2597 |  | CURB RAMPS 3RD CORNER | 2d | 2024-06-19 | 2024-06-20 | 2-2592 |  | -123d |
| 2-2602 |  | SIDEWALKS 3RD CORNER | 1d | 2024-06-21 | 2024-06-21 | 2-2597 |  | -123d |
| 2-2607 |  | REMOVE FOUNDATIONS 4TH CORNER | 1d | 2024-06-24 | 2024-06-24 | 2-2602 |  | -123d |
| 2-2612 |  | GRADE SIDEWALKS 4TH CORNER | 1d | 2024-06-25 | 2024-06-25 | 2-2607 |  | -123d |
| 2-2617 |  | CURB RAMPS 4TH CORNER | 2d | 2024-06-26 | 2024-06-27 | 2-2612 |  | -123d |
| 2-2622 |  | SIDEWALKS 4TH CORNER | 1d | 2024-06-28 | 2024-06-28 | 2-2617 |  | -123d |
|  | 5 | **MADISON AND 15TH** |  | 2024-02-13 | 2024-02-16 |  |  |  |
| 2-2627 |  | REMOVE SIGNAL CABINET | 1d | 2024-02-13 | 2024-02-13 | 2-1640 |  | -30d |
| 2-2637 |  | REMOVE CABINET FOUNDATION | 1d | 2024-02-14 | 2024-02-14 | 2-2627 |  | -30d |
| 2-2647 |  | GRADE SIDEWALK | 1d | 2024-02-15 | 2024-02-15 | 2-2637 |  | -30d |
| 2-2657 |  | POUR SIDEWALK | 1d | 2024-02-16 | 2024-02-16 | 2-2647 |  | -30d |
|  | 16 | **STATIONS** |  | 2023-11-27 | 2023-12-22 |  |  |  |
|  | 1 | **MADISON AND EAST UNION ST** |  | 2023-11-27 | 2023-12-22 |  |  |  |
| 2-1652 |  | INST SHELTER, MAD & EAST UNION ST | 6d | 2023-11-27 | 2023-12-04 | 2-1537 |  | 7d |
| 2-1653 |  | INST TEC PYLON, MAD & EAST UNION ST | 4d | 2023-12-05 | 2023-12-08 | 2-1652 |  | 7d |
| 2-1654 |  | INST AMENITIES, MAD & EAST UNION ST | 4d | 2023-12-11 | 2023-12-14 | 2-1653 |  | 7d |
| 2-1655 |  | INST RAILING, MAD & EAST UNION ST | 6d | 2023-12-15 | 2023-12-22 | 2-1654 |  | 7d |
|  | 17 | **REMANING OCS POLES** |  | 2024-06-03 | 2024-07-10 |  |  |  |
| 2-1657 |  | INST REMAINING OCS POLES, REMANING OCS POLES | 28d | 2024-06-03 | 2024-07-10 | 2-1379, 2-1641, OCS-0043, PMP-41, PMP-36, 2-2257, 2-2337, 2-2432 FF, 2-2527 FF |  | -131d |
|  | 6 | **ZONE 3 - 15TH TO MLK** |  | 2021-10-21 | 2024-05-30 |  |  |  |
| PCO101.01 |  | DSC 63-Zone 3 Unknown Clay Duct Bank | 5d | 2022-01-14 A | 2022-01-15 A |  | 100% |  |
|  | 1 | **POTHOLING FOUNDATIONS** |  | 2021-10-29 | 2022-02-04 |  |  |  |
| 3-1662 |  | POTHOLING FOUNDATIONS, POTHOLING FOUNDATIONS | 5d | 2021-10-29 A | 2022-01-21 A | MS-0026 | 100% |  |
| 3-1663 |  | POTHOLE SUBMITAL REVIEW, POTHOLING FOUNDATIONS | 10d | 2022-01-24 A | 2022-02-04 A | 3-1662 | 100% |  |

| ID | WBS | Task | Duration | Start | Finish | Predecessors | Complete |
| --- | --- | --- | --- | --- | --- | --- | --- |
|  | 2 | **STORM** |  | 2021-10-21 | 2022-10-25 |  |  |
| 3-1850 |  | FM 001 DEWATERING PH, WAITING ON OWNER DIRECTION | 5d | 2021-10-21 A | 2021-11-23 A | MS-0026 SS | 100% |
| 3-1671 |  | MAD AND 15TH, STORM | 1d | 2021-10-25 A | 2021-10-26 A | MS-0026 SS | 100% |
| 3-1885 |  | FM 037_DIRECTION REGARDING DEWATERING, STORM Z3 | 1d | 2021-11-24 A | 2021-11-24 A | 3-1850 | 100% |
| 3-1665 |  | STORM MH17 TO MH 15 (DENNY TO 20TH), STORM | 15d | 2021-11-29 A | 2021-12-23 A | MS-0026, 3-1885, LS-1465 FF | 100% |
| PCO059.01 |  | DSC 37-Existing Storm Pipe at MH 17 | 5d | 2021-12-01 A | 2021-12-02 A |  | 100% |
| PCO060.01 |  | DSC 38-Side Sewer Conflict Denny to 20th | 5d | 2021-12-06 A | 2021-12-08 A |  | 100% |
| PCO062.01 |  | DSC 39-Buried logs Storm MH 17 to MH 16 | 5d | 2021-12-07 A | 2021-12-08 A |  | 100% |
| PCO066.01 |  | DSC 42-Concrete foundation Storm Conflict MH 17 to MH 16 | 5d | 2021-12-09 A | 2021-12-11 A |  | 100% |
| 3-1683 |  | MAD AND 28TH, STORM | 4d | 2021-12-14 A | 2021-12-14 A | 3-1665 SS | 100% |
| 3-1684 |  | ARTHUR AND MLK, STORM | 2d | 2021-12-15 A | 2021-12-16 A | 3-1683 | 100% |
| 3-1685 |  | SIDE SEWER ARTHUR AND MLK, STORM | 2d | 2021-12-17 A | 2021-12-23 A | 3-1684 | 100% |
| PCO072.01 |  | DSC 44-Unknown Duct Bank Storm 20th Ave intersection | 5d | 2021-12-21 A | 2021-12-23 A |  | 100% |
| 3-1666 |  | EXISTING SDMH2 TO MH11 (19TH TO 18TH), PRIOR TO DSC 054 | 12d | 2022-01-03 A | 2022-01-06 A | 3-1665, MS-2576 | 100% |
| 3-1675 |  | STORM MAD 20TH TO DENNY, STORM | 4d | 2022-01-03 A | 2022-02-11 A | MS-2576, 3-1665 | 100% |
| 3-1682 |  | MAD AND 27TH, STORM | 4d | 2022-01-03 A | 2022-01-04 A | MS-2576 | 100% |
| PCO081.01 |  | DSC 50-Concrete obstuctions Storm Mainline 18th to 19th | 5d | 2022-01-04 A | 2022-01-15 A |  | 100% |
| 3-1681 |  | MAD AND 26TH, STORM | 5d | 2022-01-05 A | 2022-01-11 A | 3-1682 | 100% |
| PCO087.01 |  | DSC 54-Side Sewer Conflict Storm STA 281+90 | 5d | 2022-01-07 A | 2022-01-15 A |  | 100% |
| 3-1678 |  | STORM MAD AND JOHN, STORM | 1d | 2022-01-07 A | 2022-01-07 A | 3-1682 | 100% |
| 3-1769 |  | WAITING FOR DIRECTION ON DSC 054 | 5d | 2022-01-07 A | 2022-01-13 A | 3-1685, 3-1666 | 100% |
| PCO094.01 |  | DSC 58-Inlet 28B Conflict | 5d | 2022-01-12 A | 2022-01-13 A |  | 100% |
| 3-1679 |  | STORM MAD AND 24TH, STORM | 1d | 2022-01-12 A | 2022-01-14 A | 3-1681 SS | 100% |
| 3-1677 |  | STORM MAD AND 22ND, STORM | 1d | 2022-01-13 A | 2022-01-13 A | 3-1678 | 100% |
| PCO100.01 |  | DSC 62-Inlet 34 connection existing WYE | 5d | 2022-01-14 A | 2022-01-26 A |  | 100% |
| 3-1674 |  | STORM MAD AND 20TH INLET & CB CONN, STORM | 5d | 2022-01-14 A | 2022-02-02 A | 3-1665, 3-1671, MS-2576, 3-1677 | 100% |
| 3-1676 |  | STORM MAD AND DENNY, STORM | 2d | 2022-01-14 A | 2022-01-18 A | 3-1677 | 100% |
| 3-1680 |  | STORM MAD AND 25TH, STORM | 4d | 2022-01-14 A | 2022-01-20 A | 3-1679 SS, 3-1676 FF | 100% |
| 3-1686 |  | EXISTING SDMH2 TO MH11 (19TH TO 18TH), AFTER DSC 054 | 5d | 2022-01-14 A | 2022-02-04 A | 3-1769 | 100% |
| PCO110.01 |  | DSC 71-CDF/Concrete obstruction @ Storm Conn @ Madison/Thomas | 5d | 2022-01-24 A | 2022-03-23 A |  | 100% |
| PCO114.01 |  | DSC 74-Inlet 35 conflict | 5d | 2022-01-26 A | 2022-01-27 A |  | 100% |
| PCO124.01 |  | DSC 82-Inlett 33 conflict | 5d | 2022-02-01 A | 2022-02-03 A |  | 100% |
| PCO126.01 |  | DSC 84-CB-29 Connection Concrete Wall Obstruction | 5d | 2022-02-03 A | 2022-02-11 A |  | 100% |
| PCO127.01 |  | DSC 85-Inlet 30 Gas Line and Tree roots | 5d | 2022-02-04 A | 2022-02-06 A |  | 100% |
| 3-1672 |  | STORM MAD AND 18TH, STORM | 3d | 2022-02-04 A | 2022-02-14 A | 3-1667, 3-1680, 3-1788 | 100% |
| PCO129.01 |  | DSC 87-Inlet 27A Conflict | 5d | 2022-02-07 A | 2022-02-08 A |  | 100% |
| 3-1667 |  | MH 12 TO EXISTING MH ON OLIVE & 18TH, SEWER | 3d | 2022-02-07 A | 2022-02-08 A | 3-1666, 3-1686 | 100% |
| 3-1673 |  | STORM MAD AND 19TH, STORM | 3d | 2022-02-08 A | 2022-02-08 A | 3-1672 | 100% |
| PCO133.01 |  | DSC 90-Gas Main conflict with Sewer MH at 18th | 5d | 2022-02-09 A | 2022-02-10 A |  | 100% |
| 3-1708 |  | DSC 090 GAS MAIN CONFLICT WITH SEWER LINE MH12 | 5d | 2022-02-09 A | 2022-02-15 A | 3-1667 | 100% |
| PCO134.01 |  | DSC 91-Leaking waterline at inlet 25B | 5d | 2022-02-10 A | 2022-02-11 A |  | 100% |
| 3-1788 |  | COMPLETE SDMH2 TO MH ON OLIVE & 18TH, AFTER DSC 090 | 5d | 2022-02-16 A | 2022-02-18 A | 3-1708 | 100% |
| PCO144.01 |  | DSC 101-Tree Roots Conflict Sewer 18th | 5d | 2022-02-17 A | 2022-02-18 A |  | 100% |
| 3-1828 |  | HUB COORDINATION & SHORING DELAY WITH PRIVATE CONTRACTOR | 5d | 2022-02-21 A | 2022-02-25 A | 3-1788 | 100% |
| 3-1668 |  | INST SHORING FOR STORM & PINE, STORM | 10d | 2022-02-28 A | 2022-03-14 A | 3-1667, 3-1788, 3-1828 | 100% |
| PCO156.01 |  | DSC 110-Gas Line Conflict Detention Pipe Pine Street | 5d | 2022-03-02 A | 2022-03-10 A |  | 100% |
| PCO158.01 |  | DSC 111-Unknown abandoned Gas line conflict slide rail | 5d | 2022-03-02 A | 2022-03-03 A |  | 100% |
| PCO167.01 |  | DSC 116-Inlet 37C conflict | 5d | 2022-03-15 A | 2022-03-16 A |  | 100% |
| 3-1669 |  | MH 10C TO MH10 (PINE ST), STORM | 12d | 2022-03-15 A | 2022-03-30 A | 3-1668, PMP-0020, LS-1470 SS | 100% |
| PCO168.01 |  | DSC 117-Inlet 32 Root conflict | 5d | 2022-03-16 A | 2022-03-25 A |  | 100% |
| 3-1670 |  | REMOVE SHORING, STORM | 5d | 2022-03-31 A | 2022-04-12 A | 3-1669 | 100% |
| PCO192.01 |  | DSC 137-Gas line Conflict MH 10A | 5d | 2022-04-01 A | 2022-04-08 A |  | 100% |
| PCO199.01 |  | DSC 142-Utility Conflicts MH 10 | 5d | 2022-04-06 A | 2022-04-12 A |  | 100% |
| PCO203.01 |  | DSC 146-Unlocated Conduites MH10 | 5d | 2022-04-07 A | 2022-04-08 A |  | 100% |
| PCO205.01 |  | DSC 147-2nd unlocated side sewer MH10 | 5d | 2022-04-07 A | 2022-04-08 A |  | 100% |
| PCO282.01 |  | DSC 207-CB10 - Utility Conflict 3" Steel Line | 5d | 2022-06-20 A | 2022-06-21 A |  | 100% |
| PCO424.01 |  | DSC 310-Unknown Conduit conflict with Storm Denny | 5d | 2022-10-19 A | 2022-10-25 A |  | 100% |
|  | 3 | **WATER** |  | 2022-01-10 | 2023-05-11 |  |  |
|  | 1 | **STAGE 6 (18TH TO 19TH)** |  | 2022-02-14 | 2022-04-11 |  |  |
| 3-1688 |  | INST TEMP MAIN, SERVICES & LATERALS, T08 & T09, STAGE 6 (18TH TO 19TH) | 2d | 2022-02-14 A | 2022-02-15 A | MS-0026, 3-1673, 3-1675 | 100% |
| 3-1689 |  | FLUSH, TEST & DISINFECT TEMP MAIN, STAGE 6 (18TH TO 19TH) | 2d | 2022-02-16 A | 2022-02-17 A | 3-1688 | 100% |
| 3-1690 |  | BAC T RESULTS, STAGE 6 (18TH TO 19TH) | 3d | 2022-02-18 A | 2022-02-22 A | 3-1689 | 100% |
| 3-1696 |  | INST MAIN LINE FROM 18TH TO 19TH, STAGE 6 (18TH TO 19TH) | 3d | 2022-02-22 A | 2022-03-08 A | PMP-0017, 3-1690 | 100% |
| 3-1691 |  | 5d NOTICE FOR SPU, STAGE 6 (18TH TO 19TH) | 5d | 2022-02-23 A | 2022-03-03 A | 3-1690 | 100% |
| PCO150.01 |  | DSC 107-CC18 Relocation at 18th | 5d | 2022-02-24 A | 2022-03-17 A |  | 100% |
| 3-1692 |  | SPU TAP MAIN AT CC17 & CONNECT TO T08, STAGE 6 (18TH TO 19TH) | 1d | 2022-03-04 A | 2022-03-04 A | 3-1673, 3-1691 | 100% |
| 3-1693 |  | SPU TAP MAIN AT CC19 & CONNECT TO T09, STAGE 6 (18TH TO 19TH) | 1d | 2022-03-04 A | 2022-03-04 A | 3-1692 | 100% |
| 3-1694 |  | SPU TRANSFER SERVICES TO TEMP MAIN, STAGE 6 (18TH TO 19TH) | 1d | 2022-03-04 A | 2022-03-04 A | 3-1693 | 100% |
| 3-1695 |  | SPU CUT & CAP AT CC16, CC17 & CC19, STAGE 6 (18TH TO 19TH) | 1d | 2022-03-04 A | 2022-03-04 A | 3-1694, 3-1672, 3-1673 | 100% |
| PCO162.01 |  | DSC 113-Conduit Laying on top of watermain at 18th & Madison | 5d | 2022-03-09 A | 2022-03-15 A |  | 100% |

| ID | WBS | Task | Duration | Start | Finish | Predecessors | Complete |
| --- | --- | --- | --- | --- | --- | --- | --- |
| 3-1697 |  | INST MAIN ON 18TH, STAGE 6 (18TH TO 19TH) | 2d | 2022-03-09 A | 2022-03-10 A | 3-1696 | 100% |
| PCO165.01 |  | DSC 115-Valve Vault conflcit stage 6 | 5d | 2022-03-11 A | 2022-03-14 A |  | 100% |
| 3-1698 |  | INST FIRE HYDRANTS, STAGE 6 (18TH TO 19TH) | 1d | 2022-03-11 A | 2022-03-11 A | 3-1697, 3-1695 | 100% |
| 3-1699 |  | INST THRUST BLOCKS, STAGE 6 (18TH TO 19TH) | 1d | 2022-03-14 A | 2022-03-14 A | 3-1698 | 100% |
| 3-1700 |  | INST THRUST COLLAR, STAGE 6 (18TH TO 19TH) | 2d | 2022-03-16 A | 2022-03-21 A | 3-1699 | 100% |
| 3-1701 |  | FLUSH, TEST & DISINFECT MAIN, STAGE 6 (18TH TO 19TH) | 2d | 2022-03-22 A | 2022-03-23 A | 3-1700 | 100% |
| 3-1702 |  | BAC T RESULTS, STAGE 6 (18TH TO 19TH) | 3d | 2022-03-24 A | 2022-03-28 A | 3-1701 | 100% |
| 3-1703 |  | 5d NOTICE FOR SPU, STAGE 6 (18TH TO 19TH) | 5d | 2022-03-29 A | 2022-04-06 A | 3-1702 | 100% |
| 3-1704 |  | SPU CONNECT TO CC16 & CC18, STAGE 6 (18TH TO 19TH) | 1d | 2022-04-07 A | 2022-04-07 A | 3-1703 | 100% |
| 3-1705 |  | SPU TRANFER SERVICES, STAGE 6 (18TH TO 19TH) | 1d | 2022-04-08 A | 2022-04-08 A | 3-1704 | 100% |
| 3-1706 |  | SPU CONNECT TO CC17, STAGE 6 (18TH TO 19TH) | 1d | 2022-04-11 A | 2022-04-11 A | 3-1705 | 100% |
| 3-1707 |  | REMOVE TEMP MAIN, STAGE 6 (18TH TO 19TH) | 1d | 2022-04-11 A | 2022-04-11 A | 3-1706 SS | 100% |
|  | 2 | **STAGE 7 (19TH TO 20TH)** |  | 2022-03-28 | 2022-05-26 |  |  |
| PCO185.01 |  | *DSC 131-CC20 North Side 19th conflict | 5d | 2022-03-28 A | 2022-03-29 A |  | 100% |
| 3-1709 |  | SPU CUT & CAPCC20, CC21 & CC22, STAGE 7 (19TH TO 20TH) | 1d | 2022-04-11 A | 2022-04-11 A | 3-1707, 3-1685, 3-1670, 3-1682, 3-1673 | 100% |
| 3-1710 |  | INST MAIN 19TH TO 20TH, STAGE 7 (19TH TO 20TH) | 5d | 2022-04-12 A | 2022-04-18 A | 3-1703 | 100% |
| PCO216.01 |  | DSC 154-Unknown water service stage 7 | 5d | 2022-04-15 A | 2022-04-16 A |  | 100% |
| 3-1711 |  | INST MAIN ON 19TH, STAGE 7 (19TH TO 20TH) | 1d | 2022-04-19 A | 2022-04-25 A | 3-1710 | 100% |
| PCO227.01 |  | DSC 162-Waterline @ 19th Conflict | 5d | 2022-04-23 A | 2022-05-06 A |  | 100% |
| PCO233.01 |  | DSC 168-Unknown Unlocated Comm Line at 19th | 5d | 2022-04-26 A | 2022-04-27 A |  | 100% |
| 3-1712 |  | INST FIRE HYDRANTS, STAGE 7 (19TH TO 20TH) | 1d | 2022-04-26 A | 2022-04-26 A | 3-1711 | 100% |
| 3-1713 |  | INST THRUST BLOCKS, STAGE 7 (19TH TO 20TH) | 1d | 2022-04-27 A | 2022-04-27 A | 3-1712 | 100% |
| 3-1714 |  | INST THRUST COLLAR, STAGE 7 (19TH TO 20TH) | 2d | 2022-04-28 A | 2022-04-28 A | 3-1713, 3-1709 | 100% |
| 3-1715 |  | FLUSH, TEST & DISINFECT MAIN, STAGE 7 (19TH TO 20TH) | 2d | 2022-04-29 A | 2022-05-02 A | 3-1714 | 100% |
| 3-1716 |  | BAC T RESULTS, STAGE 7 (19TH TO 20TH) | 3d | 2022-05-03 A | 2022-05-04 A | 3-1715 | 100% |
| 3-1717 |  | 5d NOTICE FOR SPU, STAGE 7 (19TH TO 20TH) | 3d | 2022-05-05 A | 2022-05-10 A | 3-1716 | 100% |
| 3-1718 |  | SPU CONNECT MAIN AT 283+40, CC20 & CC21, STAGE 7 (19TH TO 20TH) | 1d | 2022-05-11 A | 2022-05-11 A | 3-1717 | 100% |
| 3-1719 |  | SPU TRANSFER SERVICES, STAGE 7 (19TH TO 20TH) | 1d | 2022-05-12 A | 2022-05-12 A | 3-1718 | 100% |
| PCO247.01 |  | DSC 180-DSC Stage 7 at 20th 12" to 8" | 5d | 2022-05-16 A | 2022-05-16 A |  | 100% |
| 3-1720 |  | SPU INST PRE FLUSHED PIPE AT 90 BEND TO EX MAIN ON 20TH, STAGE 7 (19TH TO 20TH) | 1d | 2022-05-16 A | 2022-05-16 A | 3-1719 | 100% |
| 3-1840 |  | DELAY DUE TO CHANGING PIPE TO 8INCH AT 20TH | 5d | 2022-05-17 A | 2022-05-25 A | 3-1720 | 100% |
| 3-1920 |  | COMPLETE STAGE 7 AFTER DELAY | 5d | 2022-05-26 A | 2022-05-26 A | 3-1840 | 100% |
|  | 3 | **STAGE 8 (20TH TO DENNY)** |  | 2022-07-05 | 2022-08-05 |  |  |
| PCO302.01 |  | DSC 223-unknown water services Stage 8 | 5d | 2022-07-05 A | 2022-07-28 A |  | 100% |
| PCO304.01 |  | DSC 224-Unknown CDF in conflict with Stage 8 watermain | 5d | 2022-07-05 A | 2022-07-15 A |  | 100% |
| 3-1722 |  | SPU CUT & CAP CC23 & CC24, STAGE 8 (20TH TO DENNY) | 1d | 2022-07-05 A | 2022-07-05 A | 3-1675, 3-1716, 3-1749, 3-1920 | 100% |
| PCO305.01 |  | DSC 225-Unlocated 2" Rigid Conduit - @ SCL trench | 5d | 2022-07-07 A | 2022-07-08 A |  | 100% |
| PCO306.01 |  | DSC 226-Ductbank Conflict with Watermain Stage 8 | 5d | 2022-07-07 A | 2022-07-15 A |  | 100% |
| PCO307.01 |  | DSC 227-Gas Pothole Conflict - Stage 8 Watermain | 5d | 2022-07-07 A | 2022-07-22 A |  | 100% |
| 3-1723 |  | INST MAIN 20TH TO WEST OF DENNY, STAGE 8 (20TH TO DENNY) | 5d | 2022-07-07 A | 2022-07-13 A | 3-1722 | 100% |
| PCO314.01 |  | DSC 231-Contaminated Soils 20th-22nd | 5d | 2022-07-11 A | 2022-07-29 A |  | 100% |
| 3-1725 |  | INST THRUST BLOCKS, STAGE 8 (20TH TO DENNY) | 1d | 2022-07-14 A | 2022-07-14 A | 3-1723 | 100% |
| 3-1726 |  | FLUSH, TEST & DISINFECT MAIN, STAGE 8 (20TH TO DENNY) | 2d | 2022-07-18 A | 2022-07-19 A | 3-1725 | 100% |
| 3-1727 |  | BAC T RESULTS, STAGE 8 (20TH TO DENNY) | 3d | 2022-07-21 A | 2022-07-25 A | 3-1726 | 100% |
| 3-1728 |  | 5d NOTICE FOR SPU, STAGE 8 (20TH TO DENNY) | 5d | 2022-07-26 A | 2022-07-29 A | 3-1727 | 100% |
| 3-1724 |  | INST FIRE HYDRANTS, STAGE 8 (20TH TO DENNY) | 1d | 2022-08-01 A | 2022-08-01 A | 3-1723, 3-1728 | 100% |
| 3-1729 |  | SPU CONNECT NEW MAIN, STAGE 8 (20TH TO DENNY) | 1d | 2022-08-01 A | 2022-08-01 A | 3-1728, 3-1720 | 100% |
| 3-1730 |  | SPU TRANSFER SERVICES, STAGE 8 (20TH TO DENNY) | 3d | 2022-08-02 A | 2022-08-05 A | 3-1729, 3-1724 | 100% |
|  | 4 | **STAGE 9 (DENNY TO 23RD)** |  | 2022-03-10 | 2022-08-09 |  |  |
| PCO163.01 |  | *DSC 114-Water Service Obstruction STA 299+50 | 5d | 2022-03-10 A | 2022-03-17 A |  | 100% |
| 3-1742 |  | INST NEW MAIN FROM WEST OF DENNY TO 23RD, STAGE 9 (DENNY TO 23RD) | 10d | 2022-05-09 A | 2022-06-28 A | 3-1741 | 100% |
| 3-1732 |  | INST TEMP MAIN, SERVICES & LATERALS, T11, T12 & T13, STAGE 9 (DENNY TO 23RD) | 5d | 2022-05-17 A | 2022-05-19 A | 3-1720 | 100% |
| 3-1733 |  | FLUSH, TEST & DISINFECT TEMP MAIN, STAGE 9 (DENNY TO 23RD) | 1d | 2022-05-20 A | 2022-05-23 A | 3-1732 | 100% |
| 3-1734 |  | BAC T RESULTS, STAGE 9 (DENNY TO 23RD) | 3d | 2022-05-24 A | 2022-05-26 A | 3-1733 | 100% |
| 3-1735 |  | 5d NOTICE FOR SPU, STAGE 9 (DENNY TO 23RD) | 5d | 2022-05-27 A | 2022-06-03 A | 3-1734 | 100% |
| 3-1736 |  | SPU TAP MAIN AT CC28 FOR TEMP MAIN T11, STAGE 9 (DENNY TO 23RD) | 1d | 2022-06-06 A | 2022-06-08 A | 3-1735 | 100% |
| 3-1737 |  | TRANSFER SERVICES TO T11, STAGE 9 (DENNY TO 23RD) | 1d | 2022-06-06 A | 2022-06-08 A | 3-1736 | 100% |
| 3-1738 |  | SPU CUT & CAP C29 & INST TEMP MAIN AT T12 & T13, STAGE 9 (DENNY TO 23RD) | 1d | 2022-06-06 A | 2022-06-08 A | 3-1737 SS | 100% |
| 3-1739 |  | SPU CUT & CAP CC30, STAGE 9 (DENNY TO 23RD) | 1d | 2022-06-06 A | 2022-06-08 A | 3-1738 SS | 100% |
| 3-1740 |  | SPU TRANSFER SERVICESS TO T12 & T13, STAGE 9 (DENNY TO 23RD) | 1d | 2022-06-06 A | 2022-06-08 A | 3-1739 SS | 100% |
| 3-1741 |  | SPU CUT & CAP AT CC26, CC27, CC28 & CC31, STAGE 9 (DENNY TO 23RD) | 1d | 2022-06-06 A | 2022-06-08 A | 3-1740 | 100% |
| PCO284.01 |  | DSC 209-Stage 9 Water - Ductbank Conflict | 5d | 2022-06-20 A | 2022-06-22 A |  | 100% |
| PCO286.01 |  | DSC 211-Stage 9 Water - CDF encased Gas line | 5d | 2022-06-20 A | 2022-06-21 A |  | 100% |
| PCO293.01 |  | DSC 215-Stage 9 Gas and Conduit Conflict at STA295+05 | 5d | 2022-06-27 A | 2022-06-30 A |  | 100% |
| 3-1743 |  | INST MAIN ON DENNY, STAGE 9 (DENNY TO 23RD) | 1d | 2022-07-05 A | 2022-07-06 A | 3-1742 | 100% |
| 3-1744 |  | INST MAIN ON 22ND, STAGE 9 (DENNY TO 23RD) | 1d | 2022-07-13 A | 2022-07-13 A | 3-1743 | 100% |
| 3-1747 |  | INST THRUST BLOCKS, STAGE 9 (DENNY TO 23RD) | 1d | 2022-07-13 A | 2022-07-13 A | 3-1743 | 100% |
| 3-1745 |  | INST MAIN ON 23RD, STAGE 9 (DENNY TO 23RD) | 1d | 2022-07-14 A | 2022-07-14 A | 3-1744 SS | 100% |
| 3-1748 |  | INST THRUST COLLARS, STAGE 9 (DENNY TO 23RD) | 2d | 2022-07-14 A | 2022-07-15 A | 3-1747 | 100% |
| 3-1749 |  | FLUSH, TEST & DISINFECT MAIN, STAGE 9 (DENNY TO 23RD) | 2d | 2022-07-18 A | 2022-07-20 A | 3-1748 | 100% |

| ID | WBS | Task | Duration | Start | Finish | Predecessors | Complete |
| --- | --- | --- | --- | --- | --- | --- | --- |
| 3-1750 |  | BAC T RESULTS, STAGE 9 (DENNY TO 23RD) | 3d | 2022-07-21 A | 2022-07-25 A | 3-1749 | 100% |
| 3-1751 |  | 5d NOTICE FOR SPU, STAGE 9 (DENNY TO 23RD) | 5d | 2022-07-26 A | 2022-07-29 A | 3-1750 | 100% |
| PCO335.01 |  | DSC 245-unknown water service | 5d | 2022-07-27 A | 2022-08-05 A |  | 100% |
| PCO336.01 |  | DSC 246-Concrete obstrution stage 9 tie in | 5d | 2022-07-27 A | 2022-08-05 A |  | 100% |
| 3-1746 |  | INST HYDRANTS, STAGE 9 (DENNY TO 23RD) | 2d | 2022-08-01 A | 2022-08-02 A | 3-1751, 3-1745 | 100% |
| 3-1752 |  | SPU CONNECT NEW MAIN AT 291+40 & CC27, STAGE 9 (DENNY TO 23RD) | 1d | 2022-08-01 A | 2022-08-01 A | 3-1751 | 100% |
| 3-1753 |  | SPU TRANSFER SERVICES, STAGE 9 (DENNY TO 23RD) | 3d | 2022-08-02 A | 2022-08-04 A | 3-1752, 3-1746 FF | 100% |
| 3-1754 |  | SPU CONNECT AT CC28, CC29, CC30 & CC31, STAGE 9 (DENNY TO 23RD) | 1d | 2022-08-05 A | 2022-08-05 A | 3-1753 | 100% |
| 3-1755 |  | REM TEMP MAIN, STAGE 9 (DENNY TO 23RD) | 2d | 2022-08-08 A | 2022-08-09 A | 3-1754 | 100% |
|  | 5 | **STAGE 10 (23RD TO 24TH)** |  | 2022-01-10 | 2022-03-28 |  |  |
| 3-1757 |  | SPU CUT & CAP CC32A, CC32B, CC33, CC34, CC35A & CC35B, STAGE 10 (23RD TO 24TH) | 6d | 2022-01-10 A | 2022-01-20 A | 3-1679 FF | 100% |
| 3-1758 |  | INST MAIN 23RD TO 24TH, STAGE 10 (23RD TO 24TH) | 10d | 2022-01-24 A | 2022-02-10 A | 3-1757 | 100% |
| PCO128.01 |  | DSC 86-Ductbank conflict phase 10 waterline STA 303+20 | 5d | 2022-02-04 A | 2022-02-12 A |  | 100% |
| PCO135.01 |  | DSC 92-Gas Main conflict with Waterline at 24th South side | 5d | 2022-02-10 A | 2022-02-12 A |  | 100% |
| 3-1759 |  | INST MAIN AT 24TH, STAGE 10 (23RD TO 24TH) | 4d | 2022-02-11 A | 2022-02-21 A | 3-1758 | 100% |
| PCO140.01 |  | DSC 97-Watermain conflict 24th Ave north side | 5d | 2022-02-15 A | 2022-02-16 A |  | 100% |
| PCO147.01 |  | DSC 104-Concrete Obstructions deaper than 18" Waterline conflict east of 23rd | 5d | 2022-02-18 A | 2022-02-25 A |  | 100% |
| PCO149.01 |  | DSC 106-Tree Conflict Waterline Stage 10 | 5d | 2022-02-21 A | 2022-02-22 A |  | 100% |
| 3-1761 |  | INST THRUST BLOCKS, STAGE 10 (23RD TO 24TH) | 2d | 2022-02-22 A | 2022-02-22 A | 3-1759 | 100% |
| PCO151.01 |  | DSC 108-unknown utility conflict waterline TEE zone 10 | 5d | 2022-02-24 A | 2022-02-25 A |  | 100% |
| 3-1762 |  | INST THRUST COLLARS, STAGE 10 (23RD TO 24TH) | 2d | 2022-03-01 A | 2022-03-01 A | 3-1761 | 100% |
| 3-1763 |  | FLUSH, TEST & DISINFECT MAIN, STAGE 10 (23RD TO 24TH) | 2d | 2022-03-01 A | 2022-03-02 A | 3-1762 | 100% |
| PCO155.01 |  | DSC 109-Unlocated unmarked water service STA 281+00 | 5d | 2022-03-02 A | 2022-03-03 A |  | 100% |
| 3-1764 |  | BAC T RESULTS, STAGE 10 (23RD TO 24TH) | 3d | 2022-03-02 A | 2022-03-05 A | 3-1763 | 100% |
| 3-1765 |  | 5d NOTICE FOR SPU, STAGE 10 (23RD TO 24TH) | 5d | 2022-03-03 A | 2022-03-11 A | 3-1764 | 100% |
| 3-1766 |  | SPU CONECT AT CC32A, STAGE 10 (23RD TO 24TH) | 1d | 2022-03-14 A | 2022-03-14 A | 3-1765 | 100% |
| 3-1767 |  | SPU TRANSFER SERVICES, STAGE 10 (23RD TO 24TH) | 5d | 2022-03-15 A | 2022-03-16 A | 3-1766 | 100% |
| 3-1768 |  | SPU CONNECT AT CC33, CC34, CC35A & CC49, STAGE 10 (23RD TO 24TH) | 2d | 2022-03-15 A | 2022-03-28 A | 3-1767 SS, 3-1760 FF | 100% |
| 3-1760 |  | INST HYDRANTS, STAGE 10 (23RD TO 24TH) | 1d | 2022-03-28 A | 2022-03-28 A | 3-1759 | 100% |
|  | 6 | **STAGE 11 (24TH TO 25TH)** |  | 2022-02-28 | 2022-07-12 |  |  |
| 3-1770 |  | INST TEMP MAIN, SERVICES & LATERALS, T14, STAGE 11 (24TH TO 25TH) | 1d | 2022-02-28 A | 2022-02-28 A | 3-1763 | 100% |
| 3-1771 |  | FLUSH, TEST & DISINFECT MAIN, STAGE 11 (24TH TO 25TH) | 2d | 2022-03-01 A | 2022-03-02 A | 3-1770 | 100% |
| 3-1772 |  | BAC T RESULTS, STAGE 11 (24TH TO 25TH) | 3d | 2022-03-03 A | 2022-03-07 A | 3-1771 | 100% |
| 3-1773 |  | 5d NOTICE FOR SPU, STAGE 11 (24TH TO 25TH) | 5d | 2022-03-08 A | 2022-03-14 A | 3-1772 | 100% |
| 3-1774 |  | SPU CUT & CAP AT CC36 & CONECT TO T14, STAGE 11 (24TH TO 25TH) | 1d | 2022-03-15 A | 2022-03-15 A | 3-1773 | 100% |
| 3-1775 |  | SPU TRANSER SERVICES TO T14, STAGE 11 (24TH TO 25TH) | 1d | 2022-03-16 A | 2022-03-16 A | 3-1774 | 100% |
| 3-1776 |  | SPU CUT & CAP CC37, CC38 & CC39, STAGE 11 (24TH TO 25TH) | 1d | 2022-03-21 A | 2022-03-21 A | 3-1775 | 100% |
| 3-1777 |  | INST MAIN 24TH TO 25TH, STAGE 11 (24TH TO 25TH) | 2d | 2022-03-22 A | 2022-05-04 A | 3-1776 | 100% |
| PCO188.01 |  | DSC 135-Unknown Unlocated Utility Waterline 308+00 | 5d | 2022-03-29 A | 2022-03-31 A |  | 100% |
| 3-1780 |  | INST THRUST BLOCKS, STAGE 11 (24TH TO 25TH) | 2d | 2022-05-20 A | 2022-05-23 A | 3-1777 | 100% |
| 3-1778 |  | INST MAIN AT 25TH, STAGE 11 (24TH TO 25TH) | 2d | 2022-05-23 A | 2022-05-23 A | 3-1777 FF | 100% |
| 3-1779 |  | INST MAIN AT STA 310+00, STAGE 11 (24TH TO 25TH) | 1d | 2022-06-13 A | 2022-06-13 A | 3-1778 | 100% |
| 3-1781 |  | FLUSH, TEST & DISINFECT MAIN, STAGE 11 (24TH TO 25TH) | 2d | 2022-06-16 A | 2022-06-17 A | 3-1780, 3-1779 | 100% |
| 3-1782 |  | BAC T RESULTS, STAGE 11 (24TH TO 25TH) | 3d | 2022-06-20 A | 2022-06-22 A | 3-1781 | 100% |
| 3-1783 |  | 5d NOTICE FOR SPU, STAGE 11 (24TH TO 25TH) | 5d | 2022-06-23 A | 2022-07-07 A | 3-1782 | 100% |
| PCO308.01 |  | DSC 228-Unknown Unlocated utilities by stage 11 south side connection | 5d | 2022-07-08 A | 2022-07-10 A |  | 100% |
| 3-1784 |  | SPU CONNECT AT 307+15, STAGE 11 (24TH TO 25TH) | 1d | 2022-07-08 A | 2022-07-08 A | 3-1783 | 100% |
| 3-1785 |  | SPU TRANSFER SERVICES, STAGE 11 (24TH TO 25TH) | 1d | 2022-07-08 A | 2022-07-08 A | 3-1784 | 100% |
| 3-1786 |  | SPU CONECT AT CC36, CC37 ANC CC38, STAGE 11 (24TH TO 25TH) | 1d | 2022-07-11 A | 2022-07-11 A | 3-1785 | 100% |
| 3-1787 |  | REM TEMP MAIN, STAGE 11 (24TH TO 25TH) | 1d | 2022-07-12 A | 2022-07-12 A | 3-1786 | 100% |
|  | 7 | **STAGE 12 (ST 311+00 TO 26TH)** |  | 2022-07-28 | 2022-11-16 |  |  |
| 3-1789 |  | INST TEMP MAIN, SERVICES & LATERALS, T15, STAGE 12 (ST 311+00 TO 26TH) | 2d | 2022-07-28 A | 2022-08-01 A | 3-1787 | 100% |
| 3-1790 |  | FLUSH, TEST & DISINFECT TEMP MAIN, STAGE 12 (ST 311+00 TO 26TH) | 2d | 2022-08-02 A | 2022-08-03 A | 3-1789 | 100% |
| 3-1791 |  | BAC T RESULTS, STAGE 12 (ST 311+00 TO 26TH) | 3d | 2022-08-04 A | 2022-08-08 A | 3-1790 | 100% |
| 3-1792 |  | 5d NOTICE FOR SPU, STAGE 12 (ST 311+00 TO 26TH) | 5d | 2022-08-09 A | 2022-08-15 A | 3-1791 | 100% |
| 3-1793 |  | SPU CONNECT TEMP MAIN TO FIRE HYDRANT, STAGE 12 (ST 311+00 TO 26TH) | 1d | 2022-08-16 A | 2022-08-16 A | 3-1792 | 100% |
| 3-1794 |  | SPU TRANSFER SERVICES TO TEMP MAIN, STAGE 12 (ST 311+00 TO 26TH) | 1d | 2022-08-17 A | 2022-08-17 A | 3-1793 | 100% |
| 3-1795 |  | SPU CUT & CAP CC40, STAGE 12 (ST 311+00 TO 26TH) | 1d | 2022-08-23 A | 2022-08-23 A | 3-1794 | 100% |
| 3-1796 |  | INST NEW MAIN STA 311+00 TO 312+58, STAGE 12 (ST 311+00 TO 26TH) | 3d | 2022-09-06 A | 2022-09-08 A | 3-1795 | 100% |
| 3-1797 |  | INST THRUST BLOCKS, STAGE 12 (ST 311+00 TO 26TH) | 1d | 2022-09-09 A | 2022-09-09 A | 3-1796 | 100% |
| 3-1798 |  | FLUSH, TEST & DISINFECT MAIN, STAGE 12 (ST 311+00 TO 26TH) | 2d | 2022-09-12 A | 2022-09-13 A | 3-1797 | 100% |
| 3-1799 |  | BAC T RESULTS, STAGE 12 (ST 311+00 TO 26TH) | 3d | 2022-09-14 A | 2022-09-16 A | 3-1798 | 100% |
| 3-1800 |  | 5d NOTICE FOR SPU, STAGE 12 (ST 311+00 TO 26TH) | 5d | 2022-09-19 A | 2022-09-30 A | 3-1799 | 100% |
| 3-2605 |  | CONNECT NEW MAIN DELAY (SPU WOULD NOT CONNECT DUE TO LOSS OF <2GAL OF WATER) | 1d | 2022-10-03 A | 2022-10-03 A | 3-1800 | 100% |
| 3-2610 |  | RE-FLUSH NEW MAIN (SPU DELAY) | 2d | 2022-10-04 A | 2022-10-05 A | 3-2605 | 100% |
| 3-2615 |  | RE-BAC-T TEST NEW MAIN (SPU DELAY) | 3d | 2022-10-06 A | 2022-10-10 A | 3-2610 | 100% |
| 3-2620 |  | 5 DAY WAIT FOR SPU (SPU DELAY) | 5d | 2022-10-11 A | 2022-10-17 A | 3-2615 | 100% |
| 3-1801 |  | SPU CONNECT NEW MAIN, STAGE 12 (ST 311+00 TO 26TH) | 1d | 2022-10-22 A | 2022-10-22 A | 3-2620 | 100% |
| 3-1802 |  | SPU TRANSFER SERVICES, STAGE 12 (ST 311+00 TO 26TH) - PRIOR TO DELAY | 1d | 2022-10-23 A | 2022-10-23 A | 3-1801 | 100% |
| 3-2625 |  | SPU TRANSFER SERVICES DELAY - SPU CREWS LEFT WITHOUT FINISHING WORK | 1d | 2022-10-23 A | 2022-11-11 A | 3-1802 | 100% |

| ID | WBS | Task | Duration | Start | Finish | Predecessors | Complete |
| --- | --- | --- | --- | --- | --- | --- | --- |
| PCO431.01 |  | DSC 314-Backside of Service leaking Stage 12 | 5d | 2022-10-24 A | 2022-10-25 A |  | 100% |
| 3-2630 |  | SPU TRANSFER SERVICES - AFTER DELAY | 1d | 2022-11-15 A | 2022-11-15 A | 3-2625 | 100% |
| 3-1803 |  | REM TEM MAIN, STAGE 12 (ST 311+00 TO 26TH) | 1d | 2022-11-16 A | 2022-11-16 A | 3-1802, 3-2630 | 100% |
|  | 8 | **STAGE 13 (26TH TO MLK)** |  | 2022-12-09 | 2023-03-05 |  |  |
| 3-2585 |  | INSTALL TEMP MAIN (CHANGE) | 1d | 2022-12-09 A | 2022-12-13 A | 3-1796 | 100% |
| 3-2590 |  | FLUSH AND TEST TEMP MAIN | 1d | 2022-12-14 A | 2022-12-15 A | 3-2585 | 100% |
| 3-2595 |  | BAC-T RESULTS | 1d | 2022-12-16 A | 2022-12-20 A | 3-2590 | 100% |
| 3-2635 |  | 5 DAY WAIT FOR SPU | 1d | 2022-12-21 A | 2022-12-28 A | 3-2595 | 100% |
| 3-2600 |  | DELAY WAITING FOR SUPPORT SPU TO CONNECT TO TEMP MAIN | 1d | 2022-12-29 A | 2023-01-03 A | 3-2635 | 100% |
| 3-2640 |  | SUPPORT SPU TO CONNECT TO TEMP MAIN AFTER DELAY | 3d | 2023-01-04 A | 2023-01-06 A | 3-2600, 3-2635 | 100% |
| 3-1805 |  | SPU CUT & CAP AT CC43, STAGE 13 (26TH TO MLK) | 1d | 2023-01-07 A | 2023-01-07 A | 3-2600, 3-2640 | 100% |
| 3-1806 |  | INST NEW MAIN 26TH TO MLK, STAGE 13 (26TH TO MLK) | 14d | 2023-01-13 A | 2023-02-03 A | 3-1805 | 100% |
| PCO522.01 |  | DSC 374-Stage 13 Gas line Conflict | 5d | 2023-01-19 A | 2023-01-20 A |  | 100% |
| PCO527.01 |  | DSC 375-6 Inch Clay Storm Line Stage 13 | 5d | 2023-01-20 A | 2023-01-20 A |  | 100% |
| PCO548.01 |  | DSC 385-MLK Stage 13 CDF conflict | 5d | 2023-01-31 A | 2023-02-10 A |  | 100% |
| 3-1807 |  | INST MAIN AT 26TH, STAGE 13 (26TH TO MLK) | 2d | 2023-02-06 A | 2023-02-07 A | 3-1806, 3-1796, 3-1803 | 100% |
| 3-1808 |  | INST MAIN AT 27TH, STAGE 13 (26TH TO MLK) | 2d | 2023-02-08 A | 2023-02-09 A | 3-1807 | 100% |
| 3-1809 |  | INST THRUST BLOCKS, STAGE 13 (26TH TO MLK) | 1d | 2023-02-10 A | 2023-02-10 A | 3-1808 | 100% |
| 3-1810 |  | FLUSH, TEST & DISINFECT MAIN, STAGE 13 (26TH TO MLK) | 2d | 2023-02-13 A | 2023-02-14 A | 3-1809 | 100% |
| 3-1811 |  | BAC T RESULTS, STAGE 13 (26TH TO MLK) | 3d | 2023-02-15 A | 2023-02-17 A | 3-1810 | 100% |
| 3-1812 |  | 5d NOTICE FOR SPU, STAGE 13 (26TH TO MLK) | 5d | 2023-02-20 A | 2023-02-24 A | 3-1811 | 100% |
| 3-1813 |  | SPU CONNECT NEW MAIN AT CC41, CC42 & CC43, STAGE 13 (26TH TO MLK) | 1d | 2023-02-27 A | 2023-02-27 A | 3-1812 | 100% |
| 3-1814 |  | SPU TRANSFER SERVICES, STAGE 13 (26TH TO MLK) | 6d | 2023-02-28 A | 2023-03-03 A | 3-1813 | 100% |
| 3-3320 |  | OWNER CAUSED DELAY CONNECTION AT 26TH | 1d | 2023-02-28 A | 2023-03-04 A | 3-1813 | 100% |
| 3-1815 |  | SPU CONNECT AT 320+30, STAGE 13 (26TH TO MLK) | 1d | 2023-03-05 A | 2023-03-05 A | 3-1814, 3-3320 | 100% |
|  | 9 | **STAGE 14 (ARTHURPL / MLK / E HARRISON)** |  | 2023-03-15 | 2023-05-11 |  |  |
| 3-1817 |  | SPU CUT & CAP CC44 & CC45 & PROVIDE TEMP SERVICE 085, STAGE 14 ARTHUR/MLK/E HARRISON | 1d | 2023-03-15 A | 2023-03-15 A | 3-1815 | 100% |
| 3-1818 |  | SPU CUT & CAP AT CC46 & TEMP SERVICE 088, STAGE 14 ARTHUR/MLK/E HARRISON | 1d | 2023-03-15 A | 2023-03-15 A | 3-1817 | 100% |
| 3-1819 |  | INST MAIN LINE, STAGE 14 ARTHUR/MLK/E HARRISON | 4d | 2023-04-14 A | 2023-04-19 A | 3-1818 | 100% |
| 3-1820 |  | INST FIRE HYDRANT, STAGE 14 ARTHUR/MLK/E HARRISON | 1d | 2023-04-20 A | 2023-04-20 A | 3-1819 | 100% |
| 3-1821 |  | INST THRUST BLOCKS, STAGE 14 ARTHUR/MLK/E HARRISON | 1d | 2023-04-21 A | 2023-04-21 A | 3-1820 | 100% |
| 3-1822 |  | FLUSH, TEST & DISINFECT MAIN, STAGE 14 ARTHUR/MLK/E HARRISON | 2d | 2023-04-24 A | 2023-04-25 A | 3-1821 | 100% |
| 3-1823 |  | BAC T RESULTS, STAGE 14 ARTHUR/MLK/E HARRISON | 3d | 2023-04-26 A | 2023-04-28 A | 3-1822 | 100% |
| 3-1824 |  | 5d NOTICE FOR SPU, STAGE 14 ARTHUR/MLK/E HARRISON | 5d | 2023-05-01 A | 2023-05-08 A | 3-1823 | 100% |
| 3-1825 |  | SPU CONNECT AT CC45, STAGE 14 ARTHUR/MLK/E HARRISON | 1d | 2023-05-09 A | 2023-05-09 A | 3-1824 | 100% |
| 3-1826 |  | SPU CONNECT AT CC44 & CC46, STAGE 14 ARTHUR/MLK/E HARRISON | 1d | 2023-05-10 A | 2023-05-10 A | 3-1825 | 100% |
| 3-1827 |  | SPU CONNECT SERVICES & REM TEMP SERVICES, STAGE 14 ARTHUR/MLK/E HARRISON | 1d | 2023-05-11 A | 2023-05-11 A | 3-1826 | 100% |
|  | 4 | **TEMP SIGNALS** |  | 2021-10-25 | 2022-11-04 |  |  |
| 3-1829 |  | MAD AND 16TH, TEMP SIGNALS | 2d | 2021-10-25 A | 2021-11-01 A | MS-0026 | 100% |
| 3-1830 |  | MAD AND 17TH, TEMP SIGNALS | 2d | 2021-10-25 A | 2021-11-01 A | 3-1829 SS | 100% |
| 3-1832 |  | MAD AND 19TH, TEMP SIGNALS | 2d | 2022-02-10 A | 2022-02-10 A | MS-2576, 3-1830 | 100% |
| 3-1833 |  | MAD AND 20TH, TEMP SIGNALS | 2d | 2022-02-11 A | 2022-02-11 A | 3-1832 | 100% |
| 3-1834 |  | MAD AND 22ND(DENNY), TEMP SIGNALS | 2d | 2022-02-14 A | 2022-02-15 A | 3-1833 SS | 100% |
| PCO142.01 |  | DSC 99-Exposed Wire SDOT Juntion Box 19th | 5d | 2022-02-16 A | 2022-02-17 A |  | 100% |
| PCO143.01 |  | DSC 100-Service and Interconnect 19th same box | 5d | 2022-02-16 A | 2022-02-24 A |  | 100% |
| 3-1838 |  | MAD AND JOHN, TEMP SIGNALS | 2d | 2022-02-16 A | 2022-02-16 A | 3-1834 | 100% |
| 3-1839 |  | MAD AND MLK, TEMP SIGNALS | 2d | 2022-02-17 A | 2022-02-18 A | 3-1838 | 100% |
| 3-1835 |  | MAD AND 23RD, TEMP SIGNALS | 2d | 2022-07-25 A | 2022-07-26 A | 3-1834 | 100% |
| 3-1837 |  | MAD AND 25TH, TEMP SIGNALS | 2d | 2022-11-03 A | 2022-11-04 A | 3-1835 | 100% |
|  | 5 | **ROADWAY WORK** |  | 2021-11-02 | 2023-09-28 |  |  |
|  | 1 | **ROADWAY 15TH TO MLK BETWEEN INTERSECTIONS** |  | 2021-11-02 | 2023-09-28 |  |  |
|  | 1 | **15TH TO 16TH NORTH SIDE** |  | 2021-11-02 | 2021-11-24 |  |  |
| 3-1844 |  | DEMO ROAD - COMMON EX - TYPE 2, 15TH TO 16TH NORTH SIDE | 6d | 2021-11-02 A | 2021-11-05 A | 3-1671 | 100% |
| 3-1845 |  | CONDUIT RD CROSSING, 15TH TO 16TH NORTH SIDE | 6d | 2021-11-02 A | 2021-11-05 A | 3-1844 SS | 100% |
| 3-1846 |  | ROADWAY PAVING - 2 POURS, 15TH TO 16TH NORTH SIDE | 4d | 2021-11-09 A | 2021-11-12 A | 3-1845 | 100% |
| 3-1847 |  | CONCRETE CURE, 15TH TO 16TH NORTH SIDE | 3d | 2021-11-13 A | 2021-11-15 A | 3-1846 | 100% |
| 3-1848 |  | F/P CURB, 15TH TO 16TH NORTH SIDE | 2d | 2021-11-22 A | 2021-11-23 A | 3-1847 | 100% |
| 3-1849 |  | TEMP PATCH, 15TH TO 16TH NORTH SIDE | 1d | 2021-11-24 A | 2021-11-24 A | 3-1848 | 100% |
|  | 2 | **16TH TO 17TH NORTH SIDE** |  | 2021-11-05 | 2022-10-21 |  |  |
| PCO025.01 |  | DSC 16-Existing storm pipe poured in exising road | 5d | 2021-11-05 A | 2022-10-21 A |  | 100% |
| 3-1851 |  | DEMO ROAD - COMMON EX - TYPE 2, 16TH TO 17TH NORTH SIDE | 6d | 2021-11-08 A | 2021-11-11 A | 3-1844, 3-1830 | 100% |
| 3-1852 |  | CONDUIT RD CROSSING, 16TH TO 17TH NORTH SIDE | 6d | 2021-11-08 A | 2021-11-11 A | 3-1851 SS | 100% |
| 3-1853 |  | ROADWAY PAVING - 2 POURS, 16TH TO 17TH NORTH SIDE | 4d | 2021-11-16 A | 2021-11-19 A | 3-1852, 3-1846 | 100% |
| 3-1854 |  | CONCRETE CURE, 16TH TO 17TH NORTH SIDE | 3d | 2021-11-20 A | 2021-11-22 A | 3-1853 | 100% |
| 3-1855 |  | F/P CURB, 16TH TO 17TH NORTH SIDE | 2d | 2021-11-22 A | 2021-11-23 A | 3-1854 | 100% |
| 3-1856 |  | TEMP PATCH, 16TH TO 17TH NORTH SIDE | 1d | 2021-11-24 A | 2021-11-24 A | 3-1849, 3-1855 | 100% |
|  | 7 | **17TH TO 18TH NORTH SIDE** |  | 2021-11-12 | 2021-11-26 |  |  |
| 3-1886 |  | DEMO ROAD - COMMON EX - TYPE 2, 17TH TO 18TH NORTH SIDE | 6d | 2021-11-12 A | 2021-11-18 A | 3-1851 | 100% |
| 3-1887 |  | CONDUIT RD CROSSING, 17TH TO 18TH NORTH SIDE | 6d | 2021-11-12 A | 2021-11-18 A | 3-1886 SS | 100% |
| 3-1888 |  | ROADWAY PAVING - 2 POURS, 17TH TO 18TH NORTH SIDE | 4d | 2021-11-19 A | 2021-11-22 A | 3-1887 | 100% |

| ID | WBS | Task | Duration | Start | Finish | Predecessors | Complete | Total float |
| --- | --- | --- | --- | --- | --- | --- | --- | --- |
| 3-1889 |  | CONCRETE CURE, 17TH TO 18TH NORTH SIDE | 3d | 2021-11-23 A | 2021-11-26 A | 3-1888 | 100% |  |
| 3-1890 |  | F/P CURB, 17TH TO 18TH NORTH SIDE | 2d | 2021-11-23 A | 2021-11-23 A | 3-1889 | 100% |  |
| 3-1891 |  | TEMP PATCH, 17TH TO 18TH NORTH SIDE | 1d | 2021-11-24 A | 2021-11-24 A | 3-1890 | 100% |  |
|  | 3 | **15TH TO 16TH SOUTH SIDE** |  | 2021-11-29 | 2022-04-15 |  |  |  |
| 3-1858 |  | DEMO ROAD - COMMON EX - TYPE 2, 15TH TO 16TH SOUTH SIDE | 6d | 2021-11-29 A | 2021-12-08 A | 3-1856 | 100% |  |
| 3-1859 |  | CONDUIT RD CROSSING, 15TH TO 16TH SOUTH SIDE | 6d | 2021-11-29 A | 2021-12-08 A | 3-1858 SS | 100% |  |
| PCO058.01 |  | DSC 36-Inlet Pipe in Exsing Roadway 16th South side | 5d | 2021-12-01 A | 2021-12-08 A |  | 100% |  |
| 3-1860 |  | ROADWAY PAVING - 2 POURS, 15TH TO 16TH SOUTH SIDE | 4d | 2022-04-04 A | 2022-04-11 A | 3-1859, MS-2571 | 100% |  |
| 3-1861 |  | CONCRETE CURE, 15TH TO 16TH SOUTH SIDE | 3d | 2022-04-12 A | 2022-04-12 A | 3-1860 | 100% |  |
| 3-1862 |  | F/P CURB, 15TH TO 16TH SOUTH SIDE | 2d | 2022-04-13 A | 2022-04-14 A | 3-1861 | 100% |  |
| 3-1863 |  | TEMP PATCH, 15TH TO 16TH SOUTH SIDE | 1d | 2022-04-15 A | 2022-04-15 A | 3-1862 | 100% |  |
|  | 4 | **16TH TO 17TH SOUTH SIDE** |  | 2021-11-29 | 2022-04-15 |  |  |  |
| 3-1865 |  | DEMO ROAD - COMMON EX - TYPE 2, 16TH TO 17TH SOUTH SIDE | 6d | 2021-11-29 A | 2021-12-08 A | 3-1858 SS | 100% |  |
| 3-1866 |  | CONDUIT RD CROSSING, 16TH TO 17TH SOUTH SIDE | 6d | 2021-11-29 A | 2021-12-08 A | 3-1865 SS | 100% |  |
| 3-1867 |  | ROADWAY PAVING - 2 POURS, 16TH TO 17TH SOUTH SIDE | 4d | 2022-04-04 A | 2022-04-11 A | 3-1866, 3-1860 SS, MS-2571 | 100% |  |
| 3-1868 |  | CONCRETE CURE, 16TH TO 17TH SOUTH SIDE | 3d | 2022-04-12 A | 2022-04-12 A | 3-1867 | 100% |  |
| 3-1869 |  | F/P CURB, 16TH TO 17TH SOUTH SIDE | 2d | 2022-04-13 A | 2022-04-14 A | 3-1868 | 100% |  |
| 3-1870 |  | TEMP PATCH, 16TH TO 17TH SOUTH SIDE | 1d | 2022-04-15 A | 2022-04-15 A | 3-1863, 3-1869 | 100% |  |
|  | 5 | **17TH TO 18TH SOUTH SIDE** |  | 2023-01-26 | 2023-08-03 |  |  |  |
| 3-1892 |  | Delay Awaiting KCM to Allow The Work to Proceed | 5d | 2023-01-26 A | 2023-06-26 A |  | 100% |  |
| 3-1872 |  | DEMO ROAD - COMMON EX - TYPE 2, 17TH TO 18TH SOUTH SIDE | 11d | 2023-06-27 A | 2023-07-17 A | 3-1870 FF, 3-1667 FF, 3-1865, MS-2576, MS-2571 SS, 3-1788, 3-1892 | 100% |  |
| 3-1873 |  | CONDUIT RD CROSSING, 17TH TO 18TH SOUTH SIDE | 11d | 2023-06-27 A | 2023-07-17 A | 3-1872 SS, 3-1866 | 100% |  |
| 3-1874 |  | ROADWAY PAVING - 2 POURS, 17TH TO 18TH SOUTH SIDE | 4d | 2023-07-18 A | 2023-07-31 A | 3-1873, 3-1867, MS-2571 | 100% |  |
| 3-1875 |  | CONCRETE CURE, 17TH TO 18TH SOUTH SIDE | 3d | 2023-07-31 A | 2023-08-01 A | 3-1874 | 100% |  |
| 3-1876 |  | F/P CURB, 17TH TO 18TH SOUTH SIDE | 2d | 2023-08-01 A | 2023-08-02 A | 3-1875 | 100% |  |
| 3-1877 |  | TEMP PATCH, 17TH TO 18TH SOUTH SIDE | 1d | 2023-08-03 A | 2023-08-03 A | 3-1876, 3-1832 | 100% |  |
|  | 6 | **18TH TO 19TH SOUTH SIDE** |  | 2023-01-26 | 2023-08-04 |  |  |  |
| 3-2665 |  | DELAY AWAITING KCM TO ALLOW THE WORK TO PROCEED | 6d | 2023-01-26 A | 2023-06-27 A | 3-1901 | 100% |  |
| 3-1879 |  | DEMO ROAD - COMMON EX - TYPE 2, 18TH TO 19TH SOUTH SIDE | 11d | 2023-06-28 A | 2023-07-17 A | 3-2665 | 100% |  |
| 3-1880 |  | CONDUIT RD CROSSING, 18TH TO 19TH SOUTH SIDE | 11d | 2023-06-28 A | 2023-07-17 A | 3-1879 SS | 100% |  |
| 3-1881 |  | ROADWAY PAVING - 2 POURS, 18TH TO 19TH SOUTH SIDE | 4d | 2023-07-18 A | 2023-07-31 A | 3-1880, 3-2238 | 100% |  |
| 3-1882 |  | CONCRETE CURE, 18TH TO 19TH SOUTH SIDE | 3d | 2023-07-31 A | 2023-08-01 A | 3-1881 | 100% |  |
| 3-1883 |  | F/P CURB, 18TH TO 19TH SOUTH SIDE | 2d | 2023-08-01 A | 2023-08-02 A | 3-1882 | 100% |  |
| 3-1884 |  | TEMP PATCH, 18TH TO 19TH SOUTH SIDE | 1d | 2023-08-04 A | 2023-08-04 A | 3-1877, 3-1883 | 100% |  |
|  | 8 | **18TH TO 19TH NORTH SIDE** |  | 2023-08-08 | 2023-08-31 |  |  |  |
| 3-1893 |  | DEMO ROAD - COMMON EX - TYPE 2, 18TH TO 19TH NORTH SIDE | 10d | 2023-08-08 A | 2023-08-21 | 3-1720, 3-1755, 3-1920, 3-1884 |  | -98d |
| 3-1894 |  | CONDUIT RD CROSSING, 18TH TO 19TH NORTH SIDE | 10d | 2023-08-08 A | 2023-08-21 | 3-1893 SS |  | -98d |
| 3-1895 |  | ROADWAY PAVING - 2 POURS, 18TH TO 19TH NORTH SIDE | 4d | 2023-08-22 | 2023-08-25 | 3-1894, 3-1888 |  | -98d |
| 3-1896 |  | CONCRETE CURE, 18TH TO 19TH NORTH SIDE | 3d | 2023-08-26 | 2023-08-28 | 3-1895 |  | -139d |
| 3-1897 |  | F/P CURB, 18TH TO 19TH NORTH SIDE | 2d | 2023-08-29 | 2023-08-30 | 3-1895, 3-1896 |  | -97d |
| 3-1898 |  | TEMP PATCH, 18TH TO 19TH NORTH SIDE | 1d | 2023-08-31 | 2023-08-31 | 3-1891, 3-1897 |  | -97d |
|  | 11 | **19TH TO 20TH NORTH SIDE** |  | 2022-08-29 | 2022-10-13 |  |  |  |
| 3-1914 |  | DEMO ROAD - COMMON EX - TYPE 2, 19TH TO 20TH NORTH SIDE | 6d | 2022-08-29 A | 2022-09-20 A | 3-1674 | 100% |  |
| 3-1915 |  | CONDUIT RD CROSSING, 19TH TO 20TH NORTH SIDE | 6d | 2022-08-29 A | 2022-09-20 A | 3-1914 SS | 100% |  |
| 3-1916 |  | ROADWAY PAVING - 2 POURS, 19TH TO 20TH NORTH SIDE | 4d | 2022-09-28 A | 2022-10-07 A | 3-1915 | 100% |  |
| 3-1917 |  | CONCRETE CURE, 19TH TO 20TH NORTH SIDE | 3d | 2022-10-08 A | 2022-10-10 A | 3-1916 | 100% |  |
| 3-1918 |  | F/P CURB, 19TH TO 20TH NORTH SIDE | 2d | 2022-10-11 A | 2022-10-12 A | 3-1917 | 100% |  |
| 3-1919 |  | TEMP PATCH, 19TH TO 20TH NORTH SIDE | 1d | 2022-10-13 A | 2022-10-13 A | 3-1918 | 100% |  |
|  | 12 | **20TH TO DENNY NORTH SIDE** |  | 2021-12-08 | 2022-10-14 |  |  |  |
| PCO064.01 |  | DSC 41-I Beam in Roadway 22nd to 20th | 5d | 2021-12-08 A | 2021-12-10 A |  | 100% |  |
| PCO364.01 |  | DSC 265-Inlet NE Denny | 5d | 2022-08-30 A | 2022-08-31 A |  | 100% |  |
| 3-1921 |  | DEMO ROAD - COMMON EX - TYPE 2, 20TH TO DENNY NORTH SIDE | 6d | 2022-09-01 A | 2022-09-20 A | 3-1914 | 100% |  |
| 3-1922 |  | CONDUIT RD CROSSING, 20TH TO DENNY NORTH SIDE | 6d | 2022-09-01 A | 2022-09-20 A | 3-1921 SS | 100% |  |
| 3-1923 |  | ROADWAY PAVING - 2 POURS, 20TH TO DENNY NORTH SIDE | 4d | 2022-09-28 A | 2022-10-07 A | 3-1922 | 100% |  |
| 3-1924 |  | CONCRETE CURE, 20TH TO DENNY NORTH SIDE | 3d | 2022-10-08 A | 2022-10-10 A | 3-1923 | 100% |  |
| 3-1925 |  | F/P CURB, 20TH TO DENNY NORTH SIDE | 2d | 2022-10-11 A | 2022-10-12 A | 3-1924 | 100% |  |
| 3-1926 |  | TEMP PATCH, 20TH TO DENNY NORTH SIDE | 1d | 2022-10-14 A | 2022-10-14 A | 3-1919, 3-1925 | 100% |  |
|  | 14 | **DENNY TO 23RD NORTH SIDE** |  | 2022-08-15 | 2022-09-28 |  |  |  |
| 3-1935 |  | DEMO ROAD - COMMON EX - TYPE 2, DENNY TO 23RD NORTH SIDE | 6d | 2022-08-15 A | 2022-08-30 A | 3-1950 | 100% |  |
| 3-1936 |  | CONDUIT RD CROSSING, DENNY TO 23RD NORTH SIDE | 6d | 2022-08-15 A | 2022-08-24 A | 3-1935 SS | 100% |  |
| 3-1937 |  | ROADWAY PAVING - 2 POURS, DENNY TO 23RD NORTH SIDE | 4d | 2022-09-08 A | 2022-09-21 A | 3-1936 | 100% |  |
| 3-1938 |  | CONCRETE CURE, DENNY TO 23RD NORTH SIDE | 3d | 2022-09-22 A | 2022-09-24 A | 3-1937 | 100% |  |
| 3-1939 |  | F/P CURB, DENNY TO 23RD NORTH SIDE | 2d | 2022-09-26 A | 2022-09-27 A | 3-1938 | 100% |  |
| 3-1940 |  | TEMP PATCH, DENNY TO 23RD NORTH SIDE | 1d | 2022-09-28 A | 2022-09-28 A | 3-1939 | 100% |  |
|  | 9 | **19TH TO 20TH SOUTH SIDE** |  | 2022-11-28 | 2023-01-26 |  |  |  |
| 3-1900 |  | DEMO ROAD - COMMON EX - TYPE 2, 19TH TO 20TH SOUTH SIDE | 6d | 2022-11-28 A | 2022-12-21 A | 3-1720, 3-1755, 3-1920 | 100% |  |
| 3-1901 |  | CONDUIT RD CROSSING, 19TH TO 20TH SOUTH SIDE | 6d | 2022-11-28 A | 2022-12-21 A | 3-1900 SS | 100% |  |
| PCO485.01 |  | DSC 349-unknown gas line at 19th | 5d | 2022-12-03 A | 2022-12-06 A |  | 100% |  |
| 3-1902 |  | ROADWAY PAVING - 2 POURS, 19TH TO 20TH SOUTH SIDE | 4d | 2023-01-11 A | 2023-01-23 A | 3-1901 | 100% |  |
| 3-1904 |  | F/P CURB, 19TH TO 20TH SOUTH SIDE | 2d | 2023-01-23 A | 2023-01-23 A | 3-1903 SS | 100% |  |

| ID | WBS | Task | Duration | Start | Finish | Predecessors | Complete | Total float |
| --- | --- | --- | --- | --- | --- | --- | --- | --- |
| 3-1903 |  | CONCRETE CURE, 19TH TO 20TH SOUTH SIDE | 3d | 2023-01-24 A | 2023-01-26 A | 3-1902 | 100% |  |
| 3-1905 |  | TEMP PATCH, 19TH TO 20TH SOUTH SIDE | 1d | 2023-01-24 A | 2023-01-24 A | 3-1904 | 100% |  |
|  | 15 | **23RD TO 24TH SOUTH SIDE** |  | 2022-10-31 | 2022-12-22 |  |  |  |
| 3-1942 |  | DEMO ROAD - COMMON EX - TYPE 2, 23RD TO 24TH SOUTH SIDE | 6d | 2022-10-31 A | 2022-11-23 A | 3-1768, 3-1835 | 100% |  |
| 3-1943 |  | CONDUIT RD CROSSING, 23RD TO 24TH SOUTH SIDE | 6d | 2022-10-31 A | 2022-11-23 A | 3-1942 SS | 100% |  |
| PCO451.01 |  | DSC 330-CDF in subgrade 23rd to 25th 2319 Madison | 5d | 2022-11-08 A | 2022-11-15 A |  | 100% |  |
| PCO452.01 |  | DSC 331-Gas line conflict with Roadway 23rd to 25th | 5d | 2022-11-08 A | 2022-11-11 A |  | 100% |  |
| 3-1944 |  | ROADWAY PAVING - 2 POURS, 23RD TO 24TH SOUTH SIDE | 4d | 2022-12-07 A | 2022-12-15 A | 3-1943 | 100% |  |
| 3-1945 |  | CONCRETE CURE, 23RD TO 24TH SOUTH SIDE | 3d | 2022-12-16 A | 2022-12-18 A | 3-1944 | 100% |  |
| 3-1946 |  | F/P CURB, 23RD TO 24TH SOUTH SIDE | 2d | 2022-12-19 A | 2022-12-20 A | 3-1945 | 100% |  |
| 3-1947 |  | TEMP PATCH, 23RD TO 24TH SOUTH SIDE | 1d | 2022-12-21 A | 2022-12-22 A | 3-1946 | 100% |  |
|  | 10 | **20TH TO DENNY SOUTH SIDE** |  | 2022-11-28 | 2023-01-26 |  |  |  |
| 3-1907 |  | DEMO ROAD - COMMON EX - TYPE 2, 20TH TO DENNY SOUTH SIDE | 8d | 2022-11-28 A | 2022-12-21 A | 3-1730, 3-1900 SS, 3-1665 | 100% |  |
| 3-1908 |  | CONDUIT RD CROSSING, 20TH TO DENNY SOUTH SIDE | 8d | 2022-11-28 A | 2022-12-21 A | 3-1907 SS | 100% |  |
| PCO491.01 |  | DSC 352-Unknown Unlocated Gas Line Struck 2020 Madison | 5d | 2022-12-12 A | 2022-12-13 A |  | 100% |  |
| 3-1909 |  | ROADWAY PAVING - 4 POURS, 20TH TO DENNY SOUTH SIDE | 8d | 2023-01-11 A | 2023-01-23 A | 3-1908, 3-1902 | 100% |  |
| 3-1910 |  | CONCRETE CURE, 20TH TO DENNY SOUTH SIDE | 3d | 2023-01-24 A | 2023-01-26 A | 3-1909 | 100% |  |
| 3-1911 |  | F/P CURB, 20TH TO DENNY SOUTH SIDE | 3d | 2023-01-24 A | 2023-01-24 A | 3-1910 | 100% |  |
| 3-1912 |  | TEMP PATCH, 20TH TO DENNY SOUTH SIDE | 1d | 2023-01-25 A | 2023-01-25 A | 3-1911, 3-1905 FF | 100% |  |
|  | 16 | **23RD TO 24TH NORTH SIDE** |  | 2022-08-01 | 2022-09-06 |  |  |  |
| 3-1949 |  | DEMO ROAD - COMMON EX - TYPE 2, 23RD TO 24TH NORTH SIDE | 6d | 2022-08-01 A | 2022-08-12 A | 3-1750 | 100% |  |
| 3-1950 |  | CONDUIT RD CROSSING, 23RD TO 24TH NORTH SIDE | 6d | 2022-08-01 A | 2022-08-12 A | 3-1949 SS | 100% |  |
| PCO339.01 |  | DSC 248-Unknown Unlocated Gas service 24th to 23rd north side | 5d | 2022-08-03 A | 2022-08-12 A |  | 100% |  |
| PCO344.01 |  | DSC 253-Void in Road Madison, 24th-23rd | 5d | 2022-08-09 A | 2022-08-11 A |  | 100% |  |
| 3-1951 |  | ROADWAY PAVING - 2 POURS, 23RD TO 24TH NORTH SIDE | 4d | 2022-08-23 A | 2022-08-30 A | 3-1950 | 100% |  |
| 3-1952 |  | CONCRETE CURE, 23RD TO 24TH NORTH SIDE | 3d | 2022-08-30 A | 2022-09-01 A | 3-1951 | 100% |  |
| 3-1953 |  | F/P CURB, 23RD TO 24TH NORTH SIDE | 2d | 2022-08-31 A | 2022-09-01 A | 3-1952 | 100% |  |
| 3-1954 |  | TEMP PATCH, 23RD TO 24TH NORTH SIDE | 1d | 2022-09-02 A | 2022-09-06 A | 3-1953 | 100% |  |
|  | 13 | **DENNY TO 23RD SOUTH SIDE** |  | 2022-10-10 | 2022-12-07 |  |  |  |
| 3-1928 |  | DEMO ROAD - COMMON EX - TYPE 2, DENNY TO 23RD SOUTH SIDE | 6d | 2022-10-10 A | 2022-10-25 A | 3-1834, 3-1835, 3-1787 | 100% |  |
| 3-1929 |  | CONDUIT RD CROSSING, DENNY TO 23RD SOUTH SIDE | 6d | 2022-10-10 A | 2022-10-26 A | 3-1928 SS | 100% |  |
| PCO432.01 |  | DSC 315-CDF in Roadway Denny Way South Side | 5d | 2022-10-24 A | 2022-11-04 A |  | 100% |  |
| 3-1930 |  | ROADWAY PAVING - 2 POURS, DENNY TO 23RD SOUTH SIDE | 4d | 2022-11-15 A | 2022-12-01 A | 3-1929 | 100% |  |
| 3-1931 |  | CONCRETE CURE, DENNY TO 23RD SOUTH SIDE | 3d | 2022-12-02 A | 2022-12-04 A | 3-1930 | 100% |  |
| 3-1932 |  | F/P CURB, DENNY TO 23RD SOUTH SIDE | 2d | 2022-12-05 A | 2022-12-06 A | 3-1931 | 100% |  |
| 3-1933 |  | TEMP PATCH, DENNY TO 23RD SOUTH SIDE | 1d | 2022-12-07 A | 2022-12-07 A | 3-1932, 3-1947 | 100% |  |
|  | 17 | **24TH TO 25TH SOUTH SIDE** |  | 2022-10-31 | 2023-01-05 |  |  |  |
| 3-1956 |  | DEMO ROAD - COMMON EX - TYPE 2, 24TH TO 25TH SOUTH SIDE | 6d | 2022-10-31 A | 2022-11-23 A | 3-1787, 3-1837, 3-1929 | 100% |  |
| 3-1957 |  | CONDUIT RD CROSSING, 24TH TO 25TH SOUTH SIDE | 6d | 2022-10-31 A | 2022-11-23 A | 3-1956 SS | 100% |  |
| 3-1958 |  | ROADWAY PAVING - 2 POURS, 24TH TO 25TH SOUTH SIDE | 4d | 2022-12-07 A | 2022-12-27 A | 3-1957 | 100% |  |
| 3-1959 |  | CONCRETE CURE, 24TH TO 25TH SOUTH SIDE | 3d | 2022-12-28 A | 2022-12-30 A | 3-1958 | 100% |  |
| 3-1960 |  | F/P CURB, 24TH TO 25TH SOUTH SIDE | 2d | 2023-01-03 A | 2023-01-04 A | 3-1959 | 100% |  |
| 3-1961 |  | TEMP PATCH, 24TH TO 25TH SOUTH SIDE | 1d | 2023-01-05 A | 2023-01-05 A | 3-1960 | 100% |  |
|  | 18 | **24TH TO 25TH NORTH SIDE** |  | 2022-08-01 | 2022-09-06 |  |  |  |
| 3-1963 |  | DEMO ROAD - COMMON EX - TYPE 2, 24TH TO 25TH NORTH SIDE | 6d | 2022-08-01 A | 2022-08-12 A | 3-1949 SS | 100% |  |
| 3-1964 |  | CONDUIT RD CROSSING, 24TH TO 25TH NORTH SIDE | 6d | 2022-08-01 A | 2022-08-12 A | 3-1963 SS | 100% |  |
| 3-1965 |  | ROADWAY PAVING - 2 POURS, 24TH TO 25TH NORTH SIDE | 4d | 2022-08-17 A | 2022-08-22 A | 3-1964 | 100% |  |
| 3-1966 |  | CONCRETE CURE, 24TH TO 25TH NORTH SIDE | 3d | 2022-08-23 A | 2022-08-25 A | 3-1965 | 100% |  |
| 3-1967 |  | F/P CURB, 24TH TO 25TH NORTH SIDE | 2d | 2022-08-31 A | 2022-09-01 A | 3-1966 | 100% |  |
| 3-1968 |  | TEMP PATCH, 24TH TO 25TH NORTH SIDE | 1d | 2022-09-06 A | 2022-09-06 A | 3-1967 | 100% |  |
|  | 19 | **25TH TO 27TH NORTH SIDE** |  | 2023-07-19 | 2023-08-31 |  |  |  |
| 3-1970 |  | DEMO ROAD - COMMON EX - TYPE 2, 25TH TO 27TH NORTH SIDE | 8d | 2023-07-19 A | 2023-08-07 A | 3-1964, 3-1998 | 100% |  |
| 3-1971 |  | CONDUIT RD CROSSING, 25TH TO 27TH NORTH SIDE | 8d | 2023-07-19 A | 2023-08-07 A | 3-1970 SS | 100% |  |
| 3-1972 |  | ROADWAY PAVING - 4 POURS, 25TH TO 27TH NORTH SIDE | 8d | 2023-08-14 | 2023-08-23 | 3-1971 |  | -101d |
| 3-1973 |  | CONCRETE CURE, 25TH TO 27TH NORTH SIDE | 3d | 2023-08-24 | 2023-08-26 | 3-1972 |  | -145d |
| 3-1974 |  | F/P CURB, 25TH TO 27TH NORTH SIDE | 3d | 2023-08-28 | 2023-08-30 | 3-1973 |  | -102d |
| 3-1975 |  | TEMP PATCH, 25TH TO 27TH NORTH SIDE | 1d | 2023-08-31 | 2023-08-31 | 3-1974 |  | -102d |
|  | 20 | **27TH TO MLK NORTH SIDE** |  | 2023-08-14 | 2023-09-08 |  |  |  |
| 3-1977 |  | DEMO ROAD - COMMON EX - TYPE 2, 27TH TO MLK NORTH SIDE | 6d | 2023-08-14 | 2023-08-21 | 3-1970 |  | -89d |
| 3-1978 |  | CONDUIT RD CROSSING, 27TH TO MLK NORTH SIDE | 6d | 2023-08-14 | 2023-08-21 | 3-1977 SS |  | -89d |
| 3-1979 |  | ROADWAY PAVING - 2 POURS, 27TH TO MLK NORTH SIDE | 4d | 2023-08-24 | 2023-08-29 | 3-1972, 3-1978 |  | -91d |
| 3-1980 |  | CONCRETE CURE, 27TH TO MLK NORTH SIDE | 3d | 2023-08-30 | 2023-09-01 | 3-1979 |  | -131d |
| 3-1981 |  | F/P CURB, 27TH TO MLK NORTH SIDE | 3d | 2023-09-05 | 2023-09-07 | 3-1980 |  | -93d |
| 3-1982 |  | TEMP PATCH, 27TH TO MLK NORTH SIDE | 1d | 2023-09-08 | 2023-09-08 | 3-1981 |  | -93d |
|  | 21 | **25TH TO 26TH SOUTH SIDE** |  | 2023-03-10 | 2023-04-28 |  |  |  |
| 3-1984 |  | DEMO ROAD - COMMON EX - TYPE 2, 25TH TO 27TH SOUTH SIDE | 8d | 2023-03-10 A | 2023-03-23 A | 2-1280 | 100% |  |
| 3-1985 |  | CONDUIT RD CROSSING, 25TH TO 27TH SOUTH SIDE | 8d | 2023-03-10 A | 2023-03-23 A | 3-1984 SS | 100% |  |
| 3-1986 |  | ROADWAY PAVING - 4 POURS, 25TH TO 27TH SOUTH SIDE | 8d | 2023-03-24 A | 2023-04-25 A | 3-1985 | 100% |  |
| 3-1987 |  | CONCRETE CURE, 25TH TO 27TH SOUTH SIDE | 3d | 2023-04-26 A | 2023-04-28 A | 3-1986 | 100% |  |
| 3-1988 |  | F/P CURB, 25TH TO 27TH SOUTH SIDE | 3d | 2023-04-26 A | 2023-04-27 A | 3-1987 | 100% |  |

| ID | WBS | Task | Duration | Start | Finish | Predecessors | Complete | Total float |
| --- | --- | --- | --- | --- | --- | --- | --- | --- |
| 3-1989 |  | TEMP PATCH, 25TH TO 27TH SOUTH SIDE | 1d | 2023-04-28 A | 2023-04-28 A | 3-1988 | 100% |  |
|  | 22 | **26TH TO MLK SOUTH SIDE** |  | 2023-05-09 | 2023-06-20 |  |  |  |
| 3-1991 |  | DEMO ROAD - COMMON EX - TYPE 2, 26TH TO MLK SOUTH SIDE | 6d | 2023-05-09 A | 2023-05-26 A | 3-1984, 3-1839 | 100% |  |
| 3-1992 |  | CONDUIT RD CROSSING, 26TH TO MLK SOUTH SIDE | 6d | 2023-05-09 A | 2023-05-26 A | 3-1991 SS | 100% |  |
| 3-1993 |  | ROADWAY PAVING - 2 POURS, 26TH TO MLK SOUTH SIDE | 10d | 2023-05-31 A | 2023-06-13 A | 3-1992, 3-1986 | 100% |  |
| 3-1994 |  | CONCRETE CURE, 26TH TO MLK SOUTH SIDE | 3d | 2023-06-14 A | 2023-06-16 A | 3-1993 | 100% |  |
| 3-1995 |  | F/P CURB, 26TH TO MLK SOUTH SIDE | 3d | 2023-06-15 A | 2023-06-19 A | 3-1994 SS+1d | 100% |  |
| 3-1996 |  | TEMP PATCH, 26TH TO MLK SOUTH SIDE | 1d | 2023-06-20 A | 2023-06-20 A | 3-1995, 3-1989 | 100% |  |
|  | 23 | **MLK MADISON TO HARRISION EAST SIDE** |  | 2023-06-06 | 2023-07-17 |  |  |  |
| 3-1998 |  | DEMO ROAD - COMMON EX - TYPE 2, MLK MAD TO HARRISON EAST SIDE | 6d | 2023-06-06 A | 2023-06-21 A | 3-1685, 3-1827, 3-1996 | 100% |  |
| 3-1999 |  | CONDUIT RD CROSSING, MLK MAD TO HARRISON EAST SIDE | 6d | 2023-06-12 A | 2023-06-20 A | 3-1998 SS | 100% |  |
| 3-2000 |  | ROADWAY PAVING - 2 POURS, MLK MAD TO HARRISON EAST SIDE | 4d | 2023-06-22 A | 2023-07-12 A | 3-1999, 3-1993 | 100% |  |
| 3-2001 |  | CONCRETE CURE, MLK MAD TO HARRISON EAST SIDE | 3d | 2023-07-13 A | 2023-07-13 A | 3-2000 | 100% |  |
| 3-2002 |  | F/P CURB, MLK MAD TO HARRISON EAST SIDE | 2d | 2023-07-14 A | 2023-07-14 A | 3-2001 | 100% |  |
| 3-2003 |  | TEMP PATCH, MLK MAD TO HARRISON EAST SIDE | 1d | 2023-07-17 A | 2023-07-17 A | 3-2002, 3-1996 | 100% |  |
|  | 24 | **MLK MADISON TO HARRISON WEST SIDE** |  | 2023-08-22 | 2023-09-14 |  |  |  |
| 3-2005 |  | DEMO ROAD - COMMON EX - TYPE 2, MLK MAD TO HARRISON WEST SIDE | 6d | 2023-08-22 | 2023-08-29 | 3-1998, 3-2003, 3-1977 |  | -79d |
| 3-2006 |  | CONDUIT RD CROSSING, MLK MAD TO HARRISON WEST SIDE | 6d | 2023-08-22 | 2023-08-29 | 3-2005 SS |  | -79d |
| 3-2007 |  | ROADWAY PAVING - 2 POURS, MLK MAD TO HARRISON WEST SIDE | 4d | 2023-08-30 | 2023-09-05 | 3-2006 |  | -79d |
| 3-2008 |  | CONCRETE CURE, MLK MAD TO HARRISON WEST SIDE | 3d | 2023-09-06 | 2023-09-08 | 3-2007 |  | -114d |
| 3-2009 |  | F/P CURB, MLK MAD TO HARRISON WEST SIDE | 3d | 2023-09-11 | 2023-09-13 | 3-2008 |  | -79d |
| 3-2010 |  | TEMP PATCH, MLK MAD TO HARRISON WEST SIDE | 1d | 2023-09-14 | 2023-09-14 | 3-2009 |  | -79d |
|  | 25 | **ARTHUR PL HARRISON ST INTERSECTION** |  | 2023-08-30 | 2023-09-28 |  |  |  |
| 3-2012 |  | DEMO ROAD - COMMON EX - TYPE 2, ARTHUR PL HARRISON ST INTERSECTION | 8d | 2023-08-30 | 2023-09-11 | 3-2005 |  | 2d |
| 3-2013 |  | CONDUIT RD CROSSING, ARTHUR PL HARRISON ST INTERSECTION | 8d | 2023-08-30 | 2023-09-11 | 3-2012 SS |  | 2d |
| 3-2014 |  | ROADWAY PAVING - 4 POURS, ARTHUR PL HARRISON ST INTERSECTION | 8d | 2023-09-12 | 2023-09-21 | 3-2013 |  | 2d |
| 3-2015 |  | CONCRETE CURE, ARTHUR PL HARRISON ST INTERSECTION | 3d | 2023-09-22 | 2023-09-24 | 3-2014 |  | 4d |
| 3-2016 |  | F/P CURB, ARTHUR PL HARRISON ST INTERSECTION | 3d | 2023-09-25 | 2023-09-27 | 3-2015 |  | 4d |
| 3-2017 |  | TEMP PATCH, ARTHUR PL HARRISON ST INTERSECTION | 1d | 2023-09-28 | 2023-09-28 | 3-2016 |  | 4d |
|  | 26 | **PINE ST** |  | 2022-04-13 | 2022-05-23 |  |  |  |
| 3-2019 |  | DEMO ROAD - COMMON EX - TYPE 2, PINE ST | 6d | 2022-04-13 A | 2022-04-19 A | 3-1670 | 100% |  |
| 3-2020 |  | F/P CURB AND GUTTER, PINE ST | 2d | 2022-04-20 A | 2022-04-27 A | 3-2019 | 100% |  |
| 3-2021 |  | ROADWAY CONCRETE PAVING, PINE ST | 2d | 2022-04-21 A | 2022-04-22 A | 3-2020 | 100% |  |
| 3-2023 |  | F/P CURB, PINE ST | 2d | 2022-04-21 A | 2022-04-22 A | 3-2021 SS | 100% |  |
| 3-2024 |  | TEMP PAVING, PINE ST | 1d | 2022-04-25 A | 2022-04-25 A | 3-2023 | 100% |  |
| 3-2022 |  | ASPHALT PAVING, PINE ST | 2d | 2022-05-20 A | 2022-05-23 A | 3-2021 | 100% |  |
|  | 2 | **INTERSECTIONS** |  | 2021-11-13 | 2023-09-17 |  |  |  |
|  | 1 | **16TH NORTH SIDE** |  | 2021-11-13 | 2021-11-14 |  |  |  |
| 3-2027 |  | DEMO ROAD - COMMON EX - TYPE 2, 16TH NORTH SIDE | 1d | 2021-11-13 A | 2021-11-13 A | 3-1851 SS | 100% |  |
| 3-2028 |  | TRENCH CONDUIT, 16TH NORTH SIDE | 1d | 2021-11-13 A | 2021-11-13 A | 3-2027 SS | 100% |  |
| 3-2029 |  | ROADWAY PAVING, 16TH NORTH SIDE | 1d | 2021-11-14 A | 2021-11-14 A | 3-2028 | 100% |  |
|  | 10 | **20TH NORTH SIDE** |  | 2023-06-03 | 2023-06-06 |  |  |  |
| 3-2063 |  | DEMO ROAD - COMMON EX - TYPE 2, 20TH NORTH SIDE | 1d | 2023-06-03 A | 2023-06-06 A | 3-1921 SS | 100% |  |
| 3-2064 |  | TRENCH CONDUIT, 20TH NORTH SIDE | 1d | 2023-06-03 A | 2023-06-06 A | 3-2063 SS | 100% |  |
| 3-2065 |  | ROADWAY PAVING, 20TH NORTH SIDE | 1d | 2023-06-04 A | 2023-06-06 A | 3-2064 | 100% |  |
|  | 11 | **DENNY SOUTH SIDE** |  | 2022-10-10 | 2022-11-30 |  |  |  |
| 3-2067 |  | DEMO ROAD - COMMON EX - TYPE 2, DENNY SOUTH SIDE | 1d | 2022-10-10 A | 2022-10-17 A | 3-1928 SS | 100% |  |
| 3-2068 |  | TRENCH CONDUIT, DENNY SOUTH SIDE | 1d | 2022-10-18 A | 2022-10-20 A | 3-2067 SS | 100% |  |
| 3-2069 |  | ROADWAY PAVING, DENNY SOUTH SIDE | 1d | 2022-11-15 A | 2022-11-30 A | 3-2068 | 100% |  |
|  | 12 | **DENNY NORTH SIDE** |  | 2022-08-15 | 2022-10-06 |  |  |  |
| 3-2071 |  | DEMO ROAD - COMMON EX - TYPE 2, DENNY NORTH SIDE | 1d | 2022-08-15 A | 2022-08-30 A | 3-1935 SS | 100% |  |
| 3-2072 |  | TRENCH CONDUIT, DENNY NORTH SIDE | 1d | 2022-08-15 A | 2022-08-30 A | 3-2071 SS | 100% |  |
| 3-2073 |  | ROADWAY PAVING, DENNY NORTH SIDE | 1d | 2022-10-03 A | 2022-10-06 A | 3-2072 | 100% |  |
|  | 13 | **24TH SOUTH SIDE** |  | 2022-11-05 | 2022-12-02 |  |  |  |
| 3-2075 |  | DEMO ROAD - COMMON EX - TYPE 2, 24TH SOUTH SIDE | 4d | 2022-11-05 A | 2022-11-13 A | 3-1956 SS | 100% |  |
| 3-2076 |  | TRENCH CONDUIT, 24TH SOUTH SIDE | 4d | 2022-11-05 A | 2022-11-13 A | 3-2075 SS | 100% |  |
| 3-2077 |  | ROADWAY PAVING, 24TH SOUTH SIDE | 4d | 2022-11-29 A | 2022-12-02 A | 3-2076 | 100% |  |
|  | 14 | **24TH NORTH SIDE** |  | 2022-12-14 | 2023-02-26 |  |  |  |
| 3-2080 |  | TRENCH CONDUIT, 24TH NORTH SIDE | 4d | 2022-12-14 A | 2023-01-15 A | 3-2077 | 100% |  |
| PCO504.01 |  | DSC 359-Lighting conduit conflict with vault and MH 24th and madison | 5d | 2023-01-07 A | 2023-01-08 A |  | 100% |  |
| PCO510.01 |  | DSC 365-Counduit Crossing @ John Ductbank Conflict | 5d | 2023-01-11 A | 2023-01-18 A |  | 100% |  |
| PCO513.01 |  | DSC 366-NWC John & Madison Ductbank Conflict | 5d | 2023-01-13 A | 2023-01-14 A |  | 100% |  |
| PCO541.01 |  | DSC 381-Existing Type 164 inlet 24th and John | 5d | 2023-01-26 A | 2023-01-27 A |  | 100% |  |
| 3-2079 |  | DEMO ROAD - COMMON EX - TYPE 2, 24TH NORTH SIDE | 4d | 2023-02-11 A | 2023-02-26 A | 3-2080 | 100% |  |
| 3-2081 |  | ROADWAY PAVING, 24TH NORTH SIDE | 4d | 2023-02-11 A | 2023-02-26 A | 3-2080, 3-2079 | 100% |  |
|  | 15 | **MLK NORTH SIDE** |  | 2023-09-09 | 2023-09-10 |  |  |  |
| 3-2083 |  | DEMO ROAD - COMMON EX - TYPE 2, MLK NORTH SIDE | 1d | 2023-09-09 | 2023-09-09 | 3-2061 |  | -38d |
| 3-2084 |  | TRENCH CONDUIT, MLK NORTH SIDE | 1d | 2023-09-09 | 2023-09-09 | 3-2083 SS |  | -38d |
| 3-2085 |  | ROADWAY PAVING, MLK NORTH SIDE | 1d | 2023-09-10 | 2023-09-10 | 3-2084 |  | -38d |
|  | 16 | **MLK SOUTH SIDE** |  | 2023-09-16 | 2023-09-17 |  |  |  |

| ID | WBS | Task | Duration | Start | Finish | Predecessors | Complete | Total float | Constraint |
| --- | --- | --- | --- | --- | --- | --- | --- | --- | --- |
| 3-2087 |  | DEMO ROAD - COMMON EX - TYPE 2, MLK SOUTH SIDE | 1d | 2023-09-16 | 2023-09-16 | 3-1991 SS, 3-2085 |  | -38d |  |
| 3-2088 |  | TRENCH CONDUIT, MLK SOUTH SIDE | 1d | 2023-09-16 | 2023-09-16 | 3-2087 SS |  | -38d |  |
| 3-2089 |  | ROADWAY PAVING, MLK SOUTH SIDE | 1d | 2023-09-17 | 2023-09-17 | 3-2088 |  | -38d |  |
|  | 2 | **16TH SOUTH SIDE** |  | 2022-04-09 | 2022-04-10 |  |  |  |  |
| 3-2031 |  | DEMO ROAD - COMMON EX - TYPE 2, 16TH SOUTH SIDE | 1d | 2022-04-09 A | 2022-04-09 A | 3-1863 SS, 3-2029, MS-2571 | 100% |  |  |
| 3-2032 |  | TRENCH CONDUIT, 16TH SOUTH SIDE | 1d | 2022-04-09 A | 2022-04-09 A | 3-2031 SS | 100% |  |  |
| 3-2033 |  | ROADWAY PAVING, 16TH SOUTH SIDE | 1d | 2022-04-10 A | 2022-04-10 A | 3-2032 | 100% |  |  |
|  | 3 | **17TH SOUTH SIDE** |  | 2023-07-18 | 2023-07-19 |  |  |  |  |
| 3-2035 |  | DEMO ROAD - COMMON EX - TYPE 2, 17TH SOUTH SIDE | 1d | 2023-07-18 A | 2023-07-18 A | 3-1872 SS, 3-2033, 3-1872 | 100% |  |  |
| 3-2036 |  | TRENCH CONDUIT, 17TH SOUTH SIDE | 1d | 2023-07-18 A | 2023-07-18 A | 3-2035 SS | 100% |  |  |
| 3-2037 |  | ROADWAY PAVING, 17TH SOUTH SIDE | 1d | 2023-07-19 A | 2023-07-19 A | 3-2036 | 100% |  |  |
|  | 4 | **18TH SOUTH SIDE** |  | 2023-07-20 | 2023-07-21 |  |  |  |  |
| 3-2039 |  | DEMO ROAD - COMMON EX - TYPE 2, 18TH SOUTH SIDE | 1d | 2023-07-20 A | 2023-07-20 A | 3-1879 SS, 3-2037, 3-2022 | 100% |  |  |
| 3-2040 |  | TRENCH CONDUIT, 18TH SOUTH SIDE | 1d | 2023-07-20 A | 2023-07-20 A | 3-2039 SS | 100% |  |  |
| 3-2041 |  | ROADWAY PAVING, 18TH SOUTH SIDE | 1d | 2023-07-21 A | 2023-07-21 A | 3-2040 | 100% |  |  |
|  | 5 | **17TH NORTH SIDE** |  | 2023-08-19 | 2023-08-20 |  |  |  |  |
| 3-2043 |  | DEMO ROAD - COMMON EX - TYPE 2, 17TH NORTH SIDE | 1d | 2023-08-19 | 2023-08-19 | 3-1886 SS, 3-2041 |  | -38d |  |
| 3-2044 |  | TRENCH CONDUIT, 17TH NORTH SIDE | 1d | 2023-08-19 | 2023-08-19 | 3-2043 SS |  | -38d |  |
| 3-2045 |  | ROADWAY PAVING, 17TH NORTH SIDE | 1d | 2023-08-20 | 2023-08-20 | 3-2044 |  | -38d |  |
|  | 6 | **18TH NORTH SIDE** |  | 2023-08-22 | 2023-08-23 |  |  |  |  |
| 3-2047 |  | DEMO ROAD - COMMON EX - TYPE 2, 18TH NORTH SIDE | 1d | 2023-08-22 | 2023-08-22 | 3-1893 SS, 3-2045, 3-1893 |  | -91d |  |
| 3-2048 |  | TRENCH CONDUIT, 18TH NORTH SIDE | 1d | 2023-08-22 | 2023-08-22 | 3-2047 SS |  | -91d |  |
| 3-2049 |  | ROADWAY PAVING, 18TH NORTH SIDE | 1d | 2023-08-23 | 2023-08-23 | 3-2048 |  | -91d |  |
|  | 7 | **19TH SOUTH SIDE** |  | 2023-08-26 | 2023-08-27 |  |  |  |  |
| 3-2051 |  | DEMO ROAD - COMMON EX - TYPE 2, 19TH SOUTH SIDE | 1d | 2023-08-26 | 2023-08-26 | 3-2049 |  | -38d |  |
| 3-2052 |  | TRENCH CONDUIT, 19TH SOUTH SIDE | 1d | 2023-08-26 | 2023-08-26 | 3-2051 SS |  | -38d |  |
| 3-2053 |  | ROADWAY PAVING, 19TH SOUTH SIDE | 1d | 2023-08-27 | 2023-08-27 | 3-2052 |  | -38d |  |
|  | 8 | **20TH SOUTH SIDE** |  | 2023-08-19 | 2023-08-20 |  |  |  |  |
| 3-2055 |  | DEMO ROAD - COMMON EX - TYPE 2, 20TH SOUTH SIDE | 1d | 2023-08-19 | 2023-08-19 | 3-1907 SS, 3-2069 |  | -36d |  |
| 3-2056 |  | TRENCH CONDUIT, 20TH SOUTH SIDE | 1d | 2023-08-19 | 2023-08-19 | 3-2055 SS |  | -36d |  |
| 3-2057 |  | ROADWAY PAVING, 20TH SOUTH SIDE | 1d | 2023-08-20 | 2023-08-20 | 3-2056 |  | -36d |  |
|  | 9 | **19TH NORTH SIDE** |  | 2023-09-02 | 2023-09-03 |  |  |  |  |
| 3-2059 |  | DEMO ROAD - COMMON EX - TYPE 2, 19TH NORTH SIDE | 1d | 2023-09-02 | 2023-09-02 | 3-1914 SS, 3-2057, 3-1898, 3-2053 |  | -38d |  |
| 3-2060 |  | TRENCH CONDUIT, 19TH NORTH SIDE | 1d | 2023-09-02 | 2023-09-02 | 3-2059 SS |  | -38d |  |
| 3-2061 |  | ROADWAY PAVING, 19TH NORTH SIDE | 1d | 2023-09-03 | 2023-09-03 | 3-2060, 3-2065 |  | -38d |  |
|  | 6 | **POLE FOUNDATIONS** |  | 2023-05-31 | 2023-09-01 |  |  |  |  |
| 3-2091 |  | INST POLE FOUNDATIONS, POLE FOUNDATIONS | 21d | 2023-05-31 A | 2023-09-01 | MS-0026, MS-2571, MS-2576 |  | 14d |  |
|  | 7 | **SIDEWALKS** |  | 2021-12-13 | 2023-11-06 |  |  |  |  |
|  | 1 | **15TH TO 16TH NORTH SIDE** |  | 2022-12-28 | 2023-01-06 |  |  |  |  |
| PCO500.01 |  | DSC 357-Extra thick sidewalks NW 16th | 5d | 2022-12-28 A | 2022-12-29 A |  | 100% |  |  |
| 3-2094 |  | REMOVE SIDEWALK, 15TH TO 16TH NORTH SIDE | 1d | 2022-12-28 A | 2022-12-28 A | 3-1870, MS-2571 | 100% |  |  |
| 3-2095 |  | TRENCH CONDUIT, 15TH TO 16TH NORTH SIDE | 1d | 2022-12-29 A | 2022-12-29 A | 3-2094 | 100% |  |  |
| 3-2096 |  | INST CONDUIT, 15TH TO 16TH NORTH SIDE | 1d | 2022-12-29 A | 2022-12-29 A | 3-2095 SS | 100% |  |  |
| 3-2097 |  | GRADE SIDEWALK, 15TH TO 16TH NORTH SIDE | 2d | 2022-12-30 A | 2023-01-03 A | 3-2096 | 100% |  |  |
| 3-2098 |  | POUR SIDEWALK, 15TH TO 16TH NORTH SIDE | 5d | 2023-01-04 A | 2023-01-06 A | 3-2097 | 100% |  |  |
|  | 4 | **15TH TO 16TH SOUTH SIDE** |  | 2023-09-21 | 2023-09-29 |  |  |  |  |
| 3-2112 |  | REMOVE SIDEWALK, 15TH TO 16TH SOUTH SIDE | 2d | 2023-09-21 | 2023-09-22 | 3-2109, 2-1327 |  | -94d | start on or after 2023-07-05 |
| 3-2113 |  | TRENCH CONDUIT, 15TH TO 16TH SOUTH SIDE | 1d | 2023-09-25 | 2023-09-25 | 3-2112 |  | -94d |  |
| 3-2114 |  | INST CONDUIT, 15TH TO 16TH SOUTH SIDE | 1d | 2023-09-25 | 2023-09-25 | 3-2113 SS |  | -94d |  |
| 3-2115 |  | GRADE SIDEWALK, 15TH TO 16TH SOUTH SIDE | 1d | 2023-09-26 | 2023-09-26 | 3-2114 |  | -94d |  |
| 3-2116 |  | POUR SIDEWALK, 15TH TO 16TH SOUTH SIDE | 3d | 2023-09-27 | 2023-09-29 | 3-2115, 3-2110 FF |  | -94d |  |
|  | 2 | **DRIVEWAY BETWEEN 15TH AND 16TH NORTH SIDE** |  | 2023-09-23 | 2023-09-24 |  |  |  |  |
| 3-2100 |  | REM SIDEWALK, DRIVEWAY BETWEEN 15TH & 16TH NORTH SIDE | 1d | 2023-09-23 | 2023-09-23 | 3-2098, 3-2112 SS |  | -38d |  |
| 3-2101 |  | INST CONDUIT, DRIVEWAY BETWEEN 15TH & 16TH NORTH SIDE | 1d | 2023-09-23 | 2023-09-23 | 3-2100 SS |  | -38d |  |
| 3-2102 |  | POUR DRIVEWAY, DRIVEWAY BETWEEN 15TH & 16TH NORTH SIDE | 1d | 2023-09-24 | 2023-09-24 | 3-2101 |  | -38d |  |
|  | 3 | **16TH TO 17TH NORTH SIDE** |  | 2023-05-02 | 2023-05-31 |  |  |  |  |
| PCO659.01 |  | DSC 465-EXTRA THICK SIDEWALK | 1d | 2023-05-02 A | 2023-05-02 A |  | 100% |  |  |
| 3-2104 |  | REMOVE SIDEWALK, 16TH TO 17TH NORTH SIDE | 1d | 2023-05-03 A | 2023-05-05 A | 3-2097 | 100% |  |  |
| 3-2105 |  | TRENCH CONDUIT, 16TH TO 17TH NORTH SIDE | 2d | 2023-05-04 A | 2023-05-11 A | 3-2104 | 100% |  |  |
| 3-2106 |  | INST CONDUIT, 16TH TO 17TH NORTH SIDE | 2d | 2023-05-04 A | 2023-05-15 A | 3-2105 SS | 100% |  |  |
| 3-2107 |  | FORM BUS STATION FOUNDATIONS, 16TH TO 17TH NORTH SIDE | 2d | 2023-05-09 A | 2023-05-10 A | 3-2106 | 100% |  |  |
| 3-2108 |  | POUR BUS STATION FOUNDATIONS, 16TH TO 17TH NORTH SIDE | 1d | 2023-05-17 A | 2023-05-17 A | 3-2107 | 100% |  |  |
| 3-2109 |  | GRADE SIDEWALK, 16TH TO 17TH NORTH SIDE | 2d | 2023-05-18 A | 2023-05-19 A | 3-2108 | 100% |  |  |
| 3-2110 |  | POUR SIDEWALK, 16TH TO 17TH NORTH SIDE | 5d | 2023-05-22 A | 2023-05-24 A | 3-2109 | 100% |  |  |
| 3-2189 |  | INSTALL WHEEL GUIDES | 1d | 2023-05-31 A | 2023-05-31 A | 3-2109 | 100% |  |  |
|  | 5 | **16TH TO 17TH SOUTH SIDE** |  | 2023-01-23 | 2023-04-18 |  |  |  |  |
| 3-2118 |  | REMOVE SIDEWALK, 16TH TO 17TH SOUTH SIDE | 2d | 2023-01-23 A | 2023-01-24 A | 3-2098 | 100% |  |  |
| PCO539.01 |  | DSC 379-SE Corner Madison and 16th Signal Wire Conflict | 5d | 2023-01-25 A | 2023-03-30 A | 3-2118 | 100% |  |  |
| 3-2119 |  | TRENCH CONDUIT, 16TH TO 17TH SOUTH SIDE | 2d | 2023-01-25 A | 2023-01-26 A | 3-2118 | 100% |  |  |
| 3-2645 |  | OWNER DELAY - DESIGN ISSUES, 16TH TO 17TH SOUTH SIDE | 2d | 2023-01-27 A | 2023-03-03 A | 3-2119 | 100% |  |  |

| ID | WBS | Task | Duration | Start | Finish | Predecessors | Complete | Total float | Constraint |
| --- | --- | --- | --- | --- | --- | --- | --- | --- | --- |
| PCO543.01 |  | DSC 383-South Crossing Madison and 16th Type 3 HH | 5d | 2023-01-27 A | 2023-03-30 A |  | 100% |  |  |
| 3-2675 |  | EXTRA WORK - DESIGN ISSUES, 16TH TO 17TH SOUTH SIDE | 2d | 2023-03-06 A | 2023-03-10 A | 3-2645 | 100% |  |  |
| 3-2120 |  | INST CONDUIT, 16TH TO 17TH SOUTH SIDE | 2d | 2023-03-13 A | 2023-03-30 A | 3-2119 SS, 3-2645, 3-2675 | 100% |  |  |
| 3-2121 |  | GRADE SIDEWALK, 16TH TO 17TH SOUTH SIDE | 2d | 2023-04-03 A | 2023-04-04 A | 3-2120, PCO539.01, PCO543.01 | 100% |  |  |
| 3-2122 |  | POUR SIDEWALK, 16TH TO 17TH SOUTH SIDE | 5d | 2023-04-12 A | 2023-04-18 A | 3-2121, PCO539.01 | 100% |  |  |
|  | 32 | **MID BLOCK 16TH TO 17TH** |  | 2023-06-14 | 2023-08-30 |  |  |  |  |
| 3-7941 |  | REMOVE SIDEWALK | 2d | 2023-06-14 A | 2023-06-15 A | 3-2122 | 100% |  | start on or after 2023-06-14 |
| 3-7943 |  | DSC 522 EXISTING LEAKING SPIGOT | 1d | 2023-06-15 A | 2023-06-15 A | 3-7941 SS+1d | 100% |  |  |
| 3-7944 |  | DSC 523 EXTRA THICK SIDEWALK | 1d | 2023-06-15 A | 2023-06-15 A | 3-7941 SS+1d | 100% |  |  |
| 3-7942 |  | TRENCH CONDUIT | 8d | 2023-06-16 A | 2023-06-27 A | 3-7941 | 100% |  |  |
| 3-7945 |  | DSC 525 COMM CONFLICT WITH ELECTRICAL | 13d | 2023-06-16 A | 2023-08-14 | 3-7942 SS |  | -90d |  |
| 3-7946 |  | DSC 526 CDF BACKFILL | 4d | 2023-06-16 A | 2023-06-21 A | 3-7941 | 100% |  |  |
| 3-7947 |  | DSC 527 UNKNOWN UNLOCATED CONDUIT CONFLICT WITH ELECTRICAL | 13d | 2023-06-16 A | 2023-08-14 | 3-7942 SS |  | -96d |  |
| 3-7948 |  | DSC 532 CONDUIT CONFLICT | 11d | 2023-06-20 A | 2023-08-14 | 3-7947 SS+2d |  | -96d |  |
| 3-7949 |  | DSC 535 LIVE WIRE | 1d | 2023-06-20 A | 2023-06-20 A | 3-7948 SS | 100% |  |  |
| 3-7950 |  | DSC 536 UNKNOWN UNLOCATED CONDUITS | 10d | 2023-06-21 A | 2023-08-14 | 3-7949 |  | -96d |  |
| 3-7951 |  | INSTALL ELECTRICAL | 6d | 2023-08-15 | 2023-08-22 | 3-7942, 3-7943, 3-7944, 3-7946, 3-7950, 3-7948 |  | -96d | start on or after 2023-07-03 |
| 3-7952 |  | GRADE SIDEWALKS | 1d | 2023-08-23 | 2023-08-23 | 3-7951, 3-7948, 3-7949, 3-7950, 3-7945, 3-7947 |  | -96d |  |
| 3-7953 |  | ROADWAY PANEL | 2d | 2023-08-24 | 2023-08-25 | 3-7952 |  | -96d |  |
| 3-7954 |  | CURB RAMPS | 2d | 2023-08-28 | 2023-08-29 | 3-7953 |  | -96d |  |
| 3-7955 |  | SIDEWALKS | 1d | 2023-08-30 | 2023-08-30 | 3-7954 |  | -96d |  |
|  | 6 | **17TH TO 18TH SOUTH SIDE** |  | 2023-09-01 | 2023-09-25 |  |  |  |  |
| 3-2124 |  | REMOVE SIDEWALK, 17TH TO 18TH SOUTH SIDE | 2d | 2023-09-01 | 2023-09-05 | 3-2122, 3-1875, 3-1898, 3-7955 |  | -97d |  |
| 3-2125 |  | TRENCH CONDUIT, 17TH TO 18TH SOUTH SIDE | 2d | 2023-09-06 | 2023-09-07 | 3-2124 |  | -97d |  |
| 3-2126 |  | INST CONDUIT, 17TH TO 18TH SOUTH SIDE | 2d | 2023-09-06 | 2023-09-07 | 3-2125 SS |  | -97d |  |
| 3-2127 |  | FORM BUS STATION FOUNDATIONS, 17TH TO 18TH SOUTH SIDE | 2d | 2023-09-08 | 2023-09-11 | 3-2126 |  | -97d |  |
| 3-2128 |  | POUR BUS STATION FOUNDATIONS, 17TH TO 18TH SOUTH SIDE | 1d | 2023-09-12 | 2023-09-12 | 3-2127 |  | -97d |  |
| 3-2129 |  | GRADE SIDEWALK, 17TH TO 18TH SOUTH SIDE | 3d | 2023-09-13 | 2023-09-15 | 3-2128 |  | -97d |  |
| 3-2130 |  | POUR SIDEWALK, 17TH TO 18TH SOUTH SIDE | 6d | 2023-09-18 | 2023-09-25 | 3-2129, 3-2135 FF |  | -97d |  |
| 3-2135 |  | INSTALL WHEEL GUIDES | 1d | 2023-09-18 | 2023-09-18 | 3-2129 |  | -92d |  |
|  | 7 | **DRIVEWAYS BETWEEN 17TH AND 18TH SOUTH SIDE** |  | 2023-09-09 | 2023-09-10 |  |  |  |  |
| 3-2132 |  | REM SIDEWALK, DRIVEWAYS BETWEEN 17TH & 18TH SOUTH SIDE | 1d | 2023-09-09 | 2023-09-09 | 3-2124 |  | 6d |  |
| 3-2133 |  | INST CONDUIT, DRIVEWAYS BETWEEN 17TH & 18TH SOUTH SIDE | 1d | 2023-09-09 | 2023-09-09 | 3-2132 SS |  | 6d |  |
| 3-2134 |  | POUR DRIVEWAYS, DRIVEWAYS BETWEEN 17TH & 18TH SOUTH SIDE | 1d | 2023-09-10 | 2023-09-10 | 3-2133 |  | 6d |  |
|  | 8 | **18TH TO 19TH SOUTH SIDE** |  | 2023-09-18 | 2023-09-28 |  |  |  |  |
| 3-2136 |  | REMOVE SIDEWALK, 18TH TO 19TH SOUTH SIDE | 1d | 2023-09-18 | 2023-09-18 | 3-2129, 3-1884, 3-2129 FF |  | -95d |  |
| 3-2137 |  | TRENCH CONDUIT, 18TH TO 19TH SOUTH SIDE | 1d | 2023-09-19 | 2023-09-19 | 3-2136 |  | -95d |  |
| 3-2138 |  | INST CONDUIT, 18TH TO 19TH SOUTH SIDE | 1d | 2023-09-19 | 2023-09-19 | 3-2137 SS |  | -95d |  |
| 3-2139 |  | GRADE SIDEWALK, 18TH TO 19TH SOUTH SIDE | 2d | 2023-09-20 | 2023-09-21 | 3-2138 |  | -95d |  |
| 3-2140 |  | POUR SIDEWALK, 18TH TO 19TH SOUTH SIDE | 3d | 2023-09-26 | 2023-09-28 | 3-2139, 3-2130 FF, 3-2130 |  | -97d |  |
|  | 9 | **17TH TO 18TH NORTH SIDE** |  | 2023-09-29 | 2023-10-11 |  |  |  |  |
| 3-2142 |  | REMOVE SIDEWALK, 17TH TO 18TH NORTH SIDE | 1d | 2023-09-29 | 2023-09-29 | 3-1898, 3-2140 |  | -97d |  |
| 3-2143 |  | TRENCH CONDUIT, 17TH TO 18TH NORTH SIDE | 1d | 2023-10-02 | 2023-10-02 | 3-2142 |  | -97d |  |
| 3-2144 |  | INST CONDUIT, 17TH TO 18TH NORTH SIDE | 1d | 2023-10-02 | 2023-10-02 | 3-2143 SS |  | -97d |  |
| 3-2145 |  | GRADE SIDEWALK, 17TH TO 18TH NORTH SIDE | 2d | 2023-10-03 | 2023-10-04 | 3-2144 |  | -97d |  |
| 3-2146 |  | POUR SIDEWALK, 17TH TO 18TH NORTH SIDE | 5d | 2023-10-05 | 2023-10-11 | 3-2145, 3-1896 |  | -96d |  |
|  | 10 | **DRIVEWAY BETWEEN 17TH AND 18TH NORTH SIDE** |  | 2023-09-30 | 2023-10-01 |  |  |  |  |
| 3-2148 |  | REM SIDEWALK, DRIVEWAY BETWEEN 17TH & 18TH NORTH SIDE | 1d | 2023-09-30 | 2023-09-30 | 3-2142, 3-2136 SS |  | -39d |  |
| 3-2149 |  | INST CONDUIT, DRIVEWAY BETWEEN 17TH & 18TH NORTH SIDE | 1d | 2023-09-30 | 2023-09-30 | 3-2148 SS |  | -26d |  |
| 3-2150 |  | POUR DRIVEWAYS, DRIVEWAY BETWEEN 17TH & 18TH NORTH SIDE | 1d | 2023-10-01 | 2023-10-01 | 3-2149 |  | -26d |  |
|  | 11 | **18TH TO 19TH NORTH SIDE** |  | 2023-10-05 | 2023-10-18 |  |  |  |  |
| 3-2152 |  | REMOVE SIDEWALK, 18TH TO 19TH NORTH SIDE | 2d | 2023-10-05 | 2023-10-06 | 3-2145, 3-2148, 3-2145 FF, 3-2116, 3-2102 |  | -97d |  |
| 3-2153 |  | TRENCH CONDUIT, 18TH TO 19TH NORTH SIDE | 2d | 2023-10-09 | 2023-10-10 | 3-2152 |  | -97d |  |
| 3-2154 |  | INST CONDUIT, 18TH TO 19TH NORTH SIDE | 2d | 2023-10-09 | 2023-10-10 | 3-2153 SS |  | -97d |  |
| 3-2155 |  | GRADE SIDEWALK, 18TH TO 19TH NORTH SIDE | 2d | 2023-10-11 | 2023-10-12 | 3-2154 |  | -97d |  |
| 3-2156 |  | POUR SIDEWALK, 18TH TO 19TH NORTH SIDE | 4d | 2023-10-13 | 2023-10-18 | 3-2155, 3-2146, 3-2146 FF |  | -97d |  |
|  | 12 | **19TH TO 20TH NORTH SIDE** |  | 2023-07-18 | 2023-08-23 |  |  |  |  |
| 3-2158 |  | REMOVE SIDEWALK, 19TH TO 20TH NORTH SIDE | 2d | 2023-07-18 A | 2023-07-18 A | 3-1926 | 100% |  |  |
| 3-2159 |  | TRENCH CONDUIT, 19TH TO 20TH NORTH SIDE | 2d | 2023-07-19 A | 2023-07-19 A | 3-2158 | 100% |  |  |
| 3-2160 |  | INST CONDUIT, 19TH TO 20TH NORTH SIDE | 2d | 2023-07-19 A | 2023-07-24 A | 3-2159 SS | 100% |  |  |
| DSC-568 |  | DSC 568 PAVEMENT INSTALLED BY SPU NOT PER PLAN | 15d | 2023-07-25 A | 2023-08-14 |  | 93% | -39d |  |
| 3-2161 |  | GRADE SIDEWALK, 19TH TO 20TH NORTH SIDE | 2d | 2023-08-15 | 2023-08-16 | 3-2160, DSC-568 |  | -39d |  |
| 3-2162 |  | POUR SIDEWALK, 19TH TO 20TH NORTH SIDE | 5d | 2023-08-17 | 2023-08-23 | 3-2161 |  | -39d |  |
|  | 13 | **20TH TO DENNY NORTH SIDE** |  | 2023-02-28 | 2023-05-31 |  |  |  |  |
| 3-2164 |  | REM SIDEWALK, 20TH TO DENNY NORTH SIDE | 2d | 2023-02-28 A | 2023-02-28 A | 3-2073 | 100% |  |  |
| 3-2165 |  | TRENCH CONDUIT, 20TH TO DENNY NORTH SIDE | 3d | 2023-03-02 A | 2023-03-02 A | 3-2164 | 100% |  |  |
| 3-2166 |  | INST CONDUIT, 20TH TO DENNY NORTH SIDE | 3d | 2023-03-02 A | 2023-03-03 A | 3-2165 SS | 100% |  |  |
| 3-2167 |  | FORM BUS STATION FOUNDATIONS, 20TH TO DENNY NORTH SIDE | 2d | 2023-03-09 A | 2023-03-10 A | 3-2166 | 100% |  |  |
| 3-2168 |  | POUR BUS STATION FOUNDATIONS, 20TH TO DENNY NORTH SIDE | 1d | 2023-03-13 A | 2023-03-13 A | 3-2167 | 100% |  |  |
| 3-2169 |  | GRADE SIDEWALK, 20TH TO DENNY NORTH SIDE | 3d | 2023-03-27 A | 2023-03-31 A | 3-2168 | 100% |  |  |

| ID | WBS | Task | Duration | Start | Finish | Predecessors | Complete | Total float | Constraint |
| --- | --- | --- | --- | --- | --- | --- | --- | --- | --- |
| 3-3355 |  | ADDED STRAIN POLE FOUNDATION | 6d | 2023-04-03 A | 2023-05-05 A | 3-2169 | 100% |  |  |
| PCO628.01 |  | DSC 440-SIDE SEWER CONFLICT WITH POLE FOUNDATION | 6d | 2023-04-04 A | 2023-05-05 A | 3-3355 SS | 100% |  |  |
| 3-2170 |  | POUR SIDEWALK, OTHER THAN THE DELAYED SIDEWALK | 6d | 2023-04-11 A | 2023-04-17 A | 3-2169 | 100% |  |  |
| 3-3360 |  | COMPLETE SIDEWALK AFTER DSC 440 | 6d | 2023-05-08 A | 2023-05-10 A | 3-2169, PCO628.01 | 100% |  |  |
| 3-2205 |  | INSTALL WHEEL GUIDES | 1d | 2023-05-31 A | 2023-05-31 A | 3-2169 | 100% |  |  |
|  | 14 | **19TH TO 20TH SOUTH SIDE** |  | 2023-07-24 | 2023-08-18 |  |  |  |  |
| 3-2172 |  | REMOVE SIDEWALK, 19TH TO 20TH SOUTH SIDE | 1d | 2023-07-24 A | 2023-07-24 A | 3-2169, 3-1912, 3-2160 | 100% |  |  |
| 3-2173 |  | TRENCH CONDUIT, 19TH TO 20TH SOUTH SIDE | 2d | 2023-07-25 A | 2023-07-25 A | 3-2172 | 100% |  |  |
| 3-2174 |  | INST CONDUIT, 19TH TO 20TH SOUTH SIDE | 2d | 2023-07-25 A | 2023-08-07 A | 3-2173 SS | 100% |  |  |
| 3-2175 |  | GRADE SIDEWALK, 19TH TO 20TH SOUTH SIDE | 2d | 2023-08-08 A | 2023-08-09 A | 3-2174 | 100% |  |  |
| 3-2176 |  | POUR SIDEWALK, 19TH TO 20TH SOUTH SIDE | 5d | 2023-08-14 | 2023-08-18 | 3-2175, 3-2170, 3-3360 |  | -36d |  |
|  | 44 | **DENNY SW CORNER** |  | 2023-04-24 | 2023-05-19 |  |  |  |  |
| 3-3365 |  | REM SIDEWALK, DENNY SE CORNER | 2d | 2023-04-24 A | 2023-04-24 A | 3-2122 | 100% |  |  |
| PCO648.01 |  | DSC 458-CONCRETE OBSTRUCTION SIGNAL CONDUIT | 2d | 2023-04-24 A | 2023-04-24 A | 3-3365 | 100% |  |  |
| 3-3370 |  | TRENCH CONDUIT, DENNY SE CORNER | 2d | 2023-04-27 A | 2023-04-28 A | 3-3365 | 100% |  |  |
| 3-3375 |  | INST CONDUIT, DENNY SE CORNER | 2d | 2023-05-01 A | 2023-05-02 A | 3-3370 SS, PCO648.01 | 100% |  |  |
| 3-3380 |  | GRADE SIDEWALK, DENNY SE CORNER | 2d | 2023-05-08 A | 2023-05-09 A | 3-3375 | 100% |  |  |
| 3-3385 |  | POUR SIDEWALK, DENNY SE CORNER | 5d | 2023-05-12 A | 2023-05-19 A | 3-3380 | 100% |  |  |
| PCO679.01 |  | DSC 481-EXISTING POLE FOUNDATION CONFLCIT WITH CURB RAMP | 2d | 2023-05-12 A | 2023-05-15 A |  | 100% |  |  |
|  | 48 | **20TH SE CORNER** |  | 2023-05-11 | 2023-05-31 |  |  |  |  |
| 3-3530 |  | REM SIDEWALK, 20TH SE CORNER | 2d | 2023-05-11 A | 2023-05-11 A | 3-3365 | 100% |  |  |
| 3-3535 |  | TRENCH CONDUIT, 20TH SE CORNER | 2d | 2023-05-12 A | 2023-05-15 A | 3-3530 | 100% |  |  |
| PCO694.01 |  | DSC 496-UNKNOWN UNLOCATED CONDUIT | 2d | 2023-05-12 A | 2023-05-15 A |  | 100% |  |  |
| 3-3540 |  | INST CONDUIT, 20TH SE CORNER | 2d | 2023-05-16 A | 2023-05-19 A | 3-3535 SS | 100% |  |  |
| 3-3545 |  | GRADE SIDEWALK, 20TH SE CORNER | 2d | 2023-05-22 A | 2023-05-22 A | 3-3540 | 100% |  |  |
| 3-3550 |  | POUR SIDEWALK, 20TH SE CORNER | 5d | 2023-05-25 A | 2023-05-31 A | 3-3545 | 100% |  |  |
|  | 16 | **DENNY TO 23RD NORTH SIDE** |  | 2023-02-09 | 2023-03-20 |  |  |  |  |
| 3-2184 |  | REM SIDEWALK, DENNY TO 23TH NORTH SIDE | 2d | 2023-02-09 A | 2023-03-17 A | 3-1940, 3-2660 | 100% |  |  |
| 3-2185 |  | TRENCH CONDUIT, DENNY TO 23TH NORTH SIDE | 2d | 2023-02-13 A | 2023-02-14 A | 3-2184 | 100% |  |  |
| 3-2186 |  | INST CONDUIT, DENNY TO 23TH NORTH SIDE | 2d | 2023-02-13 A | 2023-02-17 A | 3-2185 SS | 100% |  |  |
| PCO570.01 |  | DSC 401-Prime NE Denny type 3 HH doesn't work | 5d | 2023-02-17 A | 2023-03-09 A |  | 100% |  |  |
| 3-2670 |  | DELAY DESIGN ISSUES | 2d | 2023-02-20 A | 2023-03-09 A | 3-2186 | 100% |  |  |
| 3-2187 |  | GRADE SIDEWALK, DENNY TO 23TH NORTH SIDE | 2d | 2023-03-10 A | 2023-03-10 A | 3-2186, 3-2670 | 100% |  |  |
| 3-2188 |  | POUR SIDEWALK, DENNY TO 23TH NORTH SIDE | 5d | 2023-03-13 A | 2023-03-20 A | 3-2187 | 100% |  |  |
|  | 17 | **DENNY TO 23RD SOUTH SIDE** |  | 2022-12-28 | 2023-08-16 |  |  |  |  |
| 3-2190 |  | REM SIDEWALK, DENNY TO 23RD SOUTH SIDE | 2d | 2022-12-28 A | 2022-12-29 A | 3-1933 | 100% |  |  |
| 3-2191 |  | TRENCH CONDUIT, DENNY TO 23RD SOUTH SIDE | 3d | 2022-12-28 A | 2022-12-29 A | 3-2190 | 100% |  |  |
| 3-2192 |  | INST CONDUIT, DENNY TO 23RD SOUTH SIDE | 3d | 2022-12-30 A | 2023-01-13 A | 3-2191 SS | 100% |  |  |
| 3-2650 |  | FOUNDATION DELAY - CONFLICT WITH HANDHOLES; DENNY TO 23RD SOUTH SIDE | 2d | 2022-12-30 A | 2023-06-01 A | 3-2192 SS | 100% |  |  |
| PCO501.01 |  | DSC 358-HH in conflict with Bus Foundation EB Denny | 5d | 2023-01-04 A | 2023-06-06 A |  | 100% |  |  |
| 3-2655 |  | GRADE SIDEWALK OTHER THAN SHELTER AREA, DENNY TO 23RD SOUTH SIDE | 3d | 2023-01-17 A | 2023-01-20 A | 3-2192 | 100% |  |  |
| 3-2660 |  | POUR SIDEWALK OTHER THAN SHELTER AREA, DENNY TO 23RD SOUTH SIDE | 6d | 2023-01-23 A | 2023-01-26 A | 3-2655 | 100% |  |  |
| 3-2193 |  | FORM BUS STATION FOUNDATIONS, DENNY TO 23RD SOUTH SIDE | 2d | 2023-04-24 A | 2023-04-25 A | 3-2192, 3-2650 SS | 100% |  |  |
| 3-2194 |  | POUR BUS STATION FOUNDATIONS, DENNY TO 23RD SOUTH SIDE | 1d | 2023-04-26 A | 2023-04-26 A | 3-2193 | 100% |  |  |
| 3-2195 |  | GRADE SIDEWALK, DENNY TO 23RD SOUTH SIDE | 3d | 2023-05-05 A | 2023-05-05 A | 3-2194, 3-2660 | 100% |  |  |
| 3-2196 |  | POUR SIDEWALK, DENNY TO 23RD SOUTH SIDE | 6d | 2023-05-08 A | 2023-05-19 A | 3-2195 | 100% |  |  |
| PCO671.01 |  | DSC 474-EXISTING HH'S TOO HIGH FOR SIDEWALK | 5d | 2023-05-09 A | 2023-08-14 | PCO501.01 | 90% | 95.5d |  |
| 3-3520 |  | FINISH SIDEWALK AFTER DSC 474 | 1d | 2023-08-14 | 2023-08-15 | PCO671.01, 3-2238 |  | 95.5d |  |
| 3-2201 |  | INSTALL WHEEL GUIDES | 1d | 2023-08-15 | 2023-08-16 | 3-2195, 3-3520 |  | 95.5d |  |
|  | 20 | **23RD TO 24TH SOUTH SIDE** |  | 2023-05-18 | 2023-06-20 |  |  |  |  |
| 3-2206 |  | REMOVE SIDEWALK, 23RD TO 24TH SOUTH SIDE | 2d | 2023-05-18 A | 2023-05-18 A | 3-1954, 3-2196, 3-2081 | 100% |  |  |
| 3-2209 |  | GRADE SIDEWALK, 23RD TO 24TH SOUTH SIDE | 2d | 2023-05-19 A | 2023-05-23 A | 3-2206 | 100% |  |  |
| 3-2210 |  | POUR SIDEWALK, 23RD TO 24TH SOUTH SIDE | 5d | 2023-05-24 A | 2023-06-06 A | 3-2209, 3-2208 FF | 100% |  |  |
| 3-6200 |  | REMOVE SIDEWALK BULLNOSE | 1d | 2023-05-26 A | 2023-05-26 A |  | 100% |  | start on or after 2023-05-26 |
| 3-6210 |  | TRENCH CONDUIT BULENOSE | 1d | 2023-05-30 A | 2023-05-30 A | 3-6200 | 100% |  |  |
| 3-2207 |  | TRENCH CONDUIT, 23RD TO 24TH SOUTH SIDE | 2d | 2023-05-31 A | 2023-06-01 A | 3-2206 | 100% |  |  |
| 3-2208 |  | INST CONDUIT, 23RD TO 24TH SOUTH SIDE | 2d | 2023-05-31 A | 2023-06-01 A | 3-2207 SS | 100% |  |  |
| 3-6211 |  | INSTALL CONDUIT BULLNOSE | 3d | 2023-05-31 A | 2023-06-02 A | 3-6210 | 100% |  |  |
| 3-6212 |  | GRADE SIDEWALK BULLNOSE | 1d | 2023-06-05 A | 2023-06-05 A | 3-6211 | 100% |  |  |
| 3-6213 |  | CURB RAMPS BULLNOSE | 2d | 2023-06-08 A | 2023-06-09 A | 3-6212 | 100% |  | start on or after 2023-06-08 |
| 3-6214 |  | DSC 521 TYPE 5 HH CONFLICT | 6d | 2023-06-12 A | 2023-06-19 A | 3-6213 | 100% |  |  |
| 3-6215 |  | SIDEWALKS BULLNOSE | 1d | 2023-06-20 A | 2023-06-20 A | 3-6213, 3-6214, 3-4103 | 100% |  |  |
|  | 21 | **DRIVWAYS BETWEEN 23RD AND 24 SOUTH SIDE** |  | 2023-06-07 | 2023-06-07 |  |  |  |  |
| 3-2212 |  | REM SIDEWALK, DRIVWAYS BETWEEN 23RD & 24 SOUTH SIDE | 1d | 2023-06-07 A | 2023-06-07 A | 3-2206 SS, 3-2210 | 100% |  |  |
| 3-2213 |  | INST CONDUIT, DRIVWAYS BETWEEN 23RD & 24 SOUTH SIDE | 1d | 2023-06-07 A | 2023-06-07 A | 3-2212 SS | 100% |  |  |
| 3-2214 |  | POUR DRIVEWAY, DRIVWAYS BETWEEN 23RD & 24 SOUTH SIDE | 1d | 2023-06-07 A | 2023-06-07 A | 3-2213 SS | 100% |  |  |
|  | 22 | **23RD TO 24TH NORTH SIDE-PHASE 1 CITY DIRECTED** |  | 2023-03-20 | 2023-06-05 |  |  |  |  |
| 3-2216 |  | REMOVE SIDEWALK, 23RD TO 24TH NORTH SIDE | 2d | 2023-03-20 A | 2023-03-21 A | 3-2188 | 100% |  |  |
| 3-2217 |  | TRENCH CONDUIT, 23RD TO 24TH NORTH SIDE | 2d | 2023-03-20 A | 2023-03-23 A | 3-2216 | 100% |  |  |
| 3-2218 |  | INST CONDUIT, 23RD TO 24TH NORTH SIDE | 2d | 2023-03-22 A | 2023-03-31 A | 3-2217 SS | 100% |  |  |

| ID | WBS | Task | Duration | Start | Finish | Predecessors | Complete | Total float | Constraint |
| --- | --- | --- | --- | --- | --- | --- | --- | --- | --- |
| PCO615.01 |  | DSC 430-DUCT BANK CONFLICT WITH ELECTRICAL | 2d | 2023-03-22 A | 2023-03-31 A |  | 100% |  |  |
| 3-2219 |  | GRADE SIDEWALK, 23RD TO 24TH NORTH SIDE | 2d | 2023-04-05 A | 2023-04-07 A | 3-2218 | 100% |  |  |
| PCO629.01 |  | DSC 441-PED POLE FOUNDATION CONFLICT WITH DUCT BANK | 2d | 2023-04-07 A | 2023-04-07 A |  | 100% |  |  |
| 3-2220 |  | POUR SIDEWALK, 23RD TO 24TH NORTH SIDE | 4d | 2023-04-10 A | 2023-04-13 A | 3-2219 | 100% |  |  |
| 3-2285 |  | INSTALL WHEEL GUIDES | 4d | 2023-05-31 A | 2023-06-05 A | 3-2220 | 100% |  |  |
|  | 45 | **23RD TO 24TH NORTH SIDE-PHASE 2 CITY DIRECTED** |  | 2023-04-14 | 2023-05-02 |  |  |  |  |
| 3-3390 |  | REMOVE SIDEWALK, 23RD TO 24TH NORTH SIDE | 2d | 2023-04-14 A | 2023-04-14 A | 3-2220 | 100% |  |  |
| 3-3395 |  | TRENCH CONDUIT, PRIOR TO DSC | 2d | 2023-04-14 A | 2023-04-14 A | 3-3390 SS | 100% |  |  |
| PCO638.01 |  | DSC 449-CDF CONFLICT WITH TRENCH | 2d | 2023-04-17 A | 2023-04-17 A | 3-3395 | 100% |  |  |
| 3-3465 |  | TRENCH CONDUIT, AFTER DSC | 2d | 2023-04-18 A | 2023-04-19 A | PCO638.01 | 100% |  |  |
| 3-3400 |  | INST CONDUIT, 23RD TO 24TH NORTH SIDE | 2d | 2023-04-20 A | 2023-04-25 A | 3-3395 SS | 100% |  |  |
| 3-3405 |  | GRADE SIDEWALK, 23RD TO 24TH NORTH SIDE | 2d | 2023-04-26 A | 2023-04-26 A | 3-3400, 3-3465 | 100% |  |  |
| 3-3495 |  | CURB RAMPS, 23RD TO 24TH NORTH SIDE | 4d | 2023-04-27 A | 2023-04-28 A | 3-3405 | 100% |  |  |
| 3-3410 |  | POUR SIDEWALK, 23RD TO 24TH NORTH SIDE | 4d | 2023-05-01 A | 2023-05-02 A | 3-3405, 3-3495 | 100% |  |  |
|  | 46 | **23RD TO 24TH NORTH SIDE-PHASE 3 CITY DIRECTED** |  | 2023-05-03 | 2023-05-15 |  |  |  |  |
| 3-3460 |  | SAWCUT SIDEWALK LIKE SWISS CHEESE | 2d | 2023-05-03 A | 2023-05-03 A | 3-3410 | 100% |  |  |
| 3-3435 |  | REMOVE SIDEWALK, 23RD TO 24TH NORTH SIDE | 2d | 2023-05-04 A | 2023-05-05 A | 3-3460 | 100% |  |  |
| 3-3440 |  | TRENCH CONDUIT, 23RD TO 24TH NORTH SIDE | 2d | 2023-05-08 A | 2023-05-10 A | 3-3435 | 100% |  |  |
| 3-3445 |  | INST CONDUIT, 23RD TO 24TH NORTH SIDE | 2d | 2023-05-08 A | 2023-05-10 A | 3-3440 SS | 100% |  |  |
| PCO666.01 |  | DSC 469-LEAKING SPU WATER SERVICE | 2d | 2023-05-08 A | 2023-05-08 A |  | 100% |  |  |
| PCO673.01 |  | DSC 476-LEAKING SPU WATER SERVICE | 2d | 2023-05-10 A | 2023-05-10 A |  | 100% |  |  |
| 3-3450 |  | GRADE SIDEWALK, 23RD TO 24TH NORTH SIDE | 2d | 2023-05-11 A | 2023-05-11 A | 3-3445 | 100% |  |  |
| 3-3455 |  | POUR SIDEWALK, 23RD TO 24TH NORTH SIDE | 4d | 2023-05-15 A | 2023-05-15 A | 3-3450 | 100% |  |  |
|  | 49 | **24TH TO 25TH NORTH SIDE Partial** |  | 2023-05-31 | 2023-06-13 |  |  |  |  |
| 3-4000 |  | REMOVE SIDEWALK | 1d | 2023-05-31 A | 2023-05-31 A |  | 100% |  |  |
| 3-4100 |  | TRENCH CONDUIT | 2d | 2023-06-01 A | 2023-06-02 A | 3-4000 | 100% |  |  |
| 3-4101 |  | INSTALL CONDUIT | 2d | 2023-06-05 A | 2023-06-06 A | 3-4100 | 100% |  |  |
| 3-4102 |  | GRADE SIDEWALK | 2d | 2023-06-07 A | 2023-06-08 A | 3-4101 | 100% |  |  |
| 3-4103 |  | POUR SIDEWALK | 3d | 2023-06-09 A | 2023-06-13 A | 3-4102 | 100% |  |  |
|  | 50 | **24th NE CORNER** |  | 2023-06-21 | 2023-07-21 |  |  |  |  |
| 3-8210 |  | REMOVE SIDEWALK | 3d | 2023-06-21 A | 2023-06-23 A | 3-3455 | 100% |  | start on or after 2023-06-21 |
| 3-8211 |  | TRENCH CONDUIT | 3d | 2023-06-26 A | 2023-06-28 A | 3-8210 | 100% |  |  |
| 3-8212 |  | DSC 541 Duct Bank Conflict | 1d | 2023-06-28 A | 2023-06-28 A | 3-8211 | 100% |  |  |
| 3-8213 |  | INSTALL CONDUIT | 3d | 2023-06-29 A | 2023-07-11 A | 3-8211 SS, 3-8212 | 100% |  | start on or after 2023-06-26 |
| 3-8214 |  | GRADE SIDEWALK | 2d | 2023-07-12 A | 2023-07-12 A | 3-8213 | 100% |  |  |
| 3-8215 |  | POUR SIDEWALK | 6d | 2023-07-14 A | 2023-07-21 A | 3-8214 | 100% |  |  |
|  | 23 | **24TH TO 25TH NORTH SIDE** |  | 2023-08-14 | 2023-08-25 |  |  |  |  |
| 3-2222 |  | REMOVE SIDEWALK, 24TH TO 25TH NORTH SIDE | 1d | 2023-08-14 | 2023-08-14 | 3-1968, 3-2220, 3-2214, 3-3455, 3-8214 |  | -98d |  |
| 3-2223 |  | TRENCH CONDUIT, 24TH TO 25TH NORTH SIDE | 2d | 2023-08-15 | 2023-08-16 | 3-2222 |  | -98d |  |
| 3-2224 |  | INST CONDUIT, 24TH TO 25TH NORTH SIDE | 2d | 2023-08-17 | 2023-08-18 | 3-2223 |  | -98d |  |
| 3-2225 |  | GRADE SIDEWALK, 24TH TO 25TH NORTH SIDE | 2d | 2023-08-21 | 2023-08-22 | 3-2224 |  | -98d |  |
| 3-2226 |  | POUR SIDEWALK, 24TH TO 25TH NORTH SIDE | 3d | 2023-08-23 | 2023-08-25 | 3-2225, 3-8215 |  | -98d |  |
|  | 24 | **DRIVEWAYS BETWEEN 24TH AND 25TH** |  | 2023-08-19 | 2023-08-20 |  |  |  |  |
| 3-2228 |  | REM SIDEWALK, DRIVEWAYS BETWEEN 24TH & 25TH | 1d | 2023-08-19 | 2023-08-19 | 3-8210, 3-2222 SS |  | -38d |  |
| 3-2229 |  | INST CONDUIT, DRIVEWAYS BETWEEN 24TH & 25TH | 1d | 2023-08-19 | 2023-08-19 | 3-2228 SS |  | -38d |  |
| 3-2230 |  | POUR DRIVEWAY, DRIVEWAYS BETWEEN 24TH & 25TH | 1d | 2023-08-20 | 2023-08-20 | 3-2229 |  | -38d |  |
|  | 25 | **24TH SE CORNER** |  | 2023-04-21 | 2023-05-31 |  |  |  |  |
| 3-2232 |  | REM SIDEWALK, 24TH SE CORNER | 3d | 2023-04-21 A | 2023-04-25 A | 3-1961, 3-2122 | 100% |  |  |
| 3-2233 |  | TRENCH CONDUIT, 24TH SE CORNER | 3d | 2023-04-26 A | 2023-04-28 A | 3-2232 | 100% |  |  |
| 3-2234 |  | INST CONDUIT, 24TH SE CORNER | 3d | 2023-04-26 A | 2023-04-28 A | 3-2233 SS | 100% |  |  |
| 3-2235 |  | FORM BUS STATION FOUNDATIONS, 24TH SE CORNER | 2d | 2023-05-01 A | 2023-05-09 A | 3-2220 | 100% |  |  |
| 3-2236 |  | POUR BUS STATION FOUNDATIONS, 24TH SE CORNER | 1d | 2023-05-10 A | 2023-05-10 A | 3-2235 | 100% |  |  |
| 3-2237 |  | GRADE SIDEWALK, 24TH SE CORNER | 2d | 2023-05-11 A | 2023-05-12 A | 3-2236, 3-2234 | 100% |  |  |
| 3-2238 |  | POUR SIDEWALK, 24TH SE CORNER | 8d | 2023-05-23 A | 2023-05-30 A | 3-2237, 3-3385 | 100% |  |  |
| 3-2267 |  | INSTALL WHEEL GUIDES | 1d | 2023-05-31 A | 2023-05-31 A | 3-2236 | 100% |  |  |
|  | 47 | **25TH SW CORNER** |  | 2023-04-21 | 2023-06-06 |  |  |  |  |
| 3-3470 |  | REM SIDEWALK, 25TH SW CORNER | 2d | 2023-04-21 A | 2023-04-25 A | 3-3395 | 100% |  |  |
| 3-3475 |  | TRENCH CONDUIT, 25TH SW CORNER | 2d | 2023-04-26 A | 2023-04-28 A | 3-3470 | 100% |  |  |
| 3-3480 |  | INST CONDUIT, 25TH SW CORNER | 2d | 2023-04-26 A | 2023-04-28 A | 3-3475 SS | 100% |  |  |
| 3-3560 |  | POUR BUS STATION FOUNDATIONS, 25TH SW CORNER | 2d | 2023-04-26 A | 2023-04-28 A | 3-3555 | 100% |  |  |
| 3-3555 |  | FORM BUS STATION FOUNDATIONS, 25TH SW CORNER | 2d | 2023-05-01 A | 2023-05-09 A | 3-3480 | 100% |  |  |
| 3-3485 |  | GRADE SIDEWALK, 25TH SW CORNER | 2d | 2023-05-11 A | 2023-05-12 A | 3-3480, 3-3560 | 100% |  |  |
| 3-3490 |  | POUR SIDEWALK, 25TH SW CORNER | 5d | 2023-05-31 A | 2023-06-06 A | 3-3485 | 100% |  |  |
|  | 26 | **25TH TO 26TH NORTH SIDE** |  | 2023-09-01 | 2023-09-20 |  |  |  |  |
| 3-2240 |  | REMOVE SIDEWALK, 25TH TO 26TH NORTH SIDE | 2d | 2023-09-01 | 2023-09-05 | 3-2238 FS+1d, 3-1975, 3-2226, 3-2230 |  | -102d |  |
| 3-2241 |  | TRENCH CONDUIT, 25TH TO 26TH NORTH SIDE | 3d | 2023-09-06 | 2023-09-08 | 3-2240 |  | -102d |  |
| 3-2242 |  | INST CONDUIT, 25TH TO 26TH NORTH SIDE | 3d | 2023-09-06 | 2023-09-08 | 3-2241 SS |  | -102d |  |
| 3-2243 |  | GRADE SIDEWALK, 25TH TO 26TH NORTH SIDE | 2d | 2023-09-11 | 2023-09-12 | 3-2242 |  | -102d |  |
| 3-2244 |  | POUR SIDEWALK, 25TH TO 26TH NORTH SIDE | 6d | 2023-09-13 | 2023-09-20 | 3-2243, 3-2248 |  | -93d |  |
|  | 27 | **DRIVEWAYS BETWWEN 25TH AND 26TH NORTH SIDE** |  | 2023-09-02 | 2023-09-03 |  |  |  |  |

| ID | WBS | Task | Duration | Start | Finish | Predecessors | Complete | Total float | Constraint |
| --- | --- | --- | --- | --- | --- | --- | --- | --- | --- |
| 3-2246 |  | REM SIDEWALK, DRIVEWAYS BETWWEN 25TH & 26TH NORTH SIDE | 1d | 2023-09-02 | 2023-09-02 | 3-2240 SS |  | -36d | start on or after 2023-07-06 |
| 3-2247 |  | INST CONDUIT, DRIVEWAYS BETWWEN 25TH & 26TH NORTH SIDE | 1d | 2023-09-02 | 2023-09-02 | 3-2246 SS |  | -36d |  |
| 3-2248 |  | POUR DRIVEWAY, DRIVEWAYS BETWWEN 25TH & 26TH NORTH SIDE | 1d | 2023-09-03 | 2023-09-03 | 3-2247 |  | -36d |  |
|  | 28 | **26TH TO 27TH NORTH SIDE** |  | 2023-09-13 | 2023-09-29 |  |  |  |  |
| 3-2250 |  | REMOVE SIDEWALK, 26TH TO 27TH NORTH SIDE | 2d | 2023-09-13 | 2023-09-14 | 3-2243 |  | -102d | start on or after 2023-07-05 |
| 3-2251 |  | TRENCH CONDUIT, 26TH TO 27TH NORTH SIDE | 3d | 2023-09-15 | 2023-09-19 | 3-2250 |  | -102d |  |
| 3-2252 |  | INST CONDUIT, 26TH TO 27TH NORTH SIDE | 3d | 2023-09-15 | 2023-09-19 | 3-2251 SS |  | -102d |  |
| 3-2253 |  | GRADE SIDEWALK, 26TH TO 27TH NORTH SIDE | 2d | 2023-09-20 | 2023-09-21 | 3-2252 |  | -102d |  |
| 3-2254 |  | POUR SIDEWALK, 26TH TO 27TH NORTH SIDE | 6d | 2023-09-22 | 2023-09-29 | 3-2244, 3-2253 |  | -94d |  |
|  | 29 | **DRIVEWAYS BETWEEN 26TH AND 27TH NORTH SIDE** |  | 2023-09-16 | 2023-09-17 |  |  |  |  |
| 3-2256 |  | REM SIDEWALK, DRIVEWAYS BETWEEN 26TH & 27TH NORTH SIDE | 1d | 2023-09-16 | 2023-09-16 | 3-2250 SS |  | -42d |  |
| 3-2257 |  | INST CONDUIT, DRIVEWAYS BETWEEN 26TH & 27TH NORTH SIDE | 1d | 2023-09-16 | 2023-09-16 | 3-2256 SS |  | -42d |  |
| 3-2258 |  | POUR DRIVEWAY, DRIVEWAYS BETWEEN 26TH & 27TH NORTH SIDE | 1d | 2023-09-17 | 2023-09-17 | 3-2257 |  | -42d |  |
|  | 30 | **27TH TO MLK NORTH SIDE** |  | 2023-09-22 | 2023-10-16 |  |  |  |  |
| 3-2260 |  | REMOVE SIDEWALK, 27TH TO MLK NORTH SIDE | 2d | 2023-09-22 | 2023-09-25 | 3-2253, 3-2258, 3-1982 |  | -102d |  |
| 3-2261 |  | TRENCH CONDUIT, 27TH TO MLK NORTH SIDE | 3d | 2023-09-26 | 2023-09-28 | 3-2260 |  | -102d |  |
| 3-2262 |  | INST CONDUIT, 27TH TO MLK NORTH SIDE | 3d | 2023-09-26 | 2023-09-28 | 3-2261 SS |  | -102d |  |
| 3-2263 |  | FORM BUS STATION FOUNDATIONS, 27TH TO MLK NORTH SIDE | 2d | 2023-09-29 | 2023-10-02 | 3-2262 |  | -102d |  |
| 3-2264 |  | POUR BUS STATION FOUNDATIONS, 27TH TO MLK NORTH SIDE | 1d | 2023-10-03 | 2023-10-03 | 3-2263 |  | -102d |  |
| 3-2265 |  | GRADE SIDEWALK, 27TH TO MLK NORTH SIDE | 3d | 2023-10-04 | 2023-10-06 | 3-2264 |  | -102d |  |
| 3-2321 |  | INSTALL WHEEL GUIDES | 1d | 2023-10-04 | 2023-10-04 | 3-2264 |  | -91d |  |
| 3-2266 |  | POUR SIDEWALK, 27TH TO MLK NORTH SIDE | 6d | 2023-10-09 | 2023-10-16 | 3-2265, 3-2254, 3-2321 FF |  | -99d |  |
|  | 31 | **MLK TO 322+50 NORTH SIDE** |  | 2023-10-09 | 2023-10-13 |  |  |  |  |
| 3-2268 |  | REM SIDEWALK, MLK TO 322+50 NORTH SIDE | 1d | 2023-10-09 | 2023-10-09 | 3-2265 |  | -102d |  |
| 3-2269 |  | TRENCH CONDUIT, MLK TO 322+50 NORTH SIDE | 1d | 2023-10-10 | 2023-10-10 | 3-2268 |  | -102d |  |
| 3-2270 |  | INST CONDUIT, MLK TO 322+50 NORTH SIDE | 1d | 2023-10-10 | 2023-10-10 | 3-2269 SS |  | -102d |  |
| 3-2271 |  | GRADE SIDEWALK, MLK TO 322+50 NORTH SIDE | 1d | 2023-10-11 | 2023-10-11 | 3-2270 |  | -102d |  |
| 3-2272 |  | POUR SIDEWALK, MLK TO 322+50 NORTH SIDE | 2d | 2023-10-12 | 2023-10-13 | 3-2271, 3-2266 SS |  | -102d |  |
|  | 33 | **25TH TO 27TH SOUTH SIDE** |  | 2023-05-31 | 2023-06-19 |  |  |  |  |
| 3-2280 |  | REMOVE SIDEWALK, 25TH TO 27TH SOUTH SIDE | 3d | 2023-05-31 A | 2023-06-02 A | 3-1989, 3-2238 | 100% |  |  |
| 3-2281 |  | TRENCH CONDUIT, 25TH TO 27TH SOUTH SIDE | 1d | 2023-06-05 A | 2023-06-05 A | 3-2280 | 100% |  |  |
| 3-2282 |  | INST CONDUIT, 25TH TO 27TH SOUTH SIDE | 1d | 2023-06-05 A | 2023-06-05 A | 3-2281 SS | 100% |  |  |
| 3-2283 |  | GRADE SIDEWALK, 25TH TO 27TH SOUTH SIDE | 2d | 2023-06-06 A | 2023-06-07 A | 3-2282 | 100% |  |  |
| 3-2284 |  | POUR SIDEWALK, 25TH TO 27TH SOUTH SIDE | 8d | 2023-06-08 A | 2023-06-19 A | 3-2283 | 100% |  |  |
|  | 34 | **DRIVEWAY BETWEEN 25TH AND 27TH SOUTH SIDE** |  | 2023-06-03 | 2023-06-04 |  |  |  |  |
| 3-2286 |  | REM SIDEWALK, DRIVEWAY BETWEEN 25TH & 27TH SOUTH SIDE | 1d | 2023-06-03 A | 2023-06-03 A |  | 100% |  |  |
| 3-2287 |  | INST CONDUIT, DRIVEWAY BETWEEN 25TH & 27TH SOUTH SIDE | 1d | 2023-06-03 A | 2023-06-03 A | 3-2286 SS | 100% |  |  |
| 3-2288 |  | POUR DRIVEWAY, DRIVEWAY BETWEEN 25TH & 27TH SOUTH SIDE | 1d | 2023-06-04 A | 2023-06-04 A | 3-2287 | 100% |  |  |
|  | 35 | **27TH TO MLK SOUTH SIDE** |  | 2023-10-12 | 2023-11-06 |  |  |  |  |
| 3-2290 |  | REMOVE SIDEWALK, 27TH TO MLK SOUTH SIDE | 2d | 2023-10-12 | 2023-10-13 | 3-2283, 3-2288, 3-2272 FF |  | -102d |  |
| 3-2291 |  | TRENCH CONDUIT, 27TH TO MLK SOUTH SIDE | 3d | 2023-10-16 | 2023-10-18 | 3-2290 |  | -102d |  |
| 3-2292 |  | INST CONDUIT, 27TH TO MLK SOUTH SIDE | 3d | 2023-10-16 | 2023-10-18 | 3-2291 SS |  | -102d |  |
| 3-2293 |  | FORM BUS STATION FOUNDATIONS, 27TH TO MLK SOUTH SIDE | 2d | 2023-10-19 | 2023-10-20 | 3-2292 |  | -102d |  |
| 3-2294 |  | POUR BUS STATION FOUNDATIONS, 27TH TO MLK SOUTH SIDE | 1d | 2023-10-23 | 2023-10-23 | 3-2293 |  | -102d |  |
| 3-2295 |  | GRADE SIDEWALK, 27TH TO MLK SOUTH SIDE | 2d | 2023-10-24 | 2023-10-25 | 3-2294 |  | -102d |  |
| 3-2580 |  | INSTALL WHEEL GUIDES | 1d | 2023-10-24 | 2023-10-24 | 3-2294 |  | -93d |  |
| 3-2296 |  | POUR SIDEWALK, 27TH TO MLK SOUTH SIDE | 8d | 2023-10-26 | 2023-11-06 | 3-2295, 3-2284, 3-2580 FF |  | -102d |  |
|  | 36 | **MADISON TO E. ARTHUR EAST SIDE** |  | 2023-07-24 | 2023-08-24 |  |  |  |  |
| 3-2298 |  | REM SIDEWALK, MAD TO E ARTHUR EAST SIDE | 2d | 2023-07-24 A | 2023-08-09 A | 3-2003 | 100% |  |  |
| 3-2299 |  | TRENCH CONDUIT, MAD TO E ARTHUR EAST SIDE | 1d | 2023-07-24 A | 2023-08-09 A | 3-2298 | 100% |  |  |
| 3-2300 |  | INST CONDUIT, MAD TO E ARTHUR EAST SIDE | 1d | 2023-07-31 A | 2023-08-15 | 3-2299 SS |  | -73d |  |
| 3-2301 |  | GRADE SIDEWALK, MAD TO E ARTHUR EAST SIDE | 2d | 2023-08-16 | 2023-08-17 | 3-2300 |  | -73d |  |
| 3-2302 |  | POUR SIDEWALK, MAD TO E ARTHUR EAST SIDE | 5d | 2023-08-18 | 2023-08-24 | 3-2301 |  | -73d |  |
|  | 37 | **E ARTHUR TO HARRISON EAST SIDE** |  | 2023-07-24 | 2023-08-23 |  |  |  |  |
| 3-2304 |  | REM SIDEWALK, E ARTHUR TO HARRISON EAST SIDE | 1d | 2023-07-24 A | 2023-08-09 A | 3-2003 | 100% |  |  |
| 3-2305 |  | TRENCH CONDUIT, E ARTHUR TO HARRISON EAST SIDE | 2d | 2023-07-24 A | 2023-08-09 A | 3-2304 | 100% |  |  |
| 3-2306 |  | INST CONDUIT, E ARTHUR TO HARRISON EAST SIDE | 2d | 2023-07-31 A | 2023-08-15 | 3-2305 SS |  | -76d |  |
| 3-2307 |  | GRADE SIDEWALK, E ARTHUR TO HARRISON EAST SIDE | 1d | 2023-08-16 | 2023-08-16 | 3-2306 |  | -76d |  |
| 3-2308 |  | POUR SIDEWALK, E ARTHUR TO HARRISON EAST SIDE | 5d | 2023-08-17 | 2023-08-23 | 3-2307 |  | -76d |  |
|  | 38 | **E. HARRISON AND MLK SE CORNER** |  | 2023-09-18 | 2023-09-25 |  |  |  |  |
| 3-2310 |  | REM SIDEWALK, E HARRISON & MLK SE CORNER | 1d | 2023-09-18 | 2023-09-18 | 3-2308, 3-2089 |  | -92d |  |
| 3-2311 |  | TRENCH CONDUIT, E HARRISON & MLK SE CORNER | 1d | 2023-09-19 | 2023-09-19 | 3-2310 |  | -92d |  |
| 3-2312 |  | INST CONDUIT, E HARRISON & MLK SE CORNER | 1d | 2023-09-19 | 2023-09-19 | 3-2311 SS |  | -92d |  |
| 3-2313 |  | GRADE SIDEWALK, E HARRISON & MLK SE CORNER | 1d | 2023-09-20 | 2023-09-20 | 3-2312 |  | -92d |  |
| 3-2314 |  | POUR SIDEWALK, E HARRISON & MLK SE CORNER | 3d | 2023-09-21 | 2023-09-25 | 3-2313 |  | -92d |  |
|  | 39 | **E. ARTHUR MLK TO 27TH NORTH SIDE** |  | 2023-09-26 | 2023-10-03 |  |  |  |  |
| 3-2316 |  | REM SIDEWALK, E ARTHUR MLK TO 27TH NORTH SIDE | 1d | 2023-09-26 | 2023-09-26 | 3-2314 |  | -92d |  |
| 3-2317 |  | TRENCH CONDUIT, E ARTHUR MLK TO 27TH NORTH SIDE | 1d | 2023-09-27 | 2023-09-27 | 3-2316 |  | -92d |  |
| 3-2318 |  | INST CONDUIT, E ARTHUR MLK TO 27TH NORTH SIDE | 1d | 2023-09-27 | 2023-09-27 | 3-2317 SS |  | -92d |  |
| 3-2319 |  | GRADE SIDEWALK, E ARTHUR MLK TO 27TH NORTH SIDE | 1d | 2023-09-28 | 2023-09-28 | 3-2318 |  | -92d |  |

| ID | WBS | Task | Duration | Start | Finish | Predecessors | Complete | Total float |
| --- | --- | --- | --- | --- | --- | --- | --- | --- |
| 3-2320 |  | POUR SIDEWALK, E ARTHUR MLK TO 27TH NORTH SIDE | 3d | 2023-09-29 | 2023-10-03 | 3-2319 |  | -92d |
|  | 40 | **E. HARRISON MLK TO E ARTHUR SOUTH SIDE** |  | 2023-10-04 | 2023-10-11 |  |  |  |
| 3-2322 |  | REM SIDEWALK, E HARRISON MLK TO E ARTHUR SOUTH SIDE | 1d | 2023-10-04 | 2023-10-04 | 3-2320, 3-2010 |  | -92d |
| 3-2323 |  | TRENCH CONDUIT, E HARRISON MLK TO E ARTHUR SOUTH SIDE | 1d | 2023-10-05 | 2023-10-05 | 3-2322 |  | -92d |
| 3-2324 |  | INST CONDUIT, E HARRISON MLK TO E ARTHUR SOUTH SIDE | 1d | 2023-10-05 | 2023-10-05 | 3-2323 SS |  | -92d |
| 3-2325 |  | GRADE SIDEWALK, E HARRISON MLK TO E ARTHUR SOUTH SIDE | 1d | 2023-10-06 | 2023-10-06 | 3-2324 |  | -92d |
| 3-2326 |  | POUR SIDEWALK, E HARRISON MLK TO E ARTHUR SOUTH SIDE | 3d | 2023-10-09 | 2023-10-11 | 3-2325 |  | -92d |
|  | 41 | **MLK AND E. ARTHUR CENTER ISLAND** |  | 2023-10-19 | 2023-10-30 |  |  |  |
| 3-2328 |  | REM SIDEWALK, MLK & E ARTHUR CENTER ISLAND | 1d | 2023-10-19 | 2023-10-19 | 3-2326, 3-2156 |  | -97d |
| 3-2329 |  | TRENCH CONDUIT, MLK & E ARTHUR CENTER ISLAND | 1d | 2023-10-20 | 2023-10-20 | 3-2328 |  | -97d |
| 3-2330 |  | INST CONDUIT, MLK & E ARTHUR CENTER ISLAND | 1d | 2023-10-20 | 2023-10-20 | 3-2329 SS |  | -97d |
| 3-2331 |  | GRADE SIDEWALK, MLK & E ARTHUR CENTER ISLAND | 1d | 2023-10-23 | 2023-10-23 | 3-2330 |  | -97d |
| 3-2332 |  | POUR SIDEWALK, MLK & E ARTHUR CENTER ISLAND | 5d | 2023-10-24 | 2023-10-30 | 3-2331 |  | -97d |
|  | 42 | **19TH AND UNION ST** |  | 2021-12-13 | 2023-10-04 |  |  |  |
| 3-2344 |  | POTHOLE FOUNDATIONS, 19TH & UNION ST | 5d | 2021-12-13 A | 2021-12-20 A | MS-0025 | 100% |  |
| 3-2334 |  | INST ELECTRICAL ROAD CROSSINGS, 19TH & UNION ST | 6d | 2023-08-25 | 2023-09-01 | 3-2344, MS-2576, 3-2302 |  | -73d |
| 3-2335 |  | CONCRETE PAVE ROAD CROSSING, 19TH & UNION ST | 6d | 2023-09-05 | 2023-09-12 | 3-2334, MS-2571 |  | -73d |
|  | 3 | **NE CORNER** |  | 2023-09-13 | 2023-09-15 |  |  |  |
| 3-2337 |  | REMOVE SIDEWALK, NE CORNER | 2d | 2023-09-13 | 2023-09-14 | 3-2335 |  | -73d |
| 3-2338 |  | INST CONDUIT, NE CORNER | 2d | 2023-09-13 | 2023-09-14 | 3-2337 SS |  | -73d |
| 3-2339 |  | SIDEWALKS AND CURBS, NE CORNER | 1d | 2023-09-15 | 2023-09-15 | 3-2338 |  | -73d |
|  | 4 | **SE CORNER** |  | 2023-09-18 | 2023-09-20 |  |  |  |
| 3-2341 |  | REMOVE SIDEWALK, SE CORNER | 2d | 2023-09-18 | 2023-09-19 | 3-2339 |  | -73d |
| 3-2342 |  | INST CONDUIT, SE CORNER | 2d | 2023-09-18 | 2023-09-19 | 3-2341 SS |  | -73d |
| 3-2343 |  | SIDEWALKS AND CURBS, SE CORNER | 1d | 2023-09-20 | 2023-09-20 | 3-2342 |  | -73d |
|  | 5 | **SW CORNER** |  | 2023-09-21 | 2023-09-27 |  |  |  |
| 3-2345 |  | REMOVE SIDEWALK, SW CORNER | 2d | 2023-09-21 | 2023-09-22 | 3-2343 |  | -73d |
| 3-2346 |  | INST CONDUIT, SW CORNER | 2d | 2023-09-21 | 2023-09-22 | 3-2345 SS |  | -73d |
| 3-2347 |  | SIDEWALKS AND CURBS, SW CORNER | 3d | 2023-09-25 | 2023-09-27 | 3-2346 |  | -73d |
|  | 6 | **NW CORNER** |  | 2023-09-28 | 2023-10-04 |  |  |  |
| 3-2349 |  | REMOVE SIDEWALK, NW CORNER | 2d | 2023-09-28 | 2023-09-29 | 3-2347 |  | -73d |
| 3-2350 |  | INST CONDUIT, NW CORNER | 2d | 2023-09-28 | 2023-09-29 | 3-2349 SS |  | -73d |
| 3-2351 |  | SIDEWALKS AND CURBS, NW CORNER | 3d | 2023-10-02 | 2023-10-04 | 3-2350 |  | -73d |
|  | 43 | **PINE ST SOUTH SIDE** |  | 2022-04-26 | 2022-05-13 |  |  |  |
| 3-2353 |  | REMOVE SIDEWALKS, PINE ST SOUTH SIDE | 1d | 2022-04-26 A | 2022-04-26 A | 3-2024 | 100% |  |
| 3-2354 |  | GRADE SIDEWALK, PINE ST SOUTH SIDE | 1d | 2022-04-27 A | 2022-04-27 A | 3-2353 | 100% |  |
| 3-2355 |  | POUR SIDEWALK & DRIVEWAY, PINE ST SOUTH SIDE | 4d | 2022-04-28 A | 2022-05-11 A | 3-2354 | 100% |  |
| PCO238.01 |  | DSC 172-Pine Sidewalks Pavement underneath | 5d | 2022-05-03 A | 2022-05-13 A |  | 100% |  |
|  | 8 | **MILLING AND PAVING** |  | 2022-05-27 | 2023-11-06 |  |  |  |
| 3-3575 |  | PAVE, PINE STREET | 3d | 2022-05-27 A | 2023-05-30 A | 3-2355 | 100% |  |
| 3-2357 |  | MILL, MILLING AND PAVING | 2d | 2023-10-31 | 2023-11-01 | 3-2176, 3-2355, 3-3575, 3-2332 |  | -23d |
| 3-2358 |  | PAVE, MILLING AND PAVING | 3d | 2023-11-02 | 2023-11-06 | 3-2357 |  | -23d |
|  | 9 | **STRIPING AND SIGNS** |  | 2023-11-07 | 2024-02-07 |  |  |  |
| 3-2360 |  | CURE TIME, STRIPING AND SIGNS | 21d | 2023-11-07 | 2023-12-08 | 3-2358, 3-2017 |  | -23d |
| 3-2361 |  | STRIPING, STRIPING AND SIGNS | 20d | 2023-12-11 | 2024-01-09 | 3-2024, 3-2360 |  | -23d |
| 3-2362 |  | INST SIGNS, STRIPING AND SIGNS | 20d | 2024-01-10 | 2024-02-07 | 3-2361 |  | -23d |
|  | 10 | **LANDSCAPING** |  | 2023-05-31 | 2023-10-16 |  |  |  |
| 3-2379 |  | LANDSCAPING, INSTALL TREES, SHRUBS TOPSOIL | 20d | 2023-05-31 A | 2023-06-27 A | 3-2355 | 100% |  |
| 3-2364 |  | INST POUROUS PAVEMENT, POUROUS PAVEMENT | 8d | 2023-10-05 | 2023-10-16 | 3-2351, 3-2355 |  | 53d |
|  | 11 | **SIGNALS** |  | 2023-04-17 | 2024-03-14 |  |  |  |
|  | 1 | **MADISON AND 16TH** |  | 2023-05-16 | 2023-12-07 |  |  |  |
| 3-2368 |  | INSTALL SERVICE CABINET | 1d | 2023-05-16 A | 2023-05-16 A | 3-2098 | 100% |  |
| 3-7251 |  | SDCI INSPECTION | 1d | 2023-06-02 A | 2023-06-02 A | 3-2368 | 100% |  |
| 3-7252 |  | SDOT INSPECTION | 1d | 2023-06-14 A | 2023-06-14 A | 3-7251 | 100% |  |
| 3-7253 |  | SCL INSPECTION REQUEST | 1d | 2023-08-14 | 2023-08-14 | 3-2368, 3-7252 |  | -35d |
| 3-7254 |  | 30 DAY WAIT FOR SCL TO INSPECT | 30d | 2023-08-15 | 2023-09-26 | 3-7253 |  | -35d |
| 3-2680 |  | INST POLES, MAD AND 16TH | 2d | 2023-08-31 | 2023-09-01 | 2-1997, 2-1997 FF |  | 15d |
| 3-7255 |  | SCL INSPECTION | 1d | 2023-09-27 | 2023-09-27 | 3-7254 |  | -35d |
| 3-7256 |  | COMMISION NOTIFICATION | 1d | 2023-09-28 | 2023-09-28 | 3-7255 |  | -35d |
| 3-7257 |  | 30 DAY WAIT FOR SCL TO COMMISION | 30d | 2023-09-29 | 2023-11-09 | 3-7256 |  | -35d |
| 3-2375 |  | COMM SERVICE, MAD AND 16TH | 1d | 2023-11-10 | 2023-11-10 | 3-7257 |  | -35d |
| 3-2367 |  | INST SIGNAL CABINET, MAD AND 16TH | 1d | 2023-11-14 | 2023-11-14 | 3-2122, 3-2091, 3-2375 |  | -35d |
| 3-2369 |  | INST MAST ARMS, MAD AND 16TH | 2d | 2023-11-15 | 2023-11-16 | PMP-0016, 3-1663, 3-2680, 3-2367 |  | -35d |
| 3-2370 |  | INST PPB POST, MAD AND 16TH | 1d | 2023-11-17 | 2023-11-17 | 3-2369 |  | -27d |
| 3-2371 |  | INST PEDISTALS, MAD AND 16TH | 2d | 2023-11-20 | 2023-11-21 | 3-2370 |  | -27d |
| 3-2372 |  | INST WIRING, MAD AND 16TH | 3d | 2023-11-22 | 2023-11-28 | 3-2371 |  | -27d |
| 3-2376 |  | NOTIFY SDOT, MAD AND 16TH | 1d | 2023-11-29 | 2023-11-29 | 3-2375, 3-2372 |  | 9d |
| 3-2377 |  | SDOT INSPECTION, MAD AND 16TH | 5d | 2023-11-30 | 2023-12-06 | 3-2376 |  | 9d |
| 3-2378 |  | COMM SIGNAL, MAD AND 16TH | 1d | 2023-12-07 | 2023-12-07 | 3-2377 |  | 9d |
|  | 10 | **E HARRISON AND MLK** |  | 2023-09-01 | 2024-03-14 |  |  |  |

| ID | WBS | Task | Duration | Start | Finish | Predecessors | Complete | Total float |
| --- | --- | --- | --- | --- | --- | --- | --- | --- |
| 3-3120 |  | INST POLES, E HARRISON AND MLK | 4d | 2023-09-01 | 2023-09-07 | 3-3115 |  | 18d |
| 3-2476 |  | INST SERVICE METER CABINET, E HARRISON & MLK | 1d | 2023-11-07 | 2023-11-07 | 3-2332, 3-2296 |  | -102d |
| 3-9050 |  | SDCI INSPECTION | 1d | 2023-11-08 | 2023-11-08 | 3-2476 |  | -102d |
| 3-9070 |  | SDOT INSPECTION | 1d | 2023-11-09 | 2023-11-09 | 3-9050 |  | -102d |
| 3-9038 |  | SCL INSPECTION REQUEST | 0d | 2023-11-10 | 2023-11-10 | 3-9070 |  | -102d |
| 3-9039 |  | 30 DAY WAIT FOR SCL TO INSPECT, MAD AND BOYLSTON | 30d | 2023-11-10 | 2023-12-27 | 3-9038 |  | -102d |
| 3-9079 |  | SCL INSPECTION | 1d | 2023-12-28 | 2023-12-28 | 3-9039 |  | -102d |
| 3-2481 |  | COMMISION NOTIFICATION | 1d | 2023-12-29 | 2023-12-29 | 3-9079 |  | -102d |
| 3-2482 |  | 30 DAY WAIT FOR SCL TO COMMISION | 30d | 2024-01-02 | 2024-02-13 | 3-2481 |  | -102d |
| 3-2483 |  | COMM SERVICE, E HARRISON AND MLK | 1d | 2024-02-14 | 2024-02-14 | 3-2482 |  | -102d |
| 3-2475 |  | INST SIGNAL CABINET, E HARRISON & MLK | 1d | 2024-02-15 | 2024-02-15 | 3-2332, 3-2483 |  | -102d |
| 3-2477 |  | INST MAST ARMS, E HARRISON AND MLK | 4d | 2024-02-16 | 2024-02-22 | 3-2476, 3-2475 |  | -102d |
| 3-2478 |  | INST PPB POST, E HARRISON AND MLK | 2d | 2024-02-23 | 2024-02-26 | 3-2477 |  | -102d |
| 3-2479 |  | INST PEDISTALS, E HARRISON AND MLK | 1d | 2024-02-27 | 2024-02-27 | 3-2478 |  | -102d |
| 3-2480 |  | INST WIRING, E HARRISON AND MLK | 5d | 2024-02-28 | 2024-03-05 | 3-2479 |  | -102d |
| 3-2484 |  | NOTIFY SDOT, E HARRISON AND MLK | 1d | 2024-03-06 | 2024-03-06 | 3-2483, 3-2480 |  | -58d |
| 3-2485 |  | SDOT INSPECTION, E HARRISON AND MLK | 5d | 2024-03-07 | 2024-03-13 | 3-2484 |  | -58d |
| 3-2486 |  | COMM SIGNAL, E HARRISON AND MLK | 1d | 2024-03-14 | 2024-03-14 | 3-2485 |  | -58d |
|  | 11 | **19TH AND UNION** |  | 2023-10-05 | 2024-02-14 |  |  |  |
| 3-2489 |  | INST SERVICE METER CABINET, 19TH & UNION | 2d | 2023-10-05 | 2023-10-06 | 3-2351 |  | -73d |
| 3-6050 |  | SDCI INSPECTION | 1d | 2023-10-09 | 2023-10-09 | 3-2489 |  | -73d |
| 3-6070 |  | SDOT INSPECTION | 1d | 2023-10-10 | 2023-10-10 | 3-6050 |  | -73d |
| 3-6038 |  | SCL INSPECTION REQUEST | 0d | 2023-10-11 | 2023-10-11 | 3-6070 |  | -73d |
| 3-6039 |  | 30 DAY WAIT FOR SCL TO INSPECT, MAD AND BOYLSTON | 30d | 2023-10-11 | 2023-11-22 | 3-6038 |  | -73d |
| 3-6079 |  | SCL INSPECTION | 1d | 2023-11-27 | 2023-11-27 | 3-6039 |  | -73d |
| 3-2494 |  | COMMISION NOTIFICATION | 1d | 2023-11-28 | 2023-11-28 | 3-6079 |  | -73d |
| 3-2495 |  | 30 DAY WAIT FOR SCL TO COMMISION | 30d | 2023-11-29 | 2024-01-11 | 3-2494 |  | -73d |
| 3-2496 |  | COMM SERVICE, 19TH AND UNION | 1d | 2024-01-12 | 2024-01-12 | 3-2495 |  | -73d |
| 3-2488 |  | INST SIGNAL CABINET, 19TH AND UNION | 1d | 2024-01-16 | 2024-01-16 | 3-2351, PMP-31, 3-2496 |  | -73d |
| 3-2490 |  | INST MAST ARMS, 19TH AND UNION | 4d | 2024-01-17 | 2024-01-22 | 3-2489, 3-2488 |  | -73d |
| 3-2491 |  | INST PPB POST, 19TH AND UNION | 3d | 2024-01-23 | 2024-01-25 | 3-2490 |  | -73d |
| 3-2492 |  | INST PEDISTALS, 19TH AND UNION | 2d | 2024-01-26 | 2024-01-29 | 3-2491 |  | -73d |
| 3-2493 |  | INST WIRING, 19TH AND UNION | 5d | 2024-01-30 | 2024-02-05 | 3-2492 |  | -73d |
| 3-2497 |  | NOTIFY SDOT, 19TH AND UNION | 1d | 2024-02-06 | 2024-02-06 | 3-2496, 3-2493 |  | -38d |
| 3-2498 |  | SDOT INSPECTION, 19TH AND UNION | 5d | 2024-02-07 | 2024-02-13 | 3-2497 |  | -38d |
| 3-2499 |  | COMM SIGNAL, 19TH AND UNION | 1d | 2024-02-14 | 2024-02-14 | 3-2498 |  | -38d |
|  | 2 | **MADISON AND 17TH** |  | 2023-10-12 | 2024-02-08 |  |  |  |
| 3-2381 |  | INST SERVICE METER CABINET, MAD & 17TH | 1d | 2023-10-12 | 2023-10-12 | 3-2150, 3-2146 |  | -69d |
| 3-7050 |  | SDCI INSPECTION | 1d | 2023-10-13 | 2023-10-13 | 3-2381 |  | -69d |
| 3-7070 |  | SDOT INSPECTION | 1d | 2023-10-16 | 2023-10-16 | 3-7050 |  | -69d |
| 3-7038 |  | SCL INSPECTION REQUEST | 0d | 2023-10-17 | 2023-10-17 | 3-7070 |  | -69d |
| 3-7039 |  | 30 DAY WAIT FOR SCL TO INSPECT, MAD AND BOYLSTON | 30d | 2023-10-17 | 2023-11-30 | 3-7038 |  | -69d |
| 3-7079 |  | SCL INSPECTION | 1d | 2023-12-01 | 2023-12-01 | 3-7039 |  | -69d |
| 3-2384 |  | COMMISION NOTIFICATION | 1d | 2023-12-04 | 2023-12-04 | 3-7079 |  | -69d |
| 3-2385 |  | 30 DAY WAIT FOR SCL TO COMMISION | 30d | 2023-12-05 | 2024-01-18 | 3-2384 |  | -69d |
| 3-2386 |  | COMM SERVICE, MAD AND 17TH | 1d | 2024-01-19 | 2024-01-19 | 3-2385 |  | -69d |
| 3-2380 |  | INST SIGNAL CABINET, MAD AND 17TH | 1d | 2024-01-22 | 2024-01-22 | 3-2150, 3-2386 |  | -69d |
| 3-2382 |  | INST PPB POST, MAD AND 17TH | 3d | 2024-01-23 | 2024-01-25 | 3-2381, 3-2380 |  | -69d |
| 3-2383 |  | INST WIRING, MAD AND 17TH | 3d | 2024-01-26 | 2024-01-30 | 3-2382 |  | -69d |
| 3-2387 |  | NOTIFY SDOT, MAD AND 17TH | 1d | 2024-01-31 | 2024-01-31 | 3-2386, 3-2383 |  | -29d |
| 3-2388 |  | SDOT INSPECTION, MAD AND 17TH | 5d | 2024-02-01 | 2024-02-07 | 3-2387 |  | -29d |
| 3-2389 |  | COMM SIGNAL, MAD AND 17TH | 1d | 2024-02-08 | 2024-02-08 | 3-2388 |  | -29d |
|  | 3 | **MADISON AND 18TH** |  | 2023-07-03 | 2024-02-09 |  |  |  |
| 3-3105 |  | INSTALL POLES, MAD AND 18TH | 2d | 2023-07-03 A | 2023-07-05 A |  | 100% |  |
| 3-2392 |  | INST SERVICE METER CABINET, MAD & 18TH | 1d | 2023-10-12 | 2023-10-12 | 3-2125, 3-2146, 3-2150 |  | -69d |
| 3-0050 |  | SDCI INSPECTION | 1d | 2023-10-13 | 2023-10-13 | 3-2392 |  | -69d |
| 3-0070 |  | SDOT INSPECTION | 1d | 2023-10-16 | 2023-10-16 | 3-0050 |  | -69d |
| 3-0038 |  | SCL INSPECTION REQUEST | 0d | 2023-10-17 | 2023-10-17 | 3-0070 |  | -69d |
| 3-0039 |  | 30 DAY WAIT FOR SCL TO INSPECT, MAD AND BOYLSTON | 30d | 2023-10-17 | 2023-11-30 | 3-0038 |  | -69d |
| 3-0079 |  | SCL INSPECTION | 1d | 2023-12-01 | 2023-12-01 | 3-0039 |  | -69d |
| 3-2397 |  | COMMISION NOTIFICATION | 0d | 2023-12-04 | 2023-12-04 | 3-0079 |  | -69d |
| 3-2398 |  | 30 DAY WAIT FOR SCL TO COMMISION | 30d | 2023-12-04 | 2024-01-17 | 3-2397 |  | -69d |
| 3-2399 |  | COMM SERVICE, MAD AND 18TH | 1d | 2024-01-18 | 2024-01-18 | 3-2398 |  | -69d |
| 3-2391 |  | INST SIGNAL CABINET, MAD AND 18TH | 1d | 2024-01-19 | 2024-01-19 | PMP-26, PMP-0016, 3-2125, 3-2399 |  | -69d |
| 3-2393 |  | INST MAST ARMS, MAD AND 18TH | 2d | 2024-01-22 | 2024-01-23 | 3-2392, PMP-0016, 3-2391 |  | -69d |
| 3-2394 |  | INST PPB POST, MAD AND 18TH | 1d | 2024-01-24 | 2024-01-24 | 3-2393 |  | -69d |
| 3-2395 |  | INST PEDISTALS, MAD AND 18TH | 1d | 2024-01-25 | 2024-01-25 | 3-2394 |  | -69d |
| 3-2396 |  | INST WIRING, MAD AND 18TH | 3d | 2024-01-26 | 2024-01-30 | 3-2395 |  | -69d |
| 3-2400 |  | NOTIFY SDOT, MAD AND 18TH | 1d | 2024-01-31 | 2024-01-31 | 3-2399, 3-2396 |  | -28d |
| 3-2401 |  | SDOT INSPECTION, MAD AND 18TH | 5d | 2024-02-01 | 2024-02-07 | 3-2400 |  | -28d |

| ID | WBS | Task | Duration | Start | Finish | Predecessors | Complete | Total float | Constraint |
| --- | --- | --- | --- | --- | --- | --- | --- | --- | --- |
| 3-2402 |  | COMM SIGNAL, MAD AND 18TH | 1d | 2024-02-09 | 2024-02-09 | 3-2401, 3-2389 |  | -29d |  |
|  | 4 | **MADISON AND 19TH** |  | 2023-08-24 | 2023-12-26 |  |  |  |  |
| 3-2405 |  | INST SERVICE METER CABINET, MAD & 19TH | 1d | 2023-08-24 | 2023-08-24 | 3-2176, 3-2162 |  | -39d |  |
| 3-1050 |  | SDCI INSPECTION | 1d | 2023-08-25 | 2023-08-25 | 3-2405 |  | -39d |  |
| 3-1070 |  | SDOT INSPECTION | 1d | 2023-08-28 | 2023-08-28 | 3-1050 |  | -39d |  |
| 3-1038 |  | SCL INSPECTION REQUEST | 0d | 2023-08-29 | 2023-08-29 | 3-1070 |  | -39d |  |
| 3-1039 |  | 30 DAY WAIT FOR SCL TO INSPECT, MAD AND BOYLSTON | 30d | 2023-08-29 | 2023-10-10 | 3-1038 |  | -39d |  |
| 3-1079 |  | SCL INSPECTION | 1d | 2023-10-11 | 2023-10-11 | 3-1039 |  | -39d |  |
| 3-2410 |  | COMMISION NOTIFICATION | 1d | 2023-10-12 | 2023-10-12 | 3-1079 |  | -39d |  |
| 3-2411 |  | 30 DAY WAIT FOR SCL TO COMMISION | 30d | 2023-10-13 | 2023-11-28 | 3-2410 |  | -39d |  |
| 3-2412 |  | COMM SERVICE, MAD AND 19TH | 1d | 2023-11-29 | 2023-11-29 | 3-2411 |  | -39d |  |
| 3-2404 |  | INST SIGNAL CABINET, MAD AND 19TH | 1d | 2023-11-30 | 2023-11-30 | 3-2176, 3-2412 |  | -39d |  |
| 3-2406 |  | INST MAGNOMETERS, MAD AND 19TH | 1d | 2023-12-01 | 2023-12-01 | 3-2405, 3-2404 |  | -39d |  |
| 3-2407 |  | INST PPB POST, MAD AND 19TH | 3d | 2023-12-04 | 2023-12-06 | 3-2406 |  | -39d |  |
| 3-2408 |  | INST PEDISTALS, MAD AND 19TH | 3d | 2023-12-07 | 2023-12-11 | 3-2407 |  | -39d |  |
| 3-2409 |  | INST WIRING, MAD AND 19TH | 3d | 2023-12-12 | 2023-12-14 | 3-2408 |  | -39d |  |
| 3-2413 |  | NOTIFY SDOT, MAD AND 19TH | 1d | 2023-12-15 | 2023-12-15 | 3-2412, 3-2409 |  | 2d |  |
| 3-2414 |  | SDOT INSPECTION, MAD AND 19TH | 5d | 2023-12-18 | 2023-12-22 | 3-2413 |  | 2d |  |
| 3-2415 |  | COMM SIGNAL, MAD AND 19TH | 1d | 2023-12-26 | 2023-12-26 | 3-2414 |  | 2d |  |
|  | 5 | **MADISON AND 20TH** |  | 2023-04-17 | 2023-10-20 |  |  |  |  |
| DSC-448 |  | DSC 448 Bouolder Conflict P34-06 Foundation | 5d | 2023-04-17 A | 2023-04-21 A |  | 100% |  |  |
| 3-2418 |  | INST SERVICE METER CABINET, MAD & 20TH | 1d | 2023-08-07 A | 2023-08-07 A | 3-3550 | 100% |  |  |
| 3-2038 |  | SCL INSPECTION REQUEST | 0d | 2023-08-09 A | 2023-08-09 A | 3-2070 | 100% |  |  |
| 3-2050 |  | SDCI INSPECTION | 1d | 2023-08-09 A | 2023-08-09 A | 3-2418 | 100% |  |  |
| 3-2070 |  | SDOT INSPECTION | 1d | 2023-08-09 A | 2023-08-09 A | 3-2050 | 100% |  |  |
| 3-2789 |  | 30 DAY WAIT FOR SCL TO INSPECT, MAD AND BOYLSTON | 30d | 2023-08-10 A | 2023-08-18 | 3-2038 |  | 45d |  |
| 3-2419 |  | INST STRAIN POLE, MAD AND 20TH | 1d | 2023-08-14 | 2023-08-14 | 3-2418, PMP-36 |  | 82d |  |
| 3-2779 |  | SCL INSPECTION | 1d | 2023-08-21 | 2023-08-21 | 3-2789 |  | 45d |  |
| 3-2422 |  | COMMISION NOTIFICATION | 0d | 2023-08-22 | 2023-08-22 | 3-2779 |  | 45d |  |
| 3-2423 |  | 30 DAY WAIT FOR SCL TO COMMISION | 30d | 2023-08-22 | 2023-10-03 | 3-2422 |  | 45d |  |
| 3-2424 |  | COMM SERVICE, MAD AND 20TH | 1d | 2023-10-04 | 2023-10-04 | 3-2423 |  | 45d |  |
| 3-2417 |  | INST SIGNAL CABINET, MAD AND 20TH | 1d | 2023-10-05 | 2023-10-05 | 3-3550, 3-2424 |  | 45d |  |
| 3-2420 |  | INST PPB POST, MAD AND 20TH | 1d | 2023-10-06 | 2023-10-06 | 3-2419, 3-2417 |  | 45d |  |
| 3-2421 |  | INST WIRING, MAD AND 20TH | 3d | 2023-10-09 | 2023-10-11 | 3-2420 |  | 45d |  |
| 3-2425 |  | NOTIFY SDOT, MAD AND 20TH | 1d | 2023-10-12 | 2023-10-12 | 3-2424, 3-2421 |  | 45d |  |
| 3-2426 |  | SDOT INSPECTION, MAD AND 20TH | 5d | 2023-10-13 | 2023-10-19 | 3-2425 |  | 45d |  |
| 3-2427 |  | COMM SIGNAL, MAD AND 20TH | 1d | 2023-10-20 | 2023-10-20 | 3-2426 |  | 45d |  |
|  | 6 | **MADISON AND DENNY** |  | 2023-05-17 | 2023-10-05 |  |  |  |  |
| 3-2430 |  | INSTALL SERVICE CABINET | 1d | 2023-05-17 A | 2023-05-17 A | 3-3385 FF | 100% |  |  |
| 3-7323 |  | SDCI INSPECTION | 1d | 2023-06-02 A | 2023-06-02 A | 3-2430 FS+10d | 100% |  |  |
| 3-7324 |  | SDOT INSPECTION | 1d | 2023-06-14 A | 2023-06-14 A | 3-7323 FS+7d | 100% |  |  |
| 3-7325 |  | SCL INSPECTION REQUEST | 1d | 2023-07-03 A | 2023-07-03 A | 3-2430, 3-7324 | 100% |  | start on or after 2023-07-03 |
| 3-7326 |  | 30 DAY WAIT FOR SCL TO INSPECT | 22d | 2023-07-05 A | 2023-08-03 A | 3-7325 | 100% |  |  |
| 3-7327 |  | SCL INSPECTION | 1d | 2023-08-04 A | 2023-08-04 A | 3-7326 | 100% |  |  |
| 3-7328 |  | COMMISION NOTIFICATION | 1d | 2023-08-08 A | 2023-08-08 A | 3-2430, 3-7327 | 100% |  |  |
| 3-7329 |  | 30 DAY WAIT FOR SCL TO COMMISION | 23d | 2023-08-09 A | 2023-09-11 | 3-7328 |  | -4d |  |
| 3-2437 |  | COMM SERVICE, MAD AND DENNY | 1d | 2023-09-12 | 2023-09-12 | 3-7329 |  | -4d |  |
| 3-2429 |  | INST SIGNAL CABINET, MAD & DENNY | 1d | 2023-09-13 | 2023-09-13 | 3-2437 |  | -4d |  |
| 3-2431 |  | INST MAGNOMETERS, MAD AND DENNY | 1d | 2023-09-14 | 2023-09-14 | 3-2429 |  | -4d |  |
| 3-2432 |  | INST PPB POST, MAD AND DENNY | 3d | 2023-09-15 | 2023-09-19 | 3-2431 |  | -4d |  |
| 3-2433 |  | INST PEDISTALS, MAD AND DENNY | 2d | 2023-09-20 | 2023-09-21 | 3-2432 |  | -4d |  |
| 3-2434 |  | INST WIRING, MAD AND DENNY | 3d | 2023-09-22 | 2023-09-26 | 3-2433 |  | -4d |  |
| 3-2438 |  | NOTIFY SDOT, MAD AND DENNY | 1d | 2023-09-27 | 2023-09-27 | 3-2437, 3-2434 |  | -4d |  |
| 3-2439 |  | SDOT INSPECTION, MAD AND DENNY | 5d | 2023-09-28 | 2023-10-04 | 3-2438 |  | -4d |  |
| 3-2440 |  | COMM SIGNAL, MAD AND DENNY | 1d | 2023-10-05 | 2023-10-05 | 3-2439 |  | -4d |  |
|  | 7 | **MADISON AND 23RD** |  | 2023-10-06 | 2023-10-20 |  |  |  |  |
| 3-2442 |  | INST MAGNOMETERS, MAD AND 23RD | 2d | 2023-10-06 | 2023-10-09 | 3-2220, 3-2440 |  | -4d |  |
| 3-2443 |  | INST WIRING, MAD AND 23RD | 2d | 2023-10-10 | 2023-10-11 | 3-2442 |  | 4d |  |
| 3-2444 |  | NOTFICY SDOT, MAD AND 23RD | 1d | 2023-10-12 | 2023-10-12 | 3-2443 |  | 39d |  |
| 3-2445 |  | SDOT INSPECTION, MAD AND 23RD | 5d | 2023-10-13 | 2023-10-19 | 3-2444 |  | 39d |  |
| 3-2446 |  | COMM SIGNAL, MAD AND 23RD | 1d | 2023-10-20 | 2023-10-20 | 3-2445 |  | 39d |  |
|  | 8 | **MADISON AND 24TH** |  | 2023-06-30 | 2023-10-20 |  |  |  |  |
| 3-2474 |  | DELAY WAITING FOR SCL TO SLEAVE OR TURN OFF POWER | 5d | 2023-06-30 A | 2023-08-22 |  |  | 5d |  |
| 3-2509 |  | DELAY AWAITING SCL TO SLEAVE OR TURN OFF POWER TO ALLOW FOR INSTALLATION OF THE SIGNAL POLE | 5d | 2023-06-30 A | 2023-08-18 |  |  | -15d |  |
| 3-2449 |  | INST SERVICE METER CABINET, MAD & 24TH | 1d | 2023-08-07 A | 2023-08-07 A | 3-6215 | 100% |  |  |
| 3-3058 |  | SDCI INSPECTION | 1d | 2023-08-08 A | 2023-08-08 A | 3-2449 | 100% |  |  |
| 3-3038 |  | SCL INSPECTION REQUEST | 0d | 2023-08-09 A | 2023-08-09 A | 3-3059 | 100% |  |  |
| 3-3059 |  | SDOT INSPECTION | 1d | 2023-08-09 A | 2023-08-09 A | 3-3058 | 100% |  |  |
| 3-3039 |  | 30 DAY WAIT FOR SCL TO INSPECT, MAD AND BOYLSTON | 30d | 2023-08-10 A | 2023-08-17 | 3-3038 |  | -14d |  |
| 3-3079 |  | SCL INSPECTION | 1d | 2023-08-21 | 2023-08-21 | 3-3039, 3-2509 |  | -15d |  |

| ID | WBS | Task | Duration | Start | Finish | Predecessors | Total float |
| --- | --- | --- | --- | --- | --- | --- | --- |
| 3-2454 |  | COMMISION NOTIFICATION | 1d | 2023-08-22 | 2023-08-22 | 3-3079 | -15d |
| 3-2455 |  | 30 DAY WAIT FOR SCL TO COMMISION | 20d | 2023-08-23 | 2023-09-20 | 3-2454 | -15d |
| 3-3110 |  | INSTALL POLES, MAD AND 24TH | 4d | 2023-08-23 | 2023-08-28 | 3-3105, 3-2474 | 5d |
| 3-2456 |  | COMM SERVICE, MAD AND 24TH | 1d | 2023-09-21 | 2023-09-21 | 3-2455 | -15d |
| 3-2448 |  | INST SIGNAL CABINET, MAD AND 24TH | 1d | 2023-09-22 | 2023-09-22 | 3-3490, 3-2456 | -15d |
| 3-2450 |  | INST MAST ARMS, MAD AND 24TH | 4d | 2023-09-25 | 2023-09-28 | 3-2449, 3-2448 | -15d |
| 3-2451 |  | INST PPB POST, MAD AND 24TH | 3d | 2023-09-29 | 2023-10-03 | 3-2450 | -15d |
| 3-2452 |  | INST PEDISTALS, MAD AND 24TH | 1d | 2023-10-04 | 2023-10-04 | 3-2451 | -15d |
| 3-2453 |  | INST WIRING, MAD AND 24TH | 5d | 2023-10-05 | 2023-10-11 | 3-2452 | -15d |
| 3-2457 |  | NOTIFY SDOT, MAD AND 24TH | 1d | 2023-10-12 | 2023-10-12 | 3-2456, 3-2453 | 45d |
| 3-2458 |  | SDOT INSPECTION, MAD AND 24TH | 5d | 2023-10-13 | 2023-10-19 | 3-2457 | 45d |
| 3-2459 |  | COMM SIGNAL, MAD AND 24TH | 1d | 2023-10-20 | 2023-10-20 | 3-2458 | 45d |
|  | 9 | **MADISON AND 28TH** |  | 2023-08-29 | 2024-02-23 |  |  |
| 3-3115 |  | INST POLES, MAD AND 28TH | 3d | 2023-08-29 | 2023-08-31 | 3-3110 | 12d |
| 3-2462 |  | INST SERVICE METER CABINET, MAD & 28TH | 1d | 2023-10-16 | 2023-10-16 | 3-2272 | -44d |
| 3-8050 |  | SDCI INSPECTION | 1d | 2023-10-17 | 2023-10-17 | 3-2462 | -44d |
| 3-8070 |  | SDOT INSPECTION | 1d | 2023-10-18 | 2023-10-18 | 3-8050 | -44d |
| 3-8038 |  | SCL INSPECTION REQUEST | 0d | 2023-10-19 | 2023-10-19 | 3-8070 | -44d |
| 3-8039 |  | 30 DAY WAIT FOR SCL TO INSPECT, MAD AND BOYLSTON | 30d | 2023-10-19 | 2023-12-04 | 3-8038 | -44d |
| 3-8079 |  | SCL INSPECTION | 1d | 2023-12-05 | 2023-12-05 | 3-8039 | -44d |
| 3-2468 |  | COMMISION NOTIFICATION | 1d | 2023-12-06 | 2023-12-06 | 3-8079 | -44d |
| 3-2469 |  | 30 DAY WAIT FOR SCL TO COMMISION | 30d | 2023-12-07 | 2024-01-22 | 3-2468 | -44d |
| 3-2470 |  | COMM SERVICE, MAD AND 28TH | 1d | 2024-01-23 | 2024-01-23 | 3-2469 | -44d |
| 3-2461 |  | INST SIGNAL CABINET, MAD AND 28TH | 1d | 2024-01-24 | 2024-01-24 | PMP-0016, 3-2272, 3-2470 | -44d |
| 3-2463 |  | INST MAGNOMETERS, MAD AND 28TH | 3d | 2024-01-25 | 2024-01-29 | 3-2462, 3-2461 | -44d |
| 3-2464 |  | INST MAST ARMS, MAD AND 28TH | 3d | 2024-01-30 | 2024-02-01 | 3-2463 | -44d |
| 3-2465 |  | INST PPB POST, MAD AND 28TH | 2d | 2024-02-02 | 2024-02-05 | 3-2464 | -44d |
| 3-2466 |  | INST PEDISTALS, MAD AND 28TH | 1d | 2024-02-06 | 2024-02-06 | 3-2465 | -44d |
| 3-2467 |  | INST WIRING, MAD AND 28TH | 5d | 2024-02-07 | 2024-02-13 | 3-2466 | -44d |
| 3-2471 |  | NOTIFY SDOT, MAD AND 28TH | 1d | 2024-02-14 | 2024-02-14 | 3-2470, 3-2467 | -44d |
| 3-2472 |  | SDOT INSPECTION, MAD AND 28TH | 5d | 2024-02-15 | 2024-02-22 | 3-2471 | -44d |
| 3-2473 |  | COMM SIGNAL, MAD AND 28TH | 1d | 2024-02-23 | 2024-02-23 | 3-2472 | -44d |
|  | 12 | **ITS WIRING** |  | 2024-03-15 | 2024-03-28 |  |  |
| 3-2501 |  | INST WIRING, ITS, ITS WIRING | 10d | 2024-03-15 | 2024-03-28 | 3-2473, 3-2499, 3-2486, 3-2446 | -58d |
|  | 13 | **LIGHTING** |  | 2023-08-11 | 2024-05-30 |  |  |
|  | 1 | **16TH** |  | 2023-11-17 | 2024-02-20 |  |  |
| 3-2503 |  | INST POLES, LIGHTING | 10d | 2023-11-17 | 2023-12-04 | 3-2369 | -35d |
| 3-2504 |  | INST WIRING, LIGHTING | 10d | 2023-12-05 | 2023-12-18 | 3-2503 | -35d |
| 3-2505 |  | NOTIFY SCL, LIGHTING | 0d | 2023-12-19 | 2023-12-19 | 3-2504 | -35d |
| 3-2506 |  | SCL INSPECTION, LIGHTING | 30d | 2023-12-19 | 2024-02-01 | 3-2505 | -35d |
| 3-2685 |  | COMM SERVICE, LIGHTING | 1d | 2024-02-02 | 2024-02-02 | 3-2506 | -35d |
| 3-2690 |  | NOTIFY SCL, LIGHTING | 0d | 2024-02-05 | 2024-02-05 | 3-2685 | -35d |
| 3-2695 |  | SCL INSPECTION, LIGHTING | 10d | 2024-02-05 | 2024-02-16 | 3-2690 | -35d |
| 3-2507 |  | COMM LIGHTING, LIGHTING | 1d | 2024-02-20 | 2024-02-20 | 3-2695 | -35d |
|  | 7 | **17TH** |  | 2023-08-14 | 2024-04-12 |  |  |
| 3-2930 |  | INST POLES, LIGHTING | 10d | 2023-08-14 | 2023-08-25 |  | 36d |
| 3-2935 |  | INST WIRING, LIGHTING | 10d | 2024-01-31 | 2024-02-13 | 3-2930, 3-2372, 3-2383 | -69d |
| 3-2940 |  | NOTIFY SCL, LIGHTING | 0d | 2024-02-14 | 2024-02-14 | 3-2935 | -69d |
| 3-2945 |  | SCL INSPECTION, LIGHTING | 30d | 2024-02-14 | 2024-03-27 | 3-2940 | -69d |
| 3-2955 |  | COMM SERVICE, LIGHTING | 1d | 2024-03-28 | 2024-03-28 | 3-2945 | -69d |
| 3-2960 |  | NOTIFY SCL, LIGHTING | 0d | 2024-03-29 | 2024-03-29 | 3-2955 | -69d |
| 3-2965 |  | SCL INSPECTION, LIGHTING | 10d | 2024-03-29 | 2024-04-11 | 3-2960 | -69d |
| 3-2950 |  | COMM LIGHTING, LIGHTING | 1d | 2024-04-12 | 2024-04-12 | 3-2965 | -69d |
|  | 2 | **18TH** |  | 2023-08-14 | 2024-04-12 |  |  |
| 3-2705 |  | INST POLES, LIGHTING | 10d | 2023-08-14 | 2023-08-25 | 3-3105 | 36d |
| 3-2710 |  | INST WIRING, LIGHTING | 10d | 2024-01-31 | 2024-02-13 | 3-2705, 3-2396 | -69d |
| 3-2715 |  | NOTIFY SCL, LIGHTING | 0d | 2024-02-14 | 2024-02-14 | 3-2710 | -69d |
| 3-2720 |  | SCL INSPECTION, LIGHTING | 30d | 2024-02-14 | 2024-03-27 | 3-2715 | -69d |
| 3-2730 |  | COMM SERVICE, LIGHTING | 1d | 2024-03-28 | 2024-03-28 | 3-2720 | -69d |
| 3-2735 |  | NOTIFY SCL, LIGHTING | 0d | 2024-03-29 | 2024-03-29 | 3-2730 | -69d |
| 3-2740 |  | SCL INSPECTION, LIGHTING | 10d | 2024-03-29 | 2024-04-11 | 3-2735 | -69d |
| 3-2725 |  | COMM LIGHTING, LIGHTING | 1d | 2024-04-12 | 2024-04-12 | 3-2740 | -69d |
|  | 6 | **19TH** |  | 2023-08-14 | 2024-03-01 |  |  |
| 3-2885 |  | INST POLES, LIGHTING | 10d | 2023-08-14 | 2023-08-25 | 3-3105 | -4d |
| 3-2890 |  | INST WIRING, LIGHTING | 10d | 2023-12-15 | 2023-12-29 | 3-2885, 3-2409 | -39d |
| 3-2895 |  | NOTIFY SCL, LIGHTING | 0d | 2024-01-02 | 2024-01-02 | 3-2890 | -39d |
| 3-2900 |  | SCL INSPECTION, LIGHTING | 30d | 2024-01-02 | 2024-02-13 | 3-2895 | -39d |
| 3-2910 |  | COMM SERVICE, LIGHTING | 1d | 2024-02-14 | 2024-02-14 | 3-2900 | -39d |
| 3-2915 |  | NOTIFY SCL, LIGHTING | 0d | 2024-02-15 | 2024-02-15 | 3-2910 | -39d |
| 3-2920 |  | SCL INSPECTION, LIGHTING | 10d | 2024-02-15 | 2024-02-29 | 3-2915 | -39d |

| ID | WBS | Task | Duration | Start | Finish | Predecessors | Complete | Total float |
| --- | --- | --- | --- | --- | --- | --- | --- | --- |
| 3-2905 |  | COMM LIGHTING, LIGHTING | 1d | 2024-03-01 | 2024-03-01 | 3-2920 |  | -39d |
|  | 5 | **DENNY (Schematic 22)** |  | 2023-08-11 | 2023-12-12 |  |  |  |
| 3-2880 |  | SCL NOTIFICATION FOR MANDERALING | 1d | 2023-08-11 A | 2023-08-11 A |  | 100% |  |
| 3-2925 |  | 2 DAY WAIT FOR SCL | 2d | 2023-08-14 | 2023-08-15 | 3-2880 |  | 21d |
| 3-2970 |  | OWNER CAUSED DELAY SLC MANERALING | 22d | 2023-08-16 | 2023-09-15 | 3-2925 |  | 21d |
| 3-2840 |  | INST POLES, LIGHTING | 10d | 2023-08-28 | 2023-09-11 | 3-2885 |  | -4d |
| 3-3015 |  | MANDREL CONDUITS | 1d | 2023-09-18 | 2023-09-18 | 3-2970 |  | 21d |
| 3-2845 |  | INST WIRING, LIGHTING | 10d | 2023-09-27 | 2023-10-10 | 3-2840, 3-2434, 3-3015 |  | 15d |
| 3-2850 |  | NOTIFY SCL, LIGHTING | 0d | 2023-10-11 | 2023-10-11 | 3-2845 |  | 15d |
| 3-2855 |  | SCL INSPECTION, LIGHTING | 30d | 2023-10-11 | 2023-11-22 | 3-2850 |  | 15d |
| 3-2865 |  | COMM SERVICE, LIGHTING | 1d | 2023-11-27 | 2023-11-27 | 3-2855 |  | 15d |
| 3-2870 |  | NOTIFY SCL, LIGHTING | 0d | 2023-11-28 | 2023-11-28 | 3-2865 |  | 15d |
| 3-2875 |  | SCL INSPECTION, LIGHTING | 10d | 2023-11-28 | 2023-12-11 | 3-2870 |  | 15d |
| 3-2860 |  | COMM LIGHTING, LIGHTING | 1d | 2023-12-12 | 2023-12-12 | 3-2875 |  | 15d |
|  | 4 | **23RD (Schematic 23)** |  | 2023-08-11 | 2024-01-10 |  |  |  |
| 3-9588 |  | SCL NOTIFICATION FOR MANDERALING | 1d | 2023-08-11 A | 2023-08-11 A |  | 100% |  |
| 3-9593 |  | 2 DAY WAIT FOR SCL | 2d | 2023-08-14 | 2023-08-15 | 3-9588 |  | 21d |
| 3-9598 |  | OWNER CAUSED DELAY SLC MANERALING | 22d | 2023-08-16 | 2023-09-15 | 3-9593 |  | 21d |
| 3-9618 |  | MANDREL CONDUITS | 1d | 2023-09-18 | 2023-09-18 | 3-9598 |  | 21d |
| 3-2795 |  | INST POLES, LIGHTING | 10d | 2023-10-10 | 2023-10-23 | 3-2442 |  | -4d |
| 3-2800 |  | INST WIRING, LIGHTING | 10d | 2023-10-24 | 2023-11-06 | 3-2795, 3-2443, 3-9618 |  | -4d |
| 3-2805 |  | NOTIFY SCL, LIGHTING | 0d | 2023-11-07 | 2023-11-07 | 3-2800 |  | -4d |
| 3-2810 |  | SCL INSPECTION, LIGHTING | 30d | 2023-11-07 | 2023-12-21 | 3-2805 |  | -4d |
| 3-2820 |  | COMM SERVICE, LIGHTING | 1d | 2023-12-22 | 2023-12-22 | 3-2810 |  | -4d |
| 3-2825 |  | NOTIFY SCL, LIGHTING | 0d | 2023-12-26 | 2023-12-26 | 3-2820 |  | -4d |
| 3-2830 |  | SCL INSPECTION, LIGHTING | 10d | 2023-12-26 | 2024-01-09 | 3-2825 |  | -4d |
| 3-2815 |  | COMM LIGHTING, LIGHTING | 1d | 2024-01-10 | 2024-01-10 | 3-2830 |  | -4d |
|  | 3 | **24TH (Schematic 24)** |  | 2023-08-11 | 2023-12-28 |  |  |  |
| 3-9603 |  | SCL NOTIFICATION FOR MANDERALING | 1d | 2023-08-11 A | 2023-08-11 A |  | 100% |  |
| 3-9608 |  | 2 DAY WAIT FOR SCL | 2d | 2023-08-14 | 2023-08-15 | 3-9603 |  | 2d |
| 3-9613 |  | OWNER CAUSED DELAY SLC MANERALING | 22d | 2023-08-16 | 2023-09-15 | 3-9608 |  | 2d |
| 3-2750 |  | INST POLES, LIGHTING | 10d | 2023-09-12 | 2023-09-25 | 3-3110, 3-2840 |  | -4d |
| 3-9623 |  | MANDREL CONDUITS | 1d | 2023-09-18 | 2023-09-18 | 3-9613 |  | 2d |
| 3-2755 |  | INST WIRING, LIGHTING | 10d | 2023-10-12 | 2023-10-25 | 3-2750, 3-2453, 3-9623 |  | -15d |
| 3-2760 |  | NOTIFY SCL, LIGHTING | 0d | 2023-10-26 | 2023-10-26 | 3-2755 |  | 3d |
| 3-2765 |  | SCL INSPECTION, LIGHTING | 30d | 2023-10-26 | 2023-12-11 | 3-2760 |  | 3d |
| 3-2775 |  | COMM SERVICE, LIGHTING | 1d | 2023-12-12 | 2023-12-12 | 3-2765 |  | 3d |
| 3-2780 |  | NOTIFY SCL, LIGHTING | 0d | 2023-12-13 | 2023-12-13 | 3-2775 |  | 3d |
| 3-2785 |  | SCL INSPECTION, LIGHTING | 10d | 2023-12-13 | 2023-12-27 | 3-2780 |  | 3d |
| 3-2770 |  | COMM LIGHTING, LIGHTING | 1d | 2023-12-28 | 2023-12-28 | 3-2785 |  | 3d |
|  | 10 | **MLK** |  | 2023-09-26 | 2024-05-15 |  |  |  |
| 3-3065 |  | INST POLES, LIGHTING | 10d | 2023-09-26 | 2023-10-09 | 3-3115, 3-2750 |  | -4d |
| 3-3070 |  | INST WIRING, LIGHTING | 9d | 2024-03-06 | 2024-03-18 | 3-3065, 3-2755, 3-2480 |  | -102d |
| 3-3075 |  | NOTIFY SCL, LIGHTING | 0d | 2024-03-19 | 2024-03-19 | 3-3070 |  | -92d |
| 3-3080 |  | SCL INSPECTION, LIGHTING | 30d | 2024-03-19 | 2024-04-29 | 3-3075 |  | -92d |
| 3-3090 |  | COMM SERVICE, LIGHTING | 1d | 2024-04-30 | 2024-04-30 | 3-3080 |  | -92d |
| 3-3095 |  | NOTIFY SCL, LIGHTING | 0d | 2024-05-01 | 2024-05-01 | 3-3090 |  | -92d |
| 3-3100 |  | SCL INSPECTION, LIGHTING | 10d | 2024-05-01 | 2024-05-14 | 3-3095 |  | -92d |
| 3-3085 |  | COMM LIGHTING, LIGHTING | 1d | 2024-05-15 | 2024-05-15 | 3-3100 |  | -92d |
|  | 9 | **HARRISON** |  | 2023-10-10 | 2024-05-30 |  |  |  |
| 3-3020 |  | INST POLES, LIGHTING | 10d | 2023-10-10 | 2023-10-23 | 3-3120, 3-3065 |  | -4d |
| 3-3025 |  | INST WIRING, LIGHTING | 10d | 2024-03-19 | 2024-04-01 | 3-3020, 3-3070, 3-2480 |  | -102d |
| 3-3030 |  | NOTIFY SCL, LIGHTING | 0d | 2024-04-02 | 2024-04-02 | 3-3025 |  | -102d |
| 3-3035 |  | SCL INSPECTION, LIGHTING | 30d | 2024-04-02 | 2024-05-13 | 3-3030 |  | -102d |
| 3-3045 |  | COMM SERVICE, LIGHTING | 1d | 2024-05-14 | 2024-05-14 | 3-3035 |  | -102d |
| 3-3050 |  | NOTIFY SCL, LIGHTING | 0d | 2024-05-15 | 2024-05-15 | 3-3045 |  | -102d |
| 3-3055 |  | SCL INSPECTION, LIGHTING | 10d | 2024-05-15 | 2024-05-29 | 3-3050 |  | -102d |
| 3-3040 |  | COMM LIGHTING, LIGHTING | 1d | 2024-05-30 | 2024-05-30 | 3-3055 |  | -102d |
|  | 8 | **19TH AND UNION** |  | 2024-01-23 | 2024-04-18 |  |  |  |
| 3-2975 |  | INST POLES, LIGHTING | 10d | 2024-01-23 | 2024-02-05 | 3-2490 |  | -73d |
| 3-2980 |  | INST WIRING, LIGHTING | 10d | 2024-02-06 | 2024-02-20 | 3-2975, 3-2493 |  | -73d |
| 3-2985 |  | NOTIFY SCL, LIGHTING | 0d | 2024-02-21 | 2024-02-21 | 3-2980 |  | -73d |
| 3-2990 |  | SCL INSPECTION, LIGHTING | 30d | 2024-02-21 | 2024-04-02 | 3-2985 |  | -73d |
| 3-3000 |  | COMM SERVICE, LIGHTING | 1d | 2024-04-03 | 2024-04-03 | 3-2990 |  | -73d |
| 3-3005 |  | NOTIFY SCL, LIGHTING | 0d | 2024-04-04 | 2024-04-04 | 3-3000 |  | -73d |
| 3-3010 |  | SCL INSPECTION, LIGHTING | 10d | 2024-04-04 | 2024-04-17 | 3-3005 |  | -73d |
| 3-2995 |  | COMM LIGHTING, LIGHTING | 1d | 2024-04-18 | 2024-04-18 | 3-3010 |  | -73d |
|  | 19 | **WORK TO COMPLETE AFTER SIGNAL/LIGHTING COMMISSIONING** |  | 2023-10-06 | 2024-03-06 |  |  |  |
|  | 18 | **16TH AND MADISON** |  | 2023-12-08 | 2024-02-26 |  |  |  |
| 3-3130 |  | REMOVE TEMP SIGNALS | 2d | 2023-12-08 | 2023-12-11 | 3-2378 |  | 9d |

| ID | WBS | Task | Duration | Start | Finish | Predecessors | Complete | Total float | Constraint |
| --- | --- | --- | --- | --- | --- | --- | --- | --- | --- |
| 3-3135 |  | REMOVE SIGNAL POLE | 1d | 2023-12-12 | 2023-12-12 | 3-3130 |  | 9d |  |
| 3-3140 |  | REMOVE FOUNDATIONS | 2d | 2023-12-13 | 2023-12-14 | 3-3135 |  | 9d |  |
| 3-3145 |  | GRADE SIDEWALKS | 1d | 2023-12-15 | 2023-12-15 | 3-3140 |  | 9d |  |
| 3-3150 |  | CURB RAMP | 2d | 2023-12-18 | 2023-12-19 | 3-3145 |  | 9d |  |
| 3-3155 |  | SIDEWALKS | 1d | 2023-12-20 | 2023-12-20 | 3-3150 |  | 9d |  |
| 3-3125 |  | REMOVE TEMP LIGHTING | 2d | 2024-02-21 | 2024-02-22 | 3-2507 |  | -35d |  |
| 3-3160 |  | GRADE SIDEWALKS AFTER TEMP LIGHTING REMOVAL | 1d | 2024-02-23 | 2024-02-23 | 3-3125 |  | -35d |  |
| 3-3165 |  | FINISH SIDEWALKS | 1d | 2024-02-26 | 2024-02-26 | 3-3160 |  | -35d |  |
|  | 1 | **17TH AND MADISON** |  | 2024-02-09 | 2024-02-14 |  |  |  |  |
| 3-3170 |  | REMOVE CABINET | 1d | 2024-02-09 | 2024-02-09 | 3-2389 |  | -28d |  |
| 3-3175 |  | REMOVE CABINET FOUNDATION | 1d | 2024-02-12 | 2024-02-12 | 3-3170 |  | -28d |  |
| 3-3190 |  | GRADE SIDEWALKS | 1d | 2024-02-13 | 2024-02-13 | 3-3175 |  | -28d |  |
| 3-3200 |  | POUR SIDEWALKS | 1d | 2024-02-14 | 2024-02-14 | 3-3190 |  | -28d |  |
|  | 2 | **19TH AND MADISON** |  | 2024-02-12 | 2024-02-15 |  |  |  |  |
| 3-3205 |  | REMOVE CABINET | 1d | 2024-02-12 | 2024-02-12 | 3-2415, 3-2402 |  | -29d |  |
| 3-3210 |  | REMOVE CABINET FOUNDATION | 1d | 2024-02-13 | 2024-02-13 | 3-3205 |  | -29d |  |
| 3-3215 |  | GRADE SIDEWALKS | 1d | 2024-02-14 | 2024-02-14 | 3-3210 |  | -29d |  |
| 3-3220 |  | POUR SIDEWALKS | 1d | 2024-02-15 | 2024-02-15 | 3-3215 |  | -29d |  |
|  | 3 | **20TH AND MADISON** |  | 2023-10-23 | 2023-10-26 |  |  |  |  |
| 3-3225 |  | REMOVE CABINET | 1d | 2023-10-23 | 2023-10-23 | 3-2427 |  | 45d |  |
| 3-3230 |  | REMOVE CABINET FOUNDATION | 1d | 2023-10-24 | 2023-10-24 | 3-3225 |  | 45d |  |
| 3-3235 |  | GRADE SIDEWALKS | 1d | 2023-10-25 | 2023-10-25 | 3-3230 |  | 45d |  |
| 3-3240 |  | POUR SIDEWALKS | 1d | 2023-10-26 | 2023-10-26 | 3-3235 |  | 45d |  |
|  | 4 | **DENNY AND MADISON** |  | 2023-10-06 | 2023-10-11 |  |  |  |  |
| 3-3245 |  | REMOVE CABINET | 1d | 2023-10-06 | 2023-10-06 | 3-2440 |  | 56d |  |
| 3-3250 |  | REMOVE CABINET FOUNDATION | 1d | 2023-10-09 | 2023-10-09 | 3-3245 |  | 56d |  |
| 3-3255 |  | GRADE SIDEWALKS | 1d | 2023-10-10 | 2023-10-10 | 3-3250 |  | 56d |  |
| 3-3260 |  | POUR SIDEWALKS | 1d | 2023-10-11 | 2023-10-11 | 3-3255 |  | 56d |  |
|  | 5 | **24TH AND MADISON** |  | 2023-10-23 | 2023-12-29 |  |  |  |  |
| 3-3265 |  | REMOVE CABINET | 1d | 2023-10-23 | 2023-10-23 | 3-2459 |  | 45d |  |
| 3-3270 |  | REMOVE CABINET FOUNDATION | 1d | 2023-10-24 | 2023-10-24 | 3-3265 |  | 45d |  |
| 3-3275 |  | GRADE SIDEWALKS | 1d | 2023-10-25 | 2023-10-25 | 3-3270 |  | 45d |  |
| 3-3280 |  | POUR SIDEWALKS | 1d | 2023-10-26 | 2023-10-26 | 3-3275 |  | 45d |  |
| 3-3305 |  | REMOVE WOOD POLE | 1d | 2023-12-29 | 2023-12-29 | 3-2770 |  | 3d |  |
|  | 6 | **28TH/MLK AND MADISON** |  | 2024-02-26 | 2024-03-06 |  |  |  |  |
| 3-3285 |  | REMOVE CABINET | 1d | 2024-02-26 | 2024-02-26 | 3-2473 |  | -42d |  |
| 3-3310 |  | REMOVE STRAIN POLES | 1d | 2024-02-27 | 2024-02-27 | 3-3285 |  | -42d |  |
| 3-3290 |  | REMOVE FOUNDATIONS | 2d | 2024-02-28 | 2024-02-29 | 3-3310 |  | -42d |  |
| 3-3295 |  | GRADE SIDEWALKS | 1d | 2024-03-01 | 2024-03-01 | 3-3290 |  | -42d |  |
| 3-3315 |  | CURB RAMP | 2d | 2024-03-04 | 2024-03-05 | 3-3295 |  | -42d |  |
| 3-3300 |  | POUR SIDEWALKS | 1d | 2024-03-06 | 2024-03-06 | 3-3315 |  | -42d |  |
|  | 18 | **KCM SERVICE CONECTIONS** |  | 2023-05-01 | 2023-10-03 |  |  |  |  |
|  | 1 | **DENNY AND MADISON WB** |  | 2023-05-16 | 2023-09-11 |  |  |  |  |
| 3-9541 |  | SERVICE CABINET | 1d | 2023-05-16 A | 2023-05-16 A | 3-3385 SS | 100% |  |  |
| 3-9544 |  | SDCI INSPECTION | 1d | 2023-06-02 A | 2023-06-02 A | 3-9541 FS+11d | 100% |  |  |
| 3-9542 |  | REQUEST KCM INSPECTION | 1d | 2023-06-08 A | 2023-06-08 A | 3-9541, 3-9544 FS+3d | 100% |  |  |
| 3-9543 |  | WAIT FOR KCM TO INSPECT | 4d | 2023-06-09 A | 2023-06-14 A | 3-9542 | 100% |  |  |
| 3-9545 |  | NOTIFY SCL FOR INSPECTION | 1d | 2023-07-03 A | 2023-07-03 A | 3-9544, 3-9543 | 100% |  | start on or after 2023-07-03 |
| 3-9546 |  | 30 DAY WAIT FOR SCL TO INSPECT | 30d | 2023-07-05 A | 2023-08-07 A | 3-9545 | 100% |  |  |
| 3-9547 |  | SCL INSPECTION | 1d | 2023-08-08 A | 2023-08-08 A | 3-9546 | 100% |  |  |
| 3-9548 |  | NOTIFY SCL TO COMMISION | 1d | 2023-08-09 A | 2023-08-09 A | 3-9547 | 100% |  |  |
| 3-9549 |  | 30 DAY WAIT FOR SCL TO COMMISION | 21d | 2023-08-10 A | 2023-09-08 | 3-9548 |  | 78d |  |
| 3-9550 |  | COMMISION SERVICE | 1d | 2023-09-11 | 2023-09-11 | 3-9549 |  | 78d |  |
|  | 2 | **DENNY AND MADISON EB** |  | 2023-06-01 | 2023-09-11 |  |  |  |  |
| 3-9552 |  | SERVICE CABINET | 1d | 2023-06-01 A | 2023-06-01 A | 3-3385 | 100% |  | start on or after 2023-06-01 |
| 3-9555 |  | SDCI INSPECTION | 1d | 2023-06-02 A | 2023-06-02 A | 3-9552 | 100% |  |  |
| 3-9553 |  | REQUEST KCM INSPECTION | 1d | 2023-06-07 A | 2023-06-07 A | 3-9552, 3-9555 FS+2d | 100% |  |  |
| 3-9554 |  | WAIT FOR KCM TO INSPECT | 4d | 2023-06-08 A | 2023-06-13 A | 3-9553 | 100% |  |  |
| 3-9556 |  | NOTIFY SCL FOR INSPECTION | 1d | 2023-07-03 A | 2023-07-03 A | 3-9555, 3-9554 | 100% |  | start on or after 2023-07-03 |
| 3-9557 |  | 30 DAY WAIT FOR SCL TO INSPECT | 30d | 2023-07-05 A | 2023-08-01 A | 3-9556 | 100% |  |  |
| 3-9558 |  | SCL INSPECTION | 1d | 2023-08-02 A | 2023-08-02 A | 3-9557 | 100% |  |  |
| 3-9559 |  | NOTIFY SCL TO COMMISION | 1d | 2023-08-09 A | 2023-08-09 A | 3-9558 | 100% |  |  |
| 3-9560 |  | 30 DAY WAIT FOR SCL TO COMMISION | 21d | 2023-08-10 A | 2023-09-08 | 3-9559 |  | 78d |  |
| 3-9561 |  | COMMISION SERVICE | 1d | 2023-09-11 | 2023-09-11 | 3-9560 |  | 78d |  |
|  | 3 | **23RD AND MADISON** |  | 2023-05-01 | 2023-09-11 |  |  |  |  |
| 3-9563 |  | SERVICE CABINET | 1d | 2023-05-01 A | 2023-05-01 A | 3-2220 | 100% |  |  |
| 3-9566 |  | SDCI INSPECTION | 1d | 2023-06-02 A | 2023-06-02 A | 3-9563 FS+1d | 100% |  |  |
| 3-9564 |  | REQUEST KCM INSPECTION | 1d | 2023-06-08 A | 2023-06-08 A | 3-9563, 3-9566 FS+3d | 100% |  |  |
| 3-9565 |  | WAIT FOR KCM TO INSPECT | 4d | 2023-06-09 A | 2023-06-14 A | 3-9564 | 100% |  |  |
| 3-9567 |  | NOTIFY SCL FOR INSPECTION | 1d | 2023-07-03 A | 2023-07-03 A | 3-9563, 3-9566, 3-9565 | 100% |  | start on or after 2023-07-03 |

| ID | WBS | Task | Duration | Start | Finish | Predecessors | Complete | Total float | Constraint |
| --- | --- | --- | --- | --- | --- | --- | --- | --- | --- |
| 3-9568 |  | 30 DAY WAIT FOR SCL TO INSPECT | 30d | 2023-07-05 A | 2023-08-01 A | 3-9567 | 100% |  |  |
| 3-9569 |  | SCL INSPECTION | 1d | 2023-08-02 A | 2023-08-02 A | 3-9568 | 100% |  |  |
| 3-9570 |  | NOTIFY SCL TO COMMISION | 1d | 2023-08-09 A | 2023-08-09 A | 3-9569 | 100% |  |  |
| 3-9571 |  | 30 DAY WAIT FOR SCL TO COMMISION | 16d | 2023-08-10 A | 2023-09-08 | 3-9570 |  | 78d |  |
| 3-9572 |  | COMMISION SERVICE | 1d | 2023-09-11 | 2023-09-11 | 3-9571 |  | 78d |  |
|  | 4 | **JOHN AND MADISON** |  | 2023-05-17 | 2023-10-03 |  |  |  |  |
| 3-9574 |  | SERVICE CABINET | 1d | 2023-05-17 A | 2023-05-17 A | 3-3455 | 100% |  |  |
| 3-9577 |  | SDCI INSPECTION | 1d | 2023-06-02 A | 2023-06-02 A | 3-9574, 3-9566 SS | 100% |  |  |
| 3-9575 |  | REQUEST KCM INSPECTION | 1d | 2023-06-08 A | 2023-06-08 A | 3-9574, 3-9577 FS+3d | 100% |  |  |
| 3-9576 |  | WAIT FOR KCM TO INSPECT | 4d | 2023-06-09 A | 2023-06-14 A | 3-9575 | 100% |  |  |
| 3-9578 |  | NOTIFY SCL FOR INSPECTION | 1d | 2023-08-14 | 2023-08-14 | 3-9577, 3-9576 |  | 62d | start on or after 2023-07-03 |
| 3-9579 |  | 30 DAY WAIT FOR SCL TO INSPECT | 16d | 2023-08-15 | 2023-09-06 | 3-9578 |  | 62d |  |
| 3-9580 |  | SCL INSPECTION | 1d | 2023-09-07 | 2023-09-07 | 3-9579 |  | 62d |  |
| 3-9581 |  | NOTIFY SCL TO COMMISION | 1d | 2023-09-08 | 2023-09-08 | 3-9580 |  | 62d |  |
| 3-9582 |  | 30 DAY WAIT FOR SCL TO COMMISION | 16d | 2023-09-11 | 2023-10-02 | 3-9581 |  | 62d |  |
| 3-9583 |  | COMMISION SERVICE | 1d | 2023-10-03 | 2023-10-03 | 3-9582 |  | 62d |  |
|  | 14 | **STATIONS** |  | 2023-09-11 | 2023-12-11 |  |  |  |  |
|  | 1 | **17TH AVE WB STATION** |  | 2023-09-11 | 2023-09-20 |  |  |  |  |
| 3-2510 |  | INST SHELTER, 17TH AVE WB STATION | 4d | 2023-09-11 | 2023-09-14 | 3-2134 |  | 16d |  |
| 3-2511 |  | INST TEC PYLON, 17TH AVE WB STATION | 2d | 2023-09-15 | 2023-09-18 | 3-2510 |  | 16d |  |
| 3-2512 |  | INST AMENITIES, 17TH AVE WB STATION | 2d | 2023-09-19 | 2023-09-20 | 3-2511 |  | 16d |  |
|  | 2 | **17TH AVE EB STATION** |  | 2023-09-21 | 2023-10-02 |  |  |  |  |
| 3-2514 |  | INST SHELTER, 17TH AVE EB STATION | 4d | 2023-09-21 | 2023-09-26 | 3-2512 |  | 16d |  |
| 3-2515 |  | INST TEC PYLON, 17TH AVE EB STATION | 2d | 2023-09-27 | 2023-09-28 | 3-2514 |  | 16d |  |
| 3-2516 |  | INST AMENITIES, 17TH AVE EB STATION | 2d | 2023-09-29 | 2023-10-02 | 3-2515 |  | 16d |  |
|  | 3 | **DENNY WB STATION** |  | 2023-10-03 | 2023-10-12 |  |  |  |  |
| 3-2518 |  | INST SHELTER, DENNY WB STATION | 4d | 2023-10-03 | 2023-10-06 | 3-2516 |  | 16d |  |
| 3-2519 |  | INST TEC PYLON, DENNY WB STATION | 2d | 2023-10-09 | 2023-10-10 | 3-2518 |  | 16d |  |
| 3-2520 |  | INST AMENITIES, DENNY WB STATION | 2d | 2023-10-11 | 2023-10-12 | 3-2519 |  | 16d |  |
|  | 4 | **DENNY EB STATION** |  | 2023-10-13 | 2023-10-24 |  |  |  |  |
| 3-2522 |  | INST SHELTER, DENNY EB STATION | 4d | 2023-10-13 | 2023-10-18 | 3-2520, 3-2205 |  | 16d |  |
| 3-2523 |  | INST TEC PYLON, DENNY EB STATION | 2d | 2023-10-19 | 2023-10-20 | 3-2522 |  | 16d |  |
| 3-2524 |  | INST AMENITIES, DENNY EB STATION | 2d | 2023-10-23 | 2023-10-24 | 3-2523 |  | 16d |  |
|  | 5 | **23RD WB STATION** |  | 2023-10-25 | 2023-11-03 |  |  |  |  |
| 3-2526 |  | INST SHELTER, 23RD WB STATION | 4d | 2023-10-25 | 2023-10-30 | 3-2220, 3-2524, 3-2285 |  | 16d |  |
| 3-2527 |  | INST TEC PYLON, 23RD WB STATION | 2d | 2023-10-31 | 2023-11-01 | 3-2526 |  | 16d |  |
| 3-2528 |  | INST AMENITIES, 23RD WB STATION | 2d | 2023-11-02 | 2023-11-03 | 3-2527 |  | 16d |  |
|  | 6 | **24TH EB STATION** |  | 2023-11-06 | 2023-11-16 |  |  |  |  |
| 3-2530 |  | INST SHELTER, 24TH EB STATION | 4d | 2023-11-06 | 2023-11-09 | 3-2528 |  | 16d |  |
| 3-2531 |  | INST TEC PYLON, 24TH EB STATION | 2d | 2023-11-10 | 2023-11-14 | 3-2530 |  | 16d |  |
| 3-2532 |  | INST AMENITIES, 24TH EB STATION | 2d | 2023-11-15 | 2023-11-16 | 3-2531 |  | 16d |  |
|  | 7 | **MADISON AND 27TH EB STATION** |  | 2023-11-17 | 2023-11-30 |  |  |  |  |
| 3-2534 |  | INST SHELTER, MAD & 27TH EB STATION | 4d | 2023-11-17 | 2023-11-22 | 3-2532 |  | 16d |  |
| 3-2535 |  | INST TEC PYLON, MAD & 27TH EB STATION | 2d | 2023-11-27 | 2023-11-28 | 3-2534 |  | 16d |  |
| 3-2536 |  | INST AMENITIES, MAD & 27TH EB STATION | 2d | 2023-11-29 | 2023-11-30 | 3-2535 |  | 16d |  |
|  | 8 | **MADISON AND MLK WB STATION** |  | 2023-12-01 | 2023-12-11 |  |  |  |  |
| 3-2538 |  | INST SHELTER, MAD & MLK WB STATION | 4d | 2023-12-01 | 2023-12-06 | 3-2536 |  | 16d |  |
| 3-2539 |  | INST TEC PYLON, MAD & MLK WB STATION | 1d | 2023-12-07 | 2023-12-07 | 3-2538 |  | 16d |  |
| 3-2540 |  | INST AMENITIES, MAD & MLK WB STATION | 2d | 2023-12-08 | 2023-12-11 | 3-2539 |  | 16d |  |
|  | 15 | **REMAINING OCS POLES** |  | 2023-05-31 | 2023-06-05 |  |  |  |  |
| 3-2542 |  | INST REMAINING OCS POLES, REMAINING OCS POLES | 4d | 2023-05-31 A | 2023-06-05 A | 3-2122, PMP-41, PMP-36 | 100% |  |  |
|  | 16 | **COMFORT STATION** |  | 2023-04-24 | 2023-11-21 |  |  |  |  |
| 3-2544 |  | F/R/P FOOTING, BEFORE UNSUITABLE SOILS | 5d | 2023-04-24 A | 2023-04-25 A | 3-1685, 3-1682 | 100% |  |  |
| 3-3500 |  | OVEREX UNSUITABLE SOILS | 5d | 2023-04-26 A | 2023-04-26 A | 3-2544 | 100% |  |  |
| 3-3505 |  | AWAIT GEOTECH REPORT | 5d | 2023-04-27 A | 2023-04-28 A | 3-3500 | 100% |  |  |
| 3-3565 |  | AWAIT APPROVAL OF NEW MATERIAL DUE TO UNSUITABLE SOILS | 5d | 2023-05-01 A | 2023-05-12 A | 3-3505 | 100% |  |  |
| 3-3570 |  | QUARRY SPALLS EXTRA WORK | 5d | 2023-05-22 A | 2023-05-23 A | 3-3565 | 100% |  |  |
| 3-3510 |  | COMPLETE FOUNDATION AFTER UNSUITABLE SOILS | 5d | 2023-06-28 A | 2023-08-25 | 3-3505, 3-3570 FS+24d |  | 28d |  |
| 3-2545 |  | WALLS, COMFORT STATION | 10d | 2023-08-28 | 2023-09-11 | 3-2544, 3-3510 |  | 28d |  |
| 3-2550 |  | ROOF, COMFORT STATION | 10d | 2023-09-12 | 2023-09-25 | 3-2545 |  | 28d |  |
| 3-2555 |  | PLUMBING/HVAC, COMFORT STATION | 10d | 2023-09-26 | 2023-10-09 | 3-2550 |  | 28d |  |
| 3-2560 |  | ELECTRICAL, COMFORT STATION | 10d | 2023-10-10 | 2023-10-23 | 3-2555 |  | 28d |  |
| 3-2565 |  | FURNISHES, COMFORT STATION | 20d | 2023-10-24 | 2023-11-21 | 3-2560 |  | 28d |  |
|  | 4 | **LUMP SUM ITEMS** |  | 2021-09-20 | 2024-03-07 |  |  |  |  |
|  | 1 | **BI 001 - CONSTRUCTION SURVEY** |  | 2021-10-18 | 2023-11-21 |  |  |  |  |
| LS-1000 |  | CONSTRUCTION SURVEY, BI 001 | 15d | 2021-10-18 A | 2021-11-05 A | MS-0025 | 100% |  |  |
| LS-1005 |  | CONSTRUCTION SURVEY, BI 001 | 15d | 2021-11-05 A | 2021-11-30 A | LS-1000 | 100% |  |  |
| LS-1010 |  | CONSTRUCTION SURVEY, BI 001 | 15d | 2021-12-01 A | 2021-12-31 A | LS-1005 | 100% |  |  |
| LS-1015 |  | CONSTRUCTION SURVEY, BI 001 | 15d | 2022-01-03 A | 2022-01-28 A | LS-1010 | 100% |  |  |
| LS-1020 |  | CONSTRUCTION SURVEY, BI 001 | 15d | 2022-01-31 A | 2022-02-14 A | LS-1015 | 100% |  |  |

| ID | WBS | Task | Duration | Start | Finish | Predecessors | Complete | Total float |
| --- | --- | --- | --- | --- | --- | --- | --- | --- |
| LS-1025 |  | CONSTRUCTION SURVEY, BI 001 | 15d | 2022-02-15 A | 2022-02-28 A | LS-1020 | 100% |  |
| LS-1030 |  | CONSTRUCTION SURVEY, BI 001 | 15d | 2022-03-01 A | 2022-03-15 A | LS-1025 | 100% |  |
| LS-1035 |  | CONSTRUCTION SURVEY, BI 001 | 15d | 2022-03-16 A | 2022-03-30 A | LS-1030 | 100% |  |
| LS-1040 |  | CONSTRUCTION SURVEY, BI 001 | 15d | 2022-03-31 A | 2022-04-20 A | LS-1035 | 100% |  |
| LS-1045 |  | CONSTRUCTION SURVEY, BI 001 | 15d | 2022-04-21 A | 2022-04-29 A | LS-1040 | 100% |  |
| LS-1050 |  | CONSTRUCTION SURVEY, BI 001 | 15d | 2022-05-02 A | 2022-05-20 A | LS-1045 | 100% |  |
| LS-1055 |  | CONSTRUCTION SURVEY, BI 001 | 15d | 2022-05-23 A | 2022-05-30 A | LS-1050 | 100% |  |
| LS-1060 |  | CONSTRUCTION SURVEY, BI 001 | 15d | 2022-05-31 A | 2022-06-06 A | LS-1055 | 100% |  |
| LS-1065 |  | CONSTRUCTION SURVEY, BI 001 | 15d | 2022-06-07 A | 2022-06-30 A | LS-1060 | 100% |  |
| LS-1070 |  | CONSTRUCTION SURVEY, BI 001 | 15d | 2022-07-01 A | 2022-07-29 A | LS-1065 | 100% |  |
| LS-1075 |  | CONSTRUCTION SURVEY, BI 001 | 15d | 2022-08-01 A | 2022-08-19 A | LS-1070 | 100% |  |
| LS-1080 |  | CONSTRUCTION SURVEY, BI 001 | 15d | 2022-08-31 A | 2022-09-21 A | LS-1075 | 100% |  |
| LS-1085 |  | CONSTRUCTION SURVEY, BI 001 | 15d | 2022-09-22 A | 2022-10-21 A | LS-1080 | 100% |  |
| LS-1090 |  | CONSTRUCTION SURVEY, BI 001 | 15d | 2022-10-24 A | 2022-11-21 A | LS-1085 | 100% |  |
| LS-1095 |  | CONSTRUCTION SURVEY, BI 001 | 15d | 2022-11-22 A | 2022-12-21 A | LS-1090 | 100% |  |
| LS-1100 |  | CONSTRUCTION SURVEY, BI 001 | 15d | 2022-12-22 A | 2023-01-23 A | LS-1095 | 100% |  |
| LS-1105 |  | CONSTRUCTION SURVEY, BI 001 | 15d | 2023-01-24 A | 2023-02-13 A | LS-1100 | 100% |  |
| LS-1110 |  | CONSTRUCTION SURVEY, BI 001 | 15d | 2023-02-22 A | 2023-03-14 A | LS-1105 | 100% |  |
| LS-1115 |  | CONSTRUCTION SURVEY, BI 001 | 15d | 2023-03-15 A | 2023-04-04 A | LS-1110 | 100% |  |
| LS-1120 |  | CONSTRUCTION SURVEY, BI 001 | 15d | 2023-04-04 A | 2023-04-24 A | LS-1115 | 100% |  |
| LS-1125 |  | CONSTRUCTION SURVEY, BI 001 | 15d | 2023-05-01 A | 2023-05-19 A | LS-1120 | 100% |  |
| LS-1130 |  | CONSTRUCTION SURVEY, BI 001 | 15d | 2023-05-31 A | 2023-06-20 A | LS-1125 | 100% |  |
| LS-1135 |  | CONSTRUCTION SURVEY, BI 001 | 15d | 2023-06-21 A | 2023-07-12 A | LS-1130 | 100% |  |
| LS-1140 |  | CONSTRUCTION SURVEY, BI 001 | 15d | 2023-07-13 A | 2023-08-02 A | LS-1135 | 100% |  |
| LS-1145 |  | CONSTRUCTION SURVEY, BI 001 | 15d | 2023-08-03 A | 2023-08-25 | LS-1140 | 33% | 71d |
| LS-1150 |  | CONSTRUCTION SURVEY, BI 001 | 15d | 2023-08-28 | 2023-09-18 | LS-1145 |  | 71d |
| LS-1155 |  | CONSTRUCTION SURVEY, BI 001 | 15d | 2023-09-19 | 2023-10-09 | LS-1150 |  | 71d |
| LS-1160 |  | CONSTRUCTION SURVEY, BI 001 | 15d | 2023-10-10 | 2023-10-30 | LS-1155 |  | 71d |
| LS-1185 |  | CONSTRUCTION SURVEY, BI 001; 10% FOR PHYSICAL COMPLETION | 15d | 2023-10-31 | 2023-11-21 | LS-1160 |  | 71d |
|  | 2 | **BI 003 - VIBRATION MONITORING** |  | 2021-10-05 | 2023-05-26 |  |  |  |
| LS-1190 |  | MONITORING PLAN APPROVAL, BI003 | 0d | 2021-10-05 A | 2021-10-05 A | PSR-0038 | 100% |  |
| LS-1195 |  | VIBRATION MONITORING, BI 003 | 20d | 2021-10-05 A | 2021-10-29 A | LS-1190, MS-0025 | 100% |  |
| LS-1200 |  | VIBRATION MONITORING, BI 003 | 20d | 2021-11-01 A | 2021-11-30 A | LS-1195 | 100% |  |
| LS-1205 |  | VIBRATION MONITORING, BI 003 | 20d | 2021-12-01 A | 2021-12-30 A | LS-1200 | 100% |  |
| LS-1210 |  | VIBRATION MONITORING, BI 003 | 20d | 2022-01-03 A | 2022-01-28 A | LS-1205 | 100% |  |
| LS-1215 |  | VIBRATION MONITORING, BI 003 | 20d | 2022-01-31 A | 2022-02-28 A | LS-1210 | 100% |  |
| LS-1220 |  | VIBRATION MONITORING, BI 003 | 20d | 2022-03-01 A | 2022-03-30 A | LS-1215 | 100% |  |
| LS-1225 |  | VIBRATION MONITORING, BI 003 | 20d | 2022-03-31 A | 2022-04-29 A | LS-1220 | 100% |  |
| LS-1230 |  | VIBRATION MONITORING, BI 003 | 20d | 2022-05-02 A | 2022-05-30 A | LS-1225 | 100% |  |
| LS-1235 |  | VIBRATION MONITORING, BI 003 | 20d | 2022-05-31 A | 2022-06-30 A | LS-1230 | 100% |  |
| LS-1240 |  | VIBRATION MONITORING, BI 003 | 20d | 2022-07-01 A | 2022-07-29 A | LS-1235 | 100% |  |
| LS-1245 |  | VIBRATION MONITORING, BI 003 | 20d | 2022-07-30 A | 2022-08-26 A | LS-1240 | 100% |  |
| LS-1250 |  | VIBRATION MONITORING, BI 003 | 20d | 2022-08-31 A | 2022-09-28 A | LS-1245 | 100% |  |
| LS-1255 |  | VIBRATION MONITORING, BI 003 | 20d | 2022-09-29 A | 2022-10-28 A | LS-1250 | 100% |  |
| LS-1260 |  | VIBRATION MONITORING, BI 003 | 20d | 2022-10-31 A | 2022-11-30 A | LS-1255 | 100% |  |
| LS-1265 |  | VIBRATION MONITORING, BI 003 | 20d | 2022-12-01 A | 2022-12-29 A | LS-1260 | 100% |  |
| LS-1270 |  | VIBRATION MONITORING, BI 003 | 20d | 2022-12-30 A | 2023-01-30 A | LS-1265 | 100% |  |
| LS-1275 |  | VIBRATION MONITORING, BI 003 | 20d | 2023-01-31 A | 2023-02-28 A | LS-1270 | 100% |  |
| LS-1280 |  | VIBRATION MONITORING, BI 003 | 20d | 2023-03-01 A | 2023-03-28 A | LS-1275 | 100% |  |
| LS-1285 |  | VIBRATION MONITORING, BI 003 | 20d | 2023-03-29 A | 2023-04-27 A | LS-1280 | 100% |  |
| LS-1290 |  | VIBRATION MONITORING, BI 003 | 20d | 2023-05-01 A | 2023-05-26 A | LS-1285 | 100% |  |
|  | 3 | **BI 007 - MAINTENANCE & PROTECTION OF TRAFFIC CONTROL** |  | 2021-09-20 | 2024-03-07 |  |  |  |
| LS-1295 |  | JOB START UP, TCPS APPROVAL, SUPPLIES, BI 0007 | 20d | 2021-09-20 A | 2021-10-15 A | PCS-0014 | 100% |  |
| LS-1300 |  | PE #1, BI 007 - MAINTENANCE & PROTECTION OF TRAFFIC CONTROL | 20d | 2021-09-20 A | 2021-10-29 A | LS-1295 SS | 100% |  |
| LS-1305 |  | PE #2, BI 007 - MAINTENANCE & PROTECTION OF TRAFFIC CONTROL | 20d | 2021-11-01 A | 2021-11-30 A | LS-1300 | 100% |  |
| LS-1310 |  | PE #3, BI 007 - MAINTENANCE & PROTECTION OF TRAFFIC CONTROL | 20d | 2021-12-01 A | 2021-12-30 A | LS-1305 | 100% |  |
| LS-1315 |  | PE #4, BI 007 - MAINTENANCE & PROTECTION OF TRAFFIC CONTROL | 20d | 2022-01-03 A | 2022-01-28 A | LS-1310 | 100% |  |
| LS-1320 |  | PE #5, BI 007 - MAINTENANCE & PROTECTION OF TRAFFIC CONTROL | 21d | 2022-01-31 A | 2022-02-28 A | LS-1315 | 100% |  |
| LS-1325 |  | PE #6, BI 007 - MAINTENANCE & PROTECTION OF TRAFFIC CONTROL | 20d | 2022-03-01 A | 2022-03-30 A | LS-1320 | 100% |  |
| LS-1330 |  | PE #7, BI 007 - MAINTENANCE & PROTECTION OF TRAFFIC CONTROL | 20d | 2022-03-31 A | 2022-04-29 A | LS-1325 | 100% |  |
| LS-1335 |  | PE #8, BI 007 - MAINTENANCE & PROTECTION OF TRAFFIC CONTROL | 20d | 2022-05-02 A | 2022-05-27 A | LS-1330 | 100% |  |
| LS-1340 |  | PE #9, BI 007 - MAINTENANCE & PROTECTION OF TRAFFIC CONTROL | 20d | 2022-05-30 A | 2022-06-30 A | LS-1335 | 100% |  |
| LS-1345 |  | PE #10, BI 007 - MAINTENANCE & PROTECTION OF TRAFFIC CONTROL | 20d | 2022-07-01 A | 2022-07-29 A | LS-1340 | 100% |  |
| LS-1350 |  | PE #11, BI 007 - MAINTENANCE & PROTECTION OF TRAFFIC CONTROL | 20d | 2022-07-30 A | 2022-08-26 A | LS-1345 | 100% |  |
| LS-1355 |  | PE #12, BI 007 - MAINTENANCE & PROTECTION OF TRAFFIC CONTROL | 20d | 2022-08-30 A | 2022-09-27 A | LS-1350 | 100% |  |
| LS-1360 |  | PE #13, BI 007 - MAINTENANCE & PROTECTION OF TRAFFIC CONTROL | 20d | 2022-09-28 A | 2022-10-25 A | LS-1355 | 100% |  |
| LS-1365 |  | PE #14, BI 007 - MAINTENANCE & PROTECTION OF TRAFFIC CONTROL | 20d | 2022-10-26 A | 2022-11-23 A | LS-1360 | 100% |  |
| LS-1370 |  | PE #15, BI 007 - MAINTENANCE & PROTECTION OF TRAFFIC CONTROL | 20d | 2022-11-28 A | 2022-12-23 A | LS-1365 | 100% |  |
| LS-1375 |  | PE #16, BI 007 - MAINTENANCE & PROTECTION OF TRAFFIC CONTROL | 20d | 2022-12-27 A | 2023-01-25 A | LS-1370 | 100% |  |
| LS-1380 |  | PE #17, BI 007 - MAINTENANCE & PROTECTION OF TRAFFIC CONTROL | 20d | 2023-01-26 A | 2023-02-23 A | LS-1375 | 100% |  |

| ID | WBS | Task | Duration | Start | Finish | Predecessors | Complete | Total float | Constraint |
| --- | --- | --- | --- | --- | --- | --- | --- | --- | --- |
| LS-1385 |  | PE #18, BI 007 - MAINTENANCE & PROTECTION OF TRAFFIC CONTROL | 20d | 2023-02-24 A | 2023-03-23 A | LS-1380 | 100% |  |  |
| LS-1390 |  | PE #19, BI 007 - MAINTENANCE & PROTECTION OF TRAFFIC CONTROL | 20d | 2023-03-24 A | 2023-04-20 A | LS-1385 | 100% |  |  |
| LS-1395 |  | PE #20, BI 007 - MAINTENANCE & PROTECTION OF TRAFFIC CONTROL | 20d | 2023-04-21 A | 2023-05-18 A | LS-1390 | 100% |  |  |
| LS-1400 |  | PE #21, BI 007 - MAINTENANCE & PROTECTION OF TRAFFIC CONTROL | 20d | 2023-05-19 A | 2023-06-16 A | LS-1395 | 100% |  |  |
| LS-1405 |  | PE #22, BI 007 - MAINTENANCE & PROTECTION OF TRAFFIC CONTROL | 20d | 2023-06-19 A | 2023-07-17 A | LS-1400 | 100% |  |  |
| LS-1410 |  | PE #23, BI 007 - MAINTENANCE & PROTECTION OF TRAFFIC CONTROL | 20d | 2023-07-18 A | 2023-08-14 | LS-1405 | 95% | 0d |  |
| LS-1415 |  | PE #24, BI 007 - MAINTENANCE & PROTECTION OF TRAFFIC CONTROL | 20d | 2023-08-15 | 2023-09-12 | LS-1410 |  | 0d |  |
| LS-1420 |  | PE #25, BI 007 - MAINTENANCE & PROTECTION OF TRAFFIC CONTROL | 20d | 2023-09-13 | 2023-10-10 | LS-1415 |  | 0d |  |
| LS-1425 |  | PE #26, BI 007 - MAINTENANCE & PROTECTION OF TRAFFIC CONTROL | 20d | 2023-10-11 | 2023-11-07 | LS-1420 |  | 0d |  |
| LS-1430 |  | PE #27, BI 007 - MAINTENANCE & PROTECTION OF TRAFFIC CONTROL | 20d | 2023-11-08 | 2023-12-08 | LS-1425 |  | 0d |  |
| LS-1435 |  | PE #28, BI 007 - MAINTENANCE & PROTECTION OF TRAFFIC CONTROL | 20d | 2023-12-11 | 2024-01-09 | LS-1430 |  | 0d |  |
| LS-1440 |  | PE #29, BI 007 - MAINTENANCE & PROTECTION OF TRAFFIC CONTROL | 20d | 2024-01-10 | 2024-02-07 | LS-1435 |  | 0d |  |
| LS-1445 |  | PE #30, BI 007 - MAINTENANCE & PROTECTION OF TRAFFIC CONTROL | 20d | 2024-02-08 | 2024-03-07 | LS-1440 |  | 0d |  |
|  | 4 | **BI 168 - TEMPORARY BYPASS** |  | 2021-12-17 | 2023-04-30 |  |  |  |  |
| LS-1465 |  | MH 17, BI 168 - TEMPORARY BYPASS | 5d | 2021-12-17 A | 2021-12-23 A | PSR-0043 | 100% |  |  |
| LS-1475 |  | MH 12, BI 168 - TEMPORARY BYPASS | 5d | 2022-02-07 A | 2022-02-11 A | PSR-0043 | 100% |  |  |
| LS-1470 |  | MH 10C, BI 168 - TEMPORARY BYPASS | 5d | 2022-03-15 A | 2022-03-21 A | PSR-0043 | 100% |  |  |
| LS-1460 |  | MH 6, BI 168 - TEMPORARY BYPASS | 5d | 2022-04-13 A | 2022-04-19 A | PSR-0043 | 100% |  |  |
| LS-1450 |  | MH 1, BI 168 - TEMPORARY BYPASS | 5d | 2022-06-10 A | 2022-06-21 A | PSR-0043 | 100% |  |  |
| LS-1455 |  | MH 4, BI 168 - TEMPORARY BYPASS | 5d | 2023-04-01 A | 2023-04-30 A | PSR-0043 | 100% |  |  |
|  | 5 | **BI 194 - PEDESTRIAN ENHANCEMENTS ON MADISON ST I-5 OVERPASS** |  | 2023-11-06 | 2023-11-22 |  |  |  |  |
| LS-1480 |  | PLANTERS, BI 194 - PEDESTRIAN ENHANCEMENTS ON MADISON ST I-5 OVERPASS | 5d | 2023-11-06 | 2023-11-10 | MS-0025 |  | 27d | as late as possible |
| LS-1485 |  | DECORATIVE PANELS, BI 194 - PEDESTRIAN ENHANCEMENTS ON MADISON ST I-5 OVERPASS | 5d | 2023-11-10 | 2023-11-17 | MS-0025 |  | 27d | as late as possible |
| LS-1490 |  | PLANTING, BI 194 - PEDESTRIAN ENHANCEMENTS ON MADISON ST I-5 OVERPASS | 5d | 2023-11-16 | 2023-11-22 | MS-0025 |  | 27d | as late as possible |

## Version 2 (data date 2024-04-01, saved 2024-06-02, file 0_MBRT-134_1787889704522.xer)

Note of the change: Restructure As Build Schedule UI and clarify XER run history: move XER Null Test out of the in-project tab bar into a new app-wide "As Build Schedule" tab (opened via a header button on completed projects), redesign the XER results view with a vibrant success/warning/error banner treatment, and turn each run into its own numbered, timestamped, collapsible accordion card so repeated runs of the same upload are no longer visually indistinguishable.

Last finish 2024-09-09 → 2024-10-01 (+22d). Complete tasks 2323 → 3576.

Added:

| ID | Task | Duration | Start | Finish | Predecessors | Constraint | Resources |
| --- | --- | --- | --- | --- | --- | --- | --- |
| 19 | **STRIPING & SIGNS REMAINING ZONE 1** |  | 2024-04-25 | 2024-04-25 |  |  |  |
| 1-8015 | CURE TIME, STRIPING AND SIGNS | 0d | 2024-04-25 | 2024-04-25 | 1-8010 |  | MBRT NEW |
| 1-8020 | CHANNELIZATION, STRIPING AND SIGNS | 0d | 2024-04-25 | 2024-04-25 | 1-8015 |  | MBRT NEW |
| 1-2790 | DSC 621 CB Built with Steel Yoke | 1d | 2023-09-19 A | 2023-09-19 A | 1-2755 |  | MBRT DSC [8 h] |
| 74 | **SUMMIT NWC** |  | 2023-08-31 | 2023-10-06 |  |  |  |
| 1-7045 | REMOVE SIDEWALK | 1d | 2023-08-31 A | 2023-08-31 A | 1-7030 |  | MBRT NEW [8 h] |
| 1-7050 | DSC 611 CONCRETE OBSTRUCTION | 2d | 2023-08-31 A | 2023-09-01 A | 1-7045 SS |  | MBRT DSC [16 h] |
| 1-7055 | TRENCH CONDUIT | 3d | 2023-09-01 A | 2023-09-06 A | 1-7045, 1-7050 |  | MBRT NEW [24 h] |
| 1-7060 | DSC 612 SINK HOLE | 1d | 2023-09-05 A | 2023-09-05 A | 1-7055 SS |  | MBRT DSC [8 h] |
| 1-7065 | INSTALL CONDUIT | 14d | 2023-09-07 A | 2023-09-26 A | 1-7055, 1-7060 |  | MBRT NEW [112 h] |
| 1-7070 | GRADE SIDEWALKS | 1d | 2023-09-27 A | 2023-09-27 A | 1-7065 |  | MBRT NEW [8 h] |
| 1-7075 | CURB RAMPS | 1d | 2023-10-05 A | 2023-10-05 A | 1-7070 |  | MBRT NEW [8 h] |
| 1-7080 | SIDEWALKS | 1d | 2023-10-06 A | 2023-10-06 A | 1-7075 |  | MBRT NEW [8 h] |
| DSC-672 | DSC 672 INTERCEPT NEC MADISON TO SHALLOW | 29d | 2023-12-21 A | 2024-02-02 A | DSC-674 |  | MBRT DSC [232 h] |
| DSC-674 | DSC 674 OLD HYDRANT CONFLICT | 2d | 2023-12-21 A | 2023-12-22 A | 1-0601 SS |  | MBRT DSC [16 h] |
| DSC-677 | DSC 677 DUCT BANK CONFLICT | 49d | 2023-12-28 A | 2024-04-08 | 1-0602 |  | MBRT DSC [392 h] |
| DSC-679 | DSC 679 TEMP LIGHTING | 5d | 2024-01-02 A | 2024-01-08 A | 1-0602 |  | MBRT DSC [40 h] |
| DSC-696 | DSC 696 DUCT BANK CONFLICTS | 24d | 2024-02-05 A | 2024-04-08 | DSC-672 |  | MBRT DSC [192 h] |
| DSC-699 | DSC 699 BUILDING FOOTING CONFLICT WITH SIDEWALKS NEC MADISON AND 9TH | 1d | 2024-02-06 A | 2024-02-06 A | DSC-672 |  | MBRT DSC [8 h] |
| 1-0650 | POUR SIDEWALK, 9TH SPRING TO MAD EAST SIDE Complete | 0d | 2024-04-24 | 2024-04-24 | 1-0552, 1-0605, 1-0604 |  | MBRT NEW |
| DSC-703 | DSC 703 WATER VAULT CONFLICT WITH CONDUIT | 11d | 2024-02-14 A | 2024-03-01 A | 1-0549 SS |  | MBRT DSC [88 h] |
| DSC-706 | DSC 706 CONCRETE WALL CONFLICT WITH CONDUIT | 11d | 2024-02-14 A | 2024-03-01 A | 1-0549 SS |  | MBRT DSC [88 h] |
| DSC-707 | DSC 707 ROTTEN FRENCH DRAIN | 13d | 2024-02-15 A | 2024-03-08 A | 1-0549 SS |  | MBRT DSC [104 h] |
| DSC-709 | DSC 709 SECOND WALL CONFLICT | 4d | 2024-02-19 A | 2024-02-23 A | DSC-706 SS |  | MBRT DSC [32 h] |
| DSC-710 | DSC 710 SHALLOW CONDUIT | 8d | 2024-02-20 A | 2024-03-01 A | 1-0549 SS |  | MBRT DSC [64 h] |
| DSC-684 | DSC 684 UNKNOWN UNLOCATED CONDUITS | 13d | 2024-01-09 A | 2024-01-26 A | 1-0608 SS |  | MBRT DSC [104 h] |
| DSC-687 | DSC 687 CONDUIT CONFLICTS | 10d | 2024-01-12 A | 2024-01-26 A | 1-0608 SS |  | MBRT DSC [80 h] |
| 1-0739 | DSC 647 UNKNOWN POLE FOUNDATION | 1d | 2023-11-06 A | 2023-11-06 A | MS-0025 |  | MBRT DSC [8 h] |
| 1-0759 | DELAY AWAITING SCL TO REMOVE WIRE FROM VAULT | 0d | 2023-11-07 A | 2023-12-07 A | 1-0739 |  | MBRT NEW |
| 1-0794 | ADDED CIVIL WORK DUE TO VAULT LID DSC | 16d | 2023-12-11 A | 2024-01-03 A | 1-0759 FS+1d |  | MBRT DSC [128 h] |
| DSC-680 | DSC 680 DC WONT WORK AS EXISTING CONDUITS ARE BAD | 50d | 2024-01-04 A | 2024-02-23 A | 1-0794 |  | MBRT DSC [400 h] |
| DSC-720 | DSC 720 NWC and 2nd Madison Conduit conflict | 5d | 2024-03-01 A | 2024-04-08 | 1-0669 SS |  |  |
| DSC-729 | DSC 729 SWC 2nd and madison duct bank conflcit | 5d | 2024-03-01 A | 2024-04-08 | 1-0669 SS |  |  |
| DSC-737 | DSC 737 SWC 2nd Cast in Place HH riser | 5d | 2024-03-01 A | 2024-04-08 | 1-0669 SS |  |  |
| DSC-UPO | DSC UPO 2nd and Madison delay. SDOT directed no UPO | 5d | 2024-03-01 A | 2024-04-08 | 1-0669 SS |  |  |
| DSC-717 | DSC 717 SWC 2nd unknown steel line | 5d | 2024-03-04 A | 2024-04-08 | 1-0669 SS |  |  |
| 1-0518 | DSC 649 EXTRA THICK SIDEWALK | 1d | 2023-11-15 A | 2023-11-15 A | 1-0507 SS+1d |  | MBRT DSC [8 h] |
| 1-0533 | DSC 650 UNKNOWN UNLOCATED CONDUIT | 2d | 2023-11-15 A | 2023-11-16 A | 1-0518 SS |  | MBRT DSC [16 h] |
| 1-0553 | DSC 651 NEC 3RD FILLED WITH CDF | 2d | 2023-11-15 A | 2023-11-16 A | 1-0533 SS |  | MBRT DSC [16 h] |
| 1-0573 | INSTALL ELECTRICAL | 5d | 2023-11-28 A | 2023-12-04 A | 1-0553 |  | MBRT NEW [40 h] |
| 1-0709 | DSC 583 UNKNOWN UTILITIES | 2d | 2023-10-13 A | 2023-10-16 A | 1-0680 SS |  | MBRT DSC [16 h] |
| 1-0834 | DSC 665 CDF OBSTRUCTION | 2d | 2023-12-12 A | 2023-12-13 A | 1-0699 |  | MBRT DSC [16 h] |
| 1-0844 | DSC 671 UNKNOWN CONDUIT | 4d | 2023-12-19 A | 2023-12-22 A | 1-0834 |  | MBRT DSC [32 h] |
| 1-1004 | DELAY AWAITING CITY DECISION TO MATCH EXISTING SIDEWALK | 0d | 2023-12-27 A | 2024-01-31 A | 1-0701 |  | MBRT NEW |
| 1-0656 | FM 650 Sidewalk Change | 5d | 2023-10-28 A | 2023-11-03 A | 1-0633 |  | MBRT NEW [40 h] |
| 1-0745 | DSC 591 SEC Boren Conflict with Pole PL09-21 | 8d | 2023-08-17 A | 2023-08-28 A | 1-0729 |  | MBRT DSC [64 h] |
| 1-0845 | DSC 598 SEC Boren Concrete Wall Obstruction | 1d | 2023-08-24 A | 2023-08-24 A | 1-0729 |  | MBRT DSC [8 h] |
| 1-9096 | DSC 597 SWC Boyleston Prime Conflicts | 3d | 2023-08-23 A | 2023-08-25 A | 1-9091, DSC-551 |  | MBRT DSC [24 h] |
| 1-9101 | DSC 602 Dry Rot Pole | 69d | 2023-08-24 A | 2023-12-04 A | 1-9091, 1-9096 SS |  | MBRT DSC [552 h] |
| 1-9106 | DSC 618 LIGHITNG CONDUIT CONFLICT | 9d | 2023-09-12 A | 2023-09-22 A | 1-9101 SS, 1-9096 |  | MBRT DSC [72 h] |
| 1-9097 | DSC 658 SCL POLE CONFLICT WITH CURB RAMPS | 12d | 2023-12-06 A | 2023-12-21 A | 1-9092 |  | MBRT DSC [96 h] |
| 1-0810 | PAVE REMAINING ZONE 1 | 0d | 2024-04-25 | 2024-04-25 | 1-0755 |  | MBRT NEW |
| 1-0793 | DELAY AWAITING DC | 0d | 2024-02-20 A | 2024-05-28 | 1-0779 |  | MBRT NEW |
| 1-0984 | DSC 622 Existing Signal pole wil not allow new wire | 2d | 2023-09-19 A | 2023-09-20 A | 1-0940 |  | MBRT DSC [16 h] |
| 1-0989 | RFI Bridge Mounted PPB | 0d | 2023-09-26 A | 2024-02-08 A | 1-0984 |  | MBRT NEW |
| DSC-724 | DSC 724 7th & Madison Exist. Conduits / New Wire | 5d | 2024-02-09 A | 2024-03-01 A | 1-0989 |  |  |
| 1-5221 | Delay Wrong Service Size | 18.5d | 2023-09-19 A | 2023-10-13 A | 1-1455 |  | MBRT NEW [148 h] |
| 1-0983 | Remove Temp Poles - 9th (KCM Repeater Issue) | 5d | 2024-03-06 A | 2024-04-29 | 1-2325 |  |  |
| 1-1067 | DSC 624 Existing Conduit wont allow wire | 5d | 2023-09-20 A | 2023-09-26 A | 1-2268 |  | MBRT DSC [40 h] |
| 1-1107 | FM 671 NEW HH AT MINOR | 14d | 2023-10-30 A | 2023-11-17 A | 1-0992, 1-0999 |  | MBRT NEW [112 h] |
| 1-1137 | DELAY EXISTING GROUNDING SYSTEM IS NOT COMPLETE | 0d | 2023-11-20 A | 2024-02-06 A | 1-1107 |  | MBRT NEW |
| 1-1142 | VITO'S FIRE DELAY | 0d | 2024-01-02 A | 2024-02-09 A |  |  | MBRT NEW |
| 1-1147 | REDO SCL INSPECTION REQUEST | 5d | 2024-02-07 A | 2024-02-13 A | 1-1137, 1-1142 FF |  | MBRT NEW [40 h] |
| 1-1152 | 2ND 30 DAY WAIT FOR SCL TO INSPECT | 12d | 2024-02-14 A | 2024-03-04 A | 1-1147, 1-1142 |  | MBRT NEW [96 h] |
| 1-6306 | FM 671 NEW HH AT MINOR | 14d | 2023-10-30 A | 2023-11-17 A | 1-6300 |  | MBRT NEW [112 h] |
| 1-6316 | DELAY EXISTING GROUNDING SYSTEM IS NOT COMPLETE | 0d | 2023-11-20 A | 2024-02-06 A | 1-6306 |  | MBRT NEW |
| 1-6311 | REDO SCL INSPECTION REQUEST | 1d | 2024-02-07 A | 2024-02-07 A | 1-6306, 1-6316 |  | MBRT NEW [8 h] |
| 1-6321 | 2ND 30 DAY WAIT FOR SCL TO INSPECT | 16d | 2024-02-08 A | 2024-03-04 A | 1-6316 |  | MBRT NEW [128 h] |
| 1-7306 | FM 671 NEW HH AT MINOR | 14d | 2023-10-30 A | 2023-11-17 A | 1-1026 |  | MBRT NEW [112 h] |
| 1-7316 | DELAY EXISTING GROUNDING SYSTEM IS NOT COMPLETE | 0d | 2023-11-20 A | 2024-02-07 A | 1-7306 |  | MBRT NEW |
| 1-7311 | REDO SCL INSPECTION REQUEST | 1d | 2024-02-08 A | 2024-02-08 A | 1-7306, 1-7316 |  | MBRT NEW [8 h] |
| 1-1085 | 2ND 30 DAY WAIT FOR SCL TO INSPECT | 15d | 2024-02-09 A | 2024-03-04 A | 1-7311 |  | MBRT NEW [120 h] |
| 1-1082 | DELAY ROTTEN POLE | 0d | 2023-08-15 A | 2023-12-01 A | 1-1047 |  | MBRT NEW |
| 1-1545 | POLE DOES NOT WORK | 87d | 2023-10-24 A | 2024-04-08 | 1-0864 |  | MBRT NEW [696 h] |
| 1-0875 | 3rd Prime Crew - UG Complete | 0d | 2024-05-22 | 2024-05-22 | 3-2351 |  |  |
| 1 | **SPRING AND 3RD (SCHEMATIC 1)** |  | 2023-05-05 | 2024-03-22 |  |  |  |
| 1-1053 | NOTIFY SCL FOR MANDRELLING | 1d | 2023-08-11 A | 2023-08-11 A | 1-1048 |  | MBRT NEW [8 h] |
| 1-1058 | 2 DAY WAIT FOR SCL | 2d | 2023-08-14 A | 2023-08-15 A | 1-1053 |  | MBRT NEW [16 h] |
| 1-1073 | OWNER CAUSED DELAY AWAITING SCL | 0d | 2023-08-16 A | 2023-11-17 A | 1-1058 |  | MBRT NEW |
| 1-1088 | MANDRELLINIG CONDUITS | 1d | 2023-11-20 A | 2023-11-20 A | 1-1073 |  | MBRT NEW [8 h] |
| 1-1555 | Awaiting Ped Light | 5d | 2024-01-12 A | 2024-03-20 A | 1-1495 |  |  |
| 2 | **SPRING AND 7TH (SCHEMATIC 2)** |  | 2023-05-22 | 2024-05-24 |  |  |  |
| 1-1227 | NOTIFY SCL FOR MANDRELLING | 1d | 2023-08-11 A | 2023-08-11 A | 1-1051 |  | MBRT NEW [8 h] |
| 1-1248 | 2 DAY WAIT FOR SCL | 2d | 2023-08-14 A | 2023-08-15 A | 1-1227 |  | MBRT NEW [16 h] |
| 1-1269 | OWNER CAUSED DELAY AWAITING SCL | 0d | 2023-08-16 A | 2023-11-16 A | 1-1248 |  | MBRT NEW |
| 1-1229 | MANDRELLINIG CONDUITS | 1d | 2023-11-17 A | 2023-11-17 A | 1-1269 |  | MBRT NEW [8 h] |
| 3 | **SPRING AND 8TH (SCHEMATIC 3)** |  | 2023-06-08 | 2024-04-22 |  |  |  |
| 1-1353 | NOTIFY SCL FOR MANDRELLING | 1d | 2023-08-11 A | 2023-08-11 A | 1-1054 |  | MBRT NEW [8 h] |
| 1-1358 | 2 DAY WAIT FOR SCL | 2d | 2023-08-14 A | 2023-08-15 A | 1-1353 |  | MBRT NEW [16 h] |
| 1-1373 | OWNER CAUSED DELAY AWAITING SCL | 0d | 2023-08-16 A | 2023-09-06 A | 1-1358 |  | MBRT NEW |
| 1-1388 | MANDRELLINIG CONDUITS | 1d | 2023-09-07 A | 2023-09-07 A | 1-1373 |  | MBRT NEW [8 h] |
| 1-1095 | DELAY AWAITING DEVELOPER TO FINISH ON N. SIDE OF SPRING | 0d | 2023-11-21 A | 2024-04-08 | 1-1525 SS |  | MBRT NEW |
| 5 | **MADISON AND 3RD (SCHEMATIC 4)** |  | 2023-06-05 | 2024-03-08 |  |  |  |
| 1-1453 | NOTIFY SCL FOR MANDRELLING | 1d | 2023-08-11 A | 2023-08-11 A | 1-1059 |  | MBRT NEW [8 h] |
| 1-1458 | 2 DAY WAIT FOR SCL | 2d | 2023-08-14 A | 2023-08-15 A | 1-1453 |  | MBRT NEW [16 h] |
| 1-1473 | OWNER CAUSED DELAY AWAITING SCL | 0d | 2023-08-16 A | 2023-11-03 A | 1-1458 |  | MBRT NEW |
| 1-1488 | MANDRELLINIG CONDUITS | 1d | 2023-11-06 A | 2023-11-06 A | 1-1473 |  | MBRT NEW [8 h] |
| 6 | **MADISON AND 5TH (SCHEMATIC 5)** |  | 2024-03-11 | 2024-03-25 |  |  |  |
| 7 | **MADISON 7TH TO 8TH (SCHEMATIC 7 & 8)** |  | 2023-08-11 | 2024-04-29 |  |  |  |
| 1-1553 | NOTIFY SCL FOR MANDRELLING | 1d | 2023-08-11 A | 2023-08-11 A | 1-1453 SS |  | MBRT NEW [8 h] |
| 1-1558 | 2 DAY WAIT FOR SCL | 2d | 2023-08-14 A | 2023-08-15 A | 1-1553 |  | MBRT NEW [16 h] |
| 1-1573 | OWNER CAUSED DELAY AWAITING SCL | 0d | 2023-08-16 A | 2023-11-10 A | 1-1558 |  | MBRT NEW |
| 1-1588 | MANDRELLINIG CONDUITS | 1d | 2023-11-14 A | 2023-11-14 A | 1-1573 |  | MBRT NEW [8 h] |
| 1-2120 | SCHEMATIC 8 Inspection & Build-out | 15d | 2024-01-25 A | 2024-04-22 | 1-1815 |  |  |
| 1-2130 | SCHEMATIC 8 Commissioning | 5d | 2024-04-23 | 2024-04-29 | 1-2120 |  |  |
| 8 | **MADISON AND 9TH (SCHEMATIC 9)** |  | 2024-02-29 | 2024-04-15 |  |  |  |
| 9 | **MADISON AND TERRY (SCHEMATIC 9)** |  | 2024-01-29 | 2024-04-15 |  |  |  |
| 11 | **MADISON AND MINOR (SCHEMATIC 10)** |  | 2023-12-26 | 2024-03-15 |  |  |  |
| 1-1143 | Schematic 10 Inspect & Commsssion | 5d | 2024-03-04 A | 2024-03-15 A | 1-1078 |  |  |
| 13 | **MADISON AND BOYLSTON (SCHEMATIC 11)** |  | 2023-12-26 | 2024-04-04 |  |  |  |
| DSC-719 | DSC 719 9th & Madison direct bury poles to be removed | 5d | 2024-03-07 A | 2024-04-05 | 1-2330 SS |  |  |
| 1-2590 | DELAY AWAITING SCL TO DECOMISION SERVICE | 0d | 2023-10-13 A | 2024-02-05 A | 1-1573 SS |  | MBRT ADDED |
| DSC-732 | DSC 732 Terry Exist. Fdn. Unknown Utility Conflict w.Rmoval | 5d | 2024-02-09 A | 2024-03-01 A | 1-2530 |  |  |
| DSC-733 | DSC 733 Terry existing delapidated HH | 5d | 2024-02-09 A | 2024-03-01 A | 1-2530 |  |  |
| DSC-722 | DSC 722 Boren & Madison Exist. ITS Conflict w/removal of strain poles | 5d | 2024-03-04 A | 2024-04-08 | 1-2540 SS |  |  |
| 2-1328 | DSC 608 15TH AND MADISON UNKNOWN UNMARKED STEEL PIPE | 4d | 2023-08-30 A | 2023-09-05 A | 2-1322 SS |  | MBRT DSC [32 h] |
| 2-1348 | DSC 609 15TH AND MADISON UNMARKED COMMLINE | 4d | 2023-08-30 A | 2023-09-05 A | 2-1322 SS |  | MBRT DSC [32 h] |
| 2-1368 | DSC 610 COM DUCT CONFLICT WITH CONDUIT | 6d | 2023-08-31 A | 2023-09-08 A | 2-1322 SS |  | MBRT DSC [48 h] |
| 2-1383 | DSC 633 CABLE CAR BEAMS IN ROADWAY | 1d | 2023-10-17 A | 2023-10-17 A | 2-1334 |  | MBRT DSC [8 h] |
| 2-1408 | DSC 642 14TH NORTH SIDE UNLOCATED CONDUITS | 2d | 2023-11-02 A | 2023-11-06 A | 2-1373 SS |  | MBRT DSC [16 h] |
| 2-1413 | DSC 644 UNKNOWN UNLOCATED CONDUIT | 2d | 2023-11-02 A | 2023-11-06 A | 2-1408 SS |  | MBRT DSC [16 h] |
| 2-1423 | DSC 648 Shallow Storm Pipe | 1d | 2023-11-15 A | 2023-11-16 A | 2-1413, 2-1408 |  | MBRT DSC [8 h] |
| 2-1513 | DSC 652 UNKNOWN WATER SERVICE | 1d | 2023-11-15 A | 2023-11-16 A | 2-1423 SS |  | MBRT DSC [8 h] |
| 2-1538 | DSC 653 UNKNOWN UNLOCATED STEEL CONDUIT | 1d | 2023-11-15 A | 2023-11-16 A | 2-1513 SS |  | MBRT DSC [8 h] |
| 2-1658 | DSC 654 CDF CONLFICT | 1d | 2023-11-15 A | 2023-11-16 A | 2-1538 SS |  | MBRT DSC [8 h] |
| 2-1382 | DSC 633 CABLE CAR BEAMS IN ROADWAY | 1d | 2023-10-17 A | 2023-10-17 A | 2-1334 |  | MBRT DSC [8 h] |
| DSC-683 | DSC 683 UNKNOWN CONDUIT CONFLICT | 1d | 2024-01-09 A | 2024-01-09 A | 2-1362 |  | MBRT DSC [8 h] |
| DSC-688 | Loop NCR 115 | 5d | 2024-03-22 A | 2024-03-23 A | 2-1363 |  |  |
| 2-7055 | Delay awaiting SCL Acceptance of Design Change | 0d | 2023-09-25 A | 2023-10-24 A | 2-7030 |  | MBRT NEW |
| 2-7060 | DC CONDUIT CHANGE | 27d | 2023-10-25 A | 2023-12-05 A | 2-7055 |  | MBRT NEW [216 h] |
| 2-7145 | DSC 656 UNKNOWN UNLOCATED CONDUIT | 3d | 2023-11-17 A | 2023-11-21 A | 2-7110 |  | MBRT DSC [24 h] |
| 2-7260 | DSC 623 NEC Seneca Light Pole P12-59 Conflict | 2d | 2023-09-19 A | 2023-09-20 A | 2-7245 |  | MBRT DSC [16 h] |
| 2-1450 | DSC 596 11th South Side Unknown Unlocated Conduit | 2d | 2023-08-22 A | 2023-08-23 A | 2-1439 SS |  | MBRT DSC [16 h] |
| 2-1490 | DSC 613 SEC 10TH REMOVE REPLACE HH CONFLICT | 9d | 2023-09-06 A | 2023-09-18 A | 2-1450, 2-1439 SS |  | MBRT DSC [72 h] |
| 2-1458 | DSC 638 CONCRETE OBSTRUCTION IN SIDEWALKS | 1d | 2023-10-30 A | 2023-10-30 A | 2-1441 SS |  | MBRT DSC [8 h] |
| 2-1478 | DSC 639 CONDUIT CONFLICTS | 2d | 2023-10-30 A | 2023-10-31 A | 2-1440 SS |  | MBRT DSC [16 h] |
| 2-1668 | DSC 646 UNKNOWN UNLOCATED CONDUIT | 2d | 2023-11-01 A | 2023-11-03 A | 2-1478 |  | MBRT DSC [16 h] |
| 2-1663 | DSC 645 TYPE 6 CONFLICT | 2d | 2023-11-02 A | 2023-11-03 A | 2-1478 |  | MBRT DSC [16 h] |
| 2-1693 | Broadway NEC | 5d | 2024-02-26 A | 2024-03-01 A | 2-1443 |  |  |
| 2-1673 | GRADE SIDEWALK AFTER TUNNEL REMOVAL | 0d | 2024-04-17 | 2024-04-17 | 2-1668, 2-1663, 2-2056 |  | MBRT NEW |
| 2-1698 | 11th NWC | 5d | 2024-04-17 | 2024-04-23 | 2-1673 |  |  |
| 2-1703 | Broadway SEC | 5d | 2024-04-17 | 2024-04-23 | 2-1673 |  |  |
| 2-1708 | Broadway NEC | 5d | 2024-04-17 | 2024-04-23 | 2-1673 |  |  |
| 2-1678 | SIDEWALS AFTER TUNNEL REMOVAL | 0d | 2024-04-24 | 2024-04-24 | 2-1673, 2-1363, 2-7140, 2-1693, 2-1708, 2-1703 |  | MBRT NEW |
| 2-1656 | DELAY AWITING PONY BAR SHOP DRAWING RETURN | 14d | 2024-02-12 A | 2024-03-04 A | 2-7140 |  | MBRT NEW [112 h] |
| 2-1661 | Sidewalk 13th SEC | 5d | 2024-03-04 A | 2024-03-05 A | 2-1656 |  |  |
| DSC-718 | DSC 718 12th to 13th south side unknown pole foundation | 5d | 2024-03-05 A | 2024-03-11 A | 2-1656, 2-1451 |  |  |
| 2-1464 | DSC 636 Pole P27-03 OBSTRUCTION | 13d | 2023-10-24 A | 2023-11-10 A | 2-1443 SS |  | MBRT DSC [104 h] |
| 2-1484 | DSC 637 POLE 40W-118-3 OBSTRUCITONS | 12d | 2023-10-25 A | 2023-11-10 A | 2-1443 SS, 2-1464 SS |  | MBRT DSC [96 h] |
| DSC-675 | DSC 675 UNKNOWN UNLOCATED DUCT BANK | 6d | 2023-12-21 A | 2023-12-29 A | 2-1484, 2-1464 |  | MBRT DSC [48 h] |
| DSC-676 | DSC 676 UNKNOWN UNLOCATED SIDE SEWER CONFLICT | 6d | 2023-12-21 A | 2023-12-29 A | 2-1484, 2-1464 |  | MBRT DSC [48 h] |
| DSC-711 | DSC 711 SWC 14TH FILLED WITH CDF | 1d | 2024-02-21 A | 2024-02-21 A | 2-1459 SS |  | MBRT DSC [8 h] |
| DSC-721 | DSC 721 13th to 14th South Side Duct Bank conflict with Conduit | 5d | 2024-03-01 A | 2024-04-05 | 2-1460, 2-1459 |  |  |
| DSC-723 | DSC 723 13th to 14th south side unknown cdf | 5d | 2024-03-01 A | 2024-04-05 | 2-1459, 2-1460 |  |  |
| DSC-746 | 13th SWC | 5d | 2024-04-08 | 2024-04-12 | DSC-723, DSC-721 |  |  |
| DSC-735 | DSC 735 SEC 14th unknown concrete obstruction | 5d | 2024-03-27 A | 2024-04-05 | 2-1465 |  |  |
| DSC-736 | DSC 736 SEC 14th unknown utlities in conflict with the pedestal | 5d | 2024-03-27 A | 2024-04-05 | 2-1465 |  |  |
| 2-1505 | NEC 12th Mulitple Conflicts | 13d | 2023-08-22 A | 2023-09-08 A | 2-1486 SS |  | MBRT NEW [104 h] |
| 2-1525 | DSC 600 Unkown Unlocated Conduits NWC 13th | 10d | 2023-08-25 A | 2023-09-08 A | 2-1486 SS |  | MBRT DSC [80 h] |
| 2-1530 | DSC 601 NWC 13th Unknown Duct Banks | 10d | 2023-08-25 A | 2023-09-08 A | 2-1486 SS |  | MBRT DSC [80 h] |
| 2-1545 | DSC 614 POLE 40e-787-1 CONFLICTS | 5d | 2023-09-06 A | 2023-09-12 A | 2-1486 SS |  | MBRT DSC [40 h] |
| 2-1585 | DSC 605 UNKNOWN CONDUIT | 1d | 2023-09-29 A | 2023-09-29 A | 2-1486 SS |  | MBRT DSC [8 h] |
| 2-1517 | DSC 660 UNKNOWN DUCT BANK #1 | 13d | 2023-12-06 A | 2023-12-22 A | 2-1491 |  | MBRT DSC [104 h] |
| 2-1542 | DSC 662 UNKNOWN CLAY LINE | 12d | 2023-12-07 A | 2023-12-22 A | 2-1491 |  | MBRT DSC [96 h] |
| 2-1627 | DSC 661 UNKOWN DUCT BANK #2 | 11d | 2023-12-07 A | 2023-12-22 A | 2-1491 |  | MBRT DSC [88 h] |
| 2-1777 | DSC 664 TYPE 3 HH CONFLCIT WITH EXISTING HOT CONDUITS | 39d | 2023-12-08 A | 2024-02-06 A | 2-1491 |  | MBRT DSC [312 h] |
| DSC-741 | 13th NWC | 5d | 2024-04-15 | 2024-04-19 | DSC-746, 2-1495 |  |  |
| DSC-643 | DSC 643 POLE 40e-803-1 POLE CONFLICTS | 8d | 2023-11-28 A | 2023-12-07 A | 2-1489 |  | MBRT DSC [64 h] |
| DSC-693 | DSC 693 DUCT BANK CONFLICT WITH RISER | 22d | 2024-01-08 A | 2024-02-07 A | DSC-643 |  | MBRT DSC [176 h] |
| DSC-686 | DSC 686 UNKNOWN POWER DUCT BANK CONFLICT | 18d | 2024-01-12 A | 2024-02-07 A | 2-1500 |  | MBRT DSC [144 h] |
| 2-1683 | DELAY AWAITING CITY TO PROVIDE DAY TO POUR AT STOREFRONTS | 0d | 2024-02-13 A | 2024-03-04 A | 2-1502, 2-1502 FF |  | MBRT NEW |
| DSC-713 | DSC 713 NEC 14TH AND PIKE ROTTON POLE | 7d | 2024-02-23 A | 2024-03-04 A | 2-1518 |  | MBRT DSC [56 h] |
| DSC-715 | DSC 715 NEC PIKE UNKNOWN CONCRETE WALL | 1d | 2024-02-27 A | 2024-02-28 A | 2-1519 SS |  | MBRT DSC [8 h] |
| 2-1688 | DELAY AWAITING DC FOR ART FOUNATION | 0d | 2024-03-20 A | 2024-04-05 | 2-1523 |  | MBRT NEW |
| 2-1572 | DSC 615 POLE P24-08 CONFLICTS | 96d | 2023-09-08 A | 2024-01-29 A | 2-1972 |  | MBRT DSC [768 h] |
| 2-1787 | REMOVE POLE | 1d | 2024-01-30 A | 2024-01-30 A | 2-1572 |  | MBRT NEW [8 h] |
| 2-1797 | REMOVE FOUNDATION | 3d | 2024-01-31 A | 2024-02-02 A | 2-1787 |  | MBRT NEW [24 h] |
| 2-1807 | POUR FOUNDATION | 4d | 2024-02-06 A | 2024-02-09 A | 2-1797 |  | MBRT NEW [32 h] |
| 2-1812 | COMPLETE UNDERGROUND NEC BROADWAY | 14d | 2024-02-12 A | 2024-03-01 A | 2-1807 |  | MBRT NEW [112 h] |
| 2-1817 | DSC 702 BROADWAY UNKNOWN UTILITES NWC | 39d | 2024-02-14 A | 2024-04-05 | 2-1812 SS |  | MBRT DSC [312 h] |
| 2-1822 | DSC 705 POLE RISER CONFLICT | 1d | 2024-02-15 A | 2024-02-15 A | 2-1812 SF |  | MBRT DSC [8 h] |
| 2-1827 | COMPLETE UNDERGROUND NWC BROADWAY | 0d | 2024-04-08 | 2024-04-08 | 2-1817 |  | MBRT NEW |
| 2-3044 | DELAY SCL WONT INSPECT AS THEY ARE ENFORCING SPECS THAT DID NOT EXIST AT THE TIME OF BID | 25d | 2023-12-12 A | 2024-01-18 A | 2-3039 |  | MBRT NEW [200 h] |
| 1 | **BROADWAY (SCHEMATIC 12)** |  | 2024-06-04 | 2024-07-26 |  |  |  |
| 2 | **10TH (SCHEMATIC 13)** |  | 2023-12-26 | 2024-01-24 |  |  |  |
| 3 | **11TH (SCHEMATIC 14)** |  | 2023-12-27 | 2024-04-15 |  |  |  |
| 2-2632 | DELAY AWAITING SCL TO INSPECT DUCT BANK | 0d | 2024-01-02 A | 2024-02-02 A | 2-2027 |  | MBRT NEW |
| 4 | **12TH (SCHEMATIC 15)** |  | 2023-12-26 | 2024-03-18 |  |  |  |
| 5 | **13TH (SCHEMATIC 16)** |  | 2024-04-02 | 2024-05-30 |  |  |  |
| 6 | **14TH (SCHEMATIC 17)** |  | 2024-04-25 | 2024-06-07 |  |  |  |
| 3-1983 | DSC 628 EXISTING INLET POURED IN CONCRETE | 3d | 2023-10-02 A | 2023-10-04 A | 3-1977 SS |  | MBRT DSC [24 h] |
| 3-2011 | DSC 663 UNKNOWN UNLOCATED CONDUIT | 1d | 2023-12-07 A | 2023-12-07 A | 3-2006 SS |  | MBRT DSC [8 h] |
| DSC-690 | DSC 690 CLEANOUT IN ROAWAY AFTER WIDENING AURTHUR | 1d | 2024-01-19 A | 2024-01-19 A | 3-2013 |  | MBRT DSC [8 h] |
| DSC-692 | DSC 692 INLET CAST INTO ROADWAY | 1d | 2024-01-22 A | 2024-01-22 A | DSC-690 |  | MBRT DSC [8 h] |
| 3-2093 | DSC 634 SINK HOLE | 1d | 2023-10-23 A | 2023-10-23 A | 3-2083 SS |  | MBRT DSC [8 h] |
| 3-2103 | DSC 635 UNKNOWN UNLOCATED CONDUIT | 2d | 2023-10-23 A | 2023-10-24 A | 3-2093 SS |  | MBRT DSC [16 h] |
| 3-2058 | DSC 595 NEC 17th Inlet cast into roadway | 7d | 2023-08-22 A | 2023-08-30 A | 3-2043 SS |  | MBRT DSC [56 h] |
| 3-2078 | DSC 603 UNKNOWN UNLOCATED STEEL PIPE | 1d | 2023-08-28 A | 2023-08-28 A | 3-2058 SS |  | MBRT DSC [8 h] |
| DSC-681 | DSC 681 EXISTING COMM VAULT WITH HOLES IN LID | 1d | 2024-01-05 A | 2024-01-05 A | 3-2052 SS |  | MBRT DSC [8 h] |
| 15 | **15TH NEC** |  | 2024-02-01 | 2024-03-08 |  |  |  |
| 3-9628 | REMOVE SIDEWALK - 15TH NEC | 1d | 2024-02-01 A | 2024-02-01 A | 3-2012 |  | MBRT NEW [8 h] |
| 3-9633 | TRENCH CONDUIT - 15TH NEC | 1d | 2024-02-02 A | 2024-02-06 A | 3-9628 |  | MBRT NEW [8 h] |
| DSC-695 | DSC 695 DUCT BANK CONFLICT | 3d | 2024-02-02 A | 2024-02-06 A | 3-9633 SS |  | MBRT DSC [24 h] |
| DSC-697 | DSC 697 UNLKNOWN UNLOCATED CONDUIT CONFLICTS | 1d | 2024-02-06 A | 2024-02-06 A | 3-9633 SS |  | MBRT DSC [8 h] |
| DSC-698 | DSC 698 UNKNOWN UNLOCATED CONDUIT CONFLICTS WITH SDOT CONDUIT | 1d | 2024-02-06 A | 2024-02-06 A | 3-9633 SS |  | MBRT DSC [8 h] |
| 3-9638 | INST CONDUIT - 15TH NEC | 1d | 2024-02-07 A | 2024-02-23 A | 3-9633 SS, DSC-698, DSC-697, DSC-695 |  | MBRT NEW [8 h] |
| DSC-704 | DSC 704 STORM LINE CONFLICT WITH PEDISTAL | 7d | 2024-02-14 A | 2024-02-23 A | 3-9638 SS |  | MBRT DSC [56 h] |
| 3-9643 | GRADE SIDEWALK - 15TH NEC | 2d | 2024-02-26 A | 2024-02-26 A | 3-9638, DSC-704 |  | MBRT NEW [16 h] |
| 3-9683 | CURB RAMPS - 15TH NEC | 0d | 2024-03-04 A | 2024-03-04 A | 3-9643 |  | MBRT NEW |
| 3-9648 | POUR SIDEWALK - 15TH NEC | 3d | 2024-03-05 A | 2024-03-08 A | 3-9643, 3-9683 |  | MBRT NEW [24 h] |
| 18 | **19TH NEC** |  | 2024-04-15 | 2024-04-23 |  |  |  |
| 3-9653 | REMOVE SIDEWALK - 19TH NEC | 1d | 2024-04-15 | 2024-04-15 | 3-9643, 3-2156 |  | MBRT NEW [8 h] |
| 3-9658 | TRENCH CONDUIT - 19TH NEC | 1d | 2024-04-16 | 2024-04-16 | 3-9653 |  | MBRT NEW [8 h] |
| 3-9663 | INST CONDUIT - 19TH NEC | 1d | 2024-04-16 | 2024-04-16 | 3-9658 SS |  | MBRT NEW [8 h] |
| 3-9668 | GRADE SIDEWALK - 19TH NEC | 2d | 2024-04-17 | 2024-04-18 | 3-9663 |  | MBRT NEW [16 h] |
| 3-9673 | POUR SIDEWALK - 19TH NEC (ESTIMATED DATE) | 3d | 2024-04-19 | 2024-04-23 | 3-9668, 3-9678, 3-9648 |  | MBRT NEW [24 h] |
| 3-9678 | CURB RAMPS - 19TH NEC | 0d | 2024-04-19 | 2024-04-19 | 3-9668 |  | MBRT NEW |
| DSC-727 | DSC 727 15th to 16th south side unknown unlocated gasline | 5d | 2024-03-14 A | 2024-03-28 A | 3-2112 SS |  |  |
| DSC-730 | DSC 730 15th to 16th south side extra thick sidewalk | 5d | 2024-03-14 A | 2024-03-28 A | 3-2112 SS |  |  |
| DSC-731 | DSC 731 15th to 16th south side unknown unlocated conduit | 5d | 2024-03-14 A | 2024-03-28 A | 3-2112 SS |  |  |
| DSC-728 | DSC 728 15th to 16th south side leaking water service | 5d | 2024-03-14 A | 2024-03-28 A | 3-2112 SS |  |  |
| DSC-726 | DSC 726 CO-OP Driveway drain outlet | 5d | 2024-03-18 A | 2024-04-05 | 3-2112 |  |  |
| 3-7956 | DSC 630 UNKNOWN DUCT BANK | 2d | 2023-10-12 A | 2023-10-13 A | 3-7950 SS |  | MBRT DSC [16 h] |
| 3-7961 | DSC 631 UNKNOWN UNLOCATED DUCT BANK | 2d | 2023-10-12 A | 2023-10-13 A | 3-7956 SS |  | MBRT DSC [16 h] |
| 3-7966 | DSC 632 UNKNOWN UNLOCATED DUCT BANK | 2d | 2023-10-12 A | 2023-10-13 A | 3-7961 SS |  | MBRT DSC [16 h] |
| DSC-668 | DSC 668 UNKNOWN UNLOCATED UTILITIES | 51d | 2023-12-18 A | 2024-03-01 A | 3-2124 |  | MBRT DSC [408 h] |
| DSC-673 | DSC 673 HH REPLACEMENT WONT WORK PER PLAN | 48d | 2023-12-21 A | 2024-03-01 A | 3-2125 |  | MBRT DSC [384 h] |
| DSC-716 | DSC 716 EXISTING POLE BELOW NEW SIDEWALK GRADE | 1d | 2024-03-01 A | 2024-04-02 | DSC-673, DSC-668 |  | MBRT DSC [8 h] |
| 3-2141 | DSC 666 CONDUIT CONFLICT | 1d | 2023-12-13 A | 2023-12-13 A | 3-2125 SS |  | MBRT DSC [8 h] |
| 3-2151 | DSC 682 SEC 18TH FILLED WITH CDF | 2d | 2024-01-08 A | 2024-01-09 A | 3-2137 SS |  | MBRT DSC [16 h] |
| 3-2171 | DSC 685 SEC 18TH MULTIPLE CONFLICTS | 1d | 2024-01-10 A | 2024-01-10 A | 3-2151 |  | MBRT DSC [8 h] |
| 3-2181 | DSC 688 POLE RISER CONFLICT | 1d | 2024-01-16 A | 2024-01-16 A | 3-2171 |  | MBRT DSC [8 h] |
| 3-2211 | DELAY AWAITING SCL TO REMOVE WIRE | 0d | 2024-02-13 A | 2024-03-04 A | 3-2138 |  | MBRT NEW |
| DSC-693A | DSC 693 NWC 17TH CDF ENCASED UTILITY | 2d | 2024-01-29 A | 2024-01-30 A | 3-2143 SS |  | MBRT DSC [16 h] |
| 3-2221 | DELAY AWAITING SCL TO REMOVE WIRE | 0d | 2024-02-13 A | 2024-02-27 A | 3-2144 SS |  | MBRT NEW |
| DSC-712 | DSC 712 UNKNOWN UTILITIES IN CONFLICT WITH CONDUIT | 1d | 2024-02-22 A | 2024-02-23 A | 3-2144 SS |  | MBRT DSC [8 h] |
| 3-2231 | Sidewalk NWC 17th | 10d | 2024-03-25 A | 2024-04-09 | 3-2146 |  |  |
| 3-2157 | 19th NEC | 10d | 2024-04-15 | 2024-04-26 | 3-2156 |  |  |
| DSC-669 | DSC 669 ROADWAY POURED BY SPU NOT PER PLAN CURB RAMP WONT WORK | 1d | 2023-12-18 A | 2023-12-18 A | 3-2161 |  | MBRT DSC [8 h] |
| 3-2227 | DSC 657 UNKNOWN UNLOCATED CONDUIT | 1d | 2023-12-05 A | 2023-12-05 A | 3-2222 |  | MBRT DSC [8 h] |
| 3-2277 | DSC 659 UNLOCATED SIDE SEWER | 1d | 2023-12-06 A | 2023-12-06 A | 3-2222 |  | MBRT DSC [8 h] |
| DSC-670 | DSC 670 UNLOCATED GAS SERVICE LINE | 1d | 2023-12-18 A | 2023-12-18 A | 3-2225 |  | MBRT DSC [8 h] |
| DSC-667 | DSC 667 EXISTING WATER SERVICE LEAKING | 1d | 2023-12-18 A | 2023-12-18 A | 3-2241 |  | MBRT DSC [8 h] |
| 3-2275 | DSC 620 Pole Foundation P-38.12 | 7d | 2023-09-19 A | 2023-09-27 A | 3-2091 SS |  | MBRT DSC [56 h] |
| 3-2273 | 28TH WB STATION DESIGN CONFLICTS | 30d | 2024-01-17 A | 2024-02-28 A | 3-2260 SS |  | MBRT NEW [240 h] |
| DSC-689 | DSC 689 CONDUIT CONFLICT WITH BUS FOUNDATION | 30d | 2024-01-17 A | 2024-02-28 A | 3-2261 SS |  | MBRT DSC [240 h] |
| DSC-701 | DSC 701 UNKNOWN DRAIN LINE CONFLICT | 1d | 2024-02-14 A | 2024-02-14 A | 3-2261 SS |  | MBRT DSC [8 h] |
| DSC-700 | DSC 700 UNKNOWN UTILITES IN CONFLICT WITH THE CONDUIT | 2d | 2024-02-12 A | 2024-02-13 A | MS-0025 |  | MBRT DSC [16 h] |
| DSC-734 | DSC 734 SWC MLK Uknown Unlocated utiltity | 5d | 2024-03-15 A | 2024-04-04 | 3-2290 SS |  |  |
| 3-2336 | Complete MLK SE Corner | 10d | 2024-04-24 | 2024-05-07 | 3-2296, 3-2314 |  | MBRT NEW [80 h] |
| 3-2356 | Complete 28th & Madison NE Corner | 10d | 2024-04-24 | 2024-05-07 | 3-2296, 3-2336 SS |  | MBRT NEW [80 h] |
| 3-2333 | DSC 625 Pole 39-01 usuatable soils | 11d | 2023-09-20 A | 2023-10-04 A | 3-2308 SS |  | MBRT DSC [88 h] |
| 3-2348 | DSC 626 Pole 39-03 Foundation Conflicts | 11d | 2023-09-20 A | 2023-10-04 A | 3-2333 SS, 3-2308 SS |  | MBRT DSC [88 h] |
| 3-2363 | DSC 627 NWC Harrison Pole 39-06 foundation conflict | 11d | 2023-09-20 A | 2023-10-04 A | 3-2307 |  | MBRT DSC [88 h] |
| 38 | **E. HARRISON AND MLK SW CORNER** |  | 2024-03-08 | 2024-03-28 |  |  |  |
| 3-2359 | DSC 629 P40-07 FOUNDATION CONFLICT | 10d | 2023-10-02 A | 2023-10-13 A | 3-2348 |  | MBRT DSC [80 h] |
| DSC-691 | DSC 691 UNKNOWN COM CONDUIT CONFLICT | 1d | 2024-01-20 A | 2024-01-22 A | 3-2260 SS |  | MBRT DSC [8 h] |
| DSC-738 | DSC 738 SWC 19th and Union duct bank conflict with pedestal | 4d | 2024-03-21 A | 2024-04-05 | 3-2345 SS |  |  |
| 3-2362 | Complete Shelters | 20d | 2024-07-03 | 2024-07-30 | 3-2361 |  | MBRT BASE [160 h] |
| 3-2487 | Complete UG Elec & Sidewalks NWC 17th | 0d | 2024-04-05 | 2024-04-05 | 3-2386 | start on or after 2024-04-05 | MBRT NEW |
| 3-2447 | DELAY AWAITING SCL TO COMMISSION SERVICE | 0d | 2023-09-09 A | 2023-09-09 A | 3-7329 |  | MBRT NEW |
| 3-2500 | Complete UG Elec & Sidewalks SEC 28th | 0d | 2024-04-24 | 2024-04-24 | 3-2296 |  | MBRT NEW |
| 3-2525 | Complete UG Elec & Sidewalks NEC 28th | 0d | 2024-04-24 | 2024-04-24 | 3-2500 |  | MBRT NEW |
| 1 | **16TH (SCHEMATIC 18)** |  | 2023-12-26 | 2024-03-18 |  |  |  |
| 3-2521 | DELAY AWAITING SCL TO COMMISSION LIGHTING | 0d | 2024-02-26 A | 2024-02-26 A | 3-2506 |  | MBRT NEW |
| 7 | **17TH (SCHEMATIC 19)** |  | 2023-08-14 | 2024-05-15 |  |  |  |
| 2 | **18TH (SCHEMATIC 20)** |  | 2023-08-14 | 2024-06-12 |  |  |  |
| 6 | **19TH (SCHEMATIC 21)** |  | 2023-08-14 | 2024-07-23 |  |  |  |
| 3-3325 | DELAY AWAITING SCL TO DECOMISSION OLD SERVICE | 0d | 2023-10-10 A | 2023-11-16 A | MS-0025 |  | MBRT ADDED |
| 3-3330 | DELAY AWAITING SCL TO DECOMISSION OLD SERVICE | 0d | 2023-11-16 A | 2023-11-20 A | 3-3325 |  | MBRT ADDED |

Removed: SPRING AND 3RD; SPRING AND 7TH; SPRING AND 8TH; MADISON AND 3RD; MADISON AND 5TH; MADISON 7TH TO 8TH; MADISON AND 9TH; MADISON AND MINOR; MADISON AND TERRY; MADISON AND BOYLSTON; 10TH; 11TH; 12TH; 13TH; 14TH; BROADWAY; E. HARRISON AND MLK SE CORNER; 3-2431 INST MAGNOMETERS, MAD AND DENNY; 16TH; 17TH; 18TH; 19TH

Changed:

| ID | Task | Start | Finish | Duration | Complete | Total float | Predecessors | Other |
| --- | --- | --- | --- | --- | --- | --- | --- | --- |
| 1 | **PRECONSTRUCTION / PROCUREMENT** |  | 2023-10-18 → 2023-11-27 (+40d) |  |  |  |  |  |
| 2 | **MATERIAL PROCURMENT LONG LEAD TIME** |  | 2023-10-18 → 2023-11-27 (+40d) |  |  |  |  |  |
| PMP-0026 | RECEIVE KCM OCS POLES |  |  |  |  |  |  | constraint as late as possible → none |
| PMP-46 | OFD-STATION SHELTERS - RFI 218 AND 219 |  | 2023-08-22 → 2023-08-17 A (-5d) |  | 0% → 100% | -30d → none |  |  |
| PMP-51 | OFD-STATION SHELTERS - AFTER RFI 218 AND 219 | 2023-08-23 → 2023-08-18 A (-5d) | 2023-10-18 → 2023-11-27 A (+40d) |  | 0% → 100% | -30d → none |  |  |
| 1-SCL-0900 | NOTIFY SCL, SCL FALSE CEILING NOTIFICATIONS |  |  |  |  |  | PCS-0014 FS+17d → PCS-0014 SS+17d |  |
| 2 | **CONSTRUCTION / CONTRACT DAYS** |  | 2024-09-09 → 2024-10-01 (+22d) |  |  |  |  |  |
| 1 | **MILESTONES** |  | 2024-09-09 → 2024-10-01 (+22d) |  |  |  |  |  |
| MS-0030 | CONTRACT DURATION |  | 2024-09-09 → 2024-10-01 (+22d) |  | 55% → 78% | -131d → -147d |  |  |
| MS-2556 | 19TH & UNION, COMPLETION MILESTONE | 2024-02-14 → 2024-07-03 (+140d) | 2024-02-14 → 2024-07-03 (+140d) |  |  | -28d → -126d | 3-2499 → 3-2499 FF |  |
| MS-1137 | COMPLETE ZONE 1 | 2024-03-20 → 2024-07-19 (+121d) | 2024-03-20 → 2024-07-19 (+121d) |  |  | -52d → -138d | 1-1133, 1-1135, 1-1045, 1-1043, 1-0792, 1-0790, 1-0822, 1-0086, 1-0085 → 1-1133 FF, 1-1135 FF, 1-1045 FF, 1-1043 FF, 1-0792 FF, 1-0790 FF, 1-0822 FF, 1-0086 FF, 1-0085 FF, 1-8020 FF, 1-2105 FF |  |
| MS-2561 | KC METRO, 20d NOTICE | 2024-03-21 → 2024-07-22 (+123d) | 2024-04-17 → 2024-08-16 (+121d) |  |  | 102d → -115d |  |  |
| MS-2547 | COMPLETE ZONE 3 | 2024-03-28 → 2024-07-30 (+124d) | 2024-03-28 → 2024-07-30 (+124d) |  |  | -58d → -145d | 3-2501, 1-8010, 3-2364, 3-2542, 3-2379, 3-2565, 3-3300, 3-2189, 3-2267 → 3-2501 FF, 3-2362 FF, 3-2364 FF, 3-2542 FF, 3-2379 FF, 3-2565 FF, 3-3300 FF, 3-2189 FF, 3-2267 FF, 3-3040 FF |  |
| MS-2566 | KC METRO, 20d NOTICE | 2024-03-29 → 2024-07-31 (+124d) | 2024-04-25 → 2024-08-27 (+124d) |  |  | 96d → -122d |  |  |
| MS-1674 | COMPLETE ZONE 2 | 2024-03-20 → 2024-08-01 (+134d) | 2024-03-20 → 2024-08-01 (+134d) |  |  | -52d → -147d | 2-1655, MS-1137 → 2-1655 FF, MS-1137 FF, 2-1678 FF, 2-2527 FF |  |
| MS-2549 | SUBSTANTIAL COMPLETION | 2024-07-10 → 2024-08-01 (+22d) | 2024-07-10 → 2024-08-01 (+22d) |  |  | -131d → -147d | MS-1137, MS-2547, 2-1657, 2-1541, 2-1543, 2-1642, 2-1655, 2-1626, 2-1524, MS-0025, MS-1674, LS-1290, SC-1664, SC-1669, 2-1643, LS-1475, MS-2556, 1-1520, 1-1500, 1-1770, 1-1540, 1-1795, 1-1815, 1-1840, 1-1870, 1-1895, 1-1920, 1-1945, 1-1970, 1-1995, 2-2137, 2-2152, 2-2167, 2-2197, 2-2212, 3-2378, 3-2507, 3-2995, 3-3040, 3-3085, 3-2770, 3-2815, 3-2860, 3-2905, 3-2725, 3-2950, 2-2622, 2-2657, 3-3155, 3-3165, 3-3200, 3-3220, 3-3240, 3-3260, 3-3305, 3-3280, 1-2030, 1-2050, 1-2070, 1-2105, 1-2135, 1-2150, 1-2195, 1-2320, 1-2415, 1-2425, 1-2585, 1-2520, 1-2665, 1-2700, 1-2705, 2-1640, 1-2225, 1-2575, 3-2486, SC-0032, 3-2201, 1-6629, 1-6618, 1-6640, 1-6651, 1-6662, 1-6607, 3-9583, 3-9572, 3-9561, 3-9550, 1-10006, 3-2540 → MS-1137 FF, MS-2547 FF, 2-1657, 2-1541, 2-1543, 2-1642, 2-1655, 2-1626, 2-1524, MS-0025, MS-1674 FF, LS-1290, SC-1664, SC-1669, 2-1643, LS-1475, MS-2556 FF, 1-1520, 1-1500, 1-1770, 1-1540, 1-1795, 1-1815, 1-1840, 1-1870, 1-1895, 1-1920, 1-1945, 1-1970, 1-1995, 2-2137, 2-2152, 2-2167, 2-2197, 2-2212, 3-2378, 3-2507, 3-2995, 3-3040, 3-3085, 3-2770, 3-2815, 3-2860, 3-2905, 3-2725, 3-2950, 2-2622, 2-2657, 3-3155, 3-3165, 3-3200, 3-3220, 3-3240, 3-3260, 3-3305, 3-3280, 1-2030, 1-2050, 1-2070, 1-2105, 1-2135, 1-2150, 1-2195, 1-2320, 1-2415, 1-2425, 1-2585, 1-2520, 1-2665, 1-2700, 1-2705, 2-1640, 1-2225, 1-2575, 3-2486, SC-0032, 3-2201, 1-6629, 1-6618, 1-6640, 1-6651, 1-6662, 1-6607, 3-9583, 3-9572, 3-9561, 3-9550, 1-10006, 3-2540, DSC-448, DSC-700, PCO010.01, PCO012.01, PCO014.01, PCO015.01, PCO018.01, PCO019.01, PCO020.01, PCO021.01, PCO024.01, PCO025.01, PCO026.01, PCO027.01, PCO028.01, PCO029.01, PCO030.01, PCO031.01, PCO037.01, PCO042.01, PCO043.01, PCO049.01, PCO052.01, PCO058.01, PCO059.01, PCO060.01, PCO062.01, PCO063.01, PCO064.01, PCO066.01, PCO069.01, PCO072.01, PCO077.01, PCO078.01, PCO079.01, PCO080.01, PCO081.01, PCO084.01, PCO085.01, PCO087.01, PCO088.01, PCO092.01, PCO093.01, PCO094.01, PCO096.01, PCO097.01, PCO100.01, PCO101.01, PCO103.01, PCO104.01, PCO105.01, PCO106.01, PCO108.01, PCO109.01, PCO110.01, PCO112.01, PCO113.01, PCO114.01, PCO116.01, PCO122.01, PCO123.01, PCO124.01, PCO126.01, PCO127.01, PCO128.01, PCO129.01, PCO130.01, PCO131.01, PCO133.01, PCO134.01, PCO135.01, PCO137.01, PCO138.01, PCO139.01, PCO140.01, PCO141.01, PCO142.01, PCO143.01, PCO144.01, PCO145.01, PCO146.01, PCO147.01, PCO148.01, PCO149.01, PCO150.01, PCO151.01, PCO155.01, PCO156.01, PCO158.01, PCO159.01, PCO162.01, PCO163.01, PCO165.01, PCO167.01, PCO168.01, PCO170.01, PCO171.01, PCO172.01, PCO173.01, PCO176.01, PCO178.01, PCO180.01, PCO181.01, PCO183.01, PCO184.01, PCO185.01, PCO186.01, PCO187.01, PCO188.01, PCO190.01, PCO192.01, PCO198.01, PCO199.01, PCO200.01, PCO201.01, PCO203.01, PCO205.01, PCO207.01, PCO212.01, PCO214.01, PCO215.01, PCO216.01, PCO217.01, PCO220.01, PCO221.01, PCO222.01, PCO225.01, PCO227.01, PCO229.01, PCO230.01, PCO231.01, PCO232.01, PCO233.01, PCO234.01, PCO235.01, PCO237.01, PCO238.01, PCO239.01, PCO240.01, PCO241.01, PCO242.01, PCO246.01, PCO247.01, PCO248.01, PCO250.01, PCO251.01, PCO252.01, PCO253.01, PCO255.01, PCO257.01, PCO258.01, PCO259.01, PCO264.01, PCO265.01, PCO266.01, PCO267.01, PCO269.01, PCO270.01, PCO271.01, PCO272.01, PCO273.01, PCO274.01, PCO276.01, PCO278.01, PCO279.01, PCO280.01, PCO281.01, PCO282.01, PCO283.01, PCO284.01, PCO285.01, PCO286.01, PCO289.01, PCO290.01, PCO292.01, PCO293.01, PCO294.01, PCO295.01, PCO296.01, PCO297.01, PCO298.01, PCO300.01, PCO301.01, PCO302.01, PCO304.01, PCO305.01, PCO306.01, PCO307.01, PCO308.01, PCO309.01, PCO310.01, PCO314.01, PCO315.01, PCO317.01, PCO318.01, PCO320.01, PCO322.01, PCO323.01, PCO324.01, PCO325.01, PCO328.01, PCO333.01, PCO334.01, PCO335.01, PCO336.01, PCO339.01, PCO340.01, PCO341.01, PCO343.01, PCO344.01, PCO345.01, PCO346.01, PCO347.01, PCO348.01, PCO351.01, PCO354.01, PCO355.01, PCO359.01, PCO361.01, PCO362.01, PCO363.01, PCO364.01, PCO365.01, PCO366.01, PCO367.01, PCO370.01, PCO371.01, PCO373.01, PCO374.01, PCO375.01, PCO376.01, PCO377.01, PCO379.01, PCO380.01, PCO382.01, PCO383.01, PCO384.01, PCO385.01, PCO386.01, PCO387.01, PCO388.01, PCO391.01, PCO392.01, PCO395.01, PCO397.01, PCO398.01, PCO399.01, PCO400.01, PCO401.01, PCO403.01, PCO404.01, PCO405.01, PCO406.01, PCO407.01, PCO409.01, PCO411.01, PCO413.01, PCO414.01, PCO415.01, PCO417.01, PCO421.01, PCO423.01, PCO424.01, PCO426.01, PCO428.01, PCO429.01, PCO431.01, PCO432.01, PCO434.01, PCO435.01, PCO436.01, PCO437.01, PCO438.01, PCO441.01, PCO442.01, PCO443.01, PCO445.01, PCO446.01, PCO447.01, PCO449.01, PCO450.01, PCO451.01, PCO452.01, PCO455.01, PCO457.01, PCO458.01, PCO461.01, PCO465.01, PCO466.01, PCO467.01, PCO468.01, PCO469.01, PCO470.01, PCO471.01, PCO472.01, PCO476.01, PCO477.01, PCO479.01, PCO481.01, PCO485.01, PCO486.01, PCO490.01, PCO491.01, PCO494.01, PCO495.01, PCO497.01, PCO498.01, PCO500.01, PCO504.01, PCO505.01, PCO506.01, PCO508.01, PCO509.01, PCO510.01, PCO513.01, PCO516.01, PCO517.01, PCO518.01, PCO519.01, PCO520.01, PCO521.01, PCO522.01, PCO527.01, PCO530.01, PCO532.01, PCO536.01, PCO540.01, PCO541.01, PCO542.01, PCO544.01, PCO548.01, PCO549.01, PCO550.01, PCO551.01, PCO552.01, PCO553.01, PCO557.01, PCO561.01, PCO562.01, PCO564.01, PCO565.01, PCO566.01, PCO570.01, PCO615.01, PCO625.01, PCO626.01, PCO627.01, PCO629.01, PCO631.01, PCO635.01, PCO636.01, PCO643.01, PCO647.01, PCO650.01, PCO652.01, PCO653.01, PCO654.01, PCO658.01, PCO659.01, PCO661.01, PCO664.01, PCO665.01, PCO666.01, PCO667.01, PCO673.01, PCO674.01, PCO675.01, PCO679.01, PCO694.01, PCO697.01, PCO700.01, PCO701.01 |  |
| MS-0067 | KC METRO, 20d NOTICE | 2024-03-21 → 2024-08-02 (+134d) | 2024-04-17 → 2024-08-29 (+134d) |  |  | 102d → -124d | MS-1137 → MS-1137 FF, MS-1674 |  |
| MS-2550 | PUNCH LIST | 2024-07-11 → 2024-08-02 (+22d) | 2024-09-09 → 2024-10-01 (+22d) |  |  | -131d → -147d |  |  |
| MS-0052 | OCS WIRE INSTALLATION KCM - W OF BDWY (120CD) | 2024-04-17 → 2024-08-16 (+121d) | 2024-04-17 → 2024-08-16 (+121d) |  |  | 145d → -115d | 1-1017, 1-1047, MS-1137, MS-2561 → 1-1017 FF, 1-1047 FF, MS-1137 FF, MS-2561 FF |  |
| MS-0062 | OCS WIRE INSTALLATION KCM - E OF BDWY (180CD) | 2024-07-10 → 2024-08-27 (+48d) | 2024-07-10 → 2024-08-27 (+48d) |  |  | 61d → -122d | 2-1657, 2-1604, 3-2542, MS-1674, MS-2547, MS-2566 → 2-1657 FF, 2-1604 FF, 3-2542 FF, MS-1674 FF, MS-2547 FF, MS-2566 FF |  |
| MS-0057 | OCS WIRE INSTALLATION KCM - BDWY INT (45CD) | 2024-04-17 → 2024-08-29 (+134d) | 2024-04-17 → 2024-08-29 (+134d) |  |  | 145d → -124d | 1-1017, 1-1047, MS-0067, OCS-0043 → 1-1017 FF, 1-1047 FF, MS-0067 FF, OCS-0043 FF |  |
| MS-2551 | PHYSICAL COMPLETION | 2024-09-09 → 2024-10-01 (+22d) | 2024-09-09 → 2024-10-01 (+22d) |  |  | -131d → -147d | MS-2550, MS-0030 FF, LS-1185, LS-1445 → MS-2550 FF, MS-0030 FF, LS-1185 FF, LS-1445 FF, MS-0062 FF, MS-0057 FF, MS-0052 FF |  |
| 2 | **SCHDULE CONSTRAINTS** |  | 2024-07-10 → 2024-05-21 (-50d) |  |  |  |  |  |
| SC-1674 | EXPIRATION OF HOLIDAY MORATORIUM |  |  |  |  |  | MS-0025 → SC-0027 | constraint finish on or after 2022-01-01 → none |
| SC-0031 | ROUTE 2 DEENERGIZATION |  |  |  |  |  |  | constraint start on or after 2022-03-01 → none |
| SC-0047 | 10TH AVE DURATION (4 MO) |  | 2023-08-22 A |  | 91% → 100% | 265d → none |  |  |
| SC-1664 | COMPLETE ROUTE 2 PAVING & CURBS |  |  |  |  |  | none → MS-0025 | constraint finish on or before 2023-03-31 → none |
| SC-0032 | OCS POLES E OF BROADWAY INSTALLED | 2024-07-10 → 2024-02-02 A (-159d) | 2024-07-10 → 2024-02-02 A (-159d) |  | 0% → 100% | -131d → none |  |  |
| SC-1669 | COMPLETE ROUTE 2 SIGNALS & CHANN | 2024-07-10 → 2024-05-21 (-50d) | 2024-07-10 → 2024-05-21 (-50d) |  |  | -131d → -96d |  |  |
| OCS-0042 | REM OCS LINES FROM BROADWAY TO 16TH, OCS LINE REMOVAL |  |  |  |  |  | OCS-0041, SC-0031, MS-0025 → OCS-0041, SC-0031 SS, MS-0025 |  |
| 4 | **ZONE 1 - 1ST AVE TO BROADWAY** |  | 2024-06-19 → 2024-07-19 (+30d) |  |  |  |  |  |
| 1-0046 | SPRING AVE 1ST TO 6TH - 1 EACH, POTHOLING FOUNDATIONS |  |  |  |  |  |  | resources none → MBRT BASE [8 h] |
| PCO009.01 | DSC 4-Potholing 40W-1629-1 3rd and Madison Foundation obstruction |  |  |  |  |  |  | resources none → MBRT DSC [64 h] |
| 1-0048 | MAD 1ST TO 6TH - 3 EACH, POTHOLING FOUNDATIONS |  |  |  |  |  |  | resources none → MBRT BASE [24 h] |
| 1-0068 | Pothole foundation at 3rd and Spring had obstruction will need to resume |  |  |  |  |  |  | resources none → MBRT NEW |
| 1-0049 | SUBMITTAL REVIEW MAD 1ST TO 6TH, POTHOLING FOUNDATIONS |  |  |  |  |  |  | resources none → MBRT BASE |
| 1-0047 | SUBMITTAL REVIEW SPRING 1ST TO 6TH, POTHOLING FOUNDATIONS |  |  |  |  |  |  | resources none → MBRT BASE |
| 1-0052 | MAD 6TH TO BROADWAY - 30 EACH, POTHOLING FOUNDATIONS |  |  |  |  |  | 1-0068 SS → 1-0068 SS, PCO009.01 | resources none → MBRT BASE [96 h] |
| 1-0050 | SPRING 6TH TO 9TH - 5 EACH, POTHOLING FOUNDATIONS |  |  |  |  |  |  | resources none → MBRT BASE [112 h] |
| 1-0053 | SUBMITTAL REVIEW MAD 6TH TO BROADWAY, POTHOLING FOUNDATIONS |  |  |  |  |  |  | resources none → MBRT BASE |
| PCO069.01 | DSC 43-Pole 40E-845-1 Concrete Conflict |  |  |  |  |  | none → MS-0025 | resources none → MBRT DSC [800 h] |
| 1-0054 | 9TH AVE - 8 EACH, POTHOLING FOUNDATIONS |  |  |  |  |  |  | resources none → MBRT BASE [80 h] |
| PCO106.01 | DSC 67-Pole 40E-119-1 Mad and 13th Conflict |  |  |  |  |  | none → MS-0025 | resources none → MBRT DSC [40 h] |
| 1-0051 | SUBMITTAL REVIEW SPRING 6TH TO 9TH, POTHOLING FOUNDATIONS |  |  |  |  |  |  | resources none → MBRT BASE |
| 1-0055 | SUBMITTAL REVIEW 9TH AVE, POTHOLING FOUNDATIONS |  |  |  |  |  |  | resources none → MBRT BASE |
| 1-0108 | Resumption of potholing 3rd and Spring |  |  |  |  |  |  | resources none → MBRT NEW [8 h] |
| PCO412.01 | DSC 302-Tie Back Pole 40E-795-2 |  |  |  |  |  | none → MS-0025 | resources none → MBRT DSC [64 h] |
| PCO416.01 | DSC 306-40W-883-1 Tie Back conflict |  |  |  |  |  |  | resources none → MBRT DSC [16 h] |
| PCO481.01 | DSC 348-Pole Conflict Boylston to Broadway |  |  |  |  |  |  | resources none → MBRT DSC [472 h] |
| PCO001.01 | DSC 1-Utility Conflicts at 1st Ave WM Joint Potholing |  |  |  |  |  | none → MS-0025 | resources none → MBRT DSC [8 h] |
| 1-0057 | JOINT CLAMPS 1ST & MAD, WATERLINE WORK |  |  |  |  |  |  | resources none → MBRT BASE [16 h] |
| 1-0058 | JOINT CLAMPS 5TH & MAD, WATERLINE WORK |  |  |  |  |  |  | resources none → MBRT BASE [72 h] |
| PCO055.01 | DSC 34-Faulty Lead Joints and collapsed side sewer 5th and Madison |  |  |  |  |  | none → MS-0025 | resources none → MBRT DSC [72 h] |
| 1-0204 | Joint clamp at 5th delay |  |  |  |  |  |  | resources none → MBRT NEW [40 h] |
| 1-0254 | JOINT CLAMPS 5TH & MAD, FINISH |  |  |  |  |  |  | resources none → MBRT NEW [8 h] |
| 1-0059 | JOINT CLAMPS SPRING & 8TH, WATERLINE WORK |  |  |  |  |  |  | resources none → MBRT BASE [16 h] |
| 1-0061 | SPU PRE - DISINFECTION, STAGE 1 - 8TH AVE |  |  |  |  |  |  | resources none → MBRT BASE [8 h] |
| 1-0107 | SPU & BAC-T TEST |  |  |  |  |  |  | resources none → MBRT BASE [16 h] |
| PCO561.01 | DSC 396-Broken existing storm 8th and madison |  |  |  |  |  | none → MS-0025 | resources none → MBRT DSC [64 h] |
| 1-0062 | EXCAVATE & SHORE FOR WATERLINE, STAGE 1 - 8TH AVE |  |  |  |  |  |  | resources none → MBRT BASE [8 h] |
| PCO562.01 | DSC 397-Stage 1 2" Service leaking |  |  |  |  |  | none → MS-0025 | resources none → MBRT DSC [64 h] |
| 1-0199 | SPU CUSTOMER SHUTDOWN NOTIFICATION |  |  |  |  |  |  | resources none → MBRT BASE [40 h] |
| 1-0063 | SPU DEWATER EXISTING PIPE, STAGE 1 - 8TH AVE |  |  |  |  |  |  | resources none → MBRT BASE [8 h] |
| 1-0064 | SPU CUT & REM PIPE, STAGE 1 - 8TH AVE |  |  |  |  |  |  | resources none → MBRT BASE [8 h] |
| 1-0065 | SPU INST 12" DI MAIN & HYDRANT, STAGE 1 - 8TH AVE |  |  |  |  |  |  | resources none → MBRT BASE [8 h] |
| 1-0066 | SPU CONNECT MAIN LINE TO EXISTING LINES, STAGE 1 - 8TH AVE |  |  |  |  |  |  | resources none → MBRT BASE [8 h] |
| 1-0067 | SPU FLUSH WATER MAINS, STAGE 1 - 8TH AVE |  |  |  |  |  |  | resources none → MBRT BASE [8 h] |
| 1-8010 | INST SIGNS, STRIPING AND SIGNS | 2024-01-10 → 2024-04-25 (+106d) | 2024-02-07 → 2024-04-25 (+78d) | 20d → 0d |  | -23d → -77d | 3-2361 → 1-0810 | resources none → MBRT NEW |
| 3 | **STORM** |  | 2023-05-31 → 2024-04-03 (+308d) |  |  |  |  |  |
| 1-0069 | STORM MAD AND 1ST, STORM |  |  |  |  |  |  | resources none → MBRT BASE [24 h] |

| ID | Task | Start | Finish | Complete | Total float | Predecessors | Other |
| --- | --- | --- | --- | --- | --- | --- | --- |
| 1-0070 | STORM MAD AND 2ND |  |  |  |  |  | resources none → MBRT BASE [8 h] |
| PCO042.01 | DSC 28-Inlet Corner of 5th and Madison, Inlet 5 |  |  |  |  | none → MS-0025 | resources none → MBRT DSC [8 h] |
| 1-0072 | STORM MAD AND 5TH, PRIOR TO DSC 28 |  |  |  |  |  | resources none → MBRT DSC [8 h] |
| 1-0156 | Wating for Direction from SDOT on DSC 28, STORM |  |  |  |  |  | resources none → MBRT DSC [832 h] |
| PCO063.01 | DSC 40-Side Sewer Conflict Approx Sta 219+10 |  |  |  |  | none → MS-0025 | resources none → MBRT DSC [8 h] |
| 1-0073 | STORM MAD AND 7TH |  |  |  |  |  | resources none → MBRT BASE [16 h] |
| 1-0074 | STORM MAD AND 9TH, BEFORE DSC 047/048 |  |  |  |  |  | resources none → MBRT DSC [16 h] |
| PCO077.01 | DSC 46-Inlet 007 conflict |  |  |  |  | none → MS-0025 | resources none → MBRT DSC [96 h] |
| 1-0259 | STORM MAD AND 9TH, DSC 047/048 |  |  |  |  |  | resources none → MBRT DSC [72 h] |
| PCO078.01 | DSC 47-Inlet 007.A Conflict Side Sewer Conflict |  |  |  |  | none → MS-0025 | resources none → MBRT DSC [80 h] |
| PCO079.01 | DSC 48-Inlet 007.B Conflict |  |  |  |  | none → MS-0025 | resources none → MBRT DSC [8 h] |
| 1-0079 | STORM MAD AND TERRY INLETS |  |  |  |  |  | resources none → MBRT BASE [8 h] |
| PCO084.01 | DSC 52-Inlet 8A conflicts |  |  |  |  | none → MS-0025 | resources none → MBRT DSC [8 h] |
| 1-0118 | STORM MAD TERRY INLETS, DSC 052 |  |  |  |  |  | resources none → MBRT DSC [56 h] |
| 1-0082 | STORM MAD AND MINOR |  |  |  |  |  | resources none → MBRT BASE [8 h] |
| 1-0083 | STORM MAD AND SUMMIT |  |  |  |  |  | resources none → MBRT BASE [32 h] |
| 1-0279 | STORM MAD AND 9TH, AFTER DSC 047/048 |  |  |  |  |  | resources none → MBRT DSC [16 h] |
| 1-0080 | STORM MAD AND TERRY MAINLINE |  |  |  |  |  | resources none → MBRT BASE |
| PCO105.01 | DSC 66-Spring & 9th, Inlet 4E conflicts |  |  |  |  | none → MS-0025 | resources none → MBRT DSC [136 h] |
| 1-0084 | STORM MAD AND BOYLSTON |  |  |  |  |  | resources none → MBRT BASE [24 h] |
| PCO112.01 | DSC 72-Boyleston Storm Shut Down ESO for Streetlight |  |  |  |  | none → MS-0025 | resources none → MBRT DSC [56 h] |
| PCO113.01 | DSC 73-Unlocated previously broked Conduit Boyston Storm |  |  |  |  | none → MS-0025 | resources none → MBRT DSC [8 h] |
| PCO122.01 | DSC 80-Inlet 4A connection duct bank conflict |  |  |  |  | none → MS-0025 | resources none → MBRT DSC [72 h] |
| PCO123.01 | DSC 81-Inlet 4B SW 9th and Spring Conflict W/ Ductbank |  |  |  |  | none → MS-0025 | resources none → MBRT DSC [8 h] |
| 1-0071 | STORM MAD AND 3RD |  |  |  |  |  | resources none → MBRT BASE [24 h] |
| PCO130.01 | DSC 88-Inet 4C SE corner 9th & Spring, Steam conflict |  |  |  |  | none → MS-0025 | resources none → MBRT DSC [8 h] |
| 1-0078 | STORM SPRING AND 9TH, STORM |  |  |  |  |  | resources none → MBRT BASE [24 h] |
| PCO131.01 | DSC 89-Inlet 4D unlocated unknown conduit |  |  |  |  | none → MS-0025 | resources none → MBRT DSC [8 h] |
| PCO137.01 | DSC 94-Inlet 4 NE 8th and Spring, Root Conflict |  |  |  |  | none → MS-0025 | resources none → MBRT DSC [8 h] |
| 1-0077 | STORM SPRING AND 8TH |  |  |  |  |  | resources none → MBRT BASE [32 h] |
| PCO138.01 | DSC 95-Inlet Conection 3A Conflit |  |  |  |  | none → MS-0025 | resources none → MBRT DSC [8 h] |
| PCO139.01 | DSC 96-Inlet 3 conflict |  |  |  |  | none → MS-0025 | resources none → MBRT DSC [8 h] |
| PCO141.01 | DSC 98-CDF conflict inlet 2A |  |  |  |  | none → MS-0025 | resources none → MBRT DSC [8 h] |
| PCO145.01 | DSC 102-Tree Roots conflcit Inlet 2B |  |  |  |  | none → MS-0025 | resources none → MBRT DSC [8 h] |
| PCO146.01 | DSC 103-unlocated conduit conflict Inlet 2B |  |  |  |  | none → MS-0025 | resources none → MBRT DSC [8 h] |
| 1-0075 | STORM SPRING AND 7TH |  |  |  |  |  | resources none → MBRT BASE [16 h] |
| PCO148.01 | DSC 105-Inlet 1G Conflict with Strain pole 5th and Spring |  |  |  |  | none → MS-0025 | resources none → MBRT DSC [8 h] |
| 1-0076 | STORM SPRING AND 5TH, STORM |  |  |  |  |  | resources none → MBRT BASE [8 h] |
| 1-0426 | INSTALL FILTER VAULT #2 |  |  |  |  |  | resources none → MBRT NEW [40 h] |
| PCO184.01 | DSC 130-Filter Vault #2 Connection Conflict |  |  |  |  | none → MS-0025 | resources none → MBRT DSC [504 h] |
| 1-0456 | DSC 130 - FILTER VAULT CONNECTION CONFLICT |  |  |  |  |  | resources none → MBRT DSC [432 h] |
| PCO190.01 | DSC 136-FM 130 Inlet conflict |  |  |  |  | none → MS-0025 | resources none → MBRT DSC [8 h] |
| PCO222.01 | DSC 160-Inltet 5 Added Conflict |  |  |  |  | none → MS-0025 | resources none → MBRT DSC [16 h] |
| 1-0106 | MADISON ON 5TH AFTER DSC 28, STORM |  |  |  |  |  | resources none → MBRT DSC [8 h] |
| PCO272.01 | DSC 198-Steam line MH Madison 1st to 2nd |  |  |  |  | none → MS-0025 | resources none → MBRT DSC [8 h] |
| 1-0556 | FINISH FILTER VAULT #2 INSTALLATION |  |  |  |  |  | resources none → MBRT NEW [8 h] |
| 1-0081 | STORM MAD AND BOREN |  |  |  |  |  | resources none → MBRT BASE [16 h] |
| PCO298.01 | DSC 220-Existing Cracked CB Conection Pipe at Terry |  |  |  |  | none → MS-0025 | resources none → MBRT DSC [16 h] |
| 1-0086 | STORM SPRING & 2ND PIPE LINING |  |  |  |  |  | resources none → MBRT BASE [8 h] |
| 1-0085 | STORM MAD & BROADWAY PIPE LINING | 2022-01-03 A → 2024-04-02 (+820d) | 2022-01-04 A → 2024-04-03 (+820d) | 100% → 0% | none → -62d |  | resources none → MBRT BASE [16 h] |
| PCO020.01 | DSC 13-Prime DSC 001 Ductbank 3rd Ave Change |  |  |  |  | none → MS-0025 | resources none → MBRT DSC [1160 h] |
| 1-1165 | POTHOLE DUCTBANK SDOT DIRECTED |  |  |  |  |  | resources none → MBRT NEW [64 h] |
| 1-1170 | SDOT REVIEW POTHOLE DATA |  |  |  |  |  | resources none → MBRT NEW |
| 1-1280 | CITY DELAY - CHANGE TO COUPLINGS |  |  |  |  |  | resources none → MBRT NEW [24 h] |
| 1-1300 | CITY DELAY - NEGOTIATE CHANGE ORDER FOR CHANGES |  |  |  |  |  | resources none → MBRT NEW [24 h] |
| 1-0087 | TRENCH DUCT BANK, DUCT BANK BETWEEN 3RD & 4TH MAD |  |  |  |  |  | resources none → MBRT BASE [72 h] |
| 1-0088 | INST DUCT BANK, DUCT BANK BETWEEN 3RD & 4TH MAD |  |  |  |  |  | resources none → MBRT BASE [72 h] |
| 1-0089 | BACKFILL DUCT BANK, DUCT BANK BETWEEN 3RD & 4TH MAD |  |  |  |  |  | resources none → MBRT BASE [72 h] |
| PCO507.01 | DSC 362-Prime Ductbank 3rd Ave Concrete Obstruction |  |  |  |  | none → MS-0025 | resources none → MBRT DSC [248 h] |
| 1-1335 | DELAY FOR NORTHERN VAULT ALIGNMENT , DUCT BANK BETWEEN 3RD & 4TH MAD |  |  |  |  |  | resources none → MBRT NEW [16 h] |
| 1-1360 | DELAY AWAITING RESPONSE TO CHANGES IN SOUTHERN VAULT PENETRATION |  |  |  |  |  | resources none → MBRT NEW |
| PCO518.01 | DSC 370-Vault 3rd to 4th Madison not square |  |  |  |  | none → MS-0025 | resources none → MBRT DSC [32 h] |
| PCO549.01 | DSC 386-Concrete collar around Vault 3rd to 4th |  |  |  |  | none → MS-0025 | resources none → MBRT DSC [144 h] |
| 1-1340 | COMPLETE INSTALLATION AFTER OBSTRUCTION REMOVAL AND CHANGES |  |  |  |  |  | resources none → MBRT NEW [80 h] |
| 1-0091 | TEMP SIG SPRING & 1ST, TEMPORARY SIGNALS |  |  |  |  |  | resources none → MBRT BASE [8 h] |
| 1-0092 | TEMP SIG SPRING & 3RD, TEMPORARY SIGNALS |  |  |  |  |  | resources none → MBRT BASE [8 h] |
| 1-0095 | TEMP SIG MAD & 1ST, TEMPORARY SIGNALS |  |  |  |  |  | resources none → MBRT BASE [8 h] |
| 1-0096 | TEMP SIG MAD & 3RD, TEMPORARY SIGNALS |  |  |  |  |  | resources none → MBRT BASE [8 h] |
| 1-0097 | TEMP SIG MAD & 6TH, TEMPORARY SIGNALS |  |  |  |  |  | resources none → MBRT BASE [16 h] |
| 1-0098 | TEMP SIG MAD & 8TH, TEMPORARY SIGNALS |  |  |  |  |  | resources none → MBRT BASE [8 h] |

| ID | Task | Finish | Predecessors | Other |
| --- | --- | --- | --- | --- |
| 1-0099 | TEMP SIG MAD & 9TH, TEMPORARY SIGNALS |  |  | resources none → MBRT BASE [8 h] |
| 1-0180 | TEMP SIG MAD & 7TH, TEMPORARY SIGNALS |  |  | resources none → MBRT NEW [16 h] |
| 1-0100 | TEMP SIG MAD & TERRY, TEMPORARY SIGNALS |  |  | resources none → MBRT BASE [24 h] |
| 1-0102 | TEMP SIG MAD & MINOR, TEMPORARY SIGNALS |  |  | resources none → MBRT BASE [16 h] |
| 1-0103 | TEMP SIG MAD & SUMMIT, TEMPORARY SIGNALS |  |  | resources none → MBRT BASE [16 h] |
| PCO170.01 | DSC 118-KCM relocate WB Boren BS refusal |  | none → MS-0025 | resources none → MBRT DSC [144 h] |
| 1-0101 | TEMP SIG MAD & BOREN, TEMPORARY SIGNALS |  |  | resources none → MBRT BASE [16 h] |
| 1-0104 | TEMP SIG MAD & BOYLSTON, TEMPORARY SIGNALS |  |  | resources none → MBRT BASE [8 h] |
| 1-0094 | TEMP SIG SPRING & 7TH, TEMPORARY SIGNALS |  |  | resources none → MBRT BASE [16 h] |
| 1-0105 | TEMP SIG MAD & BROADWAY, TEMPORARY SIGNALS |  |  | resources none → MBRT BASE [16 h] |
| 1-0093 | TEMP SIG SPRING & 5TH, TEMPORARY SIGNALS |  |  | resources none → MBRT BASE [16 h] |
| 6 | **ROADWAY WORK** | 2023-09-20 → 2023-11-28 (+69d) |  |  |
| 1 | **1ST TO BROADWAY BETWEEN INTERSECTIONS** | 2023-09-20 → 2023-11-28 (+69d) |  |  |
| 1-0152 | DEMO ROAD - COMMON EX - TYPE 2, SPRING 1ST TO 2ND NORTH SIDE |  |  | resources none → MBRT BASE [24 h] |
| 1-0153 | CONDUIT RD CROSSING, SPRING 1ST TO 2ND NORTH SIDE |  |  | resources none → MBRT BASE [16 h] |
| 1-0154 | ROADWAY PAVING - 2 POURS, SPRING 1ST TO 2ND NORTH SIDE |  |  | resources none → MBRT BASE [16 h] |
| 1-0155 | CONCRETE CURE, SPRING 1ST TO 2ND NORTH SIDE |  |  | resources none → MBRT BASE |
| PCO258.01 | DSC 188-Conduit conflict 3rd and Spring |  | none → MS-0025 | resources none → MBRT DSC [128 h] |
| 1-1140 | DEMO ROAD - COMMON EX - TYPE 2, SPRING 2ND TO 3RD NORTH SIDE |  |  | resources none → MBRT NEW [24 h] |
| 1-1145 | CONDUIT RD CROSSING, SPRING 2ND TO 3RD NORTH SIDE |  |  | resources none → MBRT NEW [24 h] |
| 1-1285 | VAULT WORK, SPRING 2ND TO 3RD NORTH SIDE |  |  | resources none → MBRT NEW [24 h] |
| PCO423.01 | DSC 309-NW 3rd & Spring Extra Depth Conduit |  | none → MS-0025 | resources none → MBRT DSC [8 h] |
| PCO426.01 | DSC 311-Shallow conduit NW 3rd and Spring |  | none → MS-0025 | resources none → MBRT DSC [8 h] |
| PCO434.01 | DSC 316-Zao Conduit CDF encased NW 3rd and Spring |  | none → MS-0025 | resources none → MBRT DSC [24 h] |
| PCO438.01 | DSC 320-Concrete Delays VP Visit spring 1-3rd |  | none → MS-0025 | resources none → MBRT DSC [8 h] |
| 1-1150 | ROADWAY PAVING - 2 POURS, SPRING 2ND TO 3RD NORTH SIDE |  |  | resources none → MBRT NEW [24 h] |
| 1-1305 | EXTRA WORK FOR VAULTS, SPRING 2ND TO 3RD NORTH SIDE |  |  | resources none → MBRT NEW [24 h] |
| 1-1310 | REMOVE ADDITIONAL ROADWAY TYPE 2, SPRING 2ND TO 3RD NORTH SIDE |  |  | resources none → MBRT NEW [24 h] |
| PCO647.01 | DSC 457-UKNOWN CONCRETE PIPE |  | none → MS-0025 | resources none → MBRT DSC [8 h] |
| 1-1315 | ROADWAY CONCRETE, SPRING 2ND TO 3RD NORTH SIDE |  |  | resources none → MBRT NEW [24 h] |
| 1-2945 | OWNER CHANGE FULL DEPTH ASPHALT TO CONCRETE BASE PAVING |  |  | resources none → MBRT NEW [24 h] |
| 1-0130 | ELECTRICAL VAULT WORK, SPRING 1ST TO 3ND SOUTH SIDE |  |  | resources none → MBRT BASE [16 h] |
| 1-0109 | DEMO ROAD - COMMON EX - TYPE 2, SPRING 1ST TO 3ND SOUTH SIDE |  |  | resources none → MBRT BASE [96 h] |
| PCO012.01 | DSC 7-Duct Bank Conflict with Subgrade Spring 1st to 2nd |  | none → MS-0025 | resources none → MBRT DSC [1680 h] |
| 1-0110 | ROADWAY PAVING PRIOR TO SCL VAULT DELAYS AND HANDHOLE DELAY - 2 POURS |  |  | resources none → MBRT BASE [48 h] |
| PCO026.01 | DSC 17-3rd and spring conduit conflict gas and duct bank |  | none → MS-0025 | resources none → MBRT DSC [32 h] |
| 1-0216 | WAITING FOR SDOT TO RESOLVE SCL FALSE CEILINGS & DSC-017/018 |  |  | resources none → MBRT DSC [144 h] |
| 1-0351 | VAULT PROCURMENT MATERIALS |  |  | resources none → MBRT NEW [40 h] |
| 1-0111 | CONCRETE CURE, SPRING 1ST TO 3RD SOUTH SIDE |  |  | resources none → MBRT BASE [24 h] |
| PCO088.01 | DSC 55-Vault 123M357 Concrete Obstruction |  | none → MS-0025 | resources none → MBRT DSC [32 h] |
| PCO093.01 | DSC 57-Vault 133M013 |  | none → MS-0025 | resources none → MBRT DSC [664 h] |
| 1-0391 | DSC 057 VAULT 133M013 CONFLICT |  |  | resources none → MBRT DSC [584 h] |
| 1-0266 | ROADWAY PREP AFTER DELAY |  |  | resources none → MBRT NEW [40 h] |
| PCO248.01 | DSC 181-Gas line conflict SCL Vault 3rd to 6th. |  | none → MS-0025 | resources none → MBRT DSC [1376 h] |
| 1-0271 | ROADWAY PAVING AFTER DELAY |  |  | resources none → MBRT NEW [48 h] |
| 1-1155 | CONCRETE CURE, SPRING 2ND TO 3RD NORTH SIDE |  |  | resources none → MBRT NEW [24 h] |
| PCO317.01 | DSC 234-CDF Encased Gas Line 3rd to 4th on Spring |  | none → MS-0025 | resources none → MBRT DSC [96 h] |
| PCO318.01 | DSC 235-Duct Bank conflict 4th to 5th on Spring |  | none → MS-0025 | resources none → MBRT DSC [64 h] |
| PCO320.01 | DSC 236-unknown clay pipe spring 4th to 5th |  | none → MS-0025 | resources none → MBRT DSC [16 h] |
| PCO406.01 | DSC 297-Prime Vaults Spring 2nd to 5th |  | none → MS-0025 | resources none → MBRT DSC [48 h] |
| 1-1215 | DEMO ROAD - COMMON EX - TYPE 2, SPRING 4TH TO 5TH NORTH SIDE |  |  | resources none → MBRT NEW [24 h] |
| 1-1220 | CONDUIT RD CROSSING, SPRING 4TH TO 5TH NORTH SIDE |  |  | resources none → MBRT NEW [24 h] |
| PCO415.01 | DSC 305-4th to 5th Spring North SCL Vault Lid |  | none → MS-0025 | resources none → MBRT DSC [544 h] |
| PCO428.01 | DSC 312-Unknown Unlocated Catholic Protection 4th and Madison |  | none → MS-0025 | resources none → MBRT DSC [8 h] |
| PCO429.01 | DSC 313-CDF encased Gas Line 4th and Madison |  | none → MS-0025 | resources none → MBRT DSC [8 h] |
| 1-1225 | ROADWAY PAVING - 2 POURS, SPRING 4TH TO 5TH NORTH SIDE |  |  | resources none → MBRT NEW [24 h] |
| 1-1230 | CONCRETE CURE, SPRING 4TH TO 5TH NORTH SIDE |  |  | resources none → MBRT NEW [24 h] |
| PCO300.01 | DSC 221-Gas Main conflict with road Spring 3rd to 4th |  | none → MS-0025 | resources none → MBRT DSC [24 h] |
| 1-1175 | DEMO ROAD - COMMON EX - TYPE 2, SPRING 3RD TO 5TH SOUTH SIDE |  |  | resources none → MBRT NEW [48 h] |
| PCO309.01 | DSC 229-Gas line locates 3rd and Spring |  | none → MS-0025 | resources none → MBRT DSC [8 h] |
| PCO310.01 | DSC 230-unknown duct bank 3rd and Spring |  | none → MS-0025 | resources none → MBRT DSC [8 h] |
| 1-1180 | ROADWAY PAVING - 2 POURS, SPRING 3RD TO 5TH SOUTH SIDE |  |  | resources none → MBRT NEW [32 h] |
| 1-1185 | CONCRETE CURE, SPRING 3RD TO 5TH SOUTH SIDE |  |  | resources none → MBRT NEW [8 h] |
| 1-1195 | F/P CURB 1ST TO 6TH WEST SIDE, SPRING 3RD TO 5TH SOUTH SIDE |  |  | resources none → MBRT NEW [8 h] |
| 1-1190 | TEMP PATCH, SPRING 3RD TO 5TH SOUTH SIDE |  |  | resources none → MBRT NEW [8 h] |
| 1-0157 | DEMO ROAD - COMMON EX - TYPE 2, SPRING 5TH TO 6TH NORTH SIDE |  |  | resources none → MBRT BASE [24 h] |
| 1-0158 | CONDUIT RD CROSSING, SPRING 5TH TO 6TH NORTH SIDE |  |  | resources none → MBRT BASE [24 h] |
| 1-0159 | ROADWAY PAVING - 2 POURS, SPRING 5TH TO 6TH NORTH SIDE |  |  | resources none → MBRT BASE [24 h] |
| 1-0160 | CONCRETE CURE, SPRING 5TH TO 6TH NORTH SIDE |  |  | resources none → MBRT BASE |
| 1-0161 | F/P CURB SPRING 1ST TO 6TH, SPRING 5TH TO 6TH NORTH SIDE |  |  | resources none → MBRT BASE [24 h] |

| ID | Task | Predecessors | Other |
| --- | --- | --- | --- |
| 1-0162 | TEMP PATCH 1ST TO 6TH, SPRING 5TH TO 6TH NORTH SIDE |  | resources none → MBRT BASE [16 h] |
| PCO279.01 | DSC 204-Vault 163-M-355 additonal DSC | none → MS-0025 | resources none → MBRT DSC [152 h] |
| 1-0144 | ELECTRICAL VAULT WORK, SPRING 5TH TO 6TH SOUTH SIDE |  | resources none → MBRT BASE [48 h] |
| 1-0113 | DEMO ROAD - COMMON EX - TYPE 2, SPRING 5TH TO 6TH SOUTH SIDE |  | resources none → MBRT BASE [24 h] |
| 1-0114 | ROADWAY PAVING - 2 POURS, SPRING 5TH TO 6TH SOUTH SIDE |  | resources none → MBRT BASE [8 h] |
| 1-0115 | CONCRETE CURE, SPRING 5TH TO 6TH SOUTH SIDE |  | resources none → MBRT BASE [8 h] |
| 1-0116 | F/P CURB 1ST TO 6TH WEST SIDE, SPRING 5TH TO 6TH SOUTH SIDE |  | resources none → MBRT BASE [8 h] |
| 1-0117 | TEMP PATCH, SPRING 5TH TO 6TH SOUTH SIDE |  | resources none → MBRT BASE [8 h] |
| 1-0211 | ELECTRICAL VAULT WORK, SPRING 6TH TO 9TH NORTH SIDE |  | resources none → MBRT BASE [16 h] |
| 1-0164 | DEMO ROAD - COMMON EX - TYPE 2, SPRING 6TH TO 9TH NORTH SIDE |  | resources none → MBRT BASE [64 h] |
| 1-0165 | CONDUIT RD CROSSING, SPRING 6TH TO 9TH NORTH SIDE |  | resources none → MBRT BASE [64 h] |
| PCO479.01 | DSC 347-CDF Ductbank conflict Spring 7th to 9th | none → MS-0025 | resources none → MBRT DSC [16 h] |
| 1-0166 | ROADWAY PAVING - 2 POURS, SPRING 6TH TO 9TH NORTH SIDE |  | resources none → MBRT BASE [40 h] |
| 1-0167 | CONCRETE CURE, SPRING 6TH TO 9TH NORTH SIDE |  | resources none → MBRT BASE |
| PCO097.01 | DSC 60-P08-06 Sign and boulder conflict 8th and Spring | none → MS-0025 | resources none → MBRT DSC [16 h] |
| 1-0175 | ELECTRICAL VAULT WORK, SPRING 7TH TO 9TH SOUTH SIDE |  | resources none → MBRT BASE [32 h] |
| PCO221.01 | DSC 159-Vault 713M002 | none → MS-0025 | resources none → MBRT DSC [72 h] |
| PCO239.01 | DSC 173-Duct Bank Conflict Subgrade SW 9th and Spring | none → MS-0025 | resources none → MBRT DSC [48 h] |
| 1-0138 | DEMO ROAD - COMMON EX - TYPE 2, SPRING 7TH TO 9TH SOUTH SIDE |  | resources none → MBRT BASE [112 h] |
| 1-0139 | CONDUIT RD CROSSING, SPRING 7TH TO 9TH SOUTH SIDE |  | resources none → MBRT BASE [104 h] |
| PCO250.01 | DSC 182-Unknown Unlocated utilitys Vault Core Spring 7th | none → MS-0025 | resources none → MBRT DSC [528 h] |
| PCO266.01 | DSC 192-Vault on 8th and Spring added work | none → MS-0025 | resources none → MBRT DSC [128 h] |
| 1-0140 | ROADWAY PAVING - 2 POURS, SPRING 7TH TO 9TH SOUTH SIDE |  | resources none → MBRT BASE [32 h] |
| 1-0142 | F/P CURB SPRING 7TH TO 9TH, SPRING 7TH TO 9TH SOUTH SIDE |  | resources none → MBRT BASE |
| 1-0143 | TEMP PATCH, SPRING 7TH TO 9TH SOUTH SIDE |  | resources none → MBRT BASE |
| 1-0141 | CONCRETE CURE, SPRING 7TH TO 9TH SOUTH SIDE |  | resources none → MBRT BASE |
| 1-0119 | DEMO ROAD - COMMON EX - TYPE 2, MAD 1ST TO 3RD NORTH SIDE |  | resources none → MBRT BASE [80 h] |
| 1-0120 | CONDUIT RD CROSSING, MAD 1ST TO 3RD NORTH SIDE |  | resources none → MBRT BASE [56 h] |
| PCO014.01 | DSC 8-ITS Obstruction Madison 1st to 2nd North | none → MS-0025 | resources none → MBRT DSC [752 h] |
| PCO015.01 | DSC 9-CDF in Roadway Madison 1st to 2nd North | none → MS-0025 | resources none → MBRT DSC [8 h] |
| PCO019.01 | DSC 12-Center Lane obstruction Pipe Madison 1st to 2nd | none → MS-0025 | resources none → MBRT DSC [32 h] |
| PCO021.01 | DSC 14-Concrete encased Yokes and Concrete in Roadway | none → MS-0025 | resources none → MBRT DSC [8 h] |
| PCO024.01 | DSC 15-void under road Madison 2nd to 3rd North side | none → MS-0025 | resources none → MBRT DSC [8 h] |
| 1-0121 | ROADWAY PAVING PRIOR TO SCL VAULT DELAYS AND HANDHOLE DELAY - 2 POURS |  | resources none → MBRT BASE [32 h] |
| PCO028.01 | DSC 19-SCL Riser poured into roadway Mad 2nd to 3rd | none → MS-0025 | resources none → MBRT DSC [40 h] |
| PCO031.01 | DSC 22-Conduit and Irrigation in conflict with roadway Madison 2nd to 3rd North side | none → MS-0025 | resources none → MBRT DSC [64 h] |
| PCO037.01 | DSC 25-Conduit Conflict with Duct Bank Madison 2nd to 3rd | none → MS-0025 | resources none → MBRT DSC [1784 h] |
| 1-0331 | WAITING FOR SDOT TO RESOLVE FALSE CEILINGS & |  | resources none → MBRT NEW [40 h] |
| PCO049.01 | DSC 31-Shallow Ductbank, Madison & 3rd | none → MS-0025 | resources none → MBRT DSC [32 h] |
| 1-0151 | ELECTRICAL VAULT WORK, MAD 1ST TO 3RD NORTH SIDE |  | resources none → MBRT BASE [16 h] |
| 1-0311 | ROADWAY PREP AFTER DELAY |  | resources none → MBRT NEW [40 h] |
| 1-0291 | ROADWAY PAVING AFTER DELAY |  | resources none → MBRT NEW [24 h] |
| 1-0122 | CONCRETE CURE, MAD 1ST TO 3RD NORTH SIDE |  | resources none → MBRT BASE [8 h] |
| PCO246.01 | DSC 179-Duct Bank Conflict Vault 163M351 | none → MS-0025 | resources none → MBRT DSC [184 h] |
| 1-0212 | DEMO ROAD - COMMON EX - TYPE 2, MAD 1ST TO 3RD SOUTH SIDE |  | resources none → MBRT BASE [32 h] |
| 1-0213 | CONDUIT RD CROSSING, MAD 1ST TO 3RD SOUTH SIDE |  | resources none → MBRT BASE [32 h] |
| 1-0275 | DSC 191 - DELAY AT 2ND UNKNOWN KC METRO CONDUIT |  | resources none → MBRT DSC [752 h] |
| 1-0214 | ROADWAY PAVING - 1 POURS, MAD 1ST TO 3RD SOUTH SIDE |  | resources none → MBRT BASE [16 h] |
| 1-0215 | CONCRETE CURE, MAD 1ST TO 3RD SOUTH SIDE |  | resources none → MBRT BASE |
| PCO265.01 | DSC 191-Duct Bank Conflict with Conduit crossing 2nd Ave | none → MS-0025 | resources none → MBRT DSC [568 h] |
| 1-1160 | DSC AT COURTHOUSE |  | resources none → MBRT DSC [440 h] |
| PCO270.01 | DSC 196-unknown unlocated conduit 1st Mad roadway | none → MS-0025 | resources none → MBRT DSC [576 h] |
| PCO271.01 | DSC 197-Cable Car infrastructure 1st to 2nd Madison | none → MS-0025 | resources none → MBRT DSC [416 h] |
| 1-0230 | DEMO AT COURTHOUSE |  | resources none → MBRT NEW [40 h] |
| PCO391.01 | DSC 285-Shallow Electrical Vault SW 2nd and Madison | none → MS-0025 | resources none → MBRT DSC [600 h] |
| PCO392.01 | DSC 286-Concrete overpour electrical vault Sw 2nd and Madison | none → MS-0025 | resources none → MBRT DSC [8 h] |
| 1-0315 | COMPLETE GRADING AT 2ND AFTER DELAY |  | resources none → MBRT NEW [40 h] |
| 1-0335 | ROADWAY PAVING AT 2ND AFTER DELAY |  | resources none → MBRT NEW [16 h] |
| 1-0235 | ROADWAY PAVING AT COURTHOUSE |  | resources none → MBRT NEW [8 h] |
| 1-1410 | DEMO ROAD - COMMON EX - TYPE 2, MADISON 3RD TO 5TH NORTHSIDE |  | resources none → MBRT NEW [56 h] |
| 1-2720 | ARCHAEOLOGY STOP WORK ORDER |  | resources none → MBRT NEW [56 h] |
| PCO639.01 | DSC 450-DUCT BANK CONFLICT WITH ROAD REMOVAL |  | resources none → MBRT DSC [120 h] |
| PCO669.01 | DSC 472-3RD AND MADISON UNLOCATED SPU TEST STATION WIRES |  | resources none → MBRT DSC [64 h] |
| PCO670.01 | DSC 473-UNKNOWN AND UNLOCATED CONDUIT |  | resources none → MBRT DSC [40 h] |
| 1-2725 | COMMON EX - TYPE 2 - AFTER DSC AND ARCHAEOLOGY |  | resources none → MBRT DSC [32 h] |
| PCO677.01 | DSC 480-3RD TO 4TH NORTHSIDE ITS CONFLICTS |  | resources none → MBRT DSC [24 h] |
| 1-1415 | CONDUIT RD CROSSING, MADISON 3RD TO 5TH NORTHSIDE |  | resources none → MBRT NEW [56 h] |
| PCO692.01 | DSC 494-3RD TO 4TH MADISON CAST-IN-PLACE VAULT LIDS NOT TO GRADE |  | resources none → MBRT DSC [64 h] |
| PCO705.01 | DSC 506-SCL VAULT LID ENCASED IN CONCRETE |  | resources none → MBRT DSC [168 h] |
| 1-2940 | FM 540 - NEW CAST IN PLACE SCL RISERS |  | resources none → MBRT NEW [144 h] |

| ID | Task | Start | Finish | Duration | Complete | Total float | Predecessors | Other |
| --- | --- | --- | --- | --- | --- | --- | --- | --- |
| 1-3005 | DSC 539 - SCL Risers Existing Conditions Note Per Plan |  |  |  |  |  |  | resources none → MBRT DSC [192 h] |
| 1-0192 | ROADWAY PAVING, MADISON 3RD TO 5TH NORTHSIDE |  |  |  |  |  |  | resources none → MBRT NEW [32 h] |
| 1-1420 | CONCRETE CURE, MADISON 3RD TO 5TH NORTHSIDE |  |  |  |  |  |  | resources none → MBRT NEW [24 h] |
| 1-0124 | DEMO ROAD - COMMON EX - TYPE 2, MAD 5TH TO 6TH NORTH SIDE |  |  |  |  |  |  | resources none → MBRT BASE [72 h] |
| 1-0125 | CONDUIT RD CROSSING, MAD 5TH TO 6TH NORTH SIDE |  |  |  |  |  |  | resources none → MBRT BASE [56 h] |
| PCO092.01 | DSC 56-Sinkhole Madison 5th to 6th |  |  |  |  |  | none → MS-0025 | resources none → MBRT DSC [1720 h] |
| 1-0411 | CO-08 EMERGENCY SEWER REPAIR |  |  |  |  |  |  | resources none → MBRT NEW [48 h] |
| PCO183.01 | DSC 129-Sewer Repair 5th to 6th DSC |  |  |  |  |  | none → MS-0025 | resources none → MBRT DSC [240 h] |
| 1-0126 | ROADWAY PAVING - 2 POURS, MAD 5TH TO 6TH NORTH SIDE |  |  |  |  |  |  | resources none → MBRT BASE [80 h] |
| 1-0127 | CONCRETE CURE, MAD 5TH TO 6TH NORTH SIDE |  |  |  |  |  |  | resources none → MBRT BASE [24 h] |
| 1-0129 | TEMP PATCH, MAD 5TH TO 6TH NORTH SIDE |  |  |  |  |  |  | resources none → MBRT BASE [8 h] |
| 1-0128 | F/P CURB 1ST TO 6TH WEST SIDE, MAD 3RD TO 6TH NORTH SIDE |  |  |  |  |  |  | resources none → MBRT BASE [16 h] |
| 19 | **MADISON 3RD TO 6TH SOUTH SIDE** |  | 2023-09-19 → 2023-09-12 (-7d) |  |  |  |  |  |
| 1-0217 | DEMO ROAD - COMMON EX - TYPE 2, MAD 3RD TO 6TH SOUTH SIDE |  |  |  |  |  |  | resources none → MBRT BASE [144 h] |
| 1-0223 | DSC 581 CONCRETE CONFLICT WITH COMMON EX |  |  | 5d → 2d |  |  |  | resources none → MBRT DSC [16 h] |
| 1-0283 | DSC 583 BRICK WALL IN CONFLICT WITH CONDUIT SWC 4TH |  | 2023-09-11 → 2023-09-07 A (-4d) | 5d → 19d | 0% → 100% | -13d → none |  | resources none → MBRT DSC [152 h] |
| 1-0218 | CONDUIT RD CROSSING, MAD 3RD TO 6TH SOUTH SIDE | 2023-08-14 A | 2023-08-14 A |  | 0% → 100% | -13d → none |  | resources none → MBRT BASE [8 h] |
| 1-0219 | ROADWAY PAVING - 2 POURS, MAD 3RD TO 6TH SOUTH SIDE | 2023-08-15 A | 2023-08-16 A |  | 0% → 100% | -13d → none |  | resources none → MBRT BASE [16 h] |
| 1-0220 | CONCRETE CURE, MAD 3RD TO 6TH SOUTH SIDE | 2023-08-17 A | 2023-08-19 → 2023-08-21 A (+2d) |  | 0% → 100% | -18d → none |  | resources none → MBRT BASE |
| 1-0221 | F/P CURB MAD 1ST TO 6TH SOUTH SIDE, MAD 3RD TO 6TH SOUTH SIDE | 2023-08-21 → 2023-08-17 A (-4d) | 2023-08-21 → 2023-08-17 A (-4d) |  | 0% → 100% | -13d → none |  | resources none → MBRT BASE [8 h] |
| 1-0222 | TEMP PATCH, MAD 3RD TO 6TH SOUTH SIDE | 2023-08-22 → 2023-08-18 A (-4d) | 2023-08-22 → 2023-08-18 A (-4d) |  | 0% → 100% | -13d → none |  | resources none → MBRT BASE [8 h] |
| 1-0242 | CONDUIT AFTER DSC 583 | 2023-09-12 → 2023-09-08 A (-4d) | 2023-09-13 → 2023-09-08 A (-5d) | 2d → 1d | 0% → 100% | -4d → none |  | was named CONDUIT AFTER DSC 538; resources none → MBRT DSC [8 h] |
| 1-0267 | GRADING AFTER DSC 583 | 2023-09-14 → 2023-09-11 A (-3d) | 2023-09-15 → 2023-09-11 A (-4d) | 2d → 1d | 0% → 100% | -4d → none |  | was named GRADING AFTER DSC 538; resources none → MBRT DSC [8 h] |
| 1-0247 | ROADWAY PAVING AFTER DSC 583 | 2023-09-18 → 2023-09-12 A (-6d) | 2023-09-19 → 2023-09-12 A (-7d) | 2d → 1d | 0% → 100% | -4d → none |  | was named ROADWAY PAVING AFTER DSC 538; resources none → MBRT DSC [8 h] |
| PCO103.01 | DSC 64-Conduit In Roadway 9th to 8th |  |  |  |  |  | none → MS-0025 | resources none → MBRT DSC [416 h] |
| PCO104.01 | DSC 65-Steel Conduit in Subgrade 7th 8th on Madison |  |  |  |  |  | none → MS-0025 | resources none → MBRT DSC [416 h] |
| 1-0131 | DEMO ROAD - COMMON EX - TYPE 2, MAD 7TH TO 9TH NORTH SIDE |  |  |  |  |  |  | resources none → MBRT BASE [40 h] |
| 1-0132 | CONDUIT RD CROSSING, MAD 7TH TO 9TH NORTH SIDE |  |  |  |  |  |  | resources none → MBRT BASE [64 h] |
| PCO108.01 | DSC 69-Remove Cable Car System 7th to 9th Center Lane North side |  |  |  |  |  | none → MS-0025 | resources none → MBRT DSC [232 h] |
| PCO109.01 | DSC 70-Broken Conduit discovered, directly under concrete. Madison 8th-9th North side |  |  |  |  |  | none → MS-0025 | resources none → MBRT DSC [184 h] |
| 1-0137 | DELAY - POLE REMOVAL 7TH-8TH, SDOT POLE SUPPORT |  |  |  |  |  |  | resources none → MBRT NEW |
| PCO116.01 | DSC 75-Streetlight Conduit Madison and 8th |  |  |  |  |  | none → MS-0025 | resources none → MBRT DSC [88 h] |
| PCO171.01 | DSC 119-conduit conflict 7th to 8th curb lane |  |  |  |  |  | none → MS-0025 | resources none → MBRT DSC [72 h] |
| PCO172.01 | DSC 120-Unknown unlocted clay pipe 7th to 8th curb lane |  |  |  |  |  | none → MS-0025 | resources none → MBRT DSC [72 h] |
| PCO173.01 | DSC 121-Pavement Depth WB Curb Lane 7th to 8th |  |  |  |  |  | none → MS-0025 | resources none → MBRT DSC [72 h] |
| 1-0187 | COMPLETE DEMO, COMMON EX, TYPE-2, AFTER POLE REMVOAL |  |  |  |  |  |  | resources none → MBRT NEW [40 h] |
| PCO178.01 | DSC 125-CDF Conflict with Curb 7th to 8th |  |  |  |  |  | none → MS-0025 | resources none → MBRT DSC [360 h] |
| 1-0133 | ROADWAY PAVING - 3 POURS, MAD 7TH TO 9TH NORTH SIDE |  |  |  |  |  |  | resources none → MBRT BASE [88 h] |
| 1-0134 | CONCRETE CURE, MAD 7TH TO 9TH NORTH SIDE |  |  |  |  |  |  | resources none → MBRT BASE |
| PCO187.01 | DSC 133-Watermain Valve Nut, 9th & Madison |  |  |  |  |  | none → MS-0025 | resources none → MBRT DSC [48 h] |
| 1-0135 | F/P CURB MAD 7TH TO 9TH, MAD 7TH TO 9TH NORTH SIDE |  |  |  |  |  |  | resources none → MBRT BASE [8 h] |
| 1-0136 | TEMP PATCH, MAD 7TH TO 9TH NORTH SIDE |  |  |  |  |  |  | resources none → MBRT BASE [8 h] |
| 1-0224 | DEMO ROAD - COMMON EX - TYPE 2, MAD 7TH TO 9TH SOUTH SIDE |  |  |  |  |  |  | resources none → MBRT BASE [24 h] |
| 1-0225 | CONDUIT RD CROSSING, MAD 7TH TO 9TH SOUTH SIDE |  |  |  |  |  |  | resources none → MBRT BASE [24 h] |
| 1-0226 | ROADWAY PAVING - 2 POURS, MAD 7TH TO 9TH SOUTH SIDE |  |  |  |  |  |  | resources none → MBRT BASE [24 h] |
| PCO280.01 | DSC 205-SFD water on grade 8th to 9th |  |  |  |  |  | none → MS-0025 | resources none → MBRT DSC [48 h] |
| PCO281.01 | DSC 206-Com Vault hole Madison and 8th |  |  |  |  |  | none → MS-0025 | resources none → MBRT DSC [320 h] |
| 1-0227 | CONCRETE CURE, MAD 7TH TO 9TH SOUTH SIDE |  |  |  |  |  |  | resources none → MBRT BASE |
| 1-0228 | F/P CURB MAD 7TH TO 9TH SOUTH SIDE, MAD 7TH TO 9TH SOUTH SIDE |  |  |  |  |  |  | resources none → MBRT BASE [8 h] |
| 1-0229 | TEMP PATCH, MAD 7TH TO 9TH SOUTH SIDE |  |  |  |  |  |  | resources none → MBRT BASE [8 h] |
| 11 | **9TH SPRING TO MADISON EAST SIDE** |  | 2023-09-06 → 2023-11-27 (+82d) |  |  |  |  |  |
| 1-2950 | CITY WON'T ALLOW CONCURRENT CLOSURE WITH BOREN |  |  |  |  |  | none → MS-0025 | resources none → MBRT NEW [32 h] |
| 1-0169 | DEMO ROAD - COMMON EX - TYPE 2, 9TH SPRING TO MAD EAST SIDE |  |  |  |  |  |  | resources none → MBRT BASE [48 h] |
| 1-0299 | DSC 544 DUCT BANK 9TH MADISON TO SPRING CONFLICT |  |  |  |  |  |  | resources none → MBRT DSC [16 h] |
| 1-0319 | DSC 547 9TH MADISON TO SPRING CONTAMINATED SOILS |  |  |  |  |  |  | resources none → MBRT DSC [24 h] |
| 1-0339 | BUILDING FIRE |  | 2023-08-22 → 2023-11-06 A (+76d) |  | 0% → 100% | -110d → none |  | resources none → MBRT NEW |
| 1-3020 | DSC 550 CONDUIT IN ROADWAY |  |  |  |  |  |  | resources none → MBRT DSC [40 h] |
| 1-0170 | CONDUIT RD CROSSING, 9TH SPRING TO MAD EAST SIDE |  | 2023-08-15 → 2023-08-21 A (+6d) |  | 0% → 100% | -105d → none |  | resources none → MBRT BASE [264 h] |
| 1-3125 | DSC 552 UNTILITY CONFLICTS WITH CONDUIT |  |  | 5d → 4d |  |  |  | resources none → MBRT DSC [32 h] |
| 1-3220 | DSC 553 UNKNOWN ABANDONED CB |  |  | 5d → 4d |  |  |  | resources none → MBRT DSC [32 h] |
| 1-3340 | GRADING AFTER FIRE | 2023-08-23 → 2023-11-07 A (+76d) | 2023-08-24 → 2023-11-09 A (+77d) | 2d → 3d | 0% → 100% | -110d → none |  | resources none → MBRT NEW [24 h] |
| 1-0171 | ROADWAY PAVING - 1 POURS, 9TH SPRING TO MAD EAST SIDE | 2023-08-25 → 2023-11-13 A (+80d) | 2023-08-28 → 2023-11-20 A (+84d) |  | 0% → 100% | -110d → none |  | resources none → MBRT BASE [32 h] |
| 1-0173 | F/P CURB, 9TH SPRING TO MAD EAST SIDE | 2023-09-01 → 2023-11-16 A (+76d) | 2023-09-05 → 2023-11-21 A (+77d) |  | 0% → 100% | -112d → none | 1-0171, 1-0172 → 1-0171, 1-0172 SS | resources none → MBRT BASE [24 h] |
| 1-0172 | CONCRETE CURE, 9TH SPRING TO MAD EAST SIDE | 2023-08-29 → 2023-11-21 A (+84d) | 2023-08-31 → 2023-11-27 A (+88d) |  | 0% → 100% | -158d → none |  | resources none → MBRT BASE |
| 1-0174 | TEMP PATCH, 9TH SPRING TO MAD EAST SIDE | 2023-09-06 → 2023-11-22 A (+77d) | 2023-09-06 → 2023-11-22 A (+77d) |  | 0% → 100% | -112d → none |  | resources none → MBRT BASE [8 h] |
| 7 | **9TH SPRING TO MADISON WEST SIDE** |  | 2023-09-20 → 2023-11-28 (+69d) |  |  |  |  |  |
| 1-1425 | DELAY AWAITING COMCAST, 9TH SPRING TO MAD WEST SIDE |  |  |  |  |  |  | resources none → MBRT NEW |
| 1-0145 | DEMO ROAD - COMMON EX - TYPE 2, 9TH SPRING TO MAD WEST SIDE | 2023-09-07 → 2023-11-06 A (+60d) | 2023-09-11 → 2023-11-09 A (+59d) |  | 0% → 100% | -112d → none | 1-1410, 1-1425, 1-0173, 1-0173 FF, 1-0174 → 1-1410, 1-1425, 1-0173, 1-0173 FF, 1-0174, 1-0247 | resources none → MBRT BASE [32 h] |
| 1-0146 | CONDUIT RD CROSSING, 9TH SPRING TO MAD WEST SIDE | 2023-09-07 → 2023-11-06 A (+60d) | 2023-09-11 → 2023-11-09 A (+59d) |  | 0% → 100% | -112d → none |  | resources none → MBRT BASE [32 h] |
| 1-0147 | ROADWAY PAVING - 2 POURS, 9TH SPRING TO MAD WEST SIDE | 2023-09-12 → 2023-11-13 A (+62d) | 2023-09-15 → 2023-11-20 A (+66d) |  | 0% → 100% | -112d → none |  | resources none → MBRT BASE [40 h] |

| ID | Task | Start | Finish | Complete | Total float | Predecessors | Other |
| --- | --- | --- | --- | --- | --- | --- | --- |
| 1-0148 | CONCRETE CURE, 9TH SPRING TO MAD WEST SIDE | 2023-09-16 → 2023-11-21 A (+66d) | 2023-09-18 → 2023-11-27 A (+70d) | 0% → 100% | -161d → none |  | resources none → MBRT BASE |
| 1-0149 | F/P CURB SPRING 7TH TO 9TH, 9TH SPRING TO MAD WEST SIDE | 2023-09-19 → 2023-11-21 A (+63d) | 2023-09-19 → 2023-11-21 A (+63d) | 0% → 100% | -112d → none |  | resources none → MBRT BASE [8 h] |
| 1-0150 | TEMP PATCH, 9TH SPRING TO MAD WEST SIDE | 2023-09-20 → 2023-11-28 A (+69d) | 2023-09-20 → 2023-11-28 A (+69d) | 0% → 100% | -112d → none |  | resources none → MBRT BASE [8 h] |
| 1-0371 | FM 074 - SDOT ROADWAY REMOVAL SUSPENSION |  |  |  |  |  | resources none → MBRT NEW [40 h] |
| 1-0176 | DEMO ROAD - COMMON EX - TYPE 2, 9TH TO TERRY NORTH SIDE |  |  |  |  |  | resources none → MBRT BASE [104 h] |
| 1-0177 | CONDUIT RD CROSSING, 9TH TO TERRY NORTH SIDE |  |  |  |  |  | resources none → MBRT BASE [48 h] |
| PCO207.01 | DSC 148-Unknown Utilities North Side 9th Crossing |  |  |  |  | none → MS-0025 | resources none → MBRT DSC [120 h] |
| 1-0178 | ROADWAY PAVING - 2 POURS, 9TH TO TERRY NORTH SIDE |  |  |  |  |  | resources none → MBRT BASE [48 h] |
| 1-0179 | CONCRETE CURE, 9TH TO TERRY NORTH SIDE |  |  |  |  |  | resources none → MBRT BASE |
| PCO376.01 | DSC 274-Chipping Concrete at Alley 8th-9th on Madison |  |  |  |  | none → MS-0025 | resources none → MBRT DSC [56 h] |
| PCO289.01 | DSC 212-Shallow Gas Line - Madison 9th-Terry |  |  |  |  | none → MS-0025 | resources none → MBRT DSC [56 h] |
| 1-0231 | DEMO ROAD - COMMON EX - TYPE 2, 9TH TO TERRY SOUTH SIDE |  |  |  |  |  | resources none → MBRT BASE [48 h] |
| 1-0232 | CONDUIT RD CROSSING, 9TH TO TERRY SOUTH SIDE |  |  |  |  |  | resources none → MBRT BASE [48 h] |
| 1-0233 | ROADWAY PAVING - 2 POURS, 9TH TO TERRY SOUTH SIDE |  |  |  |  |  | resources none → MBRT BASE [32 h] |
| 1-0234 | CONCRETE CURE, 9TH TO TERRY SOUTH SIDE |  |  |  |  |  | resources none → MBRT BASE |
| 1-0181 | DEMO ROAD - COMMON EX - TYPE 2, TERRY TO BOREN NORTH SIDE |  |  |  |  |  | resources none → MBRT BASE [104 h] |
| 1-0182 | CONDUIT RD CROSSING, TERRY TO BOREN NORTH SIDE |  |  |  |  |  | resources none → MBRT BASE [48 h] |
| PCO186.01 | DSC 132-Existing type 264 Inlet NE Terry |  |  |  |  | none → MS-0025 | resources none → MBRT DSC [8 h] |
| 1-0183 | ROADWAY PAVING - 2 POURS, TERRY TO BOREN NORTH SIDE |  |  |  |  |  | resources none → MBRT BASE [48 h] |
| 1-0184 | CONCRETE CURE, TERRY TO BOREN NORTH SIDE |  |  |  |  |  | resources none → MBRT BASE |
| 1-0185 | F/P CURB MAD 9TH TO BOREN, TERRY TO BOREN NORTH SIDE |  |  |  |  |  | resources none → MBRT BASE [16 h] |
| 1-0186 | TEMP PATCH MAD TERRY TO BOREN, TERRY TO BOREN NORTH SIDE |  |  |  |  |  | resources none → MBRT BASE [16 h] |
| 1-0236 | DEMO ROAD - COMMON EX - TYPE 2, TERRY TO BOREN SOUTH SIDE |  |  |  |  |  | resources none → MBRT BASE [48 h] |
| 1-0237 | CONDUIT RD CROSSING, TERRY TO BOREN SOUTH SIDE |  |  |  |  |  | resources none → MBRT BASE [48 h] |
| PCO290.01 | DSC 213-Steel Conduit Conflict Terry-Boren South |  |  |  |  | none → MS-0025 | resources none → MBRT DSC [48 h] |
| PCO292.01 | DSC 214-Shallow Com Vault Lid 9th to Terre |  |  |  |  | none → MS-0025 | resources none → MBRT DSC [176 h] |
| PCO295.01 | DSC 217-Cable Car infrastructure 9th to Boren S Center lane |  |  |  |  | none → MS-0025 | resources none → MBRT DSC [24 h] |
| PCO297.01 | DSC 219-CDF conflict with conduit at Terry |  |  |  |  | none → MS-0025 | resources none → MBRT DSC [32 h] |
| 1-0238 | ROADWAY PAVING - 2 POURS, TERRY TO BOREN SOUTH SIDE |  |  |  |  |  | resources none → MBRT BASE [24 h] |
| 1-0239 | CONCRETE CURE, TERRY TO BOREN SOUTH SIDE |  |  |  |  |  | resources none → MBRT BASE |
| 1-0240 | F/P CURB MAD 7TH TO 9TH SOUTH SIDE, TERRY TO BOREN SOUTH SIDE |  |  |  |  |  | resources none → MBRT BASE [16 h] |
| 1-0241 | TEMP PATCH, TERRY TO BOREN SOUTH SIDE |  |  |  |  |  | resources none → MBRT BASE [24 h] |
| 1-0188 | DEMO ROAD - COMMON EX - TYPE 2, BOREN TO MINOR NORTH SIDE |  |  |  |  |  | resources none → MBRT BASE [16 h] |
| 1-0189 | CONDUIT RD CROSSING, BOREN TO MINOR NORTH SIDE |  |  |  |  |  | resources none → MBRT BASE [16 h] |
| 1-0190 | ROADWAY PAVING - 1 POURS, BOREN TO MINOR NORTH SIDE |  |  |  |  |  | resources none → MBRT BASE [16 h] |
| 1-0191 | CONCRETE CURE, BOREN TO MINOR NORTH SIDE |  |  |  |  |  | resources none → MBRT BASE |
| 1-0243 | DEMO ROAD - COMMON EX - TYPE 2, BOREN TO MINOR SOUTH SIDE |  |  |  |  |  | resources none → MBRT BASE [56 h] |
| 1-0244 | CONDUIT RD CROSSING, BOREN TO MINOR SOUTH SIDE |  |  |  |  |  | resources none → MBRT BASE [48 h] |
| 1-0245 | ROADWAY PAVING - 2 POURS, BOREN TO MINOR SOUTH SIDE |  |  |  |  |  | resources none → MBRT BASE [64 h] |
| 1-0246 | CONCRETE CURE, BOREN TO MINOR SOUTH SIDE |  |  |  |  |  | resources none → MBRT BASE |
| PCO347.01 | DSC 256-Boren & Madison, Unlocated Conduit |  |  |  |  | none → MS-0025 | resources none → MBRT DSC [96 h] |
| PCO229.01 | DSC 164-Existing inlet and pipe in roadway NW Minor |  |  |  |  | none → MS-0025 | resources none → MBRT DSC [40 h] |
| 1-0193 | DEMO ROAD - COMMON EX - TYPE 2, MINOR TO SUMMIT NORTH SIDE |  |  |  |  |  | resources none → MBRT BASE [16 h] |
| 1-0194 | CONDUIT RD CROSSING, MINOR TO SUMMIT NORTH SIDE |  |  |  |  |  | resources none → MBRT BASE [8 h] |
| PCO235.01 | DSC 170-Unknown Concrete Slab Summit-Minor |  |  |  |  | none → MS-0025 | resources none → MBRT DSC [8 h] |
| 1-0195 | ROADWAY PAVING - 1 POURS, MINOR TO SUMMIT NORTH SIDE |  |  |  |  |  | resources none → MBRT BASE [24 h] |
| 1-0196 | CONCRETE CURE, MINOR TO SUMMIT NORTH SIDE |  |  |  |  |  | resources none → MBRT BASE |
| 1-0197 | F/P CURB BOREN TO SUMMIT, MINOR TO SUMMIT NORTH SIDE |  |  |  |  |  | resources none → MBRT BASE [8 h] |
| 1-0198 | TEMP PATCH BOREN TO SUMMIT, MINOR TO SUMMIT NORTH SIDE |  |  |  |  |  | resources none → MBRT BASE [8 h] |
| 1-0248 | DEMO ROAD - COMMON EX - TYPE 2, MINOR TO SUMMIT SOUTH SIDE |  |  |  |  |  | resources none → MBRT BASE [56 h] |
| 1-0249 | CONDUIT RD CROSSING, MINOR TO SUMMIT SOUTH SIDE |  |  |  |  |  | resources none → MBRT BASE [56 h] |
| PCO325.01 | DSC 241-Summit & Madison Conduit Clearances |  |  |  |  | none → MS-0025 | resources none → MBRT DSC [224 h] |
| PCO334.01 | DSC 244-Prime notice exisitng conduit extra work minor |  |  |  |  | none → MS-0025 | resources none → MBRT DSC [144 h] |
| 1-0250 | ROADWAY PAVING - 2 POURS, MINOR TO SUMMIT SOUTH SIDE |  |  |  |  |  | resources none → MBRT BASE [64 h] |
| 1-1205 | DSC - SCL CONDUIT |  |  |  |  |  | resources none → MBRT DSC [120 h] |
| PCO346.01 | DSC 255-Prime Elec. Minor Ave Conduit & HH conflict |  |  |  |  | none → MS-0025 | resources none → MBRT DSC [48 h] |
| PCO351.01 | DSC 258-Pavment Depth at Minor |  |  |  |  | none → MS-0025 | resources none → MBRT DSC [8 h] |
| 1-0252 | F/P CURB MAD 7TH TO 9TH SOUTH SIDE, MINOR TO SUMMIT SOUTH SIDE |  |  |  |  |  | resources none → MBRT BASE [8 h] |
| 1-0253 | TEMP PATCH, MINOR TO SUMMIT SOUTH SIDE |  |  |  |  |  | resources none → MBRT BASE [16 h] |
| 1-1210 | DSC - SCL CONDUIT - COMPLETE ROADWAY AFTER DELAY |  |  |  |  |  | resources none → MBRT DSC [16 h] |
| 1-0251 | CONCRETE CURE, MINOR TO SUMMIT SOUTH SIDE |  |  |  |  |  | resources none → MBRT BASE |
| PCO230.01 | DSC 165-Unknown Unlocated conduit NW Boyleston |  |  |  |  | none → MS-0025 | resources none → MBRT DSC [88 h] |
| 1-0200 | DEMO ROAD - COMMON EX - TYPE 2, SUMMIT TO BOYLSTON NORTH SIDE |  |  |  |  |  | resources none → MBRT BASE [24 h] |
| 1-0201 | CONDUIT RD CROSSING, SUMMIT TO BOYLSTON NORTH SIDE |  |  |  |  |  | resources none → MBRT BASE [24 h] |
| 1-0202 | ROADWAY PAVING - 1 POURS, SUMMIT TO BOYLSTON NORTH SIDE |  |  |  |  |  | resources none → MBRT BASE [40 h] |
| 1-0203 | CONCRETE CURE, SUMMIT TO BOYLSTON NORTH SIDE |  |  |  |  |  | resources none → MBRT BASE |
| 1-1320 | CITY CAUSED DELAY ALLOWING DEVELOPER TO FINISH; SUMMIT TO BOYLSTON SOUTH SIDE |  |  |  |  |  | resources none → MBRT NEW |
| PCO476.01 | DSC 345-Boyleston Conduit intersept |  |  |  |  | none → MS-0025 | resources none → MBRT DSC [464 h] |
| 1-1325 | FM TO RELOCATE SIDE SEWER; SUMMIT TO BOYLSTON SOUTH SIDE |  |  |  |  |  | resources none → MBRT NEW [48 h] |
| 1-1365 | DELAY - KCM NOT ALLOWING CLOSURE TO GO IN |  |  |  |  |  | resources none → MBRT NEW [48 h] |

| ID | Task | Start | Finish | Duration | Complete | Total float | Predecessors | Other |
| --- | --- | --- | --- | --- | --- | --- | --- | --- |
| 1-0255 | DEMO ROAD - COMMON EX - TYPE 2, SUMMIT TO BOYLSTON SOUTH SIDE |  |  |  |  |  |  | resources none → MBRT BASE [96 h] |
| PCO630.01 | DSC 442-WATER VAULT IN CONFLICT WITH ROADWAY |  |  |  |  |  | none → MS-0025 | resources none → MBRT DSC [152 h] |
| 1-0256 | CONDUIT RD CROSSING, SUMMIT TO BOYLSTON SOUTH SIDE |  |  |  |  |  |  | resources none → MBRT BASE [24 h] |
| 1-2735 | DIRECTION TO INSTALL CONDUIT IN ROADWAY |  |  |  |  |  |  | resources none → MBRT NEW [32 h] |
| 1-2730 | MODIFY SPU VAULT |  |  |  |  |  |  | resources none → MBRT NEW [32 h] |
| 1-2740 | RE-GRADE ROADWAY AFTER EXTRA WORK |  |  |  |  |  |  | resources none → MBRT NEW [32 h] |
| 1-0257 | ROADWAY PAVING - 2 POURS, SUMMIT TO BOYLSTON SOUTH SIDE |  |  |  |  |  |  | resources none → MBRT BASE [56 h] |
| 1-0258 | CONCRETE CURE, SUMMIT TO BOYLSTON SOUTH SIDE |  |  |  |  |  |  | resources none → MBRT BASE |
| 1-0205 | DEMO ROAD - COMMON EX - TYPE 2, BOYLSTON TO BROADWAY NORTH SIDE |  |  |  |  |  |  | resources none → MBRT BASE [48 h] |
| 1-0206 | CONDUIT RD CROSSING, BOYLSTON TO BROADWAY NORTH SIDE |  |  |  |  |  |  | resources none → MBRT BASE [128 h] |
| PCO401.01 | DSC 293-Conduit Conflict with Paving Boylston to Broadway North side |  |  |  |  |  | none → MS-0025 | resources none → MBRT DSC [8 h] |
| 1-0207 | ROADWAY PAVING - 2 POURS, BOYLSTON TO BROADWAY NORTH SIDE |  |  |  |  |  |  | resources none → MBRT BASE [80 h] |
| 1-0208 | CONCRETE CURE, BOYLSTON TO BROADWAY NORTH SIDE |  |  |  |  |  |  | resources none → MBRT BASE |
| 1-0209 | F/P CURB, BOYLSTON TO BROADWAY NORTH SIDE |  |  |  |  |  |  | resources none → MBRT BASE [16 h] |
| 1-0210 | TEMP PATCH, BOYLSTON TO BROADWAY NORTH SIDE |  |  |  |  |  |  | resources none → MBRT BASE [8 h] |
| 26 | **BOYLSTON TO BROADWAY SOUTH SIDE** |  | 2023-08-31 → 2023-09-21 (+21d) |  |  |  |  |  |
| 1-0260 | DEMO ROAD - COMMON EX - TYPE 2, BOYLSTON TO BROADWAY SOUTH SIDE |  |  |  |  |  |  | resources none → MBRT BASE [64 h] |
| 1-0261 | CONDUIT RD CROSSING, BOYLSTON TO BROADWAY SOUTH SIDE |  |  |  |  |  |  | resources none → MBRT BASE [64 h] |
| PCO631.01 | DSC 443-DUCT BANK CONFLICT WITH CONDUIT |  |  |  |  |  | none → MS-0025 | resources none → MBRT DSC [16 h] |
| 1-2745 | OWNER CAUSED DELAY - DIRECTION TO SPLIT WORK FROM ALLEY TO BROADWAY |  | 2023-08-18 → 2023-09-15 A (+28d) |  | 0% → 100% | 30d → none |  | resources none → MBRT NEW |
| 1-0262 | ROADWAY PAVING - 2 POURS, BOYLSTON TO BROADWAY SOUTH SIDE |  |  |  |  |  |  | resources none → MBRT BASE [56 h] |
| 1-0263 | CONCRETE CURE, BOYLSTON TO BROADWAY SOUTH SIDE |  |  |  |  |  |  | resources none → MBRT BASE |
| 1-0264 | F/P CURB, BOYLSTON TO BROADWAY SOUTH SIDE |  |  |  |  |  |  | resources none → MBRT BASE [8 h] |
| 1-0265 | TEMP PATCH, BOYLSTON TO BROADWAY SOUTH SIDE |  |  |  |  |  |  | resources none → MBRT BASE [24 h] |
| 1-2750 | REMOVE RDWAY TYPE 2 ACROSS FROM WHOLE FOODS ALLEY | 2023-08-21 → 2023-09-18 A (+28d) | 2023-08-21 → 2023-09-19 A (+29d) | 1d → 2d | 0% → 100% | 30d → none |  | resources none → MBRT NEW [16 h] |
| 1-2755 | REMOVE RDWAY TYPE 2 FROM ALLEY TO BROADWAY | 2023-08-23 → 2023-09-18 A (+26d) | 2023-08-28 → 2023-09-19 A (+22d) | 4d → 2d | 0% → 100% | 30d → none | 1-0265, 1-2745, 1-2750, 1-2760 → 1-0265, 1-2745, 1-2750 | resources none → MBRT NEW [16 h] |
| 1-2760 | ROADWAY PAVING ACROSS FROM WHOLE FOODS ALLEY | 2023-08-22 → 2023-09-20 A (+29d) | 2023-08-22 → 2023-09-21 A (+30d) | 1d → 2d | 0% → 100% | 30d → none | 1-2750 → 1-2750, 1-2790 | resources none → MBRT NEW [16 h] |
| 1-2765 | ROADWAY PAVING ACROSS FROM ALLEY TO BROADWAY | 2023-08-29 → 2023-09-20 A (+22d) | 2023-08-31 → 2023-09-21 A (+21d) | 3d → 2d | 0% → 100% | 30d → none | 1-2755 → 1-2755, 1-2760 SS | resources none → MBRT NEW [16 h] |
| 2 | **1ST TO BROADWAY INTERSECTIONS** |  | 2023-09-19 → 2023-09-22 (+3d) |  |  |  |  |  |
| 1-0284 | TRENCH CONDUIT, SPRING AND 1ST |  |  |  |  |  |  | resources none → MBRT BASE [16 h] |
| PCO664.01 | DSC 467-VOID UNDER ROADWAY |  |  |  |  |  | none → MS-0025 | resources none → MBRT DSC [16 h] |
| PCO665.01 | DSC 468-MULTIPLE UTILITY CONFLICTS |  |  |  |  |  | none → MS-0025 | resources none → MBRT DSC [16 h] |
| PCO667.01 | DSC 470-2' THICK ROADWAY |  |  |  |  |  | none → MS-0025 | resources none → MBRT DSC [16 h] |
| 1-2955 | INSTALL CONDUIT, SPRING AND 1ST |  |  |  |  |  |  | resources none → MBRT NEW [16 h] |
| 1-2960 | BACKFILL CONDUIT WITH CDF, SPRING AND 1ST |  |  |  |  |  |  | resources none → MBRT NEW [16 h] |
| 1-0285 | DEMO ROAD - COMMON EX - TYPE 2, SPRING & 1ST |  |  |  |  |  |  | resources none → MBRT BASE [16 h] |
| 1-0286 | ASPHALT PAVING, SPRING AND 1ST |  |  |  |  |  |  | resources none → MBRT BASE [16 h] |
| 1-0268 | DEMO ROAD - COMMON EX - TYPE 2, SPRING & 2ND SOUTH SIDE |  |  |  |  |  |  | resources none → MBRT BASE [8 h] |
| 1-0269 | TRENCH CONDUIT, SPRING & 2ND SOUTH SIDE |  |  |  |  |  |  | resources none → MBRT BASE [8 h] |
| 1-0270 | ROADWAY PAVING, SPRING & 2ND SOUTH SIDE |  |  |  |  |  |  | resources none → MBRT BASE [8 h] |
| PCO200.01 | DSC 143-ITS Conduit Conflict Spring Alley way 1st to 2nd |  |  |  |  |  | none → MS-0025 | resources none → MBRT DSC [40 h] |
| PCO198.01 | DSC 141-Curb Ramp 1.1.1 and 1.1.2 |  |  |  |  |  | none → MS-0025 | resources none → MBRT DSC [136 h] |
| PCO278.01 | DSC 203-Conduit Change 3rd and Spring |  |  |  |  |  | none → MS-0025 | resources none → MBRT DSC [56 h] |
| 1-0272 | DEMO ROAD - COMMON EX - TYPE 2, SPRING & 3RD SOUTH SIDE |  |  |  |  |  |  | resources none → MBRT BASE [8 h] |
| PCO323.01 | DSC 239-ITS Conflict Spring 3rd to 4th |  |  |  |  |  | none → MS-0025 | resources none → MBRT DSC [24 h] |
| 1-0273 | TRENCH CONDUIT, SPRING & 3RD SOUTH SIDE |  |  |  |  |  |  | resources none → MBRT BASE [8 h] |
| 1-0274 | ROADWAY PAVING, SPRING & 3RD SOUTH SIDE |  |  |  |  |  |  | resources none → MBRT BASE [8 h] |
| PCO359.01 | DSC 261-Conduit Conflict SE 3rd and Spring |  |  |  |  |  | none → MS-0025 | resources none → MBRT DSC [16 h] |
| PCO322.01 | DSC 238-Unknown Unlocated Comm Line NE 3rd Spring |  |  |  |  |  | none → MS-0025 | resources none → MBRT DSC [8 h] |
| 1-0328 | DEMO ROAD - COMMON EX - TYPE 2, SPRING & 3RD NORTH SIDE |  |  |  |  |  |  | resources none → MBRT BASE [8 h] |
| 1-0329 | TRENCH CONDUIT, SPRING & 3RD NORTH SIDE |  |  |  |  |  |  | resources none → MBRT BASE [8 h] |
| 1-0330 | ROADWAY PAVING, SPRING & 3RD NORTH SIDE |  |  |  |  |  |  | resources none → MBRT BASE [8 h] |
| 1-0277 | TRENCH CONDUIT, SPRING & 4TH SOUTH SIDE |  |  |  |  |  |  | resources none → MBRT BASE [8 h] |
| 1-0276 | DEMO ROAD - COMMON EX - TYPE 2, SPRING & 4TH SOUTH SIDE |  |  |  |  |  |  | resources none → MBRT BASE [16 h] |
| 1-0278 | ROADWAY PAVING, SPRING & 4TH SOUTH SIDE |  |  |  |  |  |  | resources none → MBRT BASE [16 h] |
| PCO442.01 | DSC 323-SCL Access lid SE 4th and Spring poured mono |  |  |  |  |  | none → MS-0025 | resources none → MBRT DSC [456 h] |
| PCO443.01 | DSC 324-SE 4th & Spring Conduit Conflicts @ Hand Hole |  |  |  |  |  | none → MS-0025 | resources none → MBRT DSC [48 h] |
| PCO477.01 | DSC 346-FM 348 DSC Air Vent 4th and Spring |  |  |  |  |  | none → MS-0025 | resources none → MBRT DSC [328 h] |
| PCO255.01 | DSC 186-Vault 163-M-351 Steel In lid |  |  |  |  |  | none → MS-0025 | resources none → MBRT DSC [48 h] |
| PCO387.01 | DSC 283-5th and Spring Conduit Conflict |  |  |  |  |  | none → MS-0025 | resources none → MBRT DSC [24 h] |
| 1-0281 | TRENCH CONDUIT, SPRING & 5TH SOUTH SIDE |  |  |  |  |  |  | resources none → MBRT BASE [8 h] |
| 1-0280 | DEMO ROAD - COMMON EX - TYPE 2, SPRING & 5TH SOUTH SIDE |  |  |  |  |  |  | resources none → MBRT BASE [8 h] |
| 1-0282 | ROADWAY PAVING, SPRING & 5TH SOUTH SIDE |  |  |  |  |  |  | resources none → MBRT BASE [16 h] |
| PCO486.01 | DSC 350-Conduit Conflict SW 5th and Spring |  |  |  |  |  | none → MS-0025 | resources none → MBRT DSC [8 h] |
| 1-0332 | DEMO ROAD - COMMON EX - TYPE 2, SPRING & 7TH NORTH SIDE |  |  |  |  |  |  | constraint start on or after 2023-06-28 → none; resources none → MBRT BASE [16 h] |
| 1-0333 | TRENCH CONDUIT, SPRING & 7TH NORTH SIDE |  |  |  |  |  |  | resources none → MBRT BASE [16 h] |
| 1-0343 | DSC 543 - Unknown Ductbank Conflict |  |  |  |  |  |  | resources none → MBRT DSC [8 h] |
| 1-0334 | ROADWAY PAVING, SPRING & 7TH NORTH SIDE |  |  |  |  |  |  | resources none → MBRT BASE [16 h] |
| 1-0312 | DEMO ROAD - COMMON EX - TYPE 2, SPRING & 7TH SOUTH SIDE |  |  |  |  |  |  | resources none → MBRT BASE |
| 1-0313 | TRENCH CONDUIT, SPRING & 7TH SOUTH SIDE |  |  |  |  |  |  | resources none → MBRT BASE |

| ID | Task | Start | Finish | Duration | Complete | Total float | Predecessors | Other |
| --- | --- | --- | --- | --- | --- | --- | --- | --- |
| 1-0314 | ROADWAY PAVING, SPRING & 7TH SOUTH SIDE |  |  |  |  |  |  | resources none → MBRT BASE |
| PCO315.01 | DSC 232-Prime DSC SE 7th and Spring |  |  |  |  |  | none → MS-0025 | resources none → MBRT DSC [16 h] |
| PCO324.01 | DSC 240-type 3 handhole SE 7th and spring conflict |  |  |  |  |  | none → MS-0025 | resources none → MBRT DSC [8 h] |
| 1-0336 | DEMO ROAD - COMMON EX - TYPE 2, SPRING & 8TH NORTH SIDE |  |  |  |  |  |  | resources none → MBRT BASE [16 h] |
| 1-0337 | TRENCH CONDUIT, SPRING & 8TH NORTH SIDE |  |  |  |  |  |  | resources none → MBRT BASE [16 h] |
| 1-0338 | ROADWAY PAVING, SPRING & 8TH NORTH SIDE |  |  |  |  |  |  | resources none → MBRT BASE [16 h] |
| PCO506.01 | DSC 360-Steam Pipe Conflict at 8th and Spring |  |  |  |  |  | none → MS-0025 | resources none → MBRT DSC [40 h] |
| 1-0316 | DEMO ROAD - COMMON EX - TYPE 2, SPRING & 8TH SOUTH SIDE |  |  |  |  |  |  | resources none → MBRT BASE |
| 1-0317 | TRENCH CONDUIT, SPRING & 8TH SOUTH SIDE |  |  |  |  |  |  | resources none → MBRT BASE |
| 1-0318 | ROADWAY PAVING, SPRING & 8TH SOUTH SIDE |  |  |  |  |  |  | resources none → MBRT BASE |
| 14 | **SPRING AND 9TH SW CORNER** |  | 2023-08-24 → 2023-09-06 (+13d) |  |  |  |  |  |
| 1-0321 | TRENCH CONDUIT, SPRING AND 9TH SW CORNER |  |  |  |  |  |  | resources none → MBRT BASE [8 h] |
| 1-0355 | DSC 572 GAS LINE CONFLICT |  |  | 5d → 1d |  |  |  | resources none → MBRT DSC [8 h] |
| 1-0375 | DSC 573 DUCT BANK CONFLICT |  |  | 5d → 1d |  |  |  | resources none → MBRT DSC [8 h] |
| 1-0395 | DSC 574 UNKNOWN STEEL LINE |  |  |  |  |  |  | resources none → MBRT DSC [8 h] |
| 1-0320 | DEMO ROAD - COMMON EX - TYPE 2, SPRING & 9TH SW CORNER | 2023-08-14 → 2023-08-15 A (+1d) | 2023-08-18 → 2023-08-21 A (+3d) |  | 0% → 100% | -100d → none |  | resources none → MBRT BASE [40 h] |
| 1-0322 | ROADWAY PAVING, SPRING AND 9TH SW CORNER | 2023-08-21 → 2023-08-31 A (+10d) | 2023-08-24 → 2023-09-06 A (+13d) |  | 0% → 100% | -100d → none |  | resources none → MBRT BASE [32 h] |
| 15 | **SPRING AND 9TH SE CORNER** |  | 2023-09-07 → 2023-09-06 (-1d) |  |  |  |  |  |
| 1-0325 | TRENCH CONDUIT, SPRING AND 9TH SE CORNER |  |  |  |  |  |  | resources none → MBRT BASE [8 h] |
| 1-0324 | DEMO ROAD - COMMON EX - TYPE 2, SPRING & 9TH SE CORNER | 2023-08-25 → 2023-08-15 A (-10d) | 2023-08-30 → 2023-08-21 A (-9d) |  | 0% → 100% | -100d → none |  | resources none → MBRT BASE [40 h] |
| 1-0326 | ROADWAY PAVING, SPRING AND 9TH SE CORNER | 2023-08-31 A | 2023-09-07 → 2023-09-06 A (-1d) |  | 0% → 100% | 18d → none |  | resources none → MBRT BASE [32 h] |
| 19 | **SPRING AND 9TH NW CORNER** |  | 2023-09-15 → 2023-09-22 (+7d) |  |  |  |  |  |
| PCO242.01 | DSC 176-NW Corner 9th & Spring Elevation Bust |  |  |  |  |  | none → MS-0025 | resources none → MBRT DSC [24 h] |
| 1-0340 | DEMO ROAD - COMMON EX - TYPE 2, SPRING & 9TH NW CORNER | 2023-09-14 → 2023-09-21 A (+7d) | 2023-09-14 → 2023-09-21 A (+7d) |  | 0% → 100% | -113d → none | 1-0338, 1-0324 SS → 1-0338, 1-0324 SS, 1-0346 | constraint start on or after 2023-09-14 → none; resources none → MBRT BASE [8 h] |
| 1-0341 | TRENCH CONDUIT, SPRING AND 9TH NW CORNER | 2023-09-14 → 2023-09-21 A (+7d) | 2023-09-14 → 2023-09-21 A (+7d) |  | 0% → 100% | -113d → none |  | resources none → MBRT BASE [8 h] |
| 1-0342 | ROADWAY PAVING, SPRING AND 9TH NW CORNER | 2023-09-15 → 2023-09-22 A (+7d) | 2023-09-15 → 2023-09-22 A (+7d) |  | 0% → 100% | -113d → none | 1-0341 → 1-0341, 1-2765 | resources none → MBRT BASE [8 h] |
| 20 | **SPRING AND 9TH NE CORNER** | 2023-09-18 → 2023-09-15 (-3d) | 2023-09-19 → 2023-09-16 (-3d) |  |  |  |  |  |
| 1-0344 | DEMO ROAD - COMMON EX - TYPE 2, SPRING & 9TH NE CORNER | 2023-09-18 → 2023-09-15 A (-3d) | 2023-09-18 → 2023-09-15 A (-3d) |  | 0% → 100% | -113d → none | 1-0342 → 1-0326 | resources none → MBRT BASE [8 h] |
| 1-0345 | TRENCH CONDUIT, SPRING AND 9TH NE CORNER | 2023-09-18 → 2023-09-15 A (-3d) | 2023-09-18 → 2023-09-15 A (-3d) |  | 0% → 100% | -113d → none |  | resources none → MBRT BASE [8 h] |
| 1-0346 | ROADWAY PAVING, SPRING AND 9TH NE CORNER | 2023-09-19 → 2023-09-16 A (-3d) | 2023-09-19 → 2023-09-16 A (-3d) |  | 0% → 100% | -113d → none |  | resources none → MBRT BASE |
| PCO212.01 | DSC 151-Sidwalk Remove Thickness SW 1st and Mad |  |  |  |  |  | none → MS-0025 | resources none → MBRT DSC [8 h] |
| PCO214.01 | DSC 152-SCL Vault Sw Corner 1st and Mad |  |  |  |  |  | none → MS-0025 | resources none → MBRT DSC [1168 h] |
| PCO215.01 | DSC 153-SW Corner 1st and Mad SDOT core into SCL |  |  |  |  |  | none → MS-0025 | resources none → MBRT DSC [24 h] |
| PCO241.01 | DSC 175-Unknown Conduit 1st and Madison South Side |  |  |  |  |  | none → MS-0025 | resources none → MBRT DSC [8 h] |
| PCO681.01 | DSC 483-UNKNOWN DUCT BANK CONFLICT |  |  |  |  |  | none → MS-0025 | resources none → MBRT DSC [8 h] |
| PCO683.01 | DSC 485-EXISTING DUCT BANK CONFLICT WITH SCL SERVICE |  |  |  |  |  | none → MS-0025 | resources none → MBRT DSC [8 h] |
| PCO685.01 | DSC 487-UKNOWN UNLOCATED UTILITIES CONFLICT WITH SCL SERVICE |  |  |  |  |  | none → MS-0025 | resources none → MBRT DSC [8 h] |
| PCO686.01 | DSC 488-UKNOWN UNLOCATED STEEL PIPE CONFLICT |  |  |  |  |  | none → MS-0025 | resources none → MBRT DSC [8 h] |
| PCO690.01 | DSC 492-UNKNOWN UNLOCATED CLAY PIPE |  |  |  |  |  | none → MS-0025 | resources none → MBRT DSC [8 h] |
| 1-0292 | TRENCH CONDUIT, MAD AND 1ST |  |  |  |  |  |  | resources none → MBRT BASE [16 h] |
| PCO687.01 | DSC 489-UNKNOWN STEEL PIPE REMOVED |  |  |  |  |  | none → MS-0025 | resources none → MBRT DSC [8 h] |
| PCO688.01 | DSC 490-2 UNKNOWN CONDUITS SCL SERVICE |  |  |  |  |  | none → MS-0025 | resources none → MBRT DSC [8 h] |
| PCO689.01 | DSC 491-CDF ENCASED WATERLINE CONFLICT WITH SCL SERVICE |  |  |  |  |  | none → MS-0025 | resources none → MBRT DSC [80 h] |
| 1-3190 | INSTALL CONDUIT, MAD AND 1ST |  |  |  |  |  |  | resources none → MBRT NEW [16 h] |
| 1-2965 | COMPLETE CONDUIT AFTER DSC 491 |  |  |  |  |  |  | resources none → MBRT DSC [8 h] |
| 1-2970 | CDF BACKFILL, MAD AND 1ST |  |  |  |  |  |  | resources none → MBRT NEW [8 h] |
| 1-0293 | DEMO ROAD - COMMON EX - TYPE 2, MAD & 1ST |  |  |  |  |  |  | resources none → MBRT BASE [16 h] |
| 1-0294 | ROADWAY PAVING, MAD AND 1ST |  |  |  |  |  |  | resources none → MBRT BASE [16 h] |
| 1-0368 | DEMO ROAD - COMMON EX - TYPE 2, MAD & 2ND SOUTH SIDE |  |  |  |  |  |  | resources none → MBRT BASE [8 h] |
| 1-0369 | TRENCH CONDUIT, MAD & 2ND SOUTH SIDE |  |  |  |  |  |  | resources none → MBRT BASE [8 h] |
| 1-0370 | ROADWAY PAVING, MAD & 2ND SOUTH SIDE |  |  |  |  |  |  | resources none → MBRT BASE [8 h] |
| 1-0295 | ELECTRICAL VAULT WORK, MAD & 3ND NORTH SIDE |  |  |  |  |  |  | resources none → MBRT BASE [8 h] |
| 1-0288 | DEMO ROAD - COMMON EX - TYPE 2, MAD & 3ND NORTH SIDE |  |  |  |  |  |  | resources none → MBRT BASE [8 h] |
| 1-0289 | TRENCH CONDUIT, MAD & 3ND NORTH SIDE |  |  |  |  |  |  | resources none → MBRT BASE [8 h] |
| 1-0290 | ROADWAY PAVING, MAD & 3ND NORTH SIDE |  |  |  |  |  |  | resources none → MBRT BASE [8 h] |
| 1-0372 | DEMO ROAD - COMMON EX - TYPE 2, MAD & 4TH SOUTH SIDE |  |  |  |  |  |  | resources none → MBRT BASE [8 h] |
| 1-0373 | TRENCH CONDUIT, MAD & 4TH SOUTH SIDE |  |  |  |  |  |  | resources none → MBRT BASE [8 h] |
| 1-0374 | ROADWAY PAVING, MAD & 4TH SOUTH SIDE |  |  |  |  |  |  | resources none → MBRT BASE [8 h] |
| 1-0296 | DEMO ROAD - COMMON EX - TYPE 2, MAD & 5TH NORTH SIDE |  |  |  |  |  |  | resources none → MBRT BASE [8 h] |
| 1-0297 | TRENCH CONDUIT, MAD & 5TH NORTH SIDE |  |  |  |  |  |  | resources none → MBRT BASE [8 h] |
| 1-0298 | ROADWAY PAVING, MAD & 5TH NORTH SIDE |  |  |  |  |  |  | resources none → MBRT BASE [16 h] |
| PCO411.01 | DSC 301-unknown unlocated conduit 5th and madison |  |  |  |  |  | none → MS-0025 | resources none → MBRT DSC [120 h] |
| PCO441.01 | DSC 322-Conduit Crossing Conflicts 5th and Madison |  |  |  |  |  | none → MS-0025 | resources none → MBRT DSC [24 h] |
| PCO469.01 | DSC 341-Void under road at 5th and madison |  |  |  |  |  | none → MS-0025 | resources none → MBRT DSC [8 h] |
| PCO470.01 | DSC 342-Concrete 20" thick at 5th and Madison |  |  |  |  |  | none → MS-0025 | resources none → MBRT DSC [8 h] |
| 1-0376 | DEMO ROAD - COMMON EX - TYPE 2, MAD & 5TH SOUTH SIDE |  |  |  |  |  |  | resources none → MBRT BASE [8 h] |
| 1-0377 | TRENCH CONDUIT, MAD & 5TH SOUTH SIDE |  |  |  |  |  |  | resources none → MBRT BASE [8 h] |
| 1-0378 | ROADWAY PAVING, MAD & 5TH SOUTH SIDE |  |  |  |  |  |  | resources none → MBRT BASE [8 h] |
| 29 | **MADISON AND 6TH SOUTH SIDE** |  | 2023-08-19 → 2023-08-21 (+2d) |  |  |  |  |  |
| 1-0380 | DEMO ROAD - COMMON EX - TYPE 2, MAD & 6TH SOUTH SIDE |  |  |  |  |  |  | resources none → MBRT BASE [8 h] |

| ID | Task | Start | Finish | Complete | Total float | Predecessors | Other |
| --- | --- | --- | --- | --- | --- | --- | --- |
| 1-0381 | TRENCH CONDUIT, MAD & 6TH SOUTH SIDE |  |  |  |  |  | resources none → MBRT BASE [8 h] |
| 1-0382 | ROADWAY PAVING, MAD & 6TH SOUTH SIDE | 2023-08-19 A | 2023-08-19 → 2023-08-21 A (+2d) | 0% → 100% | 29d → none |  | resources none → MBRT BASE [16 h] |
| 1-0300 | DEMO ROAD - COMMON EX - TYPE 2, MAD & 8TH NORTH SIDE |  |  |  |  |  | resources none → MBRT BASE |
| 1-0301 | TRENCH CONDUIT PRIOR TO DSC, MAD & 8TH NORTH SIDE |  |  |  |  |  | resources none → MBRT BASE [8 h] |
| PCO642.01 | DSC 452-CONDUIT CONFLICTS |  |  |  |  |  | resources none → MBRT DSC [8 h] |
| 1-2770 | TRENCH CONDUIT AFTER DSC, MAD & 8TH NORTH SIDE |  |  |  |  |  | resources none → MBRT DSC [8 h] |
| 1-2775 | INSTALL CONDUIT, MAD & 8TH NORTH SIDE |  |  |  |  |  | resources none → MBRT NEW [8 h] |
| 1-0302 | ROADWAY PAVING, MAD & 8TH NORTH SIDE |  |  |  |  |  | resources none → MBRT BASE [16 h] |
| 1-0384 | DEMO ROAD - COMMON EX - TYPE 2, MAD & 8TH SOUTH SIDE |  |  |  |  |  | resources none → MBRT BASE |
| 1-0385 | TRENCH CONDUIT, MAD & 8TH SOUTH SIDE |  |  |  |  |  | resources none → MBRT BASE |
| 1-0386 | ROADWAY PAVING, MAD & 8TH SOUTH SIDE |  |  |  |  |  | resources none → MBRT BASE [16 h] |
| 1-0308 | DEMO ROAD - COMMON EX - TYPE 2, MAD & 9TH NE CORNER |  |  |  |  |  | resources none → MBRT BASE [8 h] |
| 1-0309 | TRENCH CONDUIT, MAD & 9TH NE CORNER |  |  |  |  |  | resources none → MBRT BASE [8 h] |
| 1-0310 | ROADWAY PAVING, MAD & 9TH NE CORNER |  |  |  |  |  | resources none → MBRT BASE [8 h] |
| 1-0304 | DEMO ROAD - COMMON EX - TYPE 2, MAD & 9TH NW CORNER |  |  |  |  |  | resources none → MBRT BASE [8 h] |
| 1-0305 | TRENCH CONDUIT, MAD & 9TH NW CORNER |  |  |  |  |  | resources none → MBRT BASE [8 h] |
| 1-0306 | ROADWAY PAVING, MAD & 9TH NW CORNER |  |  |  |  |  | resources none → MBRT BASE [8 h] |
| 1-0388 | DEMO ROAD - COMMON EX - TYPE 2, MAD & 9TH SW CORNER |  |  |  |  |  | resources none → MBRT BASE [8 h] |
| 1-0389 | TRENCH CONDUIT, MAD & 9TH SW CORNER |  |  |  |  |  | resources none → MBRT BASE [8 h] |
| 1-0390 | ROADWAY PAVING, MAD & 9TH SW CORNER |  |  |  |  |  | resources none → MBRT BASE [8 h] |
| 1-0392 | DEMO ROAD - COMMON EX - TYPE 2, MAD & 9TH SE CORNER |  |  |  |  |  | resources none → MBRT BASE [8 h] |
| 1-0393 | TRENCH CONDUIT, MAD & 9TH SE CORNER |  |  |  |  |  | resources none → MBRT BASE [8 h] |
| 1-0394 | ROADWAY PAVING, MAD & 9TH SE CORNER |  |  |  |  |  | resources none → MBRT BASE [8 h] |
| 1-0348 | DEMO ROAD - COMMON EX - TYPE 2, MAD & TERRY NORTH SIDE |  |  |  |  |  | resources none → MBRT BASE [16 h] |
| 1-0349 | TRENCH CONDUIT, MAD & TERRY NORTH SIDE |  |  |  |  |  | resources none → MBRT BASE [16 h] |
| 1-0350 | ROADWAY PAVING, MAD & TERRY NORTH SIDE |  |  |  |  |  | resources none → MBRT BASE [16 h] |
| 1-0396 | DEMO ROAD - COMMON EX - TYPE 2, MAD & TERRY SOUTH SIDE |  |  |  |  |  | resources none → MBRT BASE [32 h] |
| 1-0397 | TRENCH CONDUIT, MAD & TERRY SOUTH SIDE |  |  |  |  |  | resources none → MBRT BASE [32 h] |
| 1-0398 | ROADWAY PAVING, MAD & TERRY SOUTH SIDE |  |  |  |  |  | resources none → MBRT BASE [16 h] |
| 1-0353 | TRENCH CONDUIT, MAD & BOREN NORTH SIDE |  |  |  |  |  | resources none → MBRT BASE [8 h] |
| 1-0352 | DEMO ROAD - COMMON EX - TYPE 2, MAD & BOREN NORTH SIDE |  |  |  |  |  | resources none → MBRT BASE [8 h] |
| 1-0354 | ROADWAY PAVING, MAD & BOREN NORTH SIDE |  |  |  |  |  | resources none → MBRT BASE [8 h] |
| 39 | **MADISON AND BOREN WEST SIDE** |  | 2023-08-20 → 2023-08-22 (+2d) |  |  |  |  |
| 1-2980 | TRENCH CONDUIT, MAD & BOREN WEST SIDE |  |  |  |  |  | resources none → MBRT NEW [8 h] |
| 1-2975 | DEMO ROAD - COMMON EX - TYPE 2, MAD & BOREN WEST SIDE | 2023-08-20 → 2023-08-22 A (+2d) | 2023-08-20 → 2023-08-22 A (+2d) | 0% → 100% | 102d → none |  | resources none → MBRT NEW [8 h] |
| 1-2985 | ROADWAY PAVING, MAD & BOREN WEST SIDE | 2023-08-20 → 2023-08-22 A (+2d) | 2023-08-20 → 2023-08-22 A (+2d) | 0% → 100% | 102d → none |  | resources none → MBRT NEW [8 h] |
| 1-2995 | TRENCH CONDUIT, MAD & BOREN EAST SIDE |  |  |  |  |  | resources none → MBRT NEW [8 h] |
| 1-2990 | DEMO ROAD - COMMON EX - TYPE 2, MAD & BOREN EAST SIDE |  |  |  |  |  | resources none → MBRT NEW [8 h] |
| 1-3000 | ROADWAY PAVING, MAD & BOREN EAST SIDE |  |  |  |  |  | resources none → MBRT NEW [8 h] |
| PCO700.01 | DSC 502-ABANDONED WATERLINE CONFLICT |  |  |  |  | none → MS-0025 | resources none → MBRT DSC [8 h] |
| PCO701.01 | DSC 503-UNKNOWN UNLOCATED DUCTBANK CONFLICT |  |  |  |  | none → MS-0025 | resources none → MBRT DSC [8 h] |
| 1-0401 | TRENCH CONDUIT, MAD & BOREN SOUTH SIDE |  |  |  |  |  | resources none → MBRT BASE [8 h] |
| 1-0400 | DEMO ROAD - COMMON EX - TYPE 2, MAD & BOREN SOUTH SIDE |  |  |  |  |  | resources none → MBRT BASE [8 h] |
| 1-0402 | ROADWAY PAVING, MAD & BOREN SOUTH SIDE |  |  |  |  |  | resources none → MBRT BASE [8 h] |
| 1-0356 | DEMO ROAD - COMMON EX - TYPE 2, MAD & MINOR NORTH SIDE |  |  |  |  |  | resources none → MBRT BASE [16 h] |
| 1-0357 | TRENCH CONDUIT, MAD & MINOR NORTH SIDE |  |  |  |  |  | resources none → MBRT BASE [16 h] |
| 1-0358 | ROADWAY PAVING, MAD & MINOR NORTH SIDE |  |  |  |  |  | resources none → MBRT BASE [24 h] |
| 1-0405 | TRENCH CONDUIT, MAD & MINOR SOUTH SIDE |  |  |  |  |  | resources none → MBRT BASE [8 h] |
| 1-0404 | DEMO ROAD - COMMON EX - TYPE 2, MAD & MINOR SOUTH SIDE |  |  |  |  |  | resources none → MBRT BASE [8 h] |
| 1-0406 | ROADWAY PAVING, MAD & MINOR SOUTH SIDE |  |  |  |  |  | resources none → MBRT BASE [8 h] |
| PCO421.01 | DSC 308-Sinkhole at Summitt |  |  |  |  | none → MS-0025 | resources none → MBRT DSC [16 h] |
| 1-0360 | DEMO ROAD - COMMON EX - TYPE 2, MAD & SUMMIT NORTH SIDE |  |  |  |  |  | resources none → MBRT BASE |
| 1-0361 | TRENCH CONDUIT, MAD & SUMMIT NORTH SIDE |  |  |  |  |  | resources none → MBRT BASE |
| PCO435.01 | DSC 317-SCL Conduit Conflict with Waterline North Summit |  |  |  |  | none → MS-0025 | resources none → MBRT DSC [16 h] |
| PCO436.01 | DSC 318-Unknown unlocated conduit Summit North Side |  |  |  |  | none → MS-0025 | resources none → MBRT DSC [8 h] |
| 1-0362 | ROADWAY PAVING, MAD & SUMMIT NORTH SIDE |  |  |  |  |  | resources none → MBRT BASE |
| 1-0408 | DEMO ROAD - COMMON EX - TYPE 2, MAD & SUMMIT SW CORNER |  |  |  |  |  | resources none → MBRT BASE [8 h] |
| 1-0409 | TRENCH CONDUIT, MAD & SUMMIT SW CORNER |  |  |  |  |  | resources none → MBRT BASE [8 h] |
| 1-0410 | ROADWAY PAVING, MAD & SUMMIT SW CORNER |  |  |  |  |  | resources none → MBRT BASE [8 h] |
| 1-0412 | DEMO ROAD - COMMON EX - TYPE 2, MAD & SUMMIT SE CORNER |  |  |  |  |  | resources none → MBRT BASE [8 h] |
| 1-0413 | TRENCH CONDUIT, MAD & SUMMIT SE CORNER |  |  |  |  |  | resources none → MBRT BASE [8 h] |
| 1-0414 | ROADWAY PAVING, MAD & SUMMIT SE CORNER |  |  |  |  |  | resources none → MBRT BASE [8 h] |
| 1-0364 | DEMO ROAD - COMMON EX - TYPE 2, MAD & BOYLSTON NORTH SIDE |  |  |  |  |  | resources none → MBRT BASE [8 h] |
| 1-0365 | TRENCH CONDUIT, MAD & BOYLSTON NORTH SIDE |  |  |  |  |  | resources none → MBRT BASE [8 h] |
| 1-0366 | ROADWAY PAVING, MAD & BOYLSTON NORTH SIDE |  |  |  |  |  | resources none → MBRT BASE [8 h] |
| 1-0416 | DEMO ROAD - COMMON EX - TYPE 2, MAD & BOYLSTON SOUTH SIDE |  |  |  |  |  | resources none → MBRT BASE |
| 1-0418 | ROADWAY PAVING, MAD & BOYLSTON SOUTH SIDE |  |  |  |  |  | resources none → MBRT BASE [40 h] |
| 7 | **POLE FOUNDATIONS** |  | 2023-09-11 → 2024-02-09 (+151d) |  |  |  |  |
| 1-0423 | MAD 6TH TO BROADWAY POLE FOUNDATIONS |  |  |  |  |  | resources none → MBRT BASE [16 h] |
| 1-0424 | 9TH AVE - 8 EACH, POLE FOUNDATIONS |  |  |  |  |  | resources none → MBRT BASE [192 h] |

| ID | Task | Start | Finish | Duration | Complete | Total float | Predecessors | Other |
| --- | --- | --- | --- | --- | --- | --- | --- | --- |
| 1-0422 | SPRING 6TH TO 9TH - 5 EACH, POLE FOUNDATIONS |  |  |  |  |  |  | resources none → MBRT BASE [40 h] |
| 1-0420 | SPRING 1ST TO 6TH 1 EACH, POLE FOUNDATIONS |  |  |  |  |  |  | resources none → MBRT BASE [16 h] |
| 1-0421 | MAD 1ST TO 6TH - 3 EACH, POLE FOUNDATIONS |  |  |  |  |  |  | resources none → MBRT BASE [32 h] |
| 1-0453 | MAD 6TH TO BROADWAY POLE FOUNDATIONS (30 ea.) |  | 2023-09-11 → 2024-02-09 A (+151d) |  | 0% → 100% | -105d → none |  | resources none → MBRT BASE |
| PCO643.01 | DSC 453-TIE BACK AT BROADWAY FOUNDATION |  |  |  |  |  | none → MS-0025 | resources none → MBRT DSC [8 h] |
| 8 | **SIDEWALKS** |  | 2023-10-30 → 2024-04-24 (+177d) |  |  |  |  |  |
| 73 | **MID BLOCK TERRY TO BOREN TO BOREN SOUTH SIDE** |  | 2023-09-07 → 2023-10-06 (+29d) |  |  |  |  |  |
| 1-7000 | REM SIDEWALK |  |  |  |  |  |  | resources none → MBRT NEW [8 h] |
| 1-7005 | TRENCH CONDUIT |  |  |  |  |  |  | resources none → MBRT NEW [16 h] |
| 1-7010 | DSC 562 SWC BOREN MULTIPLE ELECTRICAL CONFLICTS |  |  |  |  |  |  | resources none → MBRT DSC [8 h] |
| 1-7015 | DSC 563 SWC BOREN DUCTBANK & FDN CONFLICT w/CONDUIT |  |  |  |  |  |  | resources none → MBRT DSC [8 h] |
| 1-7020 | INST CONDUIT |  | 2023-08-15 A |  | 91% → 100% | -102d → none |  | resources none → MBRT NEW [176 h] |
| 1-7025 | GRADE SIDEWALK | 2023-08-16 A | 2023-08-17 A |  | 0% → 100% | -102d → none |  | resources none → MBRT NEW [16 h] |
| 1-7030 | POUR SIDEWALK | 2023-08-18 A | 2023-08-23 → 2023-08-22 A (-1d) | 4d → 3d | 0% → 100% | -102d → none |  | resources none → MBRT NEW [24 h] |
| 1-7035 | Bore Conduit | 2023-08-24 → 2023-08-23 A (-1d) | 2023-08-30 → 2023-09-29 A (+30d) | 5d → 27d | 0% → 100% | -102d → none |  | resources none → MBRT NEW [216 h] |
| 1-7040 | Finish Sidewalk After Bore | 2023-08-31 → 2023-10-06 A (+36d) | 2023-09-07 → 2023-10-06 A (+29d) | 5d → 1d | 0% → 100% | -102d → none |  | resources none → MBRT NEW [8 h] |
| 1-0438 | REM SIDEWALK, SPRING 1ST TO 2ND SOUTH SIDE |  |  |  |  |  |  | resources none → MBRT BASE [16 h] |
| 1-0439 | TRENCH CONDUIT, SPRING 1ST TO 2ND SOUTH SIDE |  |  |  |  |  |  | resources none → MBRT BASE [16 h] |
| 1-0440 | INST CONDUIT, SPRING 1ST TO 2ND SOUTH SIDE |  |  |  |  |  |  | resources none → MBRT BASE [16 h] |
| PCO043.01 | DSC 29-Conduit Conflict ITS SE Corner Spring and 2nd |  |  |  |  |  | none → MS-0025 | resources none → MBRT DSC [64 h] |
| 1-0441 | GRADE SIDEWALK, SPRING 1ST TO 2ND SOUTH SIDE |  |  |  |  |  |  | resources none → MBRT BASE [8 h] |
| 1-0443 | POUR SIDEWALK, SPRING 1ST TO 2ND SOUTH SIDE |  |  |  |  |  |  | resources none → MBRT BASE [8 h] |
| 1-0442 | POUR DRIVEWAY, SPRING 1ST TO 2ND SOUTH SIDE |  |  |  |  |  |  | resources none → MBRT BASE [8 h] |
| PCO181.01 | DSC 127-Vault and ductbank conflict with paving Spring 2nd to 3rd Alley |  |  |  |  |  | none → MS-0025 | resources none → MBRT DSC [232 h] |
| 1-0454 | REM & GRADE DRIVEWAYS, DRIVEWAYS SPRING 2ND TO 3RD SOUTH SIDE |  |  |  |  |  |  | resources none → MBRT BASE [8 h] |
| 1-0455 | POUR DRIVEWAYS, DRIVEWAYS SPRING 2ND TO 3RD SOUTH SIDE |  |  |  |  |  |  | resources none → MBRT BASE [8 h] |
| PCO027.01 | DSC 18-Type 6 conflict 3rd and Spring SW Corner |  |  |  |  |  | none → MS-0025 | resources none → MBRT DSC [112 h] |
| PCO029.01 | DSC 20-Shallow Inlet Spring and 2nd |  |  |  |  |  | none → MS-0025 | resources none → MBRT DSC [8 h] |
| PCO030.01 | DSC 21-Type 6 Conflict 3rd and Spring SW Corner II |  |  |  |  |  | none → MS-0025 | resources none → MBRT DSC [112 h] |
| 1-0445 | REM SIDEWALK, SPRING 2ND TO 3RD SOUTH SIDE |  |  |  |  |  |  | resources none → MBRT BASE [8 h] |
| 1-0446 | TRENCH CONDUIT, SPRING 2ND TO 3RD SOUTH SIDE |  |  |  |  |  |  | resources none → MBRT BASE [16 h] |
| 1-0447 | INTALL CONDUIT, SPRING 2ND TO 3RD SOUTH SIDE |  |  |  |  |  |  | resources none → MBRT BASE [16 h] |
| PCO052.01 | DSC 33-ITS Conflict SE Spring and 2nd |  |  |  |  |  | none → MS-0025 | resources none → MBRT DSC [24 h] |
| 1-0448 | FORM FOUNDATIONS, SPRING 2ND TO 3RD SOUTH SIDE |  |  |  |  |  |  | resources none → MBRT BASE [8 h] |
| PCO252.01 | DSC 184-FM 124, V133-M-007 Vault Riser Conflict |  |  |  |  |  | none → MS-0025 | resources none → MBRT DSC [24 h] |
| PCO253.01 | DSC 185-3rd & Spring Bus Foundation Conflicts |  |  |  |  |  | none → MS-0025 | resources none → MBRT DSC [56 h] |
| 1-0450 | GRADE SIDEWALK, SPRING 2ND TO 3RD SOUTH SIDE |  |  |  |  |  |  | resources none → MBRT BASE [8 h] |
| 1-0451 | POUR SIDEWALK, SPRING 2ND TO 3RD SOUTH SIDE |  |  |  |  |  |  | resources none → MBRT BASE [40 h] |
| 1-0449 | POUR FOUNDATIONS, SPRING 2ND TO 3RD SOUTH SIDE |  |  |  |  |  |  | resources none → MBRT BASE [8 h] |
| 1-0460 | INSTALL WHEEL GUIDES |  |  |  |  |  |  | resources none → MBRT NEW [8 h] |
| 1-0452 | POUR STATION STEM WALL, SPRING 2ND TO 3RD SOUTH SIDE |  |  |  |  |  |  | resources none → MBRT BASE [8 h] |
| PCO445.01 | DSC 325-Reinforced Sidewalk 3rd & Spring |  |  |  |  |  | none → MS-0025 | resources none → MBRT DSC [16 h] |
| 1-0561 | REM SIDEWALK, SPRING & 3RD NW CORNER |  |  |  |  |  |  | resources none → MBRT BASE [8 h] |
| PCO447.01 | DSC 327-3rd & Spring NWC CDF Duct Bank Conflict |  |  |  |  |  | none → MS-0025 | resources none → MBRT DSC [448 h] |
| PCO449.01 | DSC 328-3rd & Spring NWC Conduit Conflicts |  |  |  |  |  | none → MS-0025 | resources none → MBRT DSC [24 h] |
| 1-0562 | INST CONDUIT, SPRING & 3RD NW CORNER |  |  |  |  |  |  | resources none → MBRT BASE [104 h] |
| PCO455.01 | DSC 332-NW 3rd and Spring conduit conflicts |  |  |  |  |  | none → MS-0025 | resources none → MBRT DSC [16 h] |
| PCO457.01 | DSC 334-existing broken conduit 3rd and Spring |  |  |  |  |  | none → MS-0025 | resources none → MBRT DSC [16 h] |
| PCO465.01 | DSC 337-Type 5 HH elevation conflict with curb ramp |  |  |  |  |  | none → MS-0025 | resources none → MBRT DSC [24 h] |
| 1-0563 | POUR CURB RAMP, SPRING AND 3RD NW CORNER |  |  |  |  |  |  | resources none → MBRT BASE [8 h] |
| 1-0564 | POUR SIDEWALKS, SPRING AND 3RD NW CORNER |  |  |  |  |  |  | resources none → MBRT BASE [24 h] |
| 1-0457 | REM SIDEWALK & GRADE, SPRING & 3RD TO 4TH SOUTH SIDE |  |  |  |  |  |  | resources none → MBRT BASE [16 h] |
| 1-0458 | POUR CURB RAMPS, SPRING & 3RD TO 4TH SOUTH SIDE |  |  |  |  |  |  | resources none → MBRT BASE [16 h] |
| 1-0459 | POUR SIDEWALK, SPRING & 3RD TO 4TH SOUTH SIDE |  |  |  |  |  |  | resources none → MBRT BASE [16 h] |
| PCO414.01 | DSC 304-8" Sidewalk SW 4th and Spring |  |  |  |  |  | none → MS-0025 | resources none → MBRT DSC [64 h] |
| PCO348.01 | DSC 257-Spring 4th-5th, Bus Foundation Conflict |  |  |  |  |  | none → MS-0025 | resources none → MBRT DSC [272 h] |
| 1-0461 | REM SIDEWALK, SPRING 4TH TO 5TH SOUTH SIDE |  |  |  |  |  |  | resources none → MBRT BASE [48 h] |
| 1-0464 | FORM FOUNDATIONS, SPRING 4TH TO 5TH SOUTH SIDE |  |  |  |  |  |  | resources none → MBRT BASE [8 h] |
| PCO354.01 | DSC 259-Type 5 Vault Conflicts 4th to 5th Spring |  |  |  |  |  | none → MS-0025 | resources none → MBRT DSC [16 h] |
| 1-0465 | POUR FOUNDATIONS, SPRING 4TH TO 5TH SOUTH SIDE |  |  |  |  |  |  | resources none → MBRT BASE [16 h] |
| 1-0462 | TRENCH CONDUIT, SPRING 4TH TO 5TH SOUTH SIDE |  |  |  |  |  |  | resources none → MBRT BASE [16 h] |
| 1-0463 | INSTALL CONDUIT, SPRING 4TH TO 5TH SOUTH SIDE |  |  |  |  |  |  | resources none → MBRT BASE [16 h] |
| 1-0467 | GRADE SIDEWALK, SPRING 4TH TO 5TH SOUTH SIDE |  |  |  |  |  |  | resources none → MBRT BASE [8 h] |
| 1-0469 | POUR STATION STEM WALL, SPRING 4TH TO 5TH SOUTH SIDE |  |  |  |  |  |  | resources none → MBRT BASE [16 h] |
| 1-0466 | POUR DRIVEWAY, SPRING 4TH TO 5TH SOUTH SIDE |  |  |  |  |  |  | resources none → MBRT BASE [64 h] |
| 1-0468 | POUR SIDEWALK, SPRING 4TH TO 5TH SOUTH SIDE |  |  |  |  |  |  | resources none → MBRT BASE [24 h] |
| 1-0484 | INSTALL WHEEL GUIDES |  |  |  |  |  |  | resources none → MBRT NEW [8 h] |
| PCO495.01 | DSC 354-Prime NW 4th and Spring HH |  |  |  |  |  | none → MS-0025 | resources none → MBRT DSC [320 h] |
| PCO497.01 | DSC 355-SCL Vault Conflict NW 4th and Spring |  |  |  |  |  | none → MS-0025 | resources none → MBRT DSC [8 h] |
| PCO498.01 | DSC 356-Old Light pole base NW 4th and Spring |  |  |  |  |  | none → MS-0025 | resources none → MBRT DSC [328 h] |

| ID | Task | Predecessors | Other |
| --- | --- | --- | --- |
| 1-0570 | REM SIDEWALK, SPRING & 4TH NW CORNER |  | resources none → MBRT BASE [8 h] |
| 1-1330 | CITY DELAY - SCL VAULT IN CONFLICT WITH SIDEWALK, SPRING & 4TH NW CORNER |  | resources none → MBRT NEW [8 h] |
| 1-0571 | POUR CURB RAMP, SPRING AND 4TH NW CORNER |  | resources none → MBRT BASE [8 h] |
| 1-0572 | POUR SIDEWALKS, SPRING AND 4TH NW CORNER |  | resources none → MBRT BASE |
| 1-0578 | REM SIDEWALK, SPRING & 5TH NE CORNER |  | resources none → MBRT BASE [8 h] |
| PCO557.01 | DSC 393-Existing Hydrant Leaking NE 5th and Spring | none → MS-0025 | resources none → MBRT DSC [88 h] |
| 1-1370 | CITY CAUSED DELAY - LEAKING HYDRANT |  | resources none → MBRT NEW [8 h] |
| 1-1375 | ADDITIONAL WORK - LEAKING HYDRANT |  | resources none → MBRT NEW [8 h] |
| 1-0579 | POUR CURB RAMP, SPRING AND 5TH NE CORNER |  | resources none → MBRT BASE [8 h] |
| 1-0580 | POUR SIDEWALKS, SPRING AND 5TH NE CORNER |  | resources none → MBRT BASE [16 h] |
| 1-0574 | REM SIDEWALK, SPRING & 5TH NW CORNER |  | resources none → MBRT BASE [8 h] |
| 1-0575 | POUR CURB RAMP, SPRING AND 5TH NW CORNER |  | resources none → MBRT BASE [8 h] |
| 1-0576 | POUR SIDEWALKS, SPRING AND 5TH NW CORNER |  | resources none → MBRT BASE [16 h] |
| 1-0471 | REM SIDEWALK & GRADE, SPRING 5TH TO 6TH |  | resources none → MBRT BASE [368 h] |
| 1-0472 | POUR SIDEWALK, SPRING 5TH TO 6TH |  | resources none → MBRT BASE [336 h] |
| 1-0582 | REM SIDEWALK, SPRING & 6TH NW CORNER |  | resources none → MBRT BASE [8 h] |
| 1-0583 | POUR CURB RAMP, SPRING AND 6TH NW CORNER |  | resources none → MBRT BASE [8 h] |
| 1-0584 | POUR SIDEWALKS, SPRING AND 6TH NW CORNER |  | resources none → MBRT BASE [8 h] |
| 1-0540 | REM SIDEWALK, SPRING 7TH TO 8TH SOUTH SIDE |  | resources none → MBRT BASE [16 h] |
| 1-0541 | TRENCH CONDUIT, SPRING 7TH TO 8TH SOUTH SIDE |  | resources none → MBRT BASE [16 h] |
| 1-0542 | INST CONDUIT, SPRING 7TH TO 8TH SOUTH SIDE |  | resources none → MBRT BASE [16 h] |
| 1-0543 | FORM FOUNDATIONS, SPRING 7TH TO 8TH SOUTH SIDE |  | resources none → MBRT BASE [8 h] |
| 1-0544 | POUR FOUNDATIONS, SPRING 7TH TO 8TH SOUTH SIDE |  | resources none → MBRT BASE [16 h] |
| 1-0545 | GRADE SIDEWALK, SPRING 7TH TO 8TH SOUTH SIDE |  | resources none → MBRT BASE [16 h] |
| 1-0560 | INSTALL WHEEL GUIDES |  | resources none → MBRT NEW [8 h] |
| 1-0546 | POUR SIDEWALK, SPRING 7TH TO 8TH SOUTH SIDE |  | resources none → MBRT BASE [32 h] |
| 1-2820 | CITY CAUSED DELAY, SPRING 7TH TO 8TH SOUTH SIDE |  | resources none → MBRT NEW |
| 1-2825 | TEMP LIGHTING, SPRING 7TH TO 8TH SOUTH SIDE |  | resources none → MBRT NEW [48 h] |
| 1-2830 | ELECTRICAL AFTER DELAY, SPRING 7TH TO 8TH SOUTH SIDE |  | resources none → MBRT NEW [16 h] |
| 1-2835 | SIDEWALK AFTER DELAY, SPRING 7TH TO 8TH SOUTH SIDE |  | resources none → MBRT NEW [16 h] |
| 1-0586 | REM SIDEWALK, SPRING & 7TH NE CORNER |  | resources none → MBRT BASE [8 h] |
| 1-0587 | POUR CURB RAMP, SPRING AND 7TH NE CORNER |  | resources none → MBRT BASE [8 h] |
| 1-0588 | POUR SIDEWALKS, SPRING AND 7TH NE CORNER |  | resources none → MBRT BASE [8 h] |
| 1-0590 | REM SIDEWALK, SPRING & 8TH NW CORNER |  | resources none → MBRT BASE [48 h] |
| 1-0591 | INST CONDUIT, SPRING & 8TH NW CORNER |  | resources none → MBRT BASE [8 h] |
| 1-0592 | POUR CURB RAMP, SPRING AND 8TH NW CORNER |  | resources none → MBRT BASE [16 h] |
| 1-0593 | POUR SIDEWALKS, SPRING AND 8TH NW CORNER |  | resources none → MBRT BASE [16 h] |
| 1-0595 | REM SIDEWALK, SPRING 8TH TO 9TH NORTH SIDE |  | resources none → MBRT BASE [16 h] |
| 1-0596 | TRENCH CONDUIT, SPRING 8TH TO 9TH NORTH SIDE |  | resources none → MBRT BASE [16 h] |
| 1-1350 | OWNER CAUSED DELAY SEWER DISCHARGING INTO TRENCH, SPRING 8TH TO 9TH NORTH SIDE |  | resources none → MBRT NEW [16 h] |
| PCO505.01 | DSC 361-NEC 8th & Spring Public Sewage Discharge | none → MS-0025 | resources none → MBRT DSC [8 h] |
| PCO509.01 | DSC 364-Bike Lane Curbs Spring 8th-9th | none → MS-0025 | resources none → MBRT DSC [208 h] |
| 1-0597 | INST CONDUIT, SPRING 8TH TO 9TH NORTH SIDE |  | resources none → MBRT BASE [32 h] |
| 1-1355 | OWNER CAUSED DELAY SCL INSPECTION SPRING 8TH TO 9TH NORTH SIDE |  | resources none → MBRT NEW [16 h] |
| 1-0598 | GRADE SIDEWALK, SPRING 8TH TO 9TH NORTH SIDE |  | resources none → MBRT BASE [8 h] |
| 1-0599 | POUR SIDEWALK, SPRING 8TH TO 9TH NORTH SIDE |  | resources none → MBRT BASE [56 h] |
| PCO553.01 | DSC 390-Prime Re-Work Conduits 7th and Mad and 9th and Spring | none → MS-0025 | resources none → MBRT DSC [8 h] |
| PCO340.01 | DSC 250-8th & Spring, CDF Ductbank Conflict | none → MS-0025 | resources none → MBRT DSC [96 h] |
| PCO341.01 | DSC 251-9th & Spring, SCL HH Size Conflict | none → MS-0025 | resources none → MBRT DSC [128 h] |
| PCO361.01 | DSC 262-FM 262 T5 Handhole conflict 8th and Spring | none → MS-0025 | resources none → MBRT DSC [16 h] |
| PCO362.01 | DSC 263-SW 8th and Spring wire note 13 not installed | none → MS-0025 | resources none → MBRT DSC [48 h] |
| PCO365.01 | DSC 266-Unknown Unlocated Gas line 8th and Spring | none → MS-0025 | resources none → MBRT DSC [8 h] |
| PCO366.01 | DSC 267-SCL Handhole Conflict 8th and Spring | none → MS-0025 | resources none → MBRT DSC [112 h] |
| 1-1235 | REM SIDEWALK, SPRING 8TH TO 9TH SOUTH SIDE |  | resources none → MBRT NEW [16 h] |
| 1-1240 | TRENCH CONDUIT, SPRING 8TH TO 9TH SOUTH SIDE |  | resources none → MBRT NEW [16 h] |
| 1-1245 | INST ELECTRICAL SERVICE CONNECTIONS, SPRING 8TH TO 9TH SOUTH SIDE |  | resources none → MBRT NEW [80 h] |
| 1-1260 | VAULT WORK, SPRING 8TH TO 9TH SOUTH SIDE |  | resources none → MBRT NEW [80 h] |
| 1-1265 | INSTALL FOUNDATION - P09-05, SPRING 8TH TO 9TH SOUTH SIDE |  | resources none → MBRT NEW [80 h] |
| PCO380.01 | DSC 277-Electrical Service Conflict SE 8th and Spring | none → MS-0025 | resources none → MBRT DSC [40 h] |
| PCO400.01 | DSC 292-Duct Bank conflict With Signal Controler SE 8th and Spring | none → MS-0025 | resources none → MBRT DSC [56 h] |
| PCO403.01 | DSC 294-Spring and 8th Prime DSC | none → MS-0025 | resources none → MBRT DSC [96 h] |
| 1-1250 | GRADE SIDEWALK, SPRING 8TH TO 9TH SOUTH SIDE |  | resources none → MBRT NEW [8 h] |
| 1-1255 | POUR RAMPS AND SIDEWALK, SPRING 8TH TO 9TH SOUTH SIDE |  | resources none → MBRT NEW [32 h] |
| 1-0474 | REM SIDEWALK & GRADE, SPRING & 6TH SE CORNER 1-5 ON-RAMP |  | resources none → MBRT BASE |
| 1-3145 | DELAY AWAITING SUBMITTAL RETURNS |  | resources none → MBRT NEW |
| 1-0475 | POUR CURB RAMPS, SPRING & 6TH SE CORNER 1-5 ON-RAMP |  | resources none → MBRT BASE |
| 1-0476 | POUR SIDEWALK, SPRING & 6TH SE CORNER 1-5 ON-RAMP |  | resources none → MBRT BASE |
| 1-0566 | REM SIDEWALK, SPRING & 3RD NE CORNER |  | resources none → MBRT BASE [8 h] |
| 1-0567 | INST CONDUIT, SPRING & 3RD NE CORNER |  | resources none → MBRT BASE [8 h] |
| 1-0568 | POUR SIDEWALKS, SPRING AND 3RD NE CORNER |  | resources none → MBRT BASE [24 h] |

| ID | Task | Start | Finish | Duration | Complete | Total float | Predecessors | Other |
| --- | --- | --- | --- | --- | --- | --- | --- | --- |
| 1-0427 | REM SIDEWALK, 1ST AVE SPRING TO MAD NB |  |  |  |  |  |  | resources none → MBRT BASE [8 h] |
| 1-0428 | EXCAVATE FOR BUS SHELTER FOOTINGS, 1ST AVE SPRING TO MAD NB |  |  |  |  |  |  | resources none → MBRT BASE [8 h] |
| 1-0429 | FORM FOOTINGS, 1ST AVE SPRING TO MAD NB |  |  |  |  |  |  | resources none → MBRT BASE [8 h] |
| 1-0430 | TRENCH CONDUIT, 1ST AVE SPRING TO MAD NB |  |  |  |  |  |  | resources none → MBRT BASE [8 h] |
| 1-0431 | INST CONDUIT, 1ST AVE SPRING TO MAD NB |  |  |  |  |  |  | resources none → MBRT BASE [8 h] |
| 1-0432 | INST REBAR, 1ST AVE SPRING TO MAD NB |  |  |  |  |  |  | resources none → MBRT BASE [8 h] |
| 1-0433 | POUR FOOTINGS, 1ST AVE SPRING TO MAD NB |  |  |  |  |  |  | resources none → MBRT BASE [8 h] |
| 1-0444 | DELAY DESIGN ISSUES, DSC-023/RFI-032 |  |  |  |  |  |  | resources none → MBRT DSC [1016 h] |
| 1-0434 | BF FOOTINGS, CONDUIT & GRADE SIDEWALK, 1ST AVE SPRING TO MAD NB |  |  |  |  |  |  | resources none → MBRT BASE [8 h] |
| 1-0435 | POUR CURB, 1ST AVE SPRING TO MAD NB |  |  |  |  |  |  | resources none → MBRT BASE [8 h] |
| 1-0436 | POUR SIDEWALK, 1ST AVE SPRING TO MAD NB |  |  |  |  |  |  | resources none → MBRT BASE [8 h] |
| 32 | **9TH SPRING TO MADISON EAST SIDE** |  | 2023-09-26 → 2024-04-24 (+211d) |  |  |  |  |  |
| DSC-580 | DSC 580 OFFSET FOUNDATION CONFLICTS |  | 2023-09-15 → 2023-11-29 A (+75d) | 26d → 76d | 8% → 100% | -111d → none | none → MS-0025 | resources none → MBRT DSC [608 h] |
| 1-0601 | REM SIDEWALK, 9TH SPRING TO MAD EASE SIDE | 2023-09-20 → 2023-12-19 A (+90d) | 2023-09-20 → 2023-12-22 A (+93d) |  | 0% → 100% | -113d → none | 1-0174, 1-0599, 1-0346, 1-0334, DSC-580 → 1-0174, 1-0599, 1-0346, 1-0334, DSC-580, 1-0342 | resources none → MBRT BASE [32 h] |
| 1-0602 | TRENCH CONDUIT, 9TH SPRING TO MAD EAST SIDE | 2023-09-21 → 2023-12-22 A (+92d) | 2023-09-21 → 2023-12-29 A (+99d) |  | 0% → 100% | -113d → none | 1-0601 → 1-0601, DSC-674 | was named TRENCH CONDUIT, 9TH SPRING TO MAD EASE SIDE; resources none → MBRT BASE [40 h] |
| 1-0603 | INST CONDUIT, 9TH SPRING TO MAD EAST SIDE | 2023-09-21 → 2024-01-02 A (+103d) | 2023-09-21 → 2024-04-22 (+214d) |  |  | -113d → -142d | 1-0602 SS → 1-0602 SS, DSC-672 SS, DSC-699 FF, DSC-696 FF, DSC-679 SS, DSC-677 SS, DSC-674 | was named INST CONDUIT, 9TH SPRING TO MAD EASE SIDE; resources none → MBRT BASE [336 h] |
| 1-0605 | POUR SIDEWALK, 9TH SPRING TO MAD EAST SIDE | 2023-09-25 → 2024-02-02 A (+130d) | 2023-09-26 → 2024-04-23 (+210d) |  |  | -113d → -142d | 1-0604, 1-7040 → 1-0604 FF, 1-7040, 1-0603 SS | was named POUR SIDEWALK, 9TH SPRING TO MAD EASE SIDE; resources none → MBRT BASE [160 h] |
| 1-0604 | GRADE SIDWALKS, 9TH SPRING TO MAD EAST SIDE | 2023-09-22 → 2024-04-23 (+214d) | 2023-09-22 → 2024-04-23 (+214d) |  |  | -113d → -142d | 1-0603 → 1-0603, DSC-672, DSC-677, DSC-696 | was named GRADE SIDWALKS, 9TH SPRING TO MAD EASE SIDE; resources none → MBRT BASE [8 h] |
| 20 | **9TH SPRING TO MADISON WEST SIDE** | 2023-09-22 → 2024-02-13 (+144d) | 2023-10-09 → 2024-04-17 (+191d) |  |  |  |  |  |
| 1-0548 | REM SIDEWALK, 9TH SPRING TO MAD WEST SIDE | 2023-09-22 → 2024-02-13 A (+144d) | 2023-09-26 → 2024-02-14 A (+141d) |  | 0% → 100% | -113d → none | 1-0424, 1-0150, 1-0545, 1-0538, 1-2800, 1-0453, 1-0605 FF → 1-0424, 1-0150, 1-0545, 1-0538, 1-2800, 1-0453, 1-0453 FF | resources none → MBRT BASE [16 h] |
| 1-0549 | TRENCH CONDUIT, 9TH SPRING TO MAD WEST SIDE | 2023-09-27 → 2024-02-14 A (+140d) | 2023-09-28 → 2024-02-23 A (+148d) |  | 0% → 100% | -113d → none |  | resources none → MBRT BASE [56 h] |
| 1-0550 | INST CONDUIT, 9TH SPRING TO MAD WEST SIDE | 2023-09-27 → 2024-02-27 A (+153d) | 2023-09-28 → 2024-04-08 (+193d) |  |  | -113d → -138d | 1-0549 SS → 1-0549 SS, DSC-703 FF, DSC-707 FF, DSC-709, DSC-710 FF | resources none → MBRT BASE [32 h] |
| 1-0551 | GRADE SIDEWALK, 9TH SPRING TO MAD WEST SIDE | 2023-09-29 → 2024-04-09 (+193d) | 2023-09-29 → 2024-04-09 (+193d) |  |  | -113d → -138d | 1-0550 → 1-0550, DSC-707 | resources none → MBRT BASE [8 h] |
| 1-0552 | POUR SIDEWALK, 9TH SPRING TO MAD WEST SIDE | 2023-10-02 → 2024-04-10 (+191d) | 2023-10-09 → 2024-04-17 (+191d) |  |  | -113d → -138d |  | resources none → MBRT BASE [48 h] |
| 33 | **SPRING AND 9TH NE CORNER** | 2023-09-27 → 2024-01-05 (+100d) | 2023-10-02 → 2024-02-06 (+127d) |  |  |  |  |  |
| 1-0607 | REM SIDEWALK, SPRING & 9TH NE CORNER | 2023-09-27 → 2024-01-05 A (+100d) | 2023-09-27 → 2024-01-08 A (+103d) |  | 0% → 100% | -108d → none | 1-0605, 1-0593, 1-2835 → 1-0593, 1-2835 | resources none → MBRT BASE [16 h] |
| 1-0608 | INST CONDUIT, SPRING & 9TH NE CORNER | 2023-09-28 → 2024-01-09 A (+103d) | 2023-09-28 → 2024-02-02 A (+127d) |  | 0% → 100% | -108d → none |  | resources none → MBRT BASE [144 h] |
| 1-0609 | POUR CURB RAMP, SPRING AND 9TH NE CORNER | 2023-09-29 → 2024-02-05 A (+129d) | 2023-09-29 → 2024-02-05 A (+129d) |  | 0% → 100% | -108d → none | 1-0608 → 1-0608, DSC-687, DSC-684 | resources none → MBRT BASE [8 h] |
| 1-0610 | POUR SIDEWALKS, SPRING AND 9TH NE CORNER | 2023-10-02 → 2024-02-06 A (+127d) | 2023-10-02 → 2024-02-06 A (+127d) |  | 0% → 100% | -108d → none |  | resources none → MBRT BASE [8 h] |
| 1-0478 | REM SIDEWALK, MAD & 1ST SW CORNER |  |  |  |  |  |  | resources none → MBRT BASE [4 h] |
| 1-0480 | INST CONDUIT, MAD & 1ST SW CORNER |  |  |  |  |  |  | resources none → MBRT BASE [24 h] |
| 1-0479 | TRENCH CONDUIT, MAD & 1ST SW CORNER |  |  |  |  |  |  | resources none → MBRT BASE [4 h] |
| 1-0491 | DSC 153 - SCL VAULT CONFLICT |  |  |  |  |  |  | resources none → MBRT DSC [1784 h] |
| 1-0481 | GRADE SIDEWALK, MAD & 1ST SW CORNER |  |  |  |  |  |  | resources none → MBRT BASE [8 h] |
| 1-0482 | POUR CURB RAMPS, MAD & 1ST SW CORNER |  |  |  |  |  |  | resources none → MBRT BASE [16 h] |
| 1-2780 | OWNER CAUSED DELAY-SCL DID NOT COMPLETE VAULT |  |  |  |  |  |  | resources none → MBRT NEW [16 h] |
| 1-0483 | POUR SIDEWALK, MAD & 1ST SW CORNER |  |  |  |  |  |  | resources none → MBRT BASE [8 h] |
| 10 | **MADISON AND 1ST NW CORNER** |  | 2023-09-22 → 2024-02-22 (+153d) |  |  |  |  |  |
| 1-0510 | DE:LAY - City Won't Allow During MLB All-Star |  |  |  |  |  |  | resources none → MBRT NEW [40 h] |
| 1-0485 | REM SIDEWALK, MAD & 1ST NW CORNER |  |  |  |  |  |  | resources none → MBRT BASE [8 h] |
| 1-0486 | TRENCH CONDUIT, MAD & 1ST NW CORNER |  |  |  |  |  |  | resources none → MBRT BASE [4 h] |
| DSC-582 | DSC 582 HH REPLACEMENT CONFLICT |  | 2023-09-15 → 2024-02-13 A (+151d) | 5d → 127d | 0% → 100% | -43d → none |  | resources none → MBRT DSC [1016 h] |
| 1-0487 | INST CONDUIT, MAD & 1ST NW CORNER | 2023-09-18 → 2024-02-13 A (+148d) | 2023-09-18 → 2024-02-13 A (+148d) |  | 0% → 100% | -43d → none |  | resources none → MBRT BASE [8 h] |
| 1-0488 | GRADE SIDEWALK, MAD & 1ST NW CORNER | 2023-09-19 → 2024-02-13 A (+147d) | 2023-09-19 → 2024-02-13 A (+147d) |  | 0% → 100% | -43d → none |  | resources none → MBRT BASE [8 h] |
| 1-0489 | POUR CURB RAMPS, MAD & 1ST NW CORNER | 2023-09-20 → 2024-02-21 A (+154d) | 2023-09-21 → 2024-02-21 A (+153d) |  | 0% → 100% | -43d → none |  | resources none → MBRT BASE [8 h] |
| 1-0490 | POUR SIDEWALK, MAD & 1ST NW CORNER | 2023-09-22 → 2024-02-22 A (+153d) | 2023-09-22 → 2024-02-22 A (+153d) |  | 0% → 100% | -43d → none |  | resources none → MBRT BASE [8 h] |
| 1-3285 | Remove Roadway Panel 1ST NE CORNER |  |  |  |  |  | none → 1-2935 | constraint start on or after 2023-06-13 → none; resources none → MBRT NEW [8 h] |
| 1-3295 | DSC 520 - Unlocated Storm Line COnflict |  |  |  |  |  |  | resources none → MBRT DSC [8 h] |
| 1-3290 | Form & Pour Roadway Panel 1ST NE CORNER |  |  |  |  |  |  | resources none → MBRT NEW [16 h] |
| 1-3255 | REM SIDEWALK, MAD & 1ST NE CORNER |  |  |  |  |  |  | resources none → MBRT NEW [8 h] |
| 1-3300 | DSC 528 - Extra Thick Sidewalk |  |  |  |  |  |  | resources none → MBRT DSC [8 h] |
| 1-3260 | TRENCH CONDUIT, MAD & 1ST NE CORNER |  |  |  |  |  |  | resources none → MBRT NEW [8 h] |
| 1-3305 | DSC 530 - Unknown Unloacted Conduits |  |  |  |  |  |  | resources none → MBRT DSC [24 h] |
| 1-3265 | INST ELECTRICAL MAD & 1ST NE CORNER |  |  |  |  |  |  | resources none → MBRT NEW [48 h] |
| 1-3270 | GRADE SIDEWALK, MAD & 1ST NE CORNER |  |  |  |  |  |  | resources none → MBRT NEW [8 h] |
| 1-3275 | POUR CURB RAMPS, MAD & 1ST NE CORNER |  |  |  |  |  |  | resources none → MBRT NEW [16 h] |
| 1-3280 | POUR SIDEWALK, MAD & 1ST NE CORNER |  |  |  |  |  |  | resources none → MBRT NEW [8 h] |
| 43 | **MADISON AND 1ST SE CORNER** | 2023-08-14 → 2023-08-16 (+2d) | 2023-09-07 → 2024-04-04 (+210d) |  |  |  |  |  |
| 1-0663 | REMOVE BRICK, MAD AND 1ST SE CORNER | 2023-08-14 → 2023-08-16 A (+2d) | 2023-08-14 → 2023-08-18 A (+4d) |  | 0% → 100% | -7d → none |  | resources none → MBRT BASE [24 h] |
| 1-0678 | DSC 589 Non Standard MH Adjustment/SCL Vault | 2023-08-14 → 2023-08-16 A (+2d) | 2023-08-25 → 2024-02-13 A (+172d) | 10d → 123d | 0% → 100% | -7d → none |  | resources none → MBRT DSC [984 h] |
| 1-0683 | DSC 593 SEC 1st and Mad Unknown Unlocated Conduits | 2023-08-15 → 2023-08-17 A (+2d) | 2023-08-28 → 2024-02-13 A (+169d) | 10d → 122d | 0% → 100% | -7d → none |  | resources none → MBRT DSC [976 h] |
| 1-0688 | DSC 592 Concrete Cast Into SCL HH | 2023-08-16 → 2023-08-18 A (+2d) | 2023-08-29 → 2024-02-13 A (+168d) | 10d → 121d | 0% → 100% | -7d → none |  | resources none → MBRT DSC [968 h] |
| 1-0664 | INST ELLECTRICAL, MAD & 1ST SE CORNER | 2023-08-30 → 2024-02-14 A (+168d) | 2023-08-31 → 2024-02-20 A (+173d) |  | 0% → 100% | -7d → none |  | resources none → MBRT BASE [32 h] |
| 1-0665 | POUR CURB RAMP, MAD & 1ST SE CORNER | 2023-09-01 → 2024-02-21 A (+173d) | 2023-09-01 → 2024-02-21 A (+173d) |  | 0% → 100% | -7d → none |  | resources none → MBRT BASE [8 h] |
| 1-0666 | INST BRICK PAVERS, MAD & 1ST SE CORNER | 2023-09-05 → 2024-04-02 (+210d) | 2023-09-07 → 2024-04-04 (+210d) |  |  | -7d → -99d |  | resources none → MBRT BASE [24 h] |
| PCO018.01 | DSC 11-ITS Conflict Madison and 2nd NW Corner |  |  |  |  |  | none → MS-0025 | resources none → MBRT DSC [1168 h] |
| 1-0492 | REM SIDEWALK, MAD 1ST TO 2ND NORTH SIDE |  |  |  |  |  |  | resources none → MBRT BASE [16 h] |
| 1-0493 | TRENCH CONUIT, MAD 1ST TO 2ND NORTH SIDE |  |  |  |  |  |  | resources none → MBRT BASE [8 h] |
| 1-0494 | INST CONDUIT, MAD 1ST TO 2ND NORTH SIDE |  |  |  |  |  |  | resources none → MBRT BASE [8 h] |
| 1-0495 | GRADE SIDEWALK, MAD 1ST TO 2ND NORTH SIDE |  |  |  |  |  |  | resources none → MBRT BASE [8 h] |

| ID | Task | Start | Finish | Duration | Complete | Total float | Predecessors | Other |
| --- | --- | --- | --- | --- | --- | --- | --- | --- |
| 1-0496 | POUR SIDEWALK, MAD 1ST TO 2ND NORTH SIDE |  |  |  |  |  |  | resources none → MBRT BASE [24 h] |
| 44 | **MADISON AND 2ND SW CORNER** |  | 2023-08-23 → 2024-04-10 (+231d) |  |  |  |  |  |
| 1-0668 | REM SIDEWALK, MAD & 2ND SW CORNER |  |  |  |  |  |  | resources none → MBRT BASE [8 h] |
| 1-1290 | DSC; VAULT LID |  | 2023-08-18 → 2023-11-06 A (+80d) |  | 0% → 100% | -22d → none |  | resources none → MBRT DSC [2200 h] |
| 1-0669 | INST CONDUIT, MAD & 2ND SW CORNER | 2023-08-21 → 2024-02-26 A (+189d) | 2023-08-21 → 2024-03-08 A (+200d) | 1d → 15d | 0% → 100% | -22d → none | 1-0668, 1-1290 → 1-0668, 1-1290, 1-0794, DSC-680 SS, DSC-680 FF | resources none → MBRT BASE [40 h] |
| 1-0670 | POUR CURB RAMP, MAD & 2ND SW CORNER | 2023-08-22 → 2024-04-09 (+231d) | 2023-08-22 → 2024-04-09 (+231d) |  |  | -22d → -102d | 1-0669 → 1-0669, DSC-717, DSC-UPO, DSC-737, DSC-729 FF, DSC-720 | resources none → MBRT BASE [8 h] |
| 1-0671 | POUR SIDEWALK, MAD & 2ND SW CORNER | 2023-08-23 → 2024-04-10 (+231d) | 2023-08-23 → 2024-04-10 (+231d) |  |  | -22d → -102d | 1-0670 → 1-0670, 1-0490, 1-0666 | resources none → MBRT BASE [8 h] |
| 1-0498 | REM SIDEWALK, MAD & 2ND TO 3RD NORTH SIDE |  |  |  |  |  |  | resources none → MBRT BASE [8 h] |
| 1-0499 | TRENCH CONDUIT, MAD & 2ND TO 3RD NORTH SIDE |  |  |  |  |  |  | resources none → MBRT BASE [16 h] |
| 1-0500 | INTALL CONDUIT, MAD & 2ND TO 3RD NORTH SIDE |  |  |  |  |  |  | resources none → MBRT BASE [16 h] |
| 1-0501 | FORM FOUNDATIONS, MAD & 2ND TO 3RD NORTH SIDE |  |  |  |  |  |  | resources none → MBRT BASE [32 h] |
| 1-0502 | POUR FOUNDATIONS, MAD & 2ND TO 3RD NORTH SIDE |  |  |  |  |  |  | resources none → MBRT BASE [16 h] |
| 1-0503 | GRADE SIDEWALK, MAD & 2ND TO 3RD NORTH SIDE |  |  |  |  |  |  | resources none → MBRT BASE [8 h] |
| 1-0504 | POUR SIDEWALK, MAD & 2ND TO 3RD NORTH SIDE |  |  |  |  |  |  | resources none → MBRT BASE [216 h] |
| 1-0505 | POUR STATION STEM WALL, MAD & 2ND TO 3RD NORTH SIDE |  |  |  |  |  |  | resources none → MBRT BASE [8 h] |
| 1-0506 | INSTALL WHEEL GUIDES |  |  |  |  |  |  | resources none → MBRT NEW [8 h] |
| 1-0673 | REM SIDEWALK, MAD 2ND TO 3RD SOUTH SIDE |  |  |  |  |  |  | resources none → MBRT BASE [16 h] |
| 1-0674 | TRENCH CONDUIT, MAD 2ND TO 3RD SOUTH SIDE |  |  |  |  |  |  | resources none → MBRT BASE [16 h] |
| 1-0675 | INST CONDUIT, MAD 2ND TO 3RD SOUTH SIDE |  |  |  |  |  |  | resources none → MBRT BASE [24 h] |
| PCO276.01 | DSC 202-ITS Conduit SW Corner 3rd and Madison |  |  |  |  |  | none → MS-0025 | resources none → MBRT DSC [56 h] |
| 1-1200 | MULTIPLE CONDUIT CONFLICT DSC'S MAD 2ND TO 3RD SOUTH SIDE |  |  |  |  |  |  | resources none → MBRT DSC [56 h] |
| PCO283.01 | DSC 208-Prime - Conduit Depths SW 3rd & Madison |  |  |  |  |  | none → MS-0025 | resources none → MBRT DSC [40 h] |
| 1-0676 | GRADE SIDEWALK, MAD 2ND TO 3RD SOUTH SIDE |  |  |  |  |  |  | resources none → MBRT BASE [8 h] |
| 1-0677 | POUR SIDEWALK, MAD 2ND TO 3RD SOUTH SIDE |  |  |  |  |  |  | resources none → MBRT BASE [16 h] |
| PCO316.01 | DSC 233-Duct Bank conflict SE Corner 2nd and Madison |  |  |  |  |  | none → MS-0025 | resources none → MBRT DSC [160 h] |
| 13 | **MADISON 3RD TO 4TH NORTH SIDE** | 2023-09-25 → 2023-11-14 (+50d) | 2023-10-02 → 2023-12-15 (+74d) |  |  |  |  |  |
| 1-0507 | REM SIDEWALK, MAD 3RD TO 4TH NORTH SIDE | 2023-09-25 → 2023-11-14 A (+50d) | 2023-09-26 → 2023-11-17 A (+52d) |  | 0% → 100% | -43d → none | 1-0129, 1-0503, 1-0490, 1-1420, 1-0671 → 1-0129, 1-0503, 1-1420 | resources none → MBRT BASE [32 h] |
| 1-0508 | GRADE SIDEWALK, MAD 3RD TO 4TH NORTH SIDE | 2023-09-27 → 2023-12-11 A (+75d) | 2023-09-27 → 2023-12-11 A (+75d) |  | 0% → 100% | -43d → none | 1-0507 → 1-0507, 1-0573 | resources none → MBRT BASE [8 h] |
| 1-0509 | POUR SIDEWALK, MAD 3RD TO 4TH NORTH SIDE | 2023-09-28 → 2023-12-12 A (+75d) | 2023-10-02 → 2023-12-15 A (+74d) |  | 0% → 100% | -43d → none |  | resources none → MBRT BASE [32 h] |
| 14 | **MADISON AND 3RD TO 4TH DRIVEWAY** | 2023-09-30 → 2023-12-08 (+69d) | 2023-10-01 → 2023-12-10 (+70d) |  |  |  |  |  |
| 1-0511 | REM SIDEWALK, MAD & 3RD TO 4TH DRIVEWAY | 2023-09-30 → 2023-12-08 A (+69d) | 2023-09-30 → 2023-12-08 A (+69d) |  | 0% → 100% | -18d → none | 1-0504 SS, 1-0509 SS+1d → 1-0504 SS | resources none → MBRT BASE [8 h] |
| 1-0512 | POUR CURB RAMP, MAD & 3RD TO 4TH DRIVEWAY | 2023-09-30 → 2023-12-09 A (+70d) | 2023-09-30 → 2023-12-10 A (+71d) |  | 0% → 100% | -18d → none |  | resources none → MBRT BASE |
| 1-0513 | POUR SIDEWALK, MAD & 3RD TO 4TH DRIVEWAY | 2023-10-01 → 2023-12-09 A (+69d) | 2023-10-01 → 2023-12-10 A (+70d) |  | 0% → 100% | -18d → none |  | resources none → MBRT BASE |
| 46 | **MADISON 3RD TO 4TH SOUTH SIDE** | 2023-10-03 → 2023-10-11 (+8d) | 2023-10-11 → 2023-10-31 (+20d) |  |  |  |  |  |
| 1-0679 | REM SIDEWALK, MAD 3RD TO 4TH SOUTH SIDE | 2023-10-03 → 2023-10-11 A (+8d) | 2023-10-03 → 2023-10-17 A (+14d) |  | 0% → 100% | -41d → none | 1-0677, 1-0509, 1-0222, 1-0513 → 1-0677, 1-0222 | resources none → MBRT BASE [40 h] |
| 1-0680 | TRENCH CONDUIT, MAD 3RD TO 4TH SOUTH SIDE | 2023-10-04 → 2023-10-12 A (+8d) | 2023-10-05 → 2023-10-17 A (+12d) |  | 0% → 100% | -41d → none |  | resources none → MBRT BASE [32 h] |
| 1-0681 | INST CONDUIT, MAD 3RD TO 4TH SOUTH SIDE | 2023-10-04 → 2023-10-12 A (+8d) | 2023-10-05 → 2023-10-20 A (+15d) |  | 0% → 100% | -41d → none |  | resources none → MBRT BASE [56 h] |
| 1-0682 | POUR SIDEWALK, MAD 3RD TO 4TH SOUTH SIDE | 2023-10-06 → 2023-10-20 A (+14d) | 2023-10-11 → 2023-10-31 A (+20d) |  | 0% → 100% | -41d → none | 1-0681 → 1-0681, 1-0709 | resources none → MBRT BASE [64 h] |
| 47 | **MADISON AND 4TH SE CORNER** | 2023-10-12 → 2023-10-27 (+15d) | 2023-10-20 → 2023-11-09 (+20d) |  |  |  |  |  |
| 1-0684 | REM SIDEWALK, MAD & 4TH SE CORNER | 2023-10-12 → 2023-10-27 A (+15d) | 2023-10-13 → 2023-10-27 A (+14d) |  | 0% → 100% | -26d → none | 1-0682 → 1-0682 SS | resources none → MBRT BASE [8 h] |
| 1-0685 | INST CONDUIT, MAD & 4TH SE CORNER | 2023-10-16 → 2023-10-30 A (+14d) | 2023-10-17 → 2023-10-30 A (+13d) |  | 0% → 100% | -26d → none |  | resources none → MBRT BASE [8 h] |
| 1-0686 | POUR CURB RAMP, MAD & 4TH SE CORNER | 2023-10-18 → 2023-10-31 A (+13d) | 2023-10-19 → 2023-10-31 A (+12d) |  | 0% → 100% | -26d → none |  | resources none → MBRT BASE [8 h] |
| 1-0687 | POUR SIDEWALK, MAD & 4TH SE CORNER | 2023-10-20 → 2023-11-07 A (+18d) | 2023-10-20 → 2023-11-09 A (+20d) |  | 0% → 100% | -26d → none |  | resources none → MBRT BASE [24 h] |
| PCO530.01 | DSC 376-NE Madison and 5th Streetlight pole |  |  |  |  |  | none → MS-0025 | resources none → MBRT DSC [8 h] |
| 1-0515 | REM SIDEWALK, MAD & 5TH NW CORNER |  |  |  |  |  |  | resources none → MBRT BASE [8 h] |
| PCO542.01 | DSC 382-Drainpipe Conflict at NW Corner 5th and Mad |  |  |  |  |  | none → MS-0025 | resources none → MBRT DSC [8 h] |
| 1-0516 | GRADE SIDEWALK, MAD & 5TH NW CORNER |  |  |  |  |  |  | resources none → MBRT BASE [8 h] |
| 1-1345 | SCL VAULT LID ADJUTMENT EXTRA WORK, MAD & 5TH NW CORNER |  |  |  |  |  |  | resources none → MBRT NEW [8 h] |
| 1-0517 | POUR SIDEWALK, MAD AND 5TH NW CORNER |  |  |  |  |  |  | resources none → MBRT BASE [16 h] |
| 64 | **MADISON AND 5TH NE CORNER** |  | 2023-08-31 → 2023-11-14 (+75d) |  |  |  |  |  |
| PCO530.1 | MULTIPLE DSC'S |  |  |  |  |  |  | resources none → MBRT DSC [1840 h] |
| 1-3025 | INSTALL FOUNDATION DESIGN CHANGE |  | 2023-08-14 A |  | 0% → 100% | 15d → none |  | resources none → MBRT NEW [160 h] |
| 1-3030 | TRENCH CONDUIT, MAD & 5TH NE CORNER | 2023-08-23 → 2023-10-19 A (+57d) | 2023-08-23 → 2023-10-24 A (+62d) |  | 0% → 100% | 9d → none |  | resources none → MBRT NEW [8 h] |
| 1-3035 | INSTALL CONDUIT, MAD & 5TH NE CORNER | 2023-08-24 → 2023-10-25 A (+62d) | 2023-08-24 → 2023-10-30 A (+67d) |  | 0% → 100% | 9d → none |  | resources none → MBRT NEW [8 h] |
| 1-3010 | GRADE SIDEWALK, MAD & 5TH NE CORNER | 2023-08-25 → 2023-11-08 A (+75d) | 2023-08-25 → 2023-11-08 A (+75d) |  | 0% → 100% | 9d → none |  | resources none → MBRT NEW [8 h] |
| 1-3040 | POUR CURB RAMPS, MAD AND 5TH NE CORNER | 2023-08-28 → 2023-11-09 A (+73d) | 2023-08-30 → 2023-11-09 A (+71d) |  | 0% → 100% | 9d → none |  | resources none → MBRT NEW [24 h] |
| 1-3015 | POUR SIDEWALK, MAD AND 5TH NE CORNER | 2023-08-31 → 2023-11-10 A (+71d) | 2023-08-31 → 2023-11-14 A (+75d) |  | 0% → 100% | 9d → none | 1-3010, 1-3040 → 1-3010, 1-3040, 1-0687 | resources none → MBRT NEW [8 h] |
| 1-0689 | REM SIDEWALK, MAD & 5TH SW CORNER |  |  |  |  |  |  | resources none → MBRT BASE [8 h] |
| 1-0690 | INST CONDUIT, MAD & 5TH SW CORNER |  |  |  |  |  |  | resources none → MBRT BASE [8 h] |
| 1-0691 | POUR CURB RAMP, MAD & 5TH SW CORNER |  |  |  |  |  |  | resources none → MBRT BASE |
| 1-0692 | POUR SIDEWALK, MAD & 5TH SW CORNER |  |  |  |  |  |  | resources none → MBRT BASE [8 h] |
| 49 | **MADISON AND 5TH SE CORNER** | 2023-09-01 → 2023-10-24 (+53d) | 2023-09-07 → 2023-11-16 (+70d) |  |  |  |  |  |
| 1-0694 | REMOVE SIDEWALK, MAD AND 5 SE CORNER | 2023-09-01 → 2023-10-24 A (+53d) | 2023-09-01 → 2023-10-26 A (+55d) |  | 0% → 100% | 9d → none | 1-0692, 1-3015, 1-0222 → 1-0692, 1-0222 | resources none → MBRT BASE [24 h] |
| 1-0695 | INST CONDUIT, MAD AND 5 SE CORNER | 2023-09-05 → 2023-10-27 A (+52d) | 2023-09-05 → 2023-11-13 A (+69d) |  | 0% → 100% | 9d → none |  | resources none → MBRT BASE [88 h] |
| 1-0696 | POUR CURB RAMP, MAD AND 5 SE CORNER | 2023-09-06 → 2023-11-14 A (+69d) | 2023-09-06 → 2023-11-15 A (+70d) |  | 0% → 100% | 9d → none |  | resources none → MBRT BASE [16 h] |
| 1-0697 | POUR SIDEWALKS, MAD AND 5 SE CORNER | 2023-09-07 → 2023-11-16 A (+70d) | 2023-09-07 → 2023-11-16 A (+70d) |  | 0% → 100% | 9d → none |  | resources none → MBRT BASE [8 h] |
| 1-0519 | REM SIDEWALK, MAD 5TH TO 6TH NORTH SIDE |  |  |  |  |  |  | resources none → MBRT BASE [8 h] |
| 1-0520 | TRENCH CONDUIT, MAD 5TH TO 6TH NORTH SIDE |  |  |  |  |  |  | resources none → MBRT BASE [16 h] |
| 1-0521 | INTALL CONDUIT, MAD 5TH TO 6TH NORTH SIDE |  |  |  |  |  |  | resources none → MBRT BASE [16 h] |
| PCO301.01 | DSC 222-CDF and unknown conduit Madison 5th to 6th |  |  |  |  |  | none → MS-0025 | resources none → MBRT DSC [16 h] |

| ID | Task | Start | Finish | Complete | Total float | Predecessors | Other |
| --- | --- | --- | --- | --- | --- | --- | --- |
| 1-0522 | FORM FOUNDATIONS, MAD 5TH TO 6TH NORTH SIDE |  |  |  |  |  | resources none → MBRT BASE [16 h] |
| 1-0523 | POUR FOUNDATIONS, MAD 5TH TO 6TH NORTH SIDE |  |  |  |  |  | resources none → MBRT BASE [16 h] |
| 1-0524 | GRADE SIDEWALK, MAD 5TH TO 6TH NORTH SIDE |  |  |  |  |  | resources none → MBRT BASE [40 h] |
| PCO328.01 | DSC 242-5th type 5 HH Prime |  |  |  |  | none → MS-0025 | resources none → MBRT DSC [184 h] |
| 1-0525 | POUR SIDEWALK, MAD 5TH TO 6TH NORTH SIDE |  |  |  |  |  | resources none → MBRT BASE [176 h] |
| 1-0526 | POUR STATION STEM WALL, MAD 5TH TO 6TH NORTH SIDE |  |  |  |  |  | resources none → MBRT BASE [8 h] |
| PCO540.01 | DSC 380-NW Corner 6th and Mad Existing Type 5 Conduit Conflict |  |  |  |  | none → MS-0025 | resources none → MBRT DSC [24 h] |
| PCO558.01 | DSC 394-SCL Sevice Conflicts NW 6th and Madison |  |  |  |  | none → MS-0025 | resources none → MBRT DSC [648 h] |
| 1-2935 | COMPLETE SIDEWALK AFTER DSC 394 |  |  |  |  |  | resources none → MBRT DSC [8 h] |
| 1-0565 | INSTALL WHEEL GUIDES |  |  |  |  |  | resources none → MBRT NEW [8 h] |
| 50 | **MADISON AND 6TH SW CORNER** | 2023-09-08 → 2023-12-07 (+90d) | 2023-09-13 → 2024-02-01 (+141d) |  |  |  |  |
| 1-0699 | REM SIDEWALK, MAD & 6TH SW CORNER | 2023-09-08 → 2023-12-07 A (+90d) | 2023-09-08 → 2023-12-08 A (+91d) | 0% → 100% | 56d → none |  | resources none → MBRT BASE [16 h] |
| 1-0700 | INST CONDUIT, MAD & 6TH SW CORNER | 2023-09-11 → 2023-12-14 A (+94d) | 2023-09-11 → 2023-12-22 A (+102d) | 0% → 100% | 56d → none | 1-0699 → 1-0699, 1-0834, 1-0844 FF | resources none → MBRT BASE [56 h] |
| 1-0701 | POUR CURB RAMP, MAD & 6TH SW CORNER | 2023-09-12 → 2023-12-26 A (+105d) | 2023-09-12 → 2023-12-26 A (+105d) | 0% → 100% | 56d → none |  | resources none → MBRT BASE [8 h] |
| 1-0702 | POUR SIDEWALK, MAD & 6TH SW CORNER | 2023-09-13 → 2024-02-01 A (+141d) | 2023-09-13 → 2024-02-01 A (+141d) | 0% → 100% | 56d → none | 1-0701 → 1-0701, 1-3015, 1-0509, 1-1004 | resources none → MBRT BASE [8 h] |
| 1-3045 | MULTIPLE DSC'S, MAD & 6TH SW CORNER |  |  |  |  |  | resources none → MBRT DSC [1496 h] |
| 1-3065 | TRENCH CONDUIT, MAD & 6TH SW CORNER |  |  |  |  |  | resources none → MBRT NEW [8 h] |
| 1-3050 | INST CONDUIT, MAD & 6TH SW CORNER |  |  |  |  |  | resources none → MBRT NEW [8 h] |
| 1-3070 | GRADE SIDEWALK, MAD & 6TH SW CORNER |  |  |  |  |  | resources none → MBRT NEW [8 h] |
| PCO672.01 | DSC 475-SCL VAULT LID TOO HIGH |  |  |  |  |  | resources none → MBRT DSC [240 h] |
| 1-3075 | Regrade After Vault Lid |  |  |  |  |  | resources none → MBRT NEW [8 h] |
| 1-3110 | Delay - Judge Hearings |  |  |  |  |  | resources none → MBRT NEW [16 h] |
| 1-3055 | POUR CURB RAMP, MAD & 6TH SW CORNER |  |  |  |  |  | resources none → MBRT NEW [8 h] |
| 1-3060 | POUR SIDEWALK, MAD & 6TH SW CORNER |  |  |  |  |  | resources none → MBRT NEW [8 h] |
| 1-2785 | REM SIDEWALK, MADISON AND 7TH NE CORNER |  |  |  |  |  | resources none → MBRT NEW [8 h] |
| PCO634.1 | DSC 445-BURIED STEEL POLE |  |  |  |  |  | resources none → MBRT DSC [8 h] |
| 1-2805 | REM POLE |  |  |  |  |  | resources none → MBRT NEW [8 h] |
| 1-2810 | REM POLE FOUNDATION |  |  |  |  |  | resources none → MBRT NEW [8 h] |
| 1-2815 | GRADE SIDEWALK, MADISON AND 7TH NE CORNER |  |  |  |  |  | resources none → MBRT NEW [8 h] |
| 1-2795 | POUR CURB RAMP, MADISON AND 7TH NE CORNER |  |  |  |  |  | resources none → MBRT NEW [8 h] |
| 1-2800 | POUR SIDEWALK, MADISON AND 7TH NE CORNER |  |  |  |  |  | resources none → MBRT NEW [8 h] |
| 1-0528 | REM SIDEWALK, MAD 7TH TO 8TH NORTH SIDE |  |  |  |  |  | resources none → MBRT BASE [16 h] |
| PCO508.01 | DSC 363-7th & Madison unloacted fiber conflict |  |  |  |  | none → MS-0025 | resources none → MBRT DSC [24 h] |
| 1-0529 | TRENCH CONDUIT, MAD 7TH TO 8TH NORTH SIDE |  |  |  |  |  | resources none → MBRT BASE [16 h] |
| 1-0530 | INST CONDUIT, MAD 7TH TO 8TH NORTH SIDE |  |  |  |  |  | resources none → MBRT BASE [96 h] |
| 1-0531 | GRADE SIDEWALK, MAD 7TH TO 8TH NORTH SIDE |  |  |  |  |  | resources none → MBRT BASE [32 h] |
| 1-0532 | POUR SIDEWALK, MAD 7TH TO 8TH NORTH SIDE |  |  |  |  |  | resources none → MBRT BASE [40 h] |
| 1-0704 | REM SIDEWALK, MAD 7TH TO 8TH SOUTH SIDE |  |  |  |  |  | resources none → MBRT BASE [32 h] |
| 1-0705 | TRENCH CONDUIT, MAD 7TH TO 8TH SOUTH SIDE |  |  |  |  |  | resources none → MBRT BASE [16 h] |
| 1-0706 | INST CONDUIT, MAD 7TH TO 8TH SOUTH SIDE |  |  |  |  |  | resources none → MBRT BASE [136 h] |
| 1-0707 | GRADE SIDEWALK, MAD 7TH TO 8TH SOUTH SIDE |  |  |  |  |  | resources none → MBRT BASE [24 h] |
| 1-0708 | POUR SIDEWALK, MAD 7TH TO 8TH SOUTH SIDE |  |  |  |  |  | resources none → MBRT BASE [48 h] |
| 1-0534 | REM SIDEWALK, MAD 8TH TO 9TH NORTH SIDE |  |  |  |  |  | resources none → MBRT BASE [16 h] |
| PCO520.01 | DSC 372-Conduit change 8th to 9th Mad to accomidate comcast |  |  |  |  | none → MS-0025 | resources none → MBRT DSC [112 h] |
| 1-0535 | TRENCH CONDUIT, MAD 8TH TO 9TH NORTH SIDE |  |  |  |  |  | resources none → MBRT BASE [16 h] |
| 1-0536 | INST CONDUIT, MAD 8TH TO 9TH NORTH SIDE |  |  |  |  |  | resources none → MBRT BASE [40 h] |
| PCO532.01 | DSC 377-Madison and 8th Handholes in ped path |  |  |  |  | none → MS-0025 | resources none → MBRT DSC [16 h] |
| 1-0537 | GRADE SIDEWALK, MAD 8TH TO 9TH NORTH SIDE |  |  |  |  |  | resources none → MBRT BASE [24 h] |
| 1-0538 | POUR SIDEWALK, MAD 8TH TO 9TH NORTH SIDE |  |  |  |  |  | resources none → MBRT BASE [56 h] |
| PCO564.01 | DSC 398-NW 9th and Madison Curb Ramp Field Fit HH Conflict |  |  |  |  | none → MS-0025 | resources none → MBRT DSC [8 h] |
| 1-0710 | REM SIDEWALK, MAD 8TH TO 9TH SOUTH SIDE |  |  |  |  |  | resources none → MBRT BASE [160 h] |
| 1-0711 | TRENCH CONDUIT, MAD 8TH TO 9TH SOUTH SIDE |  |  |  |  |  | resources none → MBRT BASE [168 h] |
| 1-0712 | INST CONDUIT, MAD 8TH TO 9TH SOUTH SIDE |  |  |  |  |  | resources none → MBRT BASE [144 h] |
| 1-2010 | CITY CAUSED DELAY LIGHT POLE FOUNDATION CONFLICT |  |  |  |  |  | resources none → MBRT NEW [16 h] |
| 1-0713 | GRADE SIDEWALK, MAD 8TH TO 9TH SOUTH SIDE |  |  |  |  |  | resources none → MBRT BASE [16 h] |
| PCO626.01 | DSC-BRICKS FALLING OFF BURNT BUILDING |  |  |  |  | none → MS-0025 | resources none → MBRT DSC [16 h] |
| 1-0714 | POUR SIDEWALK, MAD 8TH TO 9TH SOUTH SIDE |  |  |  |  |  | resources none → MBRT BASE [64 h] |
| 1-3225 | REM SIDEWALK |  |  |  |  |  | resources none → MBRT NEW [16 h] |
| 1-3230 | TRENCH CONDUIT |  |  |  |  |  | resources none → MBRT NEW [16 h] |
| PCO698.01 | DSC 500-COMCAST HH NOT TO GRADE |  |  |  |  | none → MS-0025 | resources none → MBRT DSC [24 h] |
| 1-3235 | INST CONDUIT |  |  |  |  |  | resources none → MBRT NEW [16 h] |
| 1-3250 | FM 545 HH REMOVAL |  |  |  |  |  | resources none → MBRT NEW [32 h] |
| 1-3240 | GRADE SIDEWALK |  |  |  |  |  | resources none → MBRT NEW [16 h] |
| 1-3245 | POUR SIDEWALK |  |  |  |  |  | resources none → MBRT NEW [32 h] |
| 1-3195 | REM SIDEWALK |  |  |  |  |  | resources none → MBRT NEW [16 h] |
| 1-3200 | TRENCH CONDUIT |  |  |  |  |  | resources none → MBRT NEW [16 h] |
| 1-3205 | INST CONDUIT |  |  |  |  |  | resources none → MBRT NEW [24 h] |
| 1-3210 | GRADE SIDEWALK |  |  |  |  |  | resources none → MBRT NEW [16 h] |
| 1-3215 | POUR SIDEWALK |  |  |  |  |  | resources none → MBRT NEW [48 h] |
| 1-3080 | REM SIDEWALK, MADISON & 9TH SW CORNER |  |  |  |  |  | resources none → MBRT NEW [8 h] |

| ID | Task | Start | Finish | Complete | Total float | Predecessors | Other |
| --- | --- | --- | --- | --- | --- | --- | --- |
| 1-3100 | TRENCH CONDUIT, MADISON & 9TH SW CORNER |  |  |  |  |  | resources none → MBRT NEW [8 h] |
| PCO635.01 | DSC 446-LIVE CONDUIT |  |  |  |  | none → MS-0025 | resources none → MBRT DSC [8 h] |
| 1-3085 | INST CONDUIT, MADISON & 9TH SW CORNER |  |  |  |  |  | resources none → MBRT NEW [8 h] |
| 1-3105 | GRADE SIDEWALKS, MADISON AND 9TH SW CORNER |  |  |  |  |  | resources none → MBRT NEW [8 h] |
| 1-3090 | POUR CURB RAMP, MADISON AND 9TH SW CORNER |  |  |  |  |  | resources none → MBRT NEW [8 h] |
| 1-3095 | POUR SIDEWALKS, MADISON AND 9TH SW CORNER |  |  |  |  |  | resources none → MBRT NEW [8 h] |
| 1-3115 | REM SIDEWALK, MADISON & 9TH SE CORNER |  |  |  |  |  | resources none → MBRT NEW [8 h] |
| PCO650.01 | DSC 459-LEAKING WATER SERVICE |  |  |  |  |  | resources none → MBRT DSC [8 h] |
| 1-3135 | TRENCH CONDUIT, MADISON & 9TH SE CORNER |  |  |  |  |  | resources none → MBRT NEW [8 h] |
| PCO652.01 | DSC 460-OLD STREETLIGHT POLE CONFLICT |  |  |  |  |  | resources none → MBRT DSC [8 h] |
| PCO653.01 | DSC 461-SIDE SEWER CONFLICT WITH SIGNAL CABINET |  |  |  |  |  | resources none → MBRT DSC [16 h] |
| PCO654.01 | DSC 462-STEAMLINE CONFLICT WITH CONDUIT |  |  |  |  |  | resources none → MBRT DSC [8 h] |
| 1-3120 | INST CONDUIT, MADISON & 9TH SE CORNER |  |  |  |  |  | resources none → MBRT NEW [8 h] |
| 1-3140 | GRADE SIDEWALKS, MADISON & 9TH SE CORNER |  |  |  |  |  | resources none → MBRT NEW [8 h] |
| 1-3130 | POUR SIDEWALKS, MADISON & 9TH SE CORNER |  |  |  |  |  | resources none → MBRT NEW [8 h] |
| 21 | **DRIVEWAYS 9TH SPRING TO MADISON WEST SIDE** | 2023-10-14 → 2024-04-20 (+189d) | 2023-10-14 → 2024-04-20 (+189d) |  |  |  |  |
| 1-0554 | REM SIDEWALK, DRIVEWAYS 9TH SPRING TO MAD WEST SIDE | 2023-10-14 → 2024-04-20 (+189d) | 2023-10-14 → 2024-04-20 (+189d) |  | -47d → -31d | 1-0550, 1-0552, 1-3130 → 1-0550, 1-0552, 1-3130, 1-0513 | resources none → MBRT BASE [8 h] |
| 1-0555 | POUR DRIVEWAYS, DRIVEWAYS 9TH SPRING TO MAD WEST SIDE | 2023-10-14 → 2024-04-20 (+189d) | 2023-10-14 → 2024-04-20 (+189d) |  | -47d → -31d |  | resources none → MBRT BASE [8 h] |
| 1-0557 | REM SIDEWALK, SPRING & 1ST NE CORNER |  |  |  |  |  | resources none → MBRT BASE [8 h] |
| 1-0577 | DSC 518 - Unknown Conduit Conflicts |  |  |  |  |  | resources none → MBRT DSC [312 h] |
| 1-0617 | DSC 519 - Unmarked Conduits |  |  |  |  |  | resources none → MBRT DSC [312 h] |
| 1-0558 | INST CONDUIT, SPRING & 1ST NE CORNER |  | 2023-08-18 A | 0% → 100% | -32d → none |  | resources none → MBRT BASE [80 h] |
| 1-0559 | POUR SIDEWALK, SPRING AND 1ST NE CORNER | 2023-08-21 A | 2023-08-22 A | 0% → 100% | -32d → none |  | resources none → MBRT BASE [16 h] |
| PCO367.01 | DSC 268-Water Valve Vault Conflict with Confuid 9th to Terry North |  |  |  |  | none → MS-0025 | resources none → MBRT DSC [24 h] |
| PCO370.01 | DSC 269-Unlocated comm line 9th to Terry North side |  |  |  |  | none → MS-0025 | resources none → MBRT DSC [88 h] |
| PCO371.01 | DSC 271-Water meter Conflict 9th to Terry North |  |  |  |  | none → MS-0025 | resources none → MBRT DSC [184 h] |
| PCO373.01 | DSC 270-Unlocated Com Line Terry North side |  |  |  |  | none → MS-0025 | resources none → MBRT DSC [280 h] |
| PCO374.01 | DSC 272-Electrical Vault Lid NE Terry & Madison |  |  |  |  | none → MS-0025 | resources none → MBRT DSC [88 h] |
| PCO375.01 | DSC 273-Unlocated, Cut Conduit on NE Terry & Madison |  |  |  |  | none → MS-0025 | resources none → MBRT DSC [72 h] |
| PCO382.01 | DSC 278-Multiple conduit conflicts Terry and Madison |  |  |  |  | none → MS-0025 | resources none → MBRT DSC [8 h] |
| PCO384.01 | DSC 280-Unlocated Conduit Terry & Madison |  |  |  |  | none → MS-0025 | resources none → MBRT DSC [256 h] |
| PCO385.01 | DSC 281-Unlocated Gas Lines Terry & Madison |  |  |  |  | none → MS-0025 | resources none → MBRT DSC [8 h] |
| 1-0612 | REMOVE SIDEWALK, 9TH TO TERRY NORTH SIDE |  |  |  |  |  | resources none → MBRT BASE [16 h] |
| 1-0613 | TRENCH CONDUIT, 9TH TO TERRY NORTH SIDE |  |  |  |  |  | resources none → MBRT BASE [24 h] |
| 1-0614 | INST CONDUIT, 9TH TO TERRY NORTH SIDE |  |  |  |  |  | resources none → MBRT BASE [24 h] |
| PCO397.01 | DSC 289-Zao Conduit Conflict with Pavement Terry and Madison |  |  |  |  | none → MS-0025 | resources none → MBRT DSC [32 h] |
| 1-1270 | MULTIPLE DSC'S |  |  |  |  |  | resources none → MBRT DSC [128 h] |
| 1-0615 | GRADE SIDEWALK, 9TH TO TERRY NORTH SIDE |  |  |  |  |  | resources none → MBRT BASE [16 h] |
| 1-0616 | POUR SIDEWALK, 9TH TO TERRY NORTH SIDE |  |  |  |  |  | resources none → MBRT BASE [96 h] |
| 53 | **MADISON 9TH TO TERRY SOUTH SIDE** | 2023-10-16 → 2023-05-09 (-160d) | 2023-10-30 → 2023-05-23 (-160d) |  |  |  |  |
| 1-0716 | REM SIDEWALK, MAD 9TH TO TERRY SOUTH SIDE | 2023-10-16 → 2023-05-09 A (-160d) | 2023-10-17 → 2023-05-10 A (-160d) | 0% → 100% | -116d → none | 1-0713, 1-0234, 1-0555 → 1-0713, 1-0234 | resources none → MBRT BASE [16 h] |
| 1-0717 | TRENCH CONDUIT, MAD 9TH TO TERRY SOUTH SIDE | 2023-10-18 → 2023-05-11 A (-160d) | 2023-10-19 → 2023-05-12 A (-160d) | 0% → 100% | -116d → none |  | resources none → MBRT BASE [16 h] |
| 1-0718 | INST CONDUIT, MAD 9TH TO TERRY SOUTH SIDE | 2023-10-18 → 2023-05-11 A (-160d) | 2023-10-19 → 2023-05-12 A (-160d) | 0% → 100% | -116d → none |  | resources none → MBRT BASE [16 h] |
| 1-0719 | GRADE SIDEWALK, MAD 9TH TO TERRY SOUTH SIDE | 2023-10-20 → 2023-05-15 A (-158d) | 2023-10-23 → 2023-05-16 A (-160d) | 0% → 100% | -116d → none |  | resources none → MBRT BASE [16 h] |
| 1-0720 | POUR SIDEWALK, MAD 9TH TO TERRY SOUTH SIDE | 2023-10-24 → 2023-05-17 A (-160d) | 2023-10-30 → 2023-05-23 A (-160d) | 0% → 100% | -116d → none |  | resources none → MBRT BASE [40 h] |
| PCO405.01 | DSC 296-Old Foundation NW Terry |  |  |  |  | none → MS-0025 | resources none → MBRT DSC [120 h] |
| PCO409.01 | DSC 299-Design Bust NW Terry |  |  |  |  | none → MS-0025 | resources none → MBRT DSC [8 h] |
| 1-0618 | REM SIDEWALK, TERRY TO BOREN NORTH SIDE |  |  |  |  |  | resources none → MBRT BASE [72 h] |
| 1-0619 | TRENCH CONDUIT, TERRY TO BOREN NORTH SIDE |  |  |  |  |  | resources none → MBRT BASE [80 h] |
| 1-0620 | INST CONDUIT, TERRY TO BOREN NORTH SIDE |  |  |  |  |  | resources none → MBRT BASE [80 h] |
| PCO550.01 | DSC 387-Delapitated water service Terry to Boren |  |  |  |  | none → MS-0025 | resources none → MBRT DSC [8 h] |
| PCO551.01 | DSC 388-Delapitated side sewer alley Terry to Boren |  |  |  |  | none → MS-0025 | resources none → MBRT DSC [8 h] |
| 1-0621 | GRADE SIDEWALK, TERRY TO BOREN NORTH SIDE |  |  |  |  |  | resources none → MBRT BASE [40 h] |
| 1-0622 | POUR SIDEWALK, TERRY TO BOREN NORTH SIDE |  |  |  |  |  | resources none → MBRT BASE [80 h] |
| 1-1380 | CITY CAUSED DELAY - NE TERRY DESIGN ISSUES |  |  |  |  |  | resources none → MBRT NEW [16 h] |
| 1-1385 | FINISH ELECTRICAL AFTER DELAY |  |  |  |  |  | resources none → MBRT NEW [48 h] |
| 1-2710 | CITY CAUSED DELAY - AWAITING COMCAST AND SDOT TO COMPLETE ELECTRICAL |  |  |  |  |  | resources none → MBRT NEW |
| 1-2715 | COMPLETE ELECTRICAL AFTER COMCAST DELAY |  |  |  |  |  | resources none → MBRT NEW [16 h] |
| 1-2840 | DELAY HH ADJUSTMENT AWAITING SCL |  |  |  |  |  | resources none → MBRT NEW |
| 1-2845 | ADJUST HH |  |  |  |  |  | resources none → MBRT NEW [16 h] |
| 1-1390 | GRADE REMAINING SIDEWALKS AFTER DELAY |  |  |  |  |  | resources none → MBRT NEW [16 h] |
| PCO676.01 | DSC 479-COMCAST HH TOO LOW |  |  |  |  |  | resources none → MBRT DSC [16 h] |
| 1-3150 | RAISE COMCAST HH |  |  |  |  |  | resources none → MBRT NEW [16 h] |
| 1-1395 | POUR REMAINING SIDEWALKS AND RAMPS AFTER DELAY |  |  |  |  |  | resources none → MBRT NEW [24 h] |
| 1-0624 | REM SIDEWALK, DRIVEWAYS TERRY TO BOREN NORTH SIDE |  |  |  |  |  | resources none → MBRT BASE [8 h] |
| 1-0625 | POUR DRIVEWAY, DRIVEWAYS TERRY TO BOREN NORTH SIDE |  |  |  |  |  | resources none → MBRT BASE [8 h] |
| PCO398.01 | DSC 290-Pole Foundation under Sidewalk NW Minor |  |  |  |  | none → MS-0025 | resources none → MBRT DSC [32 h] |
| 1-0627 | REM SIDEWALK, BOREN TO MINOR NORTH SIDE |  |  |  |  |  | resources none → MBRT BASE [24 h] |
| 1-1275 | TREE ROOT OBSTRUCTIONS |  |  |  |  |  | resources none → MBRT NEW [24 h] |
| 1-0628 | TRENCH CONDUIT, BOREN TO MINOR NORTH SIDE |  |  |  |  |  | resources none → MBRT BASE [24 h] |

| ID | Task | Start | Finish | Complete | Total float | Predecessors | Other |
| --- | --- | --- | --- | --- | --- | --- | --- |
| 1-0629 | INST CONDUIT, BOREN TO MINOR NORTH SIDE |  |  |  |  |  | resources none → MBRT BASE [24 h] |
| 1-0630 | GRADE SIDEWALK, BOREN TO MINOR NORTH SIDE |  |  |  |  |  | resources none → MBRT BASE [16 h] |
| 1-0631 | POUR SIDEWALK, BOREN TO MINOR NORTH SIDE |  |  |  |  |  | resources none → MBRT BASE [48 h] |
| 38 | **BOREN MADISON TO SPRING WEST SIDE** | 2023-08-21 → 2023-10-02 (+42d) | 2023-09-05 → 2023-11-15 (+71d) |  |  |  |  |
| 1-0633 | REM SIDEWALK, BOREN MAD TO SPRING WEST SIDE | 2023-08-21 → 2023-10-02 A (+42d) | 2023-08-22 → 2023-10-02 A (+41d) | 0% → 100% | 246d → none |  | resources none → MBRT BASE [8 h] |
| 1-0634 | TRENCH CONDUIT, BOREN MAD TO SPRING WEST SIDE | 2023-08-23 → 2023-10-03 A (+41d) | 2023-08-24 → 2023-10-17 A (+54d) | 0% → 100% | 246d → none |  | resources none → MBRT BASE [88 h] |
| 1-0635 | INST CONDUIT, BOREN MAD TO SPRING WEST SIDE | 2023-08-23 → 2023-10-12 A (+50d) | 2023-08-24 → 2023-11-03 A (+71d) | 0% → 100% | 246d → none |  | resources none → MBRT BASE [136 h] |
| 1-0636 | GRADE SIDEWALK, BOREN MAD TO SPRING WEST SIDE | 2023-08-25 → 2023-11-10 A (+77d) | 2023-08-25 → 2023-11-14 A (+81d) | 0% → 100% | 246d → none | 1-0635 → 1-0635, 1-0656 | resources none → MBRT BASE [16 h] |
| 1-0637 | POUR SIDEWALK, BOREN MAD TO SPRING WEST SIDE | 2023-08-28 → 2023-11-13 A (+77d) | 2023-09-05 → 2023-11-15 A (+71d) | 0% → 100% | 246d → none |  | resources none → MBRT BASE [16 h] |
| 39 | **BOREN MADISON TO SPRING EAST SIDE** | 2023-09-06 → 2023-11-30 (+85d) | 2023-09-19 → 2024-01-05 (+108d) |  |  |  |  |
| 1-0639 | REM SIDEWALK, BOREN MAD TO SPRING EAST SIDE | 2023-09-06 → 2023-11-30 A (+85d) | 2023-09-07 → 2023-12-01 A (+85d) | 0% → 100% | 246d → none |  | resources none → MBRT BASE [16 h] |
| 1-0640 | TRENCH CONDUIT, BOREN MAD TO SPRING EAST SIDE | 2023-09-08 → 2023-12-04 A (+87d) | 2023-09-11 → 2023-12-05 A (+85d) | 0% → 100% | 246d → none |  | resources none → MBRT BASE [16 h] |
| 1-0641 | INST CONDUIT, BOREN MAD TO SPRING EAST SIDE | 2023-09-08 → 2023-12-06 A (+89d) | 2023-09-11 → 2023-12-14 A (+94d) | 0% → 100% | 246d → none |  | resources none → MBRT BASE [56 h] |
| 1-0642 | GRADE SIDEWALK, BOREN MAD TO SPRING EAST SIDE | 2023-09-12 → 2023-12-15 A (+94d) | 2023-09-12 → 2023-12-19 A (+98d) | 0% → 100% | 246d → none |  | resources none → MBRT BASE [24 h] |
| 1-0643 | POUR SIDEWALK, BOREN MAD TO SPRING EAST SIDE | 2023-09-13 → 2023-12-20 A (+98d) | 2023-09-19 → 2024-01-05 A (+108d) | 0% → 100% | 246d → none |  | resources none → MBRT BASE [88 h] |
| 1-0645 | REM SIDEWALK, MINOR TO SUMMIT NORTH SIDE |  |  |  |  |  | resources none → MBRT BASE [176 h] |
| 1-0646 | TRENCH CONDUIT, MINOR TO SUMMIT NORTH SIDE |  |  |  |  |  | resources none → MBRT BASE [160 h] |
| 1-0647 | INST CONDUIT, MINOR TO SUMMIT NORTH SIDE |  |  |  |  |  | resources none → MBRT BASE [320 h] |
| 1-0648 | GRADE SIDEWALK, MINOR TO SUMMIT NORTH SIDE |  |  |  |  |  | resources none → MBRT BASE [8 h] |
| 1-0649 | POUR SIDEWALK, MINOR TO SUMMIT NORTH SIDE |  |  |  |  |  | resources none → MBRT BASE [24 h] |
| 1-0651 | REM SIDEWALK, SUMMIT TO BOYLSON NORTH SIDE |  |  |  |  |  | constraint start on or after 2023-06-07 → none; resources none → MBRT BASE [8 h] |
| 1-0652 | TRENCH CONDUIT, SUMMIT TO BOYLSON NORTH SIDE |  |  |  |  |  | resources none → MBRT BASE [8 h] |
| 1-0653 | INST CONDUIT, SUMMIT TO BOYLSON NORTH SIDE |  |  |  |  |  | resources none → MBRT BASE [8 h] |
| 1-0654 | GRADE SIDEWALK, SUMMIT TO BOYLSON NORTH SIDE |  |  |  |  |  | resources none → MBRT BASE [8 h] |
| 1-0655 | POUR SIDEWALK, SUMMIT TO BOYLSON NORTH SIDE |  |  |  |  |  | resources none → MBRT BASE [8 h] |
| 1-0722 | REM SIDEWALK, TERRY TO BOREN SOUTH SIDE |  |  |  |  |  | resources none → MBRT BASE [16 h] |
| 1-0723 | TRENCH CONDUIT, TERRY TO BOREN SOUTH SIDE |  |  |  |  |  | resources none → MBRT BASE [80 h] |
| 1-0724 | INST CONDUIT, TERRY TO BOREN SOUTH SIDE |  |  |  |  |  | resources none → MBRT BASE [24 h] |
| 1-0725 | GRADE SIDEWALK, TERRY TO BOREN SOUTH SIDE |  |  |  |  |  | resources none → MBRT BASE [16 h] |
| 1-0726 | POUR SIDEWALK, TERRY TO BOREN SOUTH SIDE |  |  |  |  |  | resources none → MBRT BASE [48 h] |
| 55 | **BOREN TO MINOR SOUTH SIDE** |  | 2023-08-30 → 2023-09-20 (+21d) |  |  |  |  |
| PCO644.01 | DSC 454-SIDE SEWER CONFLICT WITH POLE 40W-107-7 |  |  |  |  | none → MS-0025 | resources none → MBRT DSC [392 h] |
| 1-3155 | RE-ROUTE SIDE SEWER |  |  |  |  |  | resources none → MBRT NEW [8 h] |
| PCO644.06 | INSTALL POLE FOUNDATIONS |  |  |  |  |  | resources none → MBRT NEW [40 h] |
| 1-0728 | REM SIDEWALK, BOREN TO MINOR SOUTH SIDE | 2023-08-14 A | 2023-08-15 A | 0% → 100% | -68d → none |  | resources none → MBRT BASE [16 h] |
| 1-0729 | TRENCH CONDUIT, BOREN TO MINOR SOUTH SIDE | 2023-08-16 A | 2023-08-18 A | 0% → 100% | -68d → none |  | resources none → MBRT BASE [24 h] |
| 1-0730 | INST CONDUIT, BOREN TO MINOR SOUTH SIDE | 2023-08-16 → 2023-08-21 A (+5d) | 2023-08-18 → 2023-09-01 A (+14d) | 0% → 100% | -68d → none | 1-0729 SS → 1-0729 SS, 1-0745 SS, 1-0845 FF | resources none → MBRT BASE [80 h] |
| 1-0731 | GRADE SIDEWALK, BOREN TO MINOR SOUTH SIDE | 2023-08-21 → 2023-09-05 A (+15d) | 2023-08-22 → 2023-09-08 A (+17d) | 0% → 100% | -68d → none | 1-0730 → 1-0730, 1-0745 | resources none → MBRT BASE [32 h] |
| 1-0732 | POUR SIDEWALK, BOREN TO MINOR SOUTH SIDE | 2023-08-23 → 2023-09-11 A (+19d) | 2023-08-30 → 2023-09-20 A (+21d) | 0% → 100% | -68d → none |  | resources none → MBRT BASE [64 h] |
| 1-2850 | REM SIDEWALK, BOREN NE CORNER |  |  |  |  |  | resources none → MBRT NEW [16 h] |
| 1-2855 | TRENCH CONDUIT, BOREN NE CORNER |  |  |  |  |  | resources none → MBRT NEW [24 h] |
| 1-2900 | TREE ROOT OBSTRUCTIONS |  |  |  |  |  | resources none → MBRT NEW [16 h] |
| 1-2860 | INST CONDUIT, BOREN NE CORNER |  |  |  |  |  | resources none → MBRT NEW [24 h] |
| 1-2865 | GRADE SIDEWALK, BOREN NE CORNER |  |  |  |  |  | resources none → MBRT NEW [16 h] |
| 1-2870 | POUR SIDEWALK, BOREN NE CORNER |  |  |  |  |  | resources none → MBRT NEW [48 h] |
| 1-2910 | REM SIDEWALK, TERRY SW CORNER |  |  |  |  |  | resources none → MBRT NEW [16 h] |
| 1-2915 | TRENCH CONDUIT, TERRY SW CORNER |  |  |  |  |  | resources none → MBRT NEW [24 h] |
| 1-2920 | INST CONDUIT, TERRY SW CORNER |  |  |  |  |  | resources none → MBRT NEW [24 h] |
| 1-2925 | GRADE SIDEWALK, TERRY SW CORNER |  |  |  |  |  | resources none → MBRT NEW [16 h] |
| PCO668.01 | DSC 471-OLD LIGHT POLE FOUNDATION |  |  |  |  |  | resources none → MBRT DSC [8 h] |
| 1-2930 | POUR SIDEWALK, TERRY SW CORNER |  |  |  |  |  | resources none → MBRT NEW [48 h] |
| 1-2875 | REM SIDEWALK, MINOR NW CORNER |  |  |  |  |  | resources none → MBRT NEW [16 h] |
| 1-2880 | TRENCH CONDUIT, MINOR NW CORNER |  |  |  |  |  | resources none → MBRT NEW [24 h] |
| PCO606.01 | DSC 424-MULTIPLE CONFLICTS |  |  |  |  |  | resources none → MBRT DSC [312 h] |
| 1-2890 | GRADE SIDEWALK, MINOR NW CORNER |  |  |  |  |  | resources none → MBRT NEW [16 h] |
| PCO636.01 | DSC 447-EXISTING HH CONFLICT WITH CURB RAMP |  |  |  |  |  | resources none → MBRT DSC [80 h] |
| 1-2905 | CURB RAMPS, MINOR NW CORNER |  |  |  |  |  | resources none → MBRT NEW [48 h] |
| 1-2895 | POUR SIDEWALK, MINOR NW CORNER |  |  |  |  |  | resources none → MBRT NEW [48 h] |
| 1-0734 | REM SIDEWALK, MINOR TO SUMMIT SOUTH SIDE |  |  |  |  |  | resources none → MBRT BASE [40 h] |
| PCO684.01 | DSC 486-DUCT BANK CONFLICT WITH CONDUIT |  |  |  |  |  | resources none → MBRT DSC [16 h] |
| PCO695.01 | DSC 497-MINOR POLE PL 10-07 LOCATION CHANGE |  |  |  |  |  | resources none → MBRT DSC [8 h] |
| 1-0735 | TRENCH CONDUIT, MINOR TO SUMMIT SOUTH SIDE |  |  |  |  |  | resources none → MBRT BASE [16 h] |
| PCO696.01 | DSC 498-UKNOWN UNLOCATED CONDUIT |  |  |  |  |  | resources none → MBRT DSC [8 h] |
| 1-0736 | INST CONDUIT, MINOR TO SUMMIT SOUTH SIDE |  |  |  |  |  | resources none → MBRT BASE [88 h] |
| 1-0775 | DSC 514-NEC Minor Type 3R Conflict wWith Existing Utilities |  |  |  |  |  | resources none → MBRT DSC [8 h] |
| 1-0737 | GRADE SIDEWALK, MINOR TO SUMMIT SOUTH SIDE |  |  |  |  |  | resources none → MBRT BASE [16 h] |
| 1-0758 | Additional Spare Conduit Installation |  |  |  |  |  | resources none → MBRT NEW [8 h] |
| 1-0738 | POUR SIDEWALK, MINOR TO SUMMIT SOUTH SIDE |  |  |  |  |  | resources none → MBRT BASE [40 h] |
| 1-3160 | REM SIDEWALK, SUMMIT SW CORNER |  |  |  |  |  | resources none → MBRT NEW [8 h] |
| 1-3165 | TRENCH CONDUIT, SUMMIT SW CORNER |  |  |  |  |  | resources none → MBRT NEW [8 h] |

| ID | Task | Start | Finish | Duration | Complete | Total float | Predecessors | Other |
| --- | --- | --- | --- | --- | --- | --- | --- | --- |
| 1-3185 | INSTALL CONDUIT, SUMMIT SW CORNER |  |  |  |  |  |  | resources none → MBRT NEW [32 h] |
| 1-3170 | GRADE SIDEWALK, SUMMIT SW CORNER |  |  |  |  |  |  | resources none → MBRT NEW [8 h] |
| 1-3180 | CURB RAMPS, SUMMIT SW CORNER | 2023-08-14 A | 2023-08-15 A |  | 0% → 100% | -1d → none |  | resources none → MBRT NEW [16 h] |
| 1-3175 | POUR SIDEWALK, SUMMIT SW CORNER | 2023-08-16 A | 2023-08-16 A |  | 0% → 100% | -1d → none |  | resources none → MBRT NEW [8 h] |
| 72 | **SUMMIT SE CORNER TO ALLOW PED ACCESS** |  | 2023-08-17 → 2023-08-16 (-1d) |  |  |  |  |  |
| 1-3310 | REM SIDEWALK, SUMMIT SE CORNER |  |  |  |  |  |  | resources none → MBRT NEW [8 h] |
| 1-3315 | TRENCH CONDUIT, SUMMIT SE CORNER |  |  |  |  |  |  | resources none → MBRT NEW [8 h] |
| 1-3335 | INSTALL CONDUIT, SUMMIT SE CORNER |  |  |  |  |  |  | resources none → MBRT NEW [32 h] |
| DSC-554 | DSC 554 POLE 40E-776-7 CONFLICT |  |  | 5d → 16d |  |  |  | resources none → MBRT DSC [128 h] |
| 1-3320 | GRADE SIDEWALK, SUMMIT SE CORNER |  |  |  |  |  |  | resources none → MBRT NEW [8 h] |
| 1-3330 | CURB RAMPS, SUMMIT SE CORNER | 2023-08-14 A | 2023-08-15 A |  | 0% → 100% | 0d → none |  | resources none → MBRT NEW [16 h] |
| 1-3325 | POUR SIDEWALK, SUMMIT SE CORNER | 2023-08-17 → 2023-08-16 A (-1d) | 2023-08-17 → 2023-08-16 A (-1d) |  | 0% → 100% | -1d → none |  | resources none → MBRT NEW [8 h] |
| PCO466.01 | DSC 338-Existing Conduit Boyleston alley |  |  |  |  |  | none → MS-0025 | resources none → MBRT DSC [8 h] |
| 1-0657 | REM SIDEWALK, BOYLSTON TO BROADWAY NORTH SIDE |  |  |  |  |  |  | resources none → MBRT BASE [24 h] |
| 1-0658 | TRENCH CONDUIT, BOYLSTON TO BROADWAY NORTH SIDE |  |  |  |  |  |  | resources none → MBRT BASE [24 h] |
| 1-0659 | INST CONDUIT, BOYLSTON TO BROADWAY NORTH SIDE |  |  |  |  |  |  | resources none → MBRT BASE [104 h] |
| 1-0660 | GRADE SIDEWALK, BOYLSTON TO BROADWAY NORTH SIDE |  |  |  |  |  |  | resources none → MBRT BASE [8 h] |
| 1-0661 | POUR SIDEWALK, BOYLSTON TO BROADWAY NORTH SIDE |  |  |  |  |  |  | resources none → MBRT BASE [40 h] |
| 1-0740 | REM SIDEWALK, SUMMIT TO BOYLSTON SOUTH SIDE |  |  |  |  |  |  | resources none → MBRT BASE [8 h] |
| 1-0741 | TRENCH CONDUIT, SUMMIT TO BOYLSTON SOUTH SIDE |  |  |  |  |  |  | resources none → MBRT BASE [8 h] |
| 1-0742 | INST CONDUIT, SUMMIT TO BOYLSTON SOUTH SIDE |  |  |  |  |  |  | resources none → MBRT BASE [8 h] |
| 1-0743 | GRADE SIDEWALK, SUMMIT TO BOYLSTON SOUTH SIDE |  |  |  |  |  |  | resources none → MBRT BASE [8 h] |
| 1-0744 | POUR SIDEWALK, SUMMIT TO BOYLSTON SOUTH SIDE |  |  |  |  |  |  | resources none → MBRT BASE [8 h] |
| 75 | **SW BOYLESTON** |  | 2023-08-28 → 2024-01-05 (+130d) |  |  |  |  |  |
| 1-9089 | REMOVE SIDEWALK |  |  |  |  |  |  | resources none → MBRT NEW [8 h] |
| 1-9090 | TRENCH ELECTRICAL |  |  |  |  |  |  | resources none → MBRT NEW [8 h] |
| DSC-551 | DSC 551 CONDUIT CONFLICT WITH FOUNDATION |  | 2023-07-12 A → 2023-08-23 A (+42d) | 5d → 36d |  |  |  | resources none → MBRT DSC [288 h] |
| 1-9091 | INSTALL ELECTRICAL |  | 2023-08-22 A |  | 0% → 100% | -7d → none |  | resources none → MBRT NEW [24 h] |
| 1-9092 | GRADE SIDEWALKS | 2023-08-23 → 2023-12-05 A (+104d) | 2023-08-23 → 2023-12-05 A (+104d) |  | 0% → 100% | -7d → none | 1-9091, DSC-551 → 1-9091, DSC-551, 1-9096, 1-9101 FF, 1-9106, 1-9101 | resources none → MBRT NEW [8 h] |
| 1-9093 | CURB RAMPS | 2023-08-24 → 2023-12-22 A (+120d) | 2023-08-25 → 2023-12-26 A (+123d) |  | 0% → 100% | -7d → none | 1-9092 → 1-9092, 1-9097 | resources none → MBRT NEW [16 h] |
| 1-9094 | SIDEWALKS | 2023-08-28 → 2023-12-27 A (+121d) | 2023-08-28 → 2024-01-05 A (+130d) |  | 0% → 100% | -7d → none |  | resources none → MBRT NEW [8 h] |
| 1-0746 | REM SIDEWALK, BOYLSTON TO BW SOUTH SIDE |  |  |  |  |  |  | resources none → MBRT BASE [8 h] |
| DSC-555 | DSC 555 SEC BOYLESTON MULTIPLE CONFLICTS |  |  | 5d → 1d |  |  |  | resources none → MBRT DSC [8 h] |
| DSC-557 | DSC 557 PS POLE CONFLICT WITH CONDUITS |  |  | 5d → 1d |  |  |  | resources none → MBRT DSC [8 h] |
| 1-0747 | TRENCH CONDUIT, BOYLSTON TO BW SOUTH SIDE |  |  |  |  |  |  | resources none → MBRT BASE [8 h] |
| 1-0748 | INST CONDUIT, BOYLSTON TO BW SOUTH SIDE |  |  |  |  |  |  | resources none → MBRT BASE [40 h] |
| 1-0749 | GRADE SIDEWALK, BOYLSTON TO BW SOUTH SIDE |  |  |  |  |  |  | resources none → MBRT BASE [24 h] |
| 1-0750 | POUR SIDEWALK, BOYLSTON TO BW SOUTH SIDE |  |  |  |  |  |  | resources none → MBRT BASE [16 h] |
| 9 | **MILLING AND PAVING** |  | 2023-09-15 → 2024-04-25 (+223d) |  |  |  |  |  |
| 1-0752 | MILL SPRING 1ST TO 6TH, MILLING & PAVING |  |  |  |  |  |  | resources none → MBRT BASE [32 h] |
| 1-0753 | MILL SPRING 6TH TO 9TH, MILLING & PAVING |  |  |  |  |  |  | resources none → MBRT BASE [32 h] |
| 1-0754 | MILL MAD 1ST TO 6TH, MILLING & PAVING |  |  |  |  |  |  | resources none → MBRT BASE [32 h] |
| DSC-561 | DSC 561 SINK HOLE |  |  | 5d → 11d |  |  |  | resources none → MBRT DSC [88 h] |
| 1-0756 | PREP FOR PAVING, MILLING AND PAVING |  |  |  |  |  |  | resources none → MBRT BASE [72 h] |
| 1-0757 | PAVE SPRING 1ST TO 9TH, MADISON 1ST TO 3RD, 7TH MADISON TO SPRING AND 6TH MADISON TO SPRING |  |  |  |  |  |  | resources none → MBRT BASE [32 h] |
| 1-0755 | MILL MAD 6TH TO BROADWAY, MILLING & PAVING | 2023-09-13 → 2024-04-22 (+222d) | 2023-09-15 → 2024-04-24 (+222d) |  |  | -18d → -77d | 1-0754 FS+40d → 1-0754 FS+40d, 1-0555 | constraint start on or after 2023-09-13 → none; resources none → MBRT BASE [24 h] |
| 10 | **MEDIAN STATION PLATFORMS** | 2023-09-18 → 2024-01-02 (+106d) | 2023-11-17 → 2024-03-05 (+109d) |  |  |  |  |  |
| 1 | **MADISON AND 8TH WB** | 2023-09-18 → 2024-02-07 (+142d) | 2023-10-05 → 2024-03-05 (+152d) |  |  |  |  |  |
| 1-0760 | REMOVE TEMP PAVING, MAD AND 8TH WB | 2023-09-18 → 2024-02-07 A (+142d) | 2023-09-19 → 2024-02-08 A (+142d) |  | 0% → 100% | -18d → none | 1-0749, 1-0755 → 1-0749, 1-0702 | resources none → MBRT BASE [16 h] |
| 1-0761 | TRENCH CONDUIT, MAD AND 8TH WB | 2023-09-20 → 2024-02-07 A (+140d) | 2023-09-21 → 2024-02-08 A (+140d) |  | 0% → 100% | -18d → none |  | resources none → MBRT BASE [16 h] |
| 1-0762 | INST CONDUIT, MAD AND 8TH WB | 2023-09-20 → 2024-02-09 A (+142d) | 2023-09-21 → 2024-02-15 A (+147d) |  | 0% → 100% | -18d → none |  | resources none → MBRT BASE [40 h] |
| 1-0763 | STATION FOUNDATIONS, MAD AND 8TH WB | 2023-09-22 → 2024-02-19 A (+150d) | 2023-09-26 → 2024-02-20 A (+147d) |  | 0% → 100% | -18d → none |  | resources none → MBRT BASE [8 h] |
| 1-0765 | GRADE FOR CONCRETE, MAD AND 8TH WB | 2023-09-29 → 2024-02-28 A (+152d) | 2023-10-02 → 2024-02-28 A (+149d) |  | 0% → 100% | -18d → none | 1-0764 → 1-0763 | resources none → MBRT BASE [8 h] |
| 1-0764 | STATION NOSING, MAD AND 8TH WB | 2023-09-27 → 2024-03-04 A (+159d) | 2023-09-28 → 2024-03-04 A (+158d) | 2d → 1d | 0% → 100% | -18d → none |  | resources none → MBRT BASE [8 h] |
| 1-0766 | STATION SIDEWALKS, MAD AND 8TH WB | 2023-10-03 → 2024-03-05 A (+154d) | 2023-10-05 → 2024-03-05 A (+152d) | 3d → 1d | 0% → 100% | -17d → none | 1-0765 → 1-0765, 1-0765 FF, 1-0764 | resources none → MBRT BASE [8 h] |
| 2 | **MADISON AND TERRY** | 2023-10-03 → 2024-01-02 (+91d) | 2023-10-25 → 2024-02-08 (+106d) |  |  |  |  |  |
| 1-0768 | REMOVE TEMP PAVING, MAD AND TERRY | 2023-10-03 → 2024-01-02 A (+91d) | 2023-10-04 → 2024-01-12 A (+100d) |  | 0% → 100% | -18d → none | 1-0765 → 1-0769 SS | resources none → MBRT BASE [72 h] |
| 1-0769 | TRENCH CONDUIT, MAD AND TERRY | 2023-10-05 → 2024-01-02 A (+89d) | 2023-10-06 → 2024-01-12 A (+98d) |  | 0% → 100% | -18d → none | 1-0768 → 1-0641 | resources none → MBRT BASE [72 h] |
| 1-0770 | INST CONDUIT, MAD AND TERRY | 2023-10-05 → 2024-01-16 A (+103d) | 2023-10-06 → 2024-01-30 A (+116d) |  | 0% → 100% | -18d → none | 1-0769 SS → 1-0769 SS, 1-0768 | resources none → MBRT BASE [88 h] |
| 1-0771 | STATION FOUNDATIONS, MAD AND TERRY | 2023-10-09 → 2024-01-25 A (+108d) | 2023-10-11 → 2024-02-01 A (+113d) |  | 0% → 100% | -18d → none | 1-0770, 1-0766 → 1-0770 | resources none → MBRT BASE [48 h] |
| 1-0773 | GRADE FOR CONCRETE, MAD AND TERRY | 2023-10-16 → 2024-01-29 A (+105d) | 2023-10-18 → 2024-01-30 A (+104d) |  | 0% → 100% | -18d → none | 1-0772 → 1-0770 FF, 1-0771 SS | resources none → MBRT BASE [16 h] |
| 1-0772 | STATION NOSING, MAD AND TERRY | 2023-10-12 → 2024-02-05 A (+116d) | 2023-10-13 → 2024-02-08 A (+118d) |  | 0% → 100% | -18d → none |  | resources none → MBRT BASE [32 h] |
| 1-0774 | STATION SIDEWALKS, MAD AND TERRY | 2023-10-19 → 2024-02-05 A (+109d) | 2023-10-25 → 2024-02-08 A (+106d) |  | 0% → 100% | -18d → none | 1-0773 → 1-0773, 1-0772 FF | resources none → MBRT BASE [32 h] |
| 3 | **MADISON AND BOYLSTON** | 2023-10-19 → 2024-01-11 (+84d) | 2023-11-17 → 2024-03-01 (+105d) |  |  |  |  |  |
| 1-0776 | REMOVE TEMP PAVING, MAD AND BOYLSTON | 2023-10-19 → 2024-01-11 A (+84d) | 2023-10-23 → 2024-01-12 A (+81d) |  | 0% → 100% | -18d → none | 1-0773 → 1-0773, 1-7080 | resources none → MBRT BASE [16 h] |
| 1-0777 | TRENCH CONDUIT, MAD AND BOYLSTON | 2023-10-24 → 2024-01-19 A (+87d) | 2023-10-25 → 2024-01-26 A (+93d) |  | 0% → 100% | -18d → none |  | resources none → MBRT BASE [48 h] |
| 1-0778 | INST CONDUIT, MAD AND BOYLSTON | 2023-10-24 → 2024-01-29 A (+97d) | 2023-10-25 → 2024-02-09 A (+107d) |  | 0% → 100% | -18d → none |  | resources none → MBRT BASE [80 h] |
| 1-0779 | STATION FOUNDATIONS, MAD & BOYLSTON | 2023-10-26 → 2024-01-30 A (+96d) | 2023-10-31 → 2024-02-16 A (+108d) |  | 0% → 100% | -18d → none | 1-0778, 1-0774 → 1-0778 SS | resources none → MBRT BASE [112 h] |
| 1-0781 | GRADE FOR CONCRETE, MAD AND BOYLSTON | 2023-11-03 → 2024-02-21 A (+110d) | 2023-11-08 → 2024-02-23 A (+107d) |  | 0% → 100% | -18d → none | 1-0780 → 1-0779 | resources none → MBRT BASE [24 h] |
| 1-0782 | STATION SIDEWALKS, MAD AND BOYLSTON | 2023-11-09 → 2024-02-23 A (+106d) | 2023-11-17 → 2024-03-01 A (+105d) |  | 0% → 100% | -18d → none | 1-0781, 1-2765 → 1-0781, 1-2765, 1-0780 FF | resources none → MBRT BASE [48 h] |

| ID | Task | Start | Finish | Duration | Complete | Total float | Predecessors | Other |
| --- | --- | --- | --- | --- | --- | --- | --- | --- |
| 1-0780 | STATION NOSING, MAD AND BOYLSTON | 2023-11-01 → 2024-02-27 A (+118d) | 2023-11-02 → 2024-02-27 A (+117d) |  | 0% → 100% | -18d → none |  | resources none → MBRT BASE [8 h] |
| 11 | **STRIPING AND SIGNS** |  | 2023-09-25 → 2023-10-20 (+25d) |  |  |  |  |  |
| 1-0784 | CURE TIME, STRIPING AND SIGNS |  | 2023-09-03 → 2023-08-25 A (-9d) |  | 0% → 100% | 87d → none |  | resources none → MBRT BASE |
| 1-0785 | CHANNELIZATION, STRIPING AND SIGNS | 2023-09-05 → 2023-08-28 A (-8d) | 2023-09-25 → 2023-09-15 A (-10d) |  | 0% → 100% | 59d → none |  | resources none → MBRT BASE [112 h] |
| 1-0786 | INST SIGNS, STRIPING AND SIGNS | 2023-08-14 → 2023-09-22 A (+39d) | 2023-09-01 → 2023-10-20 A (+49d) |  | 0% → 100% | 74d → none |  | resources none → MBRT BASE [168 h] |
| 12 | **I-5 ENHANCEMENTS** | 2023-11-09 → 2024-02-20 (+103d) | 2023-11-22 → 2024-06-10 (+201d) |  |  |  |  |  |
| 1-0788 | INST PLANTERS, I-5 ENHANCEMENTS | 2023-11-09 → 2024-05-29 (+202d) | 2023-11-10 → 2024-05-30 (+202d) |  |  | 27d → -109d | 1-0781, 1-0785, 1-0786, LS-1480 FF → 1-0781, 1-0785, 1-0786, LS-1480 FF, 1-0793, 1-0782 | resources none → MBRT BASE [16 h] |
| 1-0789 | INST DECORATIVE METAL, I-5 ENHANCEMENTS | 2023-11-14 → 2024-05-31 (+199d) | 2023-11-17 → 2024-06-05 (+201d) |  |  | 27d → -109d |  | resources none → MBRT BASE [32 h] |
| 1-0790 | PLANT PLANTERS, I-5 ENHANCEMENTS | 2023-11-20 → 2024-06-06 (+199d) | 2023-11-22 → 2024-06-10 (+201d) |  |  | 27d → -109d |  | resources none → MBRT BASE [24 h] |
| 13 | **LANDSCAPING** |  | 2023-12-05 → 2023-12-15 (+10d) |  |  |  |  |  |
| 1-0792 | LANDSCAPE, INST FLEXIBLE POUROUS PAVMENT |  |  |  |  |  |  | resources none → MBRT BASE |
| 1-0822 | INSTALL TREES AND SHRUBS | 2023-11-20 → 2023-11-06 A (-14d) | 2023-12-05 → 2023-12-15 A (+10d) |  | 0% → 100% | 20d → none | 1-0782 → 1-0782 FF, 1-0786 | resources none → MBRT BASE [216 h] |
| 14 | **SIGNALS** |  | 2024-03-11 → 2024-06-19 (+100d) |  |  |  |  |  |
| 1 | **1ST AND SPRING** | 2023-08-23 → 2023-09-05 (+13d) | 2023-11-03 → 2024-01-09 (+67d) |  |  |  |  |  |
| 1-9867 | INST SERVICE CABINET, SPRING AND 9TH | 2023-08-23 → 2023-09-05 A (+13d) | 2023-08-23 → 2023-09-05 A (+13d) |  | 0% → 100% | -32d → none |  | resources none → MBRT NEW [8 h] |
| 1-9882 | SDCI INSPECTION | 2023-08-24 → 2023-09-14 A (+21d) | 2023-08-24 → 2023-09-14 A (+21d) |  | 0% → 100% | -32d → none |  | resources none → MBRT NEW |
| 1-9927 | SDOT INSPECTION | 2023-08-24 → 2023-09-14 A (+21d) | 2023-08-24 → 2023-09-14 A (+21d) |  | 0% → 100% | -32d → none |  | resources none → MBRT NEW |
| 1-9873 | SCL INSPECTION REQUEST | 2023-08-25 → 2023-10-24 A (+60d) | 2023-08-25 → 2023-10-24 A (+60d) | 0d → 1d | 0% → 100% | -32d → none |  | resources none → MBRT NEW |
| 1-9874 | 30 DAY WAIT FOR SCL TO INSPECT | 2023-08-25 → 2023-10-24 A (+60d) | 2023-10-06 → 2023-11-15 A (+40d) | 30d → 21d | 0% → 100% | -32d → none |  | resources none → MBRT NEW |
| 1-9942 | SCL INSPECTION | 2023-10-09 → 2023-11-15 A (+37d) | 2023-10-09 → 2023-11-15 A (+37d) |  | 0% → 100% | -32d → none |  | resources none → MBRT NEW |
| 1-0797 | SCL COMMISION NOTIFICATION, 1ST AND SPRING | 2023-10-10 → 2023-11-16 A (+37d) | 2023-10-10 → 2023-11-16 A (+37d) |  | 0% → 100% | -32d → none |  | resources none → MBRT BASE |
| 1-0798 | 30 DAY WAIT FOR SCL TO COMMISION | 2023-10-10 → 2023-11-17 A (+38d) | 2023-10-23 → 2023-12-12 A (+50d) | 10d → 21d | 0% → 100% | -32d → none |  | resources none → MBRT BASE |
| 1-0799 | SCL COMMISION SERVICE, 1ST AND SPRING | 2023-10-24 → 2023-12-13 A (+50d) | 2023-10-24 → 2023-12-13 A (+50d) |  | 0% → 100% | -32d → none |  | resources none → MBRT BASE [8 h] |
| 1-0795 | INST TRAFFIC SIGNAL CABINET, 1ST & SPRING | 2023-10-25 → 2023-12-14 A (+50d) | 2023-10-25 → 2023-12-14 A (+50d) |  | 0% → 100% | -32d → none |  | resources none → MBRT BASE [8 h] |
| 1-0796 | INST WIRING, 1ST AND SPRING | 2023-10-26 → 2023-12-15 A (+50d) | 2023-10-26 → 2023-12-15 A (+50d) |  | 0% → 100% | -32d → none |  | resources none → MBRT BASE [8 h] |
| 1-0800 | NOTIFY SDOT, 1ST AND SPRING | 2023-10-27 → 2023-12-15 A (+49d) | 2023-10-27 → 2023-12-15 A (+49d) | 0d → 1d | 0% → 100% | -32d → none |  | resources none → MBRT BASE [8 h] |
| 1-0801 | SDOT INSPECTION, 1ST AND SPRING | 2023-10-27 → 2023-12-18 A (+52d) | 2023-11-02 → 2023-12-22 A (+50d) |  | 0% → 100% | -32d → none | 1-0800 → 1-0800, 1-0807 | resources none → MBRT BASE [40 h] |
| 1-0802 | COMM SIGNAL, 1ST AND SPRING | 2023-11-03 → 2023-12-26 A (+53d) | 2023-11-03 → 2024-01-09 A (+67d) |  | 0% → 100% | -32d → none |  | resources none → MBRT BASE [80 h] |
| 10 | **MADISON AND 1ST** |  | 2023-10-10 → 2023-11-21 (+42d) |  |  |  |  |  |
| 1-1887 | INST SERVICE CABINET, MAD AND 1ST |  |  |  |  |  | none → 1-0868 | resources none → MBRT NEW [8 h] |
| 1-1882 | SDCI INSPECTION |  |  |  |  |  |  | resources none → MBRT NEW |
| 1-1873 | SCL INSPECTION REQUEST |  |  | 0d → 1d |  |  |  | resources none → MBRT NEW |
| 1-1927 | SDOT INSPECTION |  |  |  |  |  |  | resources none → MBRT NEW |
| 1-1874 | 30 DAY WAIT FOR SCL TO INSPECT |  | 2023-08-18 A | 30d → 21d | 0% → 100% | -16d → none |  | resources none → MBRT NEW |
| 1-1445 | INST MAST ARM POLES, MAD AND 1ST | 2023-08-14 A | 2023-08-15 A |  | 0% → 100% | -10d → none |  | resources none → MBRT NEW [16 h] |
| 1-1942 | SCL INSPECTION | 2023-08-21 A | 2023-08-21 A |  | 0% → 100% | -16d → none |  | resources none → MBRT NEW |
| 1-0885 | SCL COMMISION NOTIFICATION, MAD AND 1ST | 2023-08-22 A | 2023-08-22 A |  | 0% → 100% | -16d → none |  | resources none → MBRT BASE |
| 1-0886 | 30 DAY WAIT FOR SCL TO COMMISION | 2023-08-22 A | 2023-09-19 A |  | 0% → 100% | -16d → none |  | resources none → MBRT BASE |
| 1-0887 | COMM SERVICE, MAD AND 1ST | 2023-09-20 A | 2023-09-20 A |  | 0% → 100% | -16d → none |  | resources none → MBRT BASE [8 h] |
| 1-0880 | SIGNAL CABINET, MAD AND 1ST | 2023-09-21 → 2023-11-13 A (+53d) | 2023-09-21 → 2023-11-15 A (+55d) |  | 0% → 100% | -16d → none | 1-0666, PMP-0016, 1-0887 → PMP-0016, 1-0887 | resources none → MBRT BASE [16 h] |
| 1-0881 | INST MAST ARM, MAD AND 1ST | 2023-09-22 → 2023-11-13 A (+52d) | 2023-09-25 → 2023-11-15 A (+51d) |  | 0% → 100% | -16d → none |  | resources none → MBRT BASE [16 h] |
| 1-0883 | INST PPB POST, MAD AND 1ST | 2023-09-27 → 2023-11-13 A (+47d) | 2023-09-27 → 2023-11-15 A (+49d) |  | 0% → 100% | -16d → none |  | resources none → MBRT BASE [16 h] |
| 1-0884 | INST WIRING, MAD AND 1ST | 2023-09-28 → 2023-11-13 A (+46d) | 2023-10-02 → 2023-11-15 A (+44d) |  | 0% → 100% | -16d → none |  | resources none → MBRT BASE [16 h] |
| 1-2005 | INSTALL SERVICE CABINET, MAD AND 1ST | 2023-09-26 → 2023-11-13 A (+48d) | 2023-09-26 → 2023-11-15 A (+50d) |  | 0% → 100% | -16d → none |  | resources none → MBRT NEW [8 h] |
| 1-0888 | NOTIFY SDOT, MAD AND 1ST | 2023-10-03 → 2023-11-15 A (+43d) | 2023-10-03 → 2023-11-15 A (+43d) |  | 0% → 100% | -16d → none |  | resources none → MBRT BASE |
| 1-0889 | SDOT INSPECTION, MAD AND 1ST | 2023-10-03 → 2023-11-16 A (+44d) | 2023-10-09 → 2023-11-20 A (+42d) |  | 0% → 100% | -16d → none |  | resources none → MBRT BASE [24 h] |
| 1-0890 | COMM SIGNAL, MAD AND 1ST | 2023-10-10 → 2023-11-21 A (+42d) | 2023-10-10 → 2023-11-21 A (+42d) |  | 0% → 100% | -16d → none |  | resources none → MBRT BASE [8 h] |
| 11 | **MADISON AND 2ND** | 2023-08-24 → 2024-04-11 (+231d) | 2023-09-05 → 2024-04-22 (+230d) |  |  |  |  |  |
| 1-0892 | INST MAGNETOMETERS & ACCESS POINT, MAD & 2ND | 2023-08-24 → 2024-04-11 (+231d) | 2023-08-25 → 2024-04-12 (+231d) |  |  | 16d → -102d |  | was named INST MAGNEMETORS & ACCESS POINT, MAD & 2ND; resources none → MBRT BASE [16 h] |
| 1-0893 | NOTIFY SDOT, MAD AND 2ND | 2023-08-28 → 2024-04-15 (+231d) | 2023-08-28 → 2024-04-15 (+231d) |  |  | 16d → -102d |  | resources none → MBRT BASE |
| 1-0894 | SDOT INSPECTION, MAD AND 2ND | 2023-08-28 → 2024-04-15 (+231d) | 2023-09-01 → 2024-04-19 (+231d) |  |  | 16d → -102d |  | resources none → MBRT BASE [40 h] |
| 1-0895 | COMM SIGNAL, MAD AND 2ND | 2023-09-05 → 2024-04-22 (+230d) | 2023-09-05 → 2024-04-22 (+230d) |  |  | 16d → -102d |  | resources none → MBRT BASE [8 h] |
| 12 | **MADISON AND 3RD** |  | 2023-10-30 → 2023-12-19 (+50d) |  |  |  |  |  |
| 1-0898 | INSTALL SERVICE CABINET, MAD AND 3RD |  |  |  |  |  |  | resources none → MBRT BASE [8 h] |
| 1-2165 | SDCI INSPECTION, MAD AND 3RD |  |  |  |  |  |  | resources none → MBRT NEW |
| 1-2166 | SDOT INSPECTION, MAD AND 3RD |  |  |  |  |  |  | resources none → MBRT NEW |
| 1-0902 | SCL INSPECTION REQUEST |  |  |  |  |  |  | resources none → MBRT BASE |
| 1-0903 | 30 DAY WAIT FOR SCL TO INSPECT |  | 2023-08-14 → 2023-07-27 A (-18d) | 30d → 21d | 0% → 100% | -33d → none |  | resources none → MBRT BASE |
| 1-2169 | SCL INSPECTION | 2023-08-15 → 2023-07-28 A (-18d) | 2023-08-15 → 2023-07-28 A (-18d) |  | 0% → 100% | -33d → none |  | resources none → MBRT NEW |
| 1-2179 | COMMISION NOTIFICATION | 2023-08-16 → 2023-07-31 A (-16d) | 2023-08-16 → 2023-07-31 A (-16d) |  | 0% → 100% | -33d → none |  | resources none → MBRT NEW |
| 1-2171 | 30 DAY WAIT FOR SCL TO COMMISION | 2023-08-17 → 2023-08-01 A (-16d) | 2023-09-28 → 2023-09-12 A (-16d) | 30d → 21d | 0% → 100% | -33d → none |  | resources none → MBRT NEW |
| 1-0904 | COMM SERVICE, MAD AND 3RD | 2023-09-29 → 2023-09-13 A (-16d) | 2023-09-29 → 2023-09-13 A (-16d) |  | 0% → 100% | -33d → none |  | resources none → MBRT BASE [8 h] |
| 1-0939 | DELAY AWAITING SCL TO ENEGIZE | 2023-09-13 → 2023-11-14 A (+62d) | 2023-09-13 → 2023-12-08 A (+86d) | 1d → 0d | 0% → 100% | -10d → none | 1-0938 → 1-0904 | was named INST MAGNOMETERS, MAD AND 7TH; resources none → MBRT BASE |
| 1-0897 | INST SIGNAL CABINET, MAD AND 3RD | 2023-10-12 → 2023-12-11 A (+60d) | 2023-10-12 → 2023-12-15 A (+64d) |  | 0% → 100% | -41d → none | 1-0682, 1-0904 → 1-0682, 1-0904, 1-0939 | resources none → MBRT BASE [40 h] |
| 1-0899 | INST OCS POLE, MAD AND 3RD | 2023-10-13 → 2023-12-11 A (+59d) | 2023-10-16 → 2023-12-15 A (+60d) |  | 0% → 100% | -41d → none |  | resources none → MBRT BASE [40 h] |
| 1-0900 | INST PPB POST, MAD AND 3RD | 2023-10-17 → 2023-12-11 A (+55d) | 2023-10-17 → 2023-12-15 A (+59d) |  | 0% → 100% | -41d → none |  | resources none → MBRT BASE [40 h] |
| 1-0901 | INST WIRING & SIGNAL GEAR, MAD & 3RD | 2023-10-18 → 2023-12-11 A (+54d) | 2023-10-20 → 2023-12-15 A (+56d) |  | 0% → 100% | -41d → none |  | resources none → MBRT BASE [40 h] |
| 1-0905 | NOTIFY SDOT, MAD AND 3RD | 2023-10-23 → 2023-12-15 A (+53d) | 2023-10-23 → 2023-12-15 A (+53d) |  | 0% → 100% | -22d → none |  | resources none → MBRT BASE |
| 1-0906 | SDOT INSPECTION, MAD AND 3RD | 2023-10-23 → 2023-12-18 A (+56d) | 2023-10-27 → 2023-12-18 A (+52d) |  | 0% → 100% | -22d → none |  | resources none → MBRT BASE [8 h] |
| 1-0907 | COMM SIGNAL, MAD AND 3RD | 2023-10-30 → 2023-12-19 A (+50d) | 2023-10-30 → 2023-12-19 A (+50d) |  | 0% → 100% | -22d → none | 1-0906, 1-0895 → 1-0906, 1-0914 | resources none → MBRT BASE [8 h] |

| ID | Task | Start | Finish | Duration | Complete | Total float | Predecessors | Other |
| --- | --- | --- | --- | --- | --- | --- | --- | --- |
| 13 | **MADISON AND 4TH** | 2023-10-23 → 2023-12-05 (+43d) | 2023-11-03 → 2023-12-14 (+41d) |  |  |  |  |  |
| 1-0909 | INST PEDISTAL, MAD AND 4TH | 2023-10-23 → 2023-12-05 A (+43d) | 2023-10-23 → 2023-12-05 A (+43d) |  | 0% → 100% | -26d → none |  | resources none → MBRT BASE [8 h] |
| 1-0910 | INST MAGNOMETERS & ACCESS POINT, MAD & 4TH | 2023-10-24 → 2023-12-13 A (+50d) | 2023-10-25 → 2023-12-14 A (+50d) |  | 0% → 100% | -26d → none |  | resources none → MBRT BASE [16 h] |
| 1-0911 | INST SIGNAL GEAR, MAD AND 4TH | 2023-10-26 → 2023-12-13 A (+48d) | 2023-10-26 → 2023-12-14 A (+49d) |  | 0% → 100% | -26d → none |  | resources none → MBRT BASE [16 h] |
| 1-0912 | NOTIFY SDOT, MAD AND 4TH | 2023-10-27 → 2023-12-13 A (+47d) | 2023-10-27 → 2023-12-14 A (+48d) | 0d → 2d | 0% → 100% | -26d → none |  | resources none → MBRT BASE [16 h] |
| 1-0913 | SDOT INSPECTION, MAD AND 4TH | 2023-10-27 → 2023-12-13 A (+47d) | 2023-11-02 → 2023-12-14 A (+42d) |  | 0% → 100% | -26d → none |  | resources none → MBRT BASE [16 h] |
| 1-0914 | COMM SIGNAL, MAD AND 4TH | 2023-11-03 → 2023-12-14 A (+41d) | 2023-11-03 → 2023-12-14 A (+41d) |  | 0% → 100% | -26d → none |  | resources none → MBRT BASE [8 h] |
| 14 | **MADISON AND 5TH** | 2023-09-08 → 2023-12-04 (+87d) | 2023-11-06 → 2023-12-06 (+30d) |  |  |  |  |  |
| 1-0916 | INST SIGNAL GEAR, MAD AND 5TH | 2023-09-08 → 2023-12-04 A (+87d) | 2023-09-08 → 2023-12-05 A (+88d) |  | 0% → 100% | 9d → none |  | resources none → MBRT BASE [16 h] |
| 1-0917 | NOTIFY SDOT, MAD AND 5TH | 2023-09-11 → 2023-12-05 A (+85d) | 2023-09-11 → 2023-12-05 A (+85d) |  | 0% → 100% | 9d → none |  | resources none → MBRT BASE |
| 1-0918 | SDOT INSPECTION, MAD AND 5TH | 2023-09-11 → 2023-12-06 A (+86d) | 2023-09-15 → 2023-12-06 A (+82d) |  | 0% → 100% | 9d → none |  | resources none → MBRT BASE [8 h] |
| 1-0919 | COMM SIGNAL, MAD AND 5TH | 2023-11-06 → 2023-12-06 A (+30d) | 2023-11-06 → 2023-12-06 A (+30d) |  | 0% → 100% | -26d → none | 1-0918, 1-0914 → 1-0918 | resources none → MBRT BASE [8 h] |
| 15 | **MADISON AND 6TH** |  | 2023-12-04 → 2024-02-07 (+65d) |  |  |  |  |  |
| 1-0922 | INST SERVICE CABINET, MAD & 6TH |  |  |  |  |  |  | resources none → MBRT BASE [8 h] |
| 1-3194 | SDCI INSPECTION |  |  |  |  |  |  | resources none → MBRT NEW |
| 1-3199 | SDOT INSPECTION |  |  |  |  |  |  | resources none → MBRT NEW |
| 1-0924 | INTSALL OCS POLE, MAD AND 6TH | 2023-08-16 → 2023-08-17 A (+1d) | 2023-08-17 → 2023-08-18 A (+1d) |  | 0% → 100% | 77d → none |  | resources none → MBRT BASE [16 h] |
| 1-1450 | INST MAST ARM POLES, MAD AND 6TH | 2023-08-16 → 2023-08-17 A (+1d) | 2023-08-17 → 2023-08-18 A (+1d) |  | 0% → 100% | -10d → none |  | resources none → MBRT NEW [16 h] |
| 1-3196 | SCL INSPECTION REQUEST | 2023-08-14 → 2023-12-11 A (+119d) | 2023-08-14 → 2023-12-11 A (+119d) |  | 0% → 100% | 14d → none | 1-3199 → 1-3199, 1-0917 SS | constraint start on or after 2023-07-03 → none; resources none → MBRT NEW |
| 1-3197 | 30 DAY WAIT FOR SCL TO INSPECT | 2023-08-15 → 2023-12-12 A (+119d) | 2023-09-26 → 2024-01-11 A (+107d) | 30d → 21d | 0% → 100% | 14d → none |  | resources none → MBRT NEW |
| 1-4198 | SCL INSPECTION | 2023-09-27 → 2024-01-12 A (+107d) | 2023-09-27 → 2024-01-12 A (+107d) |  | 0% → 100% | 14d → none |  | resources none → MBRT NEW |
| 1-4199 | COMMISION NOTIFICATION | 2023-09-28 → 2024-01-16 A (+110d) | 2023-09-28 → 2024-01-16 A (+110d) |  | 0% → 100% | 14d → none |  | resources none → MBRT NEW |
| 1-4200 | 30 DAY WAIT FOR SCL TO COMMISION | 2023-09-29 → 2024-01-17 A (+110d) | 2023-11-09 → 2024-02-01 A (+84d) | 30d → 21d | 0% → 100% | 14d → none |  | resources none → MBRT NEW |
| 1-0929 | COMM SERVICE, MAD AND 6TH | 2023-11-10 → 2024-02-02 A (+84d) | 2023-11-10 → 2024-02-02 A (+84d) |  | 0% → 100% | 14d → none |  | resources none → MBRT BASE [8 h] |
| 1-0921 | INST SIGNAL CABINET, MAD AND 6TH | 2023-11-14 → 2024-02-05 A (+83d) | 2023-11-14 → 2024-02-06 A (+84d) |  | 0% → 100% | 14d → none |  | resources none → MBRT BASE [16 h] |
| 1-0923 | INST MAST ARM, MAD AND 6TH | 2023-11-15 → 2024-02-05 A (+82d) | 2023-11-16 → 2024-02-06 A (+82d) |  | 0% → 100% | 14d → none |  | resources none → MBRT BASE [16 h] |
| 1-0925 | INST SIGNAL GEAR, MAD AND 6TH | 2023-11-17 → 2024-02-05 A (+80d) | 2023-11-17 → 2024-02-06 A (+81d) |  | 0% → 100% | 14d → none |  | resources none → MBRT BASE [16 h] |
| 1-0926 | INST WIRING, MAD AND 6TH | 2023-11-20 → 2024-02-05 A (+77d) | 2023-11-22 → 2024-02-06 A (+76d) |  | 0% → 100% | 14d → none |  | resources none → MBRT BASE [16 h] |
| 1-0930 | NOTIFY SDOT, MAD AND 6TH | 2023-11-27 → 2024-02-05 A (+70d) | 2023-11-27 → 2024-02-06 A (+71d) | 0d → 2d | 0% → 100% | 14d → none |  | resources none → MBRT BASE [16 h] |
| 1-0931 | SDOT INSPECTION, MAD AND 6TH | 2023-11-27 → 2024-02-05 A (+70d) | 2023-12-01 → 2024-02-06 A (+67d) |  | 0% → 100% | 14d → none |  | resources none → MBRT BASE [16 h] |
| 1-0932 | COMM SIGNAL, MAD AND 6TH | 2023-12-04 → 2024-02-07 A (+65d) | 2023-12-04 → 2024-02-07 A (+65d) |  | 0% → 100% | 14d → none |  | resources none → MBRT BASE [8 h] |
| 16 | **MADISON AND 7TH** |  | 2023-09-26 → 2024-03-29 (+185d) |  |  |  |  |  |
| 1-0934 | INST SERVICE CABINET, MAD & 7TH |  |  |  |  |  |  | resources none → MBRT BASE [8 h] |
| 1-0935 | INST STRAIN POLE, MAD AND 7TH |  |  |  |  |  |  | resources none → MBRT BASE [16 h] |
| 1-4211 | SDCI INSPECTION |  |  |  |  |  |  | resources none → MBRT NEW |
| 1-4212 | SDOT INSPECTION |  |  |  |  |  |  | resources none → MBRT NEW |
| 1-5196 | SCL INSPECTION REQUEST |  |  |  |  |  |  | constraint start on or after 2023-07-03 → none; resources none → MBRT NEW |
| 1-5197 | 30 DAY WAIT FOR SCL TO INSPECT |  |  | 30d → 21d |  |  |  | resources none → MBRT NEW |
| 1-4215 | SCL INSPECTION |  |  |  |  |  |  | resources none → MBRT NEW |
| 1-4216 | COMMISION NOTIFICATION |  |  |  |  |  |  | resources none → MBRT NEW |
| 1-4217 | 30 DAY WAIT FOR SCL TO COMMISION |  | 2023-09-07 A |  | 0% → 100% | -10d → none |  | resources none → MBRT NEW |
| 1-0936 | INST OCS POLE, MAD AND 7TH | 2023-08-18 → 2023-08-28 A (+10d) | 2023-08-21 → 2023-08-28 A (+7d) |  | 0% → 100% | -10d → none |  | resources none → MBRT BASE [8 h] |
| 1-0943 | COMM SERVICE, MAD AND 7TH | 2023-09-08 A | 2023-09-08 A |  | 0% → 100% | -10d → none |  | resources none → MBRT BASE [8 h] |
| 1-0940 | INST WIRING, MAD AND 7TH | 2023-09-14 → 2023-09-18 A (+4d) | 2023-09-18 → 2023-09-19 A (+1d) |  | 0% → 100% | -10d → none | 1-0939 → 1-0943 | resources none → MBRT BASE [16 h] |
| 1-0937 | INST SIGNAL CABINET, MAD AND 6TH | 2023-09-11 → 2023-10-02 A (+21d) | 2023-09-11 → 2023-10-02 A (+21d) |  | 0% → 100% | -10d → none |  | resources none → MBRT BASE [8 h] |
| 1-0938 | INST PEDISTAL & PPB POST, MAD & 7TH | 2023-09-12 → 2024-03-04 A (+174d) | 2023-09-12 → 2024-03-04 A (+174d) |  | 0% → 100% | -10d → none | 1-0937 → 1-0937, 1-0989, DSC-724 | resources none → MBRT BASE [8 h] |
| 1-0944 | NOTIFY SDOT, MAD AND 7TH | 2023-09-19 → 2024-03-05 A (+168d) | 2023-09-19 → 2024-03-05 A (+168d) |  | 0% → 100% | 39d → none | 1-0943, 1-0940 → 1-0943, 1-0940, 1-0938 | resources none → MBRT BASE |
| 1-0945 | SDOT INSPECTION, MAD AND 7TH | 2023-09-19 → 2024-03-05 A (+168d) | 2023-09-25 → 2024-03-26 A (+183d) | 5d → 16d | 0% → 100% | 39d → none |  | resources none → MBRT BASE [128 h] |
| 1-0946 | COMM SIGNAL, MAD AND 7TH | 2023-09-26 → 2024-03-27 A (+183d) | 2023-09-26 → 2024-03-29 A (+185d) |  | 0% → 100% | 39d → none | 1-0945 → 1-0945, 1-0989, 1-0938 | resources none → MBRT BASE [8 h] |
| 17 | **MADISON AND 8TH** |  | 2023-10-19 → 2023-11-07 (+19d) |  |  |  |  |  |
| 1-0949 | INST SERVICE CABINET, MAD AND 8TH |  |  |  |  |  |  | resources none → MBRT BASE [8 h] |
| 1-4882 | SDCI INSPECTION |  |  |  |  |  |  | resources none → MBRT NEW |
| 1-0955 | SCL INSPECTION REQUEST |  |  |  |  |  |  | resources none → MBRT BASE |
| 1-4927 | SDOT INSPECTION |  |  |  |  |  |  | resources none → MBRT NEW |
| 1-0956 | 30 DAY WAIT FOR SCL TO INSPECT |  | 2023-08-22 A | 30d → 21d | 0% → 100% | 23d → none |  | resources none → MBRT BASE |
| 1-5215 | SCL INSPECTION | 2023-08-23 A | 2023-08-23 A |  | 0% → 100% | 23d → none |  | resources none → MBRT NEW |
| 1-1455 | INST MAST ARM POLES, MAD AND 8TH | 2023-08-22 → 2023-08-29 A (+7d) | 2023-08-23 → 2023-08-30 A (+7d) |  | 0% → 100% | -10d → none |  | resources none → MBRT NEW [16 h] |
| 1-5216 | COMMISION NOTIFICATION | 2023-08-24 → 2023-09-20 A (+27d) | 2023-08-24 → 2023-09-21 A (+28d) |  | 0% → 100% | 23d → none |  | resources none → MBRT NEW |
| 1-0954 | INST WIRING, MAD AND 8TH | 2023-10-09 → 2023-09-20 A (-19d) | 2023-10-11 → 2023-09-21 A (-20d) |  | 0% → 100% | 23d → none | 1-0953 → 1-1455 | resources none → MBRT BASE [8 h] |
| 1-5217 | 30 DAY WAIT FOR SCL TO COMMISION | 2023-08-25 → 2023-09-22 A (+28d) | 2023-09-27 → 2023-10-13 A (+16d) |  | 0% → 100% | 23d → none |  | resources none → MBRT NEW |
| 1-0953 | INST SIGNAL GEAR, MAD AND 8TH | 2023-10-06 → 2023-09-25 A (-11d) | 2023-10-06 → 2023-09-29 A (-7d) |  | 0% → 100% | 23d → none | 1-0952 → 1-0954 | resources none → MBRT BASE [32 h] |
| 1-0957 | COMM SERVICE, MAD AND 8TH | 2023-09-28 → 2023-10-16 A (+18d) | 2023-09-28 → 2023-10-16 A (+18d) |  | 0% → 100% | 23d → none | 1-5217 → 1-5217, 1-5221, 1-0953 | resources none → MBRT BASE [8 h] |
| 1-0950 | INST MAST ARMS, MAD AND 8TH | 2023-10-02 → 2023-10-18 A (+16d) | 2023-10-03 → 2023-10-19 A (+16d) |  | 0% → 100% | 23d → none | 1-0949, 1-1455, 1-0948 → 1-0949, 1-1455 | resources none → MBRT BASE [16 h] |
| 1-0958 | NOTIFY SDOT, MAD AND 8TH | 2023-10-12 → 2023-10-19 A (+7d) | 2023-10-12 → 2023-10-19 A (+7d) | 0d → 1d | 0% → 100% | 23d → none |  | resources none → MBRT BASE [8 h] |
| 1-0951 | INST PPB POSTS, MAD AND 8TH | 2023-10-04 → 2023-10-20 A (+16d) | 2023-10-04 → 2023-10-20 A (+16d) |  | 0% → 100% | 23d → none |  | resources none → MBRT BASE [8 h] |
| 1-0952 | INST PEDISTALS, MAD AND 8TH | 2023-10-05 → 2023-10-23 A (+18d) | 2023-10-05 → 2023-10-23 A (+18d) |  | 0% → 100% | 23d → none |  | resources none → MBRT BASE [8 h] |
| 1-0948 | INST SIGNAL CABINET, MAD AND 8TH | 2023-09-29 → 2023-10-24 A (+25d) | 2023-09-29 → 2023-10-24 A (+25d) |  | 0% → 100% | 23d → none | 1-0714, 1-0957 → 1-0714, 1-0957, 1-0952 | resources none → MBRT BASE [8 h] |
| 1-0959 | SDOT INSPECTION, MAD AND 8TH | 2023-10-12 → 2023-10-25 A (+13d) | 2023-10-18 → 2023-11-06 A (+19d) |  | 0% → 100% | 23d → none | 1-0958 → 1-0958, 1-0948 | resources none → MBRT BASE [72 h] |
| 1-0960 | COMM SIGNAL, MAD AND 8TH | 2023-10-19 → 2023-11-07 A (+19d) | 2023-10-19 → 2023-11-07 A (+19d) |  | 0% → 100% | 23d → none | 1-0959, 1-0946 → 1-0959 | resources none → MBRT BASE [8 h] |
| 18 | **MADISON AND 9TH** | 2023-08-24 → 2023-08-31 (+7d) | 2024-03-11 → 2024-04-29 (+49d) |  |  |  |  |  |

| ID | Task | Start | Finish | Duration | Complete | Total float | Predecessors | Other |
| --- | --- | --- | --- | --- | --- | --- | --- | --- |
| 1-0964 | INST MAST ARM POLES , MAD & 9TH | 2023-08-24 → 2023-08-31 A (+7d) | 2023-09-05 → 2023-09-12 A (+7d) |  | 0% → 100% | -10d → none |  | resources none → MBRT BASE [64 h] |
| 1-1460 | INST MAST ARMS, MAD & 9TH | 2024-02-09 → 2024-02-01 A (-8d) | 2024-02-21 → 2024-02-02 A (-19d) |  | 0% → 100% | -116d → none | 1-0964, 1-0962, 1-0962 FF → 1-0964, 1-0962 | resources none → MBRT NEW [64 h] |
| 1-0963 | INST SERVICE CABINET, MAD AND 9TH | 2023-10-31 → 2024-02-02 A (+94d) | 2023-10-31 → 2024-02-02 A (+94d) |  | 0% → 100% | -116d → none | 1-0720 → 1-0605 SS, 1-0608 | resources none → MBRT BASE [8 h] |
| 1-3882 | SDCI INSPECTION | 2023-11-01 → 2024-02-05 A (+96d) | 2023-11-01 → 2024-02-05 A (+96d) |  | 0% → 100% | -116d → none |  | resources none → MBRT NEW |
| 1-3927 | SDOT INSPECTION | 2023-11-02 → 2024-02-06 A (+96d) | 2023-11-02 → 2024-02-06 A (+96d) |  | 0% → 100% | -116d → none |  | resources none → MBRT NEW |
| 1-9955 | SCL INSPECTION REQUEST | 2023-11-03 → 2024-02-06 A (+95d) | 2023-11-03 → 2024-02-06 A (+95d) | 0d → 1d | 0% → 100% | -116d → none |  | resources none → MBRT NEW |
| 1-9956 | 30 DAY WAIT FOR SCL TO INSPECT | 2023-11-03 → 2024-02-07 A (+96d) | 2023-12-19 → 2024-02-08 A (+51d) | 30d → 21d | 0% → 100% | -116d → none |  | resources none → MBRT NEW |
| 1-4218 | SCL INSPECTION | 2023-12-20 → 2024-02-09 A (+51d) | 2023-12-20 → 2024-02-09 A (+51d) |  | 0% → 100% | -116d → none |  | resources none → MBRT NEW |
| 1-4219 | COMMISION NOTIFICATION | 2023-12-21 → 2024-02-12 A (+53d) | 2023-12-21 → 2024-02-12 A (+53d) |  | 0% → 100% | -116d → none |  | resources none → MBRT NEW |
| 1-0971 | 30 DAY WAIT FOR SCL TO COMMISION | 2023-12-22 → 2024-02-13 A (+53d) | 2024-02-06 → 2024-02-14 A (+8d) | 30d → 21d | 0% → 100% | -116d → none |  | resources none → MBRT BASE |
| 1-0972 | COMM SERVICE, MAD AND 9TH | 2024-02-07 → 2024-02-15 A (+8d) | 2024-02-07 → 2024-02-15 A (+8d) |  | 0% → 100% | -116d → none |  | resources none → MBRT BASE [8 h] |
| 1-0962 | INST SIGNAL CABINET, MAD AND 9TH | 2024-02-08 → 2024-02-19 A (+11d) | 2024-02-08 → 2024-02-23 A (+15d) |  | 0% → 100% | -116d → none |  | resources none → MBRT BASE [32 h] |
| 1-0965 | INST PPB POSTS, MAD AND 9TH | 2024-02-22 → 2024-02-19 A (-3d) | 2024-02-22 → 2024-02-23 A (+1d) |  | 0% → 100% | -116d → none |  | resources none → MBRT BASE [32 h] |
| 1-0966 | INST PEDISTALS, MAD AND 9TH | 2024-02-23 → 2024-02-19 A (-4d) | 2024-02-23 A |  | 0% → 100% | -116d → none |  | resources none → MBRT BASE [32 h] |
| 1-0967 | INST SIGNAL GEAR, MAD AND 9TH | 2024-02-26 → 2024-02-19 A (-7d) | 2024-02-26 → 2024-02-23 A (-3d) |  | 0% → 100% | -116d → none |  | resources none → MBRT BASE [32 h] |
| 1-0969 | INST WIRING, MAD AND 9TH | 2024-02-28 → 2024-02-19 A (-9d) | 2024-03-01 → 2024-02-23 A (-7d) |  | 0% → 100% | -116d → none | 1-0968 → 1-0967 SS | resources none → MBRT BASE [32 h] |
| 1-0973 | NOTIFY SDOT, MAD AND 9TH | 2024-03-04 → 2024-02-27 A (-6d) | 2024-03-04 → 2024-02-27 A (-6d) | 0d → 1d | 0% → 100% | -70d → none |  | resources none → MBRT BASE [8 h] |
| 1-0974 | SDOT INSPECTION, MAD AND 9TH | 2024-03-04 → 2024-02-27 A (-6d) | 2024-03-08 → 2024-02-27 A (-10d) |  | 0% → 100% | -70d → none |  | resources none → MBRT BASE [8 h] |
| 1-0975 | COMM SIGNAL, MAD AND 9TH | 2024-03-11 → 2024-02-27 A (-13d) | 2024-03-11 → 2024-02-27 A (-13d) |  | 0% → 100% | -70d → none | 1-0974, 1-0960, 1-0878 → 1-0974, 1-0960 | resources none → MBRT BASE [8 h] |
| 1-0968 | INST MAGNOMETERS, MAD AND 9TH | 2024-02-27 → 2024-02-28 A (+1d) | 2024-02-27 → 2024-03-05 A (+7d) |  | 0% → 100% | -116d → none |  | resources none → MBRT BASE [8 h] |
| 19 | **MADISON AND TERRY** |  | 2023-10-13 → 2023-10-12 (-1d) |  |  |  |  |  |
| 1-0978 | INST SERVICE CABINET, MAD & TERRY |  |  |  |  |  |  | resources none → MBRT BASE [8 h] |
| 1-2262 | SDCI INSPECTION |  |  |  |  |  |  | resources none → MBRT NEW |
| 1-2263 | SDOT INSPECTION |  |  |  |  |  |  | resources none → MBRT NEW |
| 1-0979 | INST MAST ARM POLES, MAD & TERRY | 2023-08-14 → 2023-07-11 A (-34d) | 2023-08-17 → 2023-07-14 A (-34d) |  | 0% → 100% | 66d → none |  | resources none → MBRT BASE [32 h] |
| 1-1465 | INST MAST ARM, MAD & TERRY | 2023-09-25 → 2023-07-11 A (-76d) | 2023-09-28 → 2023-07-14 A (-76d) |  | 0% → 100% | 41d → none | 1-0979, 1-0977 → 1-0979 | resources none → MBRT NEW [32 h] |
| 1-0980 | INST PPB POSTS, MAD AND TERRY | 2023-09-29 → 2023-07-17 A (-74d) | 2023-09-29 → 2023-07-17 A (-74d) |  | 0% → 100% | 41d → none |  | resources none → MBRT BASE [8 h] |
| 1-2264 | SCL INSPECTION REQUEST |  |  |  |  |  |  | constraint start on or after 2023-07-03 → none; resources none → MBRT NEW |
| 1-2269 | 30 DAY WAIT FOR SCL TO INSPECT |  | 2023-08-18 A | 30d → 21d | 0% → 100% | 41d → none |  | resources none → MBRT NEW |
| 1-2266 | SCL INSPECTION | 2023-08-21 A | 2023-08-21 A |  | 0% → 100% | 41d → none |  | resources none → MBRT NEW |
| 1-2267 | COMMISION NOTIFICATION | 2023-08-22 A | 2023-08-22 A |  | 0% → 100% | 41d → none |  | resources none → MBRT NEW |
| 1-2268 | 30 DAY WAIT FOR SCL TO COMMISION | 2023-08-23 A | 2023-09-20 A |  | 0% → 100% | 41d → none |  | resources none → MBRT NEW |
| 1-0985 | COMM SERVICE, MAD AND TERRY | 2023-09-21 A | 2023-09-21 A |  | 0% → 100% | 41d → none |  | resources none → MBRT BASE [8 h] |
| 1-0982 | INST WIRING, MAD AND TERRY | 2023-10-03 → 2023-09-22 A (-11d) | 2023-10-05 → 2023-09-25 A (-10d) |  | 0% → 100% | 41d → none | 1-0981 → 1-0980 | resources none → MBRT BASE [16 h] |
| 1-0981 | INST SIGNAL GEAR, MAD AND TERRY | 2023-10-02 → 2023-09-25 A (-7d) | 2023-10-02 → 2023-09-29 A (-3d) |  | 0% → 100% | 41d → none | 1-0980 → 1-0982 | resources none → MBRT BASE [40 h] |
| 1-0977 | INST SIGNAL CABINET, MAD & TERRY | 2023-09-22 → 2023-10-02 A (+10d) | 2023-09-22 → 2023-10-02 A (+10d) |  | 0% → 100% | 41d → none | 1-0726, 1-0985 → 1-0726, 1-0985, 1-0981, 1-1067 | resources none → MBRT BASE [8 h] |
| 1-0986 | NOTIFY SDOT, MAD AND TERRY | 2023-10-06 → 2023-10-02 A (-4d) | 2023-10-06 → 2023-10-02 A (-4d) | 0d → 1d | 0% → 100% | 41d → none | 1-0985, 1-0982 → 1-0985, 1-0982, 1-0977 SS | resources none → MBRT BASE [8 h] |
| 1-0987 | SDOT INSPECTION, MAD AND TERRY | 2023-10-06 → 2023-10-03 A (-3d) | 2023-10-12 → 2023-10-11 A (-1d) |  | 0% → 100% | 41d → none |  | resources none → MBRT BASE [56 h] |
| 1-0988 | COMM SIGNAL, MAD AND TERRY | 2023-10-13 → 2023-10-12 A (-1d) | 2023-10-13 → 2023-10-12 A (-1d) |  | 0% → 100% | 41d → none |  | resources none → MBRT BASE [8 h] |
| 1-0804 | INST SIGNAL GEAR, 2ND AND SPRING |  |  |  |  |  |  | resources none → MBRT BASE [8 h] |
| 1-0806 | INST WIRING, 2ND AND SPRING |  |  |  |  |  |  | resources none → MBRT BASE [8 h] |
| 1-0808 | SDOT INSPECTION, 2ND AND SPRING |  |  |  |  |  |  | resources none → MBRT BASE [40 h] |
| 1-1400 | DELAY AWAITING SDOT |  |  |  |  |  |  | resources none → MBRT NEW |
| 1-0809 | COMM SIGNAL, 2ND AND SPRING |  |  |  |  |  |  | resources none → MBRT BASE [8 h] |
| 1-0805 | INST MAGNOMETERS, 2ND AND SPRING |  |  |  |  |  |  | resources none → MBRT BASE [8 h] |
| 1-0807 | NOTIFY SDOT, 2ND AND SPRING |  |  |  |  |  |  | resources none → MBRT BASE |
| 20 | **MADISON AND BOREN** | 2023-08-14 → 2023-09-29 (+46d) | 2024-01-09 → 2024-03-12 (+63d) |  |  |  |  |  |
| 1-0991 | INST SERVICE CABINET, MAD & BOREN | 2023-08-31 → 2023-09-29 A (+29d) | 2023-08-31 → 2023-09-29 A (+29d) |  | 0% → 100% | -68d → none | 1-0732 → 1-0732, 1-0643 | resources none → MBRT BASE [8 h] |
| 1-0992 | INST MAST ARM POLES, MAD & BOREN | 2023-08-14 → 2023-10-02 A (+49d) | 2023-08-23 → 2023-10-11 A (+49d) |  | 0% → 100% | 4d → none | none → 1-0981 | resources none → MBRT BASE [64 h] |
| 1-8882 | SDCI INSPECTION | 2023-09-01 → 2023-10-02 A (+31d) | 2023-09-01 → 2023-10-02 A (+31d) |  | 0% → 100% | -68d → none |  | resources none → MBRT NEW |
| 1-8927 | SDOT INSPECTION | 2023-09-05 → 2023-10-03 A (+28d) | 2023-09-05 → 2023-10-03 A (+28d) |  | 0% → 100% | -68d → none |  | resources none → MBRT NEW |
| 1-0998 | SCL INSPECTION REQUEST | 2023-09-06 → 2023-10-04 A (+28d) | 2023-09-06 → 2023-10-04 A (+28d) |  | 0% → 100% | -68d → none |  | resources none → MBRT BASE |
| 1-0999 | 30 DAY WAIT FOR SCL TO INSPECT | 2023-09-06 → 2023-10-04 A (+28d) | 2023-10-17 → 2023-10-27 A (+10d) | 30d → 21d | 0% → 100% | -68d → none |  | resources none → MBRT BASE |
| 1-1470 | INST MAST ARMS, MAD & BOREN | 2023-12-08 → 2024-02-26 A (+80d) | 2023-12-19 → 2024-02-26 A (+69d) |  | 0% → 100% | -68d → none | 1-0992, 1-0991, 1-0990 → 1-0992, 1-0991 | resources none → MBRT NEW [64 h] |
| 1-0993 | INST PPB POSTS, MAD AND BOREN | 2023-12-20 → 2024-03-04 A (+75d) | 2023-12-20 → 2024-03-04 A (+75d) |  | 0% → 100% | -68d → none | 1-1470, 1-0990 → 1-1470 | resources none → MBRT BASE [8 h] |
| 1-0997 | INST WIRING, MAD AND BOREN | 2023-12-27 → 2024-03-04 A (+68d) | 2023-12-29 → 2024-03-06 A (+68d) |  | 0% → 100% | -68d → none | 1-0996 → 1-1470 | resources none → MBRT BASE [24 h] |
| 1-0994 | INST PEDISTALS, MAD AND BOREN | 2023-12-21 → 2024-03-05 A (+75d) | 2023-12-21 → 2024-03-05 A (+75d) |  | 0% → 100% | -68d → none |  | resources none → MBRT BASE [8 h] |
| 1-0995 | INST SIGNAL GEAR, MAD AND BOREN | 2023-12-22 → 2024-03-06 A (+75d) | 2023-12-22 → 2024-03-06 A (+75d) |  | 0% → 100% | -68d → none |  | resources none → MBRT BASE [8 h] |
| 1-0996 | INST MEGNOMETERS, MAD AND BOREN | 2023-12-26 → 2024-03-07 A (+72d) | 2023-12-26 → 2024-03-07 A (+72d) |  | 0% → 100% | -68d → none |  | resources none → MBRT BASE [8 h] |
| 1-1000 | COMM SERVICE, MAD AND BOREN | 2023-12-06 → 2024-03-08 A (+93d) | 2023-12-06 → 2024-03-08 A (+93d) |  | 0% → 100% | -68d → none |  | resources none → MBRT BASE [8 h] |
| 1-1001 | NOTIFY SDOT, MAD AND BOREN | 2024-01-02 → 2024-03-08 A (+66d) | 2024-01-02 → 2024-03-08 A (+66d) |  | 0% → 100% | -30d → none |  | resources none → MBRT BASE |
| 1-3266 | SCL INSPECTION | 2023-10-18 → 2024-03-08 A (+142d) | 2023-10-18 → 2024-03-08 A (+142d) |  | 0% → 100% | -68d → none | 1-0999 → 1-0999, 1-1152, 1-0996, 1-0968 | resources none → MBRT NEW [8 h] |
| 1-3267 | COMMISION NOTIFICATION | 2023-10-19 → 2024-03-08 A (+141d) | 2023-10-19 → 2024-03-08 A (+141d) |  | 0% → 100% | -68d → none |  | resources none → MBRT NEW |
| 1-3268 | 30 DAY WAIT FOR SCL TO COMMISION | 2023-10-20 → 2024-03-08 A (+140d) | 2023-12-05 → 2024-03-08 A (+94d) | 30d → 21d | 0% → 100% | -68d → none |  | resources none → MBRT NEW |
| 1-0990 | INST SIGNAL CABINET, MAD & BOREN | 2023-12-07 → 2024-03-11 A (+95d) | 2023-12-07 → 2024-03-11 A (+95d) |  | 0% → 100% | -68d → none |  | resources none → MBRT BASE [8 h] |
| 1-1002 | SDOT INSPECTION, MAD AND BOREN | 2024-01-02 → 2024-03-11 A (+69d) | 2024-01-08 → 2024-03-11 A (+63d) |  | 0% → 100% | -30d → none | 1-1001 → 1-1001, 1-0990 | resources none → MBRT BASE [40 h] |
| 1-1003 | COMM SIGNAL, MAD AND BOREN | 2024-01-09 → 2024-03-12 A (+63d) | 2024-01-09 → 2024-03-12 A (+63d) |  | 0% → 100% | -30d → none |  | resources none → MBRT BASE [8 h] |
| 21 | **MADISON AND MINOR** |  | 2023-10-17 → 2024-03-18 (+153d) |  |  |  |  |  |
| 1-1006 | INST SERVICE CABINET, MAD & MINOR |  |  |  |  |  |  | resources none → MBRT BASE [8 h] |
| 1-6297 | SDCI INSPECTION |  |  |  |  |  |  | resources none → MBRT NEW |

| ID | Task | Start | Finish | Duration | Complete | Total float | Predecessors | Other |
| --- | --- | --- | --- | --- | --- | --- | --- | --- |
| 1-6298 | SDOT INSPECTION |  |  |  |  |  |  | resources none → MBRT NEW |
| 1-1017 | INST OCS POLE, MAD AND MINOR |  |  |  |  |  |  | resources none → MBRT BASE [40 h] |
| 1-6299 | SCL INSPECTION REQUEST | 2023-06-14 A → 2023-10-03 A (+111d) | 2023-06-14 A → 2023-10-03 A (+111d) |  |  |  |  | resources none → MBRT NEW |
| 1-6300 | 30 DAY WAIT FOR SCL TO INSPECT | 2023-06-15 A → 2023-10-04 A (+111d) | 2023-08-11 A → 2023-10-27 A (+77d) | 30d → 21d |  |  |  | resources none → MBRT NEW |
| 1-6301 | SCL INSPECTION | 2023-08-14 → 2024-03-04 A (+203d) | 2023-08-14 → 2024-03-04 A (+203d) |  | 0% → 100% | 1d → none | 1-6300 → 1-6300, 1-6311, 1-6321 | resources none → MBRT NEW [8 h] |
| 1-6302 | COMMISION NOTIFICATION | 2023-08-15 → 2024-03-05 A (+203d) | 2023-08-15 → 2024-03-05 A (+203d) |  | 0% → 100% | 1d → none |  | resources none → MBRT NEW |
| 1-6303 | 30 DAY WAIT FOR SCL TO COMMISION | 2023-08-16 → 2024-03-06 A (+203d) | 2023-09-27 → 2024-03-06 A (+161d) | 30d → 1d | 0% → 100% | 1d → none |  | resources none → MBRT NEW |
| 1-1013 | COMM SERVICE, MAD AND MINOR | 2023-09-28 → 2024-03-07 A (+161d) | 2023-09-28 → 2024-03-07 A (+161d) |  | 0% → 100% | 1d → none |  | resources none → MBRT BASE [8 h] |
| 1-1005 | INST SIGNAL CABINET, MAD & MINOR | 2023-09-29 → 2024-03-08 A (+161d) | 2023-09-29 → 2024-03-08 A (+161d) |  | 0% → 100% | 1d → none |  | resources none → MBRT BASE [8 h] |
| 1-1007 | INST PPB POSTS, MAD AND MINOR | 2023-10-02 → 2024-03-11 A (+161d) | 2023-10-02 → 2024-03-11 A (+161d) |  | 0% → 100% | 1d → none |  | resources none → MBRT BASE [8 h] |
| 1-1008 | INST PEDISTALS, MAD AND MINOR | 2023-10-03 → 2024-03-12 A (+161d) | 2023-10-03 → 2024-03-12 A (+161d) |  | 0% → 100% | 1d → none |  | resources none → MBRT BASE [8 h] |
| 1-1009 | INST SIGNAL GEAR, MAD AND MINOR | 2023-10-04 → 2024-03-13 A (+161d) | 2023-10-04 → 2024-03-13 A (+161d) |  | 0% → 100% | 1d → none |  | resources none → MBRT BASE [8 h] |
| 1-1010 | INST WIRING, MAD AND MINOR | 2023-10-05 → 2024-03-14 A (+161d) | 2023-10-09 → 2024-03-15 A (+158d) | 3d → 2d | 0% → 100% | 1d → none |  | resources none → MBRT BASE [16 h] |
| 1-1014 | NOTIFY SDOT, MAD AND MINOR | 2023-10-10 → 2024-03-18 A (+160d) | 2023-10-10 → 2024-03-18 A (+160d) |  | 0% → 100% | 42d → none |  | resources none → MBRT BASE |
| 1-1015 | SDOT INSPECTION, MAD AND MINOR | 2023-10-10 → 2024-03-18 A (+160d) | 2023-10-16 → 2024-03-18 A (+154d) |  | 0% → 100% | 42d → none |  | resources none → MBRT BASE [40 h] |
| 1-1016 | COMM SIGNAL, MAD AND MINOR | 2023-10-17 → 2024-03-18 A (+153d) | 2023-10-17 → 2024-03-18 A (+153d) |  | 0% → 100% | 42d → none |  | resources none → MBRT BASE [8 h] |
| 22 | **MADISON AND SUMMIT** | 2023-08-14 → 2023-06-13 (-62d) | 2023-12-08 → 2024-03-21 (+104d) |  |  |  |  |  |
| 1-1019 | INST SERVICE CABINET, MAD & SUMMIT | 2023-08-14 → 2023-06-13 A (-62d) | 2023-08-14 → 2023-06-13 A (-62d) |  | 0% → 100% | -37d → none |  | resources none → MBRT BASE [8 h] |
| 1-7882 | SDCI INSPECTION | 2023-08-15 → 2023-06-14 A (-62d) | 2023-08-15 → 2023-06-14 A (-62d) |  | 0% → 100% | -37d → none |  | resources none → MBRT NEW |
| 1-7927 | SDOT INSPECTION | 2023-08-16 → 2023-06-15 A (-62d) | 2023-08-16 → 2023-06-15 A (-62d) |  | 0% → 100% | -37d → none |  | resources none → MBRT NEW |
| 1-1025 | SCL INSPECTION REQUEST | 2023-08-17 → 2023-10-03 A (+47d) | 2023-08-17 → 2023-10-03 A (+47d) |  | 0% → 100% | -37d → none | 1-7927 → 1-7927, 1-6299 SS | resources none → MBRT BASE |
| 1-1026 | 30 DAY WAIT FOR SCL TO INSPECT | 2023-08-17 → 2023-10-04 A (+48d) | 2023-09-28 → 2023-10-27 A (+29d) | 30d → 21d | 0% → 100% | -37d → none |  | resources none → MBRT BASE |
| 1-7301 | SCL INSPECTION | 2023-09-29 → 2024-03-04 A (+157d) | 2023-09-29 → 2024-03-04 A (+157d) |  | 0% → 100% | -37d → none | 1-1026 → 1-1026, 1-1085 | resources none → MBRT NEW [8 h] |
| 1-7302 | COMMISION NOTIFICATION | 2023-10-02 → 2024-03-05 A (+155d) | 2023-10-02 → 2024-03-05 A (+155d) |  | 0% → 100% | -37d → none |  | resources none → MBRT NEW |
| 1-7303 | 30 DAY WAIT FOR SCL TO COMMISION | 2023-10-03 → 2024-03-06 A (+155d) | 2023-11-14 → 2024-03-06 A (+113d) | 30d → 1d | 0% → 100% | -37d → none |  | resources none → MBRT NEW |
| 1-1027 | COMM SERVICE, MAD AND SUMMIT | 2023-11-15 → 2024-03-07 A (+113d) | 2023-11-15 → 2024-03-07 A (+113d) |  | 0% → 100% | -37d → none |  | resources none → MBRT BASE [8 h] |
| 1-1018 | INST SIGNAL CABINET, MAD & SUMMIT | 2023-11-16 → 2024-03-08 A (+113d) | 2023-11-16 → 2024-03-08 A (+113d) |  | 0% → 100% | -37d → none |  | resources none → MBRT BASE [8 h] |
| 1-1020 | INST MAST ARM POLES, MAD & SUMMIT | 2023-11-17 → 2024-03-11 A (+115d) | 2023-11-20 → 2024-03-12 A (+113d) |  | 0% → 100% | -33d → none |  | resources none → MBRT BASE [16 h] |
| 1-1475 | INST MAST ARMS, MAD & SUMMIT | 2023-11-17 → 2024-03-11 A (+115d) | 2023-11-20 → 2024-03-12 A (+113d) |  | 0% → 100% | -37d → none |  | resources none → MBRT NEW [16 h] |
| 1-1021 | INST PPB POSTS, MAD AND SUMMIT | 2023-11-21 → 2024-03-13 A (+113d) | 2023-11-21 → 2024-03-13 A (+113d) |  | 0% → 100% | -37d → none |  | resources none → MBRT BASE [8 h] |
| 1-1022 | INST PEDISTALS, MAD AND SUMMIT | 2023-11-22 → 2024-03-14 A (+113d) | 2023-11-22 → 2024-03-14 A (+113d) |  | 0% → 100% | -37d → none |  | resources none → MBRT BASE [8 h] |
| 1-1023 | INST SIGNAL GEAR, MAD AND SUMMIT | 2023-11-27 → 2024-03-15 A (+109d) | 2023-11-27 → 2024-03-15 A (+109d) |  | 0% → 100% | -37d → none |  | resources none → MBRT BASE [8 h] |
| 1-1024 | INST WIRING, MAD AND SUMMIT | 2023-11-28 → 2024-03-18 A (+111d) | 2023-11-30 → 2024-03-19 A (+110d) | 3d → 2d | 0% → 100% | -37d → none | 1-1023 → 1-1023, 1-1020 | resources none → MBRT BASE [16 h] |
| 1-1028 | NOTIFY SDOT, MAD AND SUMMIT | 2023-12-01 → 2024-03-20 A (+110d) | 2023-12-01 → 2024-03-20 A (+110d) |  | 0% → 100% | 8d → none |  | resources none → MBRT BASE |
| 1-1029 | SDOT INSPECTION, MAD AND SUMMIT | 2023-12-01 → 2024-03-20 A (+110d) | 2023-12-07 → 2024-03-20 A (+104d) |  | 0% → 100% | 8d → none |  | resources none → MBRT BASE [40 h] |
| 1-1030 | COMM SIGNAL, MAD AND SUMMIT | 2023-12-08 → 2024-03-21 A (+104d) | 2023-12-08 → 2024-03-21 A (+104d) |  | 0% → 100% | 8d → none |  | resources none → MBRT BASE [8 h] |
| 23 | **MADISON AND BOYLSTON** |  | 2023-12-22 → 2024-02-20 (+60d) |  |  |  |  |  |
| 1-1047 | INST OCS POLES, MAD AND BOYLSTON |  |  |  |  |  |  | resources none → MBRT BASE [40 h] |
| 1-1033 | INST SERVICE CABINET, MAD & BOYLSTON | 2023-08-29 → 2023-12-07 A (+100d) | 2023-08-29 → 2023-12-07 A (+100d) |  | 0% → 100% | -7d → none | 1-0661, 1-0750, 1-9094 → 1-0661, 1-0750, 1-9094, 1-1082 FF | resources none → MBRT BASE [8 h] |
| 1-1050 | SDCI INSPECTION | 2023-08-30 → 2023-12-08 A (+100d) | 2023-08-30 → 2023-12-08 A (+100d) |  | 0% → 100% | -7d → none |  | resources none → MBRT NEW |
| 1-1070 | SDOT INSPECTION | 2023-08-31 → 2023-12-15 A (+106d) | 2023-08-31 → 2023-12-15 A (+106d) |  | 0% → 100% | -7d → none |  | resources none → MBRT NEW |
| 1-1038 | SCL INSPECTION REQUEST | 2023-09-01 → 2023-12-18 A (+108d) | 2023-09-01 → 2023-12-18 A (+108d) |  | 0% → 100% | -7d → none |  | resources none → MBRT BASE |
| 1-1039 | 30 DAY WAIT FOR SCL TO INSPECT | 2023-09-01 → 2023-12-19 A (+109d) | 2023-10-13 → 2024-01-12 A (+91d) | 30d → 21d | 0% → 100% | -7d → none |  | resources none → MBRT BASE |
| 1-1079 | SCL INSPECTION | 2023-10-16 → 2024-01-16 A (+92d) | 2023-10-16 → 2024-01-16 A (+92d) |  | 0% → 100% | -7d → none |  | resources none → MBRT NEW |
| 1-1091 | COMMISION NOTIFICATION | 2023-10-17 → 2024-01-17 A (+92d) | 2023-10-17 → 2024-01-17 A (+92d) |  | 0% → 100% | -7d → none |  | resources none → MBRT NEW |
| 1-1099 | 30 DAY WAIT FOR SCL TO COMMISION | 2023-10-18 → 2024-01-17 A (+91d) | 2023-12-01 → 2024-02-19 A (+80d) | 30d → 21d | 0% → 100% | -7d → none |  | resources none → MBRT NEW |
| 1-1032 | INST SIGNAL CABINET, MAD & BOYLSTON | 2023-12-05 → 2024-01-29 A (+55d) | 2023-12-05 → 2024-02-02 A (+59d) |  | 0% → 100% | -7d → none | 1-0750 FF, 1-0661, 1-1040 → 1-0750 FF, 1-0661, 1-1079, 1-1099 SS | resources none → MBRT BASE [40 h] |
| 1-1034 | INST PPB POSTS, MAD AND BOYLSTON | 2023-12-06 → 2024-01-29 A (+54d) | 2023-12-06 → 2024-02-02 A (+58d) |  | 0% → 100% | -7d → none | 1-1033, 1-1032 → 1-1033, 1-1032, 1-1079 | resources none → MBRT BASE [40 h] |
| 1-1035 | INST PEDISTALS, MAD AND BOYLSTON | 2023-12-07 → 2024-01-29 A (+53d) | 2023-12-08 → 2024-02-02 A (+56d) |  | 0% → 100% | -7d → none | 1-1034 → 1-1034, 1-1079 | resources none → MBRT BASE [40 h] |
| 1-1036 | INST SIGNAL GEAR, MAD & BOYLSTON | 2023-12-11 → 2024-01-29 A (+49d) | 2023-12-11 → 2024-02-02 A (+53d) |  | 0% → 100% | -7d → none | 1-1035 → 1-1035, 1-1079 | resources none → MBRT BASE [40 h] |
| 1-1037 | INST WIRING, MAD AND BOYLSTON | 2023-12-12 → 2024-01-29 A (+48d) | 2023-12-14 → 2024-02-02 A (+50d) |  | 0% → 100% | -7d → none | 1-1036 → 1-1036, 1-1079 | resources none → MBRT BASE [40 h] |
| 1-1041 | NOTIFY SDOT, MAD AND BOYLSTON | 2023-12-15 → 2024-02-16 A (+63d) | 2023-12-15 → 2024-02-16 A (+63d) |  | 0% → 100% | -1d → none |  | resources none → MBRT BASE |
| 1-1040 | COMM SERVICE, MAD AND BOYLSTON | 2023-12-04 → 2024-02-20 A (+78d) | 2023-12-04 → 2024-02-20 A (+78d) |  | 0% → 100% | -7d → none | 1-1039, 1-1099 → 1-1039, 1-1099 SS | resources none → MBRT BASE [8 h] |
| 1-1042 | SDOT INSPECTION, MAD AND BOYLSTON | 2023-12-15 → 2024-02-20 A (+67d) | 2023-12-21 → 2024-02-20 A (+61d) |  | 0% → 100% | -1d → none |  | resources none → MBRT BASE [8 h] |
| 1-1043 | COMM SIGNAL, MAD AND BOYLSTON | 2023-12-22 → 2024-02-20 A (+60d) | 2023-12-22 → 2024-02-20 A (+60d) |  | 0% → 100% | -1d → none | 1-1042, 1-1030 → 1-1042 | resources none → MBRT BASE [8 h] |
| 1-0816 | SCL INSPECTION REQUEST |  |  |  |  |  |  | resources none → MBRT BASE |
| 1-0817 | SCL INSPECTION |  |  |  |  |  |  | resources none → MBRT BASE [64 h] |
| 1-0811 | INST OCS POLE, 3RD AND SPRING |  |  |  |  |  |  | resources none → MBRT BASE [8 h] |
| 1-0812 | INST PPB POSTS, 3RD AND SPRING |  |  |  |  |  |  | resources none → MBRT BASE [8 h] |
| 1-0813 | INST OWNER FURNISHED CABINET, 3RD & SPRING |  |  |  |  |  |  | resources none → MBRT BASE [8 h] |
| 1-0814 | INST SIGNAL GEAR, 3RD AND SPRING |  |  |  |  |  |  | resources none → MBRT BASE [8 h] |
| 1-0815 | INST WIRING, 3RD AND SPRING |  |  |  |  |  |  | resources none → MBRT BASE [8 h] |
| 1-0818 | SCL COMMISION SERVICE, 3RD AND SPRING |  |  |  |  |  |  | resources none → MBRT BASE [8 h] |
| 1-0819 | NOTIFY SDOT, 3RD AND SPRING |  |  | 0d → 1d |  |  |  | resources none → MBRT BASE [8 h] |
| 1-0820 | SDOT INSPECTION, 3RD AND SPRING |  |  |  |  |  |  | resources none → MBRT BASE [120 h] |
| PCO552.01 | DSC 389-Prime 3rd and Spring traffic wiring existing conditions |  |  |  |  |  | none → MS-0025 | resources none → MBRT DSC [104 h] |
| 1-1405 | DELAY - SDOT PROGRAMMED CABINET INCORRECTLY |  |  |  |  |  |  | resources none → MBRT NEW [40 h] |
| 1-0821 | COMM SIGNAL, 3RD AND SPRING |  |  |  |  |  |  | resources none → MBRT BASE [8 h] |
| 1-0824 | NOTIFY SDOT, 4TH AND SPRING |  |  |  |  |  |  | resources none → MBRT BASE |
| 1-0825 | SDOT INSPECTION, 4TH AND SPRING |  |  |  |  |  |  | resources none → MBRT BASE [40 h] |

| ID | Task | Start | Finish | Duration | Complete | Total float | Predecessors | Other |
| --- | --- | --- | --- | --- | --- | --- | --- | --- |
| 1-0826 | COMM SIGNAL, 4TH AND SPRING |  |  |  |  |  |  | resources none → MBRT BASE [8 h] |
| 1-0823 | INST MAGNOMETERS & ACCESS POINT, 4TH & SPRING |  |  |  |  |  |  | resources none → MBRT BASE [16 h] |
| 1-0829 | INST SIGNAL GEAR, 5TH AND SPRING |  |  |  |  |  |  | resources none → MBRT BASE [8 h] |
| 1-0830 | SPLICE LOOP LEAN IN, 5TH AND SPRING |  |  |  |  |  |  | resources none → MBRT BASE [8 h] |
| 1-0831 | NOTIFY SDOT, 5TH AND SPRING |  |  |  |  |  |  | resources none → MBRT BASE |
| 1-0828 | INST OWNER FURNISHED CABINET, 5TH & SPRING |  |  |  |  |  |  | resources none → MBRT BASE [8 h] |
| 1-0832 | SDOT INSPECTION, 5TH AND SPRING |  |  |  |  |  |  | resources none → MBRT BASE [56 h] |
| 1-0833 | COMM SIGNAL, 5TH AND SPRING |  |  |  |  |  |  | resources none → MBRT BASE [8 h] |
| 1-0836 | NOTIFY SDOT, SPRING AND 6TH |  |  |  |  |  |  | resources none → MBRT BASE |
| 1-0835 | INST SIGNAL CAMERA, SPRING AND 6TH |  |  |  |  |  |  | resources none → MBRT BASE [8 h] |
| 1-0837 | COMM SIGNAL, SPRING AND 6TH |  |  |  |  |  |  | resources none → MBRT BASE [8 h] |
| 7 | **SPRING AND 7TH** | 2023-04-27 → 2023-07-05 (+69d) | 2023-12-07 → 2024-05-06 (+151d) |  |  |  |  |  |
| 1-0840 | INST MAST ARM POLE, SPRING AND 7TH | 2023-11-15 → 2023-07-05 A (-133d) | 2023-11-16 → 2023-07-06 A (-133d) |  | 0% → 100% | -52d → none | PMP-0016, 1-0864 → PMP-0016, 1-0823 | resources none → MBRT BASE [16 h] |
| 1-0839 | INST SERVICE CABINET, SPRING AND 7TH | 2023-04-27 A → 2023-08-08 A (+103d) | 2023-04-27 A → 2023-08-08 A (+103d) |  |  |  |  | resources none → MBRT BASE [8 h] |
| 1-9082 | SDCI INSPECTION | 2023-06-02 A → 2023-08-09 A (+68d) | 2023-06-02 A → 2023-08-09 A (+68d) |  |  |  | none → 1-0839 | resources none → MBRT NEW |
| 1-9083 | SDOT INSPECTION | 2023-06-14 A → 2023-08-10 A (+57d) | 2023-06-14 A → 2023-08-10 A (+57d) |  |  |  |  | resources none → MBRT NEW |
| 1-9084 | SCL INSPECTION REQUEST | 2023-08-14 → 2023-08-11 A (-3d) | 2023-08-14 → 2023-08-17 A (+3d) |  | 0% → 100% | -52d → none |  | constraint start on or after 2023-07-03 → none; resources none → MBRT NEW |
| 1-8095 | 30 DAY WAIT FOR SCL TO INSPECT | 2023-08-15 → 2023-08-18 A (+3d) | 2023-09-26 → 2023-08-24 A (-33d) | 30d → 21d | 0% → 100% | -52d → none |  | resources none → MBRT NEW |
| 1-8096 | SCL INSPECTION | 2023-09-27 → 2023-08-25 A (-33d) | 2023-09-27 → 2023-08-25 A (-33d) |  | 0% → 100% | -52d → none |  | resources none → MBRT NEW |
| 1-8097 | COMMISION NOTIFICATION | 2023-09-28 → 2023-08-28 A (-31d) | 2023-09-28 → 2023-08-28 A (-31d) |  | 0% → 100% | -52d → none |  | resources none → MBRT NEW |
| 1-8098 | 30 DAY WAIT FOR SCL TO COMMISION | 2023-09-29 → 2023-08-29 A (-31d) | 2023-11-09 → 2023-09-05 A (-65d) | 30d → 21d | 0% → 100% | -52d → none |  | resources none → MBRT NEW |
| 1-0846 | COMM SERVICE, SPRING AND 7TH | 2023-11-10 → 2023-09-06 A (-65d) | 2023-11-10 → 2023-09-06 A (-65d) |  | 0% → 100% | -52d → none |  | resources none → MBRT BASE [8 h] |
| 1-0864 | Install Owner-Furnished Signal Cabinet | 2023-11-14 → 2023-10-23 A (-22d) | 2023-11-14 → 2023-10-23 A (-22d) |  | 0% → 100% | -52d → none |  | resources none → MBRT NEW [8 h] |
| 1-1430 | INST MAST ARMS, SPRING AND 7TH | 2023-11-17 → 2024-04-09 (+144d) | 2023-11-20 → 2024-04-10 (+142d) |  |  | -52d → -111d | 1-0840, 1-0864 → 1-0840, 1-0864, 1-1545 | resources none → MBRT NEW [16 h] |
| 1-0841 | INST PPB POST, SPRING AND 7TH | 2023-11-21 → 2024-04-11 (+142d) | 2023-11-21 → 2024-04-11 (+142d) |  |  | -52d → -111d | 1-0840, 1-1430 → 1-0840, 1-1430, 2-1593 | resources none → MBRT BASE [8 h] |
| 1-0842 | INST PEDISTAL, SPRING AND 7TH | 2023-11-22 → 2024-04-12 (+142d) | 2023-11-22 → 2024-04-12 (+142d) |  |  | -52d → -111d |  | resources none → MBRT BASE [8 h] |
| 1-0843 | INST WIRING, SPRING AND 7TH | 2023-11-27 → 2024-04-24 (+149d) | 2023-11-29 → 2024-04-26 (+149d) |  |  | -52d → -111d | 1-0842 → 1-0842 FS+7d | resources none → MBRT BASE [24 h] |
| 1-0847 | NOTIFY SDOT, SPRING AND 7TH | 2023-11-30 → 2024-04-29 (+151d) | 2023-11-30 → 2024-04-29 (+151d) |  |  | -52d → -97d |  | resources none → MBRT BASE |
| 1-0848 | SDOT INSPECTION, SPRING AND 7TH | 2023-11-30 → 2024-04-29 (+151d) | 2023-12-06 → 2024-05-03 (+149d) |  |  | -52d → -97d |  | resources none → MBRT BASE [40 h] |
| 1-0849 | COMM SIGNAL, SPRING AND 7TH | 2023-12-07 → 2024-05-06 (+151d) | 2023-12-07 → 2024-05-06 (+151d) |  |  | -52d → -97d |  | resources none → MBRT BASE [8 h] |
| 8 | **SPRING AND 8TH** |  | 2023-12-08 → 2023-11-10 (-28d) |  |  |  |  |  |
| 1-0852 | INST SERVICE CABINET, SPRING AND 8TH |  |  |  |  |  |  | resources none → MBRT BASE [8 h] |
| 1-0854 | INST STRAIN POLE, SPRING AND 8TH |  |  |  |  |  |  | resources none → MBRT BASE [8 h] |
| 1-7110 | SDCI INSPECTION |  |  |  |  |  | none → 1-0854 | resources none → MBRT NEW |
| 1-7111 | SDOT INSPECTION |  |  |  |  |  |  | resources none → MBRT NEW |
| 1-1435 | INST MAST ARM POLES, SPRING AND 8TH |  |  |  |  |  |  | resources none → MBRT NEW [48 h] |
| 1-0858 | SCL INSPECTION REQUEST |  |  |  |  |  |  | constraint start on or after 2023-07-03 → none; resources none → MBRT BASE |
| 1-0859 | 30 DAY WAIT FOR SCL TO INSPECT |  | 2023-08-29 A | 30d → 21d | 0% → 100% | -34d → none |  | resources none → MBRT BASE |
| 1-6114 | SCL INSPECTION | 2023-08-30 A | 2023-08-30 A |  | 0% → 100% | -34d → none |  | resources none → MBRT NEW |
| 1-6115 | SCL COMMISION NOTIFICATION | 2023-08-31 A | 2023-08-31 A |  | 0% → 100% | -34d → none |  | resources none → MBRT NEW |
| 1-6116 | 30 DAY WAIT FOR SCL TO COMMISION | 2023-09-01 A | 2023-10-13 → 2023-09-15 A (-28d) | 30d → 21d | 0% → 100% | -34d → none |  | resources none → MBRT NEW |
| 1-0860 | SCL COMMISION SERVICE, SPRING AND 8TH | 2023-10-16 → 2023-09-18 A (-28d) | 2023-10-16 → 2023-09-18 A (-28d) |  | 0% → 100% | -34d → none |  | resources none → MBRT BASE [8 h] |
| 1-0853 | INST MAST ARMS, SPRING AND 8TH | 2023-10-18 → 2023-10-11 A (-7d) | 2023-10-25 → 2023-10-12 A (-13d) |  | 0% → 100% | -34d → none | 1-0852, 1-1435, 1-0851 → 1-0852, 1-1435 | resources none → MBRT BASE [16 h] |
| 1-0855 | INST PPB POST, SPRING AND 8TH | 2023-10-26 → 2023-10-13 A (-13d) | 2023-10-26 → 2023-10-13 A (-13d) |  | 0% → 100% | -34d → none | 1-0854, 1-0853, 1-0851 → 1-0854, 1-0853 | resources none → MBRT BASE [8 h] |
| 1-0856 | INST PEDISTALS, SPRING AND 8TH | 2023-10-27 → 2023-10-16 A (-11d) | 2023-10-27 → 2023-10-16 A (-11d) |  | 0% → 100% | -34d → none |  | resources none → MBRT BASE [8 h] |
| 1-0857 | INST WIRING, SPRING AND 8TH | 2023-10-30 → 2023-10-17 A (-13d) | 2023-11-01 → 2023-10-19 A (-13d) |  | 0% → 100% | -34d → none |  | resources none → MBRT BASE [24 h] |
| 1-0861 | NOTIFY SDOT, SPRING AND 8TH | 2023-11-02 → 2023-10-19 A (-14d) | 2023-11-02 → 2023-10-19 A (-14d) | 0d → 1d | 0% → 100% | -34d → none |  | resources none → MBRT BASE [8 h] |
| 1-0851 | INST OWNER FURNISHED SIGNAL CABINET, SPRING & 8TH | 2023-10-17 → 2023-10-25 A (+8d) | 2023-10-17 → 2023-10-25 A (+8d) |  | 0% → 100% | -34d → none |  | resources none → MBRT BASE [8 h] |
| 1-0862 | SDOT INSPECTION, SPRING AND 8TH | 2023-11-02 → 2023-10-26 A (-7d) | 2023-11-08 → 2023-11-09 A (+1d) |  | 0% → 100% | -34d → none | 1-0861 → 1-0861, 1-0851 | resources none → MBRT BASE [88 h] |
| 1-0863 | SDOT COMM SIGNAL, SPRING AND 8TH | 2023-12-08 → 2023-11-10 A (-28d) | 2023-12-08 → 2023-11-10 A (-28d) |  | 0% → 100% | -52d → none | 1-0862, 1-0849 → 1-0862 | resources none → MBRT BASE [8 h] |
| 9 | **SPRING AND 9TH** |  | 2024-02-01 → 2024-06-19 (+139d) |  |  |  |  |  |
| 1-0869 | INST OCS POLES, SPRING AND 9TH |  |  |  |  |  |  | resources none → MBRT BASE [16 h] |
| 1-1440 | INST MAST ARM POLES, SPRING AND 9TH |  |  |  |  |  |  | resources none → MBRT NEW [152 h] |
| 1-0868 | INST MAST ARMS, SPRING AND 9TH |  |  |  |  |  |  | resources none → MBRT BASE [48 h] |
| 1-0867 | INST SERVICE CABINET, SPRING AND 9TH | 2023-10-10 → 2024-04-24 (+197d) | 2023-10-10 → 2024-04-24 (+197d) |  |  | -69d → -142d | 1-0552 → 1-0552, 1-0650 | resources none → MBRT BASE [8 h] |
| 1-0882 | SDCI INSPECTION | 2023-10-11 → 2024-04-25 (+197d) | 2023-10-11 → 2024-04-25 (+197d) |  |  | -69d → -142d |  | resources none → MBRT BASE [8 h] |
| 1-0927 | SDOT INSPECTION | 2023-10-11 → 2024-04-25 (+197d) | 2023-10-11 → 2024-04-25 (+197d) |  |  | -69d → -142d |  | resources none → MBRT BASE [8 h] |
| 1-0873 | SCL INSPECTION REQUEST | 2023-10-12 → 2024-04-26 (+197d) | 2023-10-12 → 2024-04-26 (+197d) |  |  | -69d → -142d |  | resources none → MBRT BASE |
| 1-0874 | 30 DAY WAIT FOR SCL TO INSPECT | 2023-10-12 → 2024-04-26 (+197d) | 2023-11-27 → 2024-04-29 (+154d) | 30d → 2d |  | -69d → -142d |  | resources none → MBRT BASE |
| 1-0942 | SCL INSPECTION | 2023-11-28 → 2024-04-30 (+154d) | 2023-11-28 → 2024-04-30 (+154d) |  |  | -69d → -142d |  | resources none → MBRT BASE [8 h] |
| 1-0947 | SCL COMMISION NOTIFICATION | 2023-11-29 → 2024-05-01 (+154d) | 2023-11-29 → 2024-05-01 (+154d) |  |  | -69d → -142d |  | resources none → MBRT NEW |
| 1-1012 | 30 DAY WAIT FOR SCL TO COMMISION | 2023-11-30 → 2024-05-02 (+154d) | 2024-01-12 → 2024-05-31 (+140d) | 30d → 21d |  | -69d → -142d |  | resources none → MBRT BASE |
| 1-0879 | SCL COMMISION SERVICE, SPRING AND 9TH | 2024-01-16 → 2024-06-03 (+139d) | 2024-01-16 → 2024-06-03 (+139d) |  |  | -69d → -142d |  | resources none → MBRT NEW [8 h] |
| 1-0865 | INST OWNER FURNISHED SIGNAL CABINET, SPRING & 9TH | 2024-01-17 → 2024-06-04 (+139d) | 2024-01-17 → 2024-06-04 (+139d) |  |  | -69d → -142d | 1-0857, 1-0605, 1-0326, 1-0879 → 1-0857, 1-0605, 1-0326, 1-0879, 1-0604, 1-0605 FF, 1-0875 SS | resources none → MBRT BASE [8 h] |
| 1-0866 | SPLICE LOOP LEED IN, SPRING AND 9TH | 2024-01-18 → 2024-06-05 (+139d) | 2024-01-18 → 2024-06-05 (+139d) |  |  | -68d → -141d |  | resources none → MBRT BASE [8 h] |
| 1-0870 | INST PPB POST, SPRING AND 9TH | 2024-01-18 → 2024-06-05 (+139d) | 2024-01-18 → 2024-06-05 (+139d) |  |  | -69d → -142d |  | resources none → MBRT BASE [8 h] |
| 1-0871 | INST PEDESTAL, SPRING AND 9TH | 2024-01-19 → 2024-06-06 (+139d) | 2024-01-19 → 2024-06-06 (+139d) |  |  | -69d → -142d |  | resources none → MBRT BASE [8 h] |
| 1-0872 | INST WIRING, SPRING AND 9TH | 2024-01-22 → 2024-06-07 (+137d) | 2024-01-24 → 2024-06-11 (+139d) |  |  | -69d → -142d |  | resources none → MBRT BASE [24 h] |
| 1-0876 | NOTIFY SDOT, SPRING AND 9TH | 2024-01-25 → 2024-06-12 (+139d) | 2024-01-25 → 2024-06-12 (+139d) |  |  | -45d → -142d |  | resources none → MBRT BASE |
| 1-0877 | SDOT INSPECTION, SPRING AND 9TH | 2024-01-25 → 2024-06-12 (+139d) | 2024-01-31 → 2024-06-18 (+139d) |  |  | -45d → -142d |  | resources none → MBRT BASE [40 h] |

| ID | Task | Start | Finish | Duration | Complete | Total float | Predecessors | Other |
| --- | --- | --- | --- | --- | --- | --- | --- | --- |
| 1-0878 | COMM SIGNAL, SPRING AND 9TH | 2024-02-01 → 2024-06-19 (+139d) | 2024-02-01 → 2024-06-19 (+139d) |  |  | -45d → -142d | 1-0877, 1-0863 → 1-0877, 1-0863, 1-0895 | resources none → MBRT BASE [8 h] |
| 15 | **ITS WIRING** | 2023-12-15 → 2024-02-05 (+52d) | 2024-01-16 → 2024-04-02 (+77d) |  |  |  |  |  |
| 1-1045 | INST ITS WIRING, ITS WIRING | 2023-12-15 → 2024-02-05 A (+52d) | 2024-01-16 → 2024-04-02 (+77d) |  |  | -7d → -61d |  | resources none → MBRT BASE [152 h] |
| 16 | **LIGHTING** | 2022-09-30 → 2023-05-05 (+217d) | 2024-05-17 → 2024-07-08 (+52d) |  |  |  |  |  |
| 1-1048 | INST PED POLE, SPRING AND 3RD |  |  |  |  |  |  | resources none → MBRT BASE [8 h] |
| 1-1049 | INST WIRING, SPRING AND 3RD | 2023-08-14 → 2023-11-21 A (+99d) | 2023-08-15 → 2023-11-22 A (+99d) |  | 0% → 100% | 50d → none | 1-1048, 1-0815 → 1-1048, 1-0815, 1-1088 | resources none → MBRT BASE [16 h] |
| 1-1480 | NOTIFY SCL, SPRING AND 3RD | 2023-08-16 → 2023-11-22 A (+98d) | 2023-08-17 → 2023-11-22 A (+97d) |  | 0% → 100% | 50d → none |  | resources none → MBRT NEW [16 h] |
| 1-1485 | SCL INSPECTION BEFORE SERVICE, SPRING AND 3RD | 2023-08-18 → 2023-11-22 A (+96d) | 2023-09-29 → 2023-11-22 A (+54d) | 30d → 10d | 0% → 100% | 50d → none |  | resources none → MBRT NEW [80 h] |
| 1-1490 | NOTIFY SCL, SPRING AND 3RD | 2023-10-02 → 2023-12-13 A (+72d) | 2023-10-03 → 2023-12-13 A (+71d) |  | 0% → 100% | 50d → none |  | resources none → MBRT NEW [16 h] |
| 1-1495 | SCL FINAL LIGHTING INSPECTION, SPRING AND 3RD | 2023-10-04 → 2023-12-14 A (+71d) | 2023-10-17 → 2024-01-11 A (+86d) |  | 0% → 100% | 50d → none |  | resources none → MBRT NEW [80 h] |
| 1-1500 | COMMISSION LIGHTING, SPRING AND 3RD | 2023-10-18 → 2024-03-21 A (+155d) | 2023-10-19 → 2024-03-22 A (+155d) |  | 0% → 100% | 50d → none | 1-1495 → 1-1495, 1-1555 | resources none → MBRT NEW [16 h] |
| 1-1051 | INST POLE, SPRING AND 7TH |  |  |  |  |  |  | resources none → MBRT BASE [16 h] |
| 1-1052 | INST WIRING, SPRING AND 7TH | 2023-11-30 → 2024-04-29 (+151d) | 2023-12-01 → 2024-04-30 (+151d) |  |  | -36d → -111d | 1-1051, 1-0843 → 1-1051, 1-0843, 1-1229 | resources none → MBRT BASE [16 h] |
| 1-1510 | NOTIFY SCL, SPRING AND 7TH | 2023-12-04 → 2024-05-01 (+149d) | 2023-12-05 → 2024-05-02 (+149d) |  |  | -36d → -111d |  | resources none → MBRT NEW |
| 1-1505 | SCL Lighting Final Inspection, SPRING AND 7TH | 2023-12-06 → 2024-05-03 (+149d) | 2024-01-19 → 2024-05-06 (+108d) | 30d → 2d |  | -36d → -111d |  | was named SCL INSPECTION BEFORE SERVICE, SPRING AND 7TH; resources none → MBRT NEW [16 h] |
| 1-1745 | NOTIFY SCL, SPRING AND 7TH | 2024-01-22 → 2024-05-07 (+106d) | 2024-01-23 → 2024-05-08 (+106d) |  |  | -36d → -111d |  | resources none → MBRT NEW |
| 1-1515 | SCL Commissioning Inspection, SPRING AND 7TH | 2024-01-24 → 2024-05-09 (+106d) | 2024-02-06 → 2024-05-22 (+106d) |  |  | -36d → -111d |  | was named SCL FINAL LIGHTING INSPECTION, SPRING AND 7TH; resources none → MBRT NEW |
| 1-1520 | COMMISSION LIGHTING, SPRING AND 7TH | 2024-02-07 → 2024-05-23 (+106d) | 2024-02-08 → 2024-05-24 (+106d) |  |  | -36d → -111d |  | resources none → MBRT NEW [16 h] |
| 1-1054 | INST POLES, SPRING AND 8TH |  |  |  |  |  |  | resources none → MBRT BASE [16 h] |
| 1-1055 | INST WIRING, SPRING AND 8TH | 2023-11-02 → 2023-11-06 A (+4d) | 2023-11-06 → 2023-11-10 A (+4d) |  | 0% → 100% | -18d → none | 1-1054, 1-0857 → 1-1054, 1-0857, 1-1388 | resources none → MBRT BASE [40 h] |
| 1-1525 | SCL INSPECTION BEFORE SERVICE, SPRING AND 8TH | 2023-11-09 → 2023-11-21 A (+12d) | 2023-12-26 → 2023-11-21 A (-35d) | 30d → 10d | 0% → 100% | -18d → none |  | resources none → MBRT NEW [80 h] |
| 1-1530 | NOTIFY SCL, SPRING AND 8TH | 2023-11-07 → 2023-11-21 A (+14d) | 2023-11-08 → 2023-11-21 A (+13d) |  | 0% → 100% | -18d → none |  | resources none → MBRT NEW [16 h] |
| 1-1535 | SCL Commissioning Inspection, SPRING AND 8TH | 2023-12-29 → 2023-11-21 A (-38d) | 2024-01-12 → 2024-04-08 (+87d) |  |  | -18d → -85d |  | was named SCL FINAL LIGHTING INSPECTION, SPRING AND 8TH; resources none → MBRT NEW |
| 1-1750 | NOTIFY SCL, SPRING AND 8TH | 2023-12-27 → 2023-11-21 A (-36d) | 2023-12-28 → 2023-11-21 A (-37d) |  | 0% → 100% | -18d → none |  | resources none → MBRT NEW [16 h] |
| 1-1540 | COMMISSION LIGHTING, SPRING AND 8TH | 2024-01-16 → 2024-04-09 (+84d) | 2024-01-17 → 2024-04-22 (+96d) | 2d → 10d |  | -18d → -85d | 1-1535 → 1-1535, 1-1095 | resources none → MBRT NEW [80 h] |
| 4 | **SPRING AND 9TH** |  | 2024-04-01 → 2024-07-08 (+98d) |  |  |  |  |  |
| 1-1850 | INSTALL POLES, SPRING AND 9TH |  |  |  |  |  | 1-1440, 1-1074 → 1-1440 | resources none → MBRT NEW [16 h] |
| 1-1057 | INST WIRING, SPRING AND 9TH | 2024-01-25 → 2024-06-12 (+139d) | 2024-01-25 → 2024-06-12 (+139d) |  |  | -69d → -138d |  | resources none → MBRT BASE [8 h] |
| 1-1830 | NOTIFY SCL, SPRING AND 9TH | 2024-01-26 → 2024-06-13 (+139d) | 2024-01-29 → 2024-06-14 (+137d) |  |  | -69d → -138d |  | resources none → MBRT NEW |
| 1-1825 | SCL Lighting Final Inspection, SPRING AND 9TH | 2024-01-30 → 2024-06-17 (+139d) | 2024-03-12 → 2024-06-18 (+98d) | 30d → 2d |  | -69d → -138d |  | was named SCL INSPECTION BEFORE SERVICE, SPRING AND 9TH; resources none → MBRT NEW [16 h] |
| 1-1845 | NOTIFY SCL, SPRING AND 9TH | 2024-03-13 → 2024-06-19 (+98d) | 2024-03-14 → 2024-06-20 (+98d) |  |  | -69d → -138d |  | resources none → MBRT NEW |
| 1-1835 | SCL Commissioning Inspection, SPRING AND 9TH | 2024-03-15 → 2024-06-21 (+98d) | 2024-03-28 → 2024-07-04 (+98d) |  |  | -69d → -138d |  | was named SCL FINAL LIGHTING INSPECTION, SPRING AND 9TH; resources none → MBRT NEW |
| 1-1840 | COMMISSION LIGHTING, SPRING AND 9TH | 2024-03-29 → 2024-07-05 (+98d) | 2024-04-01 → 2024-07-08 (+98d) |  |  | -69d → -138d | 1-1835 → 1-1835, 1-0878 | resources none → MBRT NEW [16 h] |
| 1-1059 | INST POLES, MAD AND 3RD |  |  |  |  |  |  | resources none → MBRT BASE [8 h] |
| 1-1060 | INST WIRING, MAD AND 3RD | 2023-10-23 → 2024-01-09 A (+78d) | 2023-10-24 → 2024-01-16 A (+84d) |  | 0% → 100% | -41d → none | 1-1059, 1-0901 → 1-1059, 1-0901, 1-1488 | resources none → MBRT BASE [40 h] |
| 1-1755 | SCL INSPECTION BEFORE SERVICE, MAD AND 3RD | 2023-10-27 → 2024-01-15 A (+80d) | 2023-12-12 → 2024-01-29 A (+48d) | 30d → 10d | 0% → 100% | 1d → none |  | resources none → MBRT NEW [80 h] |
| 1-1765 | SCL FINAL LIGHTING INSPECTION, MAD AND 3RD | 2023-12-15 → 2024-01-15 A (+31d) | 2023-12-29 → 2024-01-29 A (+31d) |  | 0% → 100% | 1d → none |  | resources none → MBRT NEW [80 h] |
| 1-1760 | NOTIFY SCL, MAD AND 3RD | 2023-10-25 → 2024-01-17 A (+84d) | 2023-10-26 → 2024-01-17 A (+83d) |  | 0% → 100% | 1d → none |  | resources none → MBRT NEW [16 h] |
| 1-1775 | NOTIFY SCL, MAD AND 3RD | 2023-12-13 → 2024-01-17 A (+35d) | 2023-12-14 → 2024-01-17 A (+34d) |  | 0% → 100% | 1d → none |  | resources none → MBRT NEW [16 h] |
| 1-1770 | COMMISSION LIGHTING, MAD AND 3RD | 2024-01-02 → 2024-03-04 A (+62d) | 2024-01-03 → 2024-03-08 A (+65d) |  | 0% → 100% | 1d → none |  | resources none → MBRT NEW [16 h] |
| 1-1062 | INST POLES, MAD AND 5TH | 2023-10-25 → 2024-03-11 A (+138d) | 2023-10-25 → 2024-03-11 A (+138d) |  | 0% → 100% | -41d → none |  | resources none → MBRT BASE [8 h] |
| 1-1063 | INST WIRING, MAD AND 5TH | 2023-10-26 → 2024-03-12 A (+138d) | 2023-10-27 → 2024-03-14 A (+139d) |  | 0% → 100% | -41d → none |  | resources none → MBRT BASE [16 h] |
| 1-1785 | NOTIFY SCL, MAD AND 5TH | 2023-10-30 → 2024-03-15 A (+137d) | 2023-10-31 → 2024-03-18 A (+139d) |  | 0% → 100% | 25d → none |  | resources none → MBRT NEW |
| 1-1790 | SCL Commissioning Inspection, MAD AND 5TH | 2023-11-01 → 2024-03-19 A (+139d) | 2023-11-15 → 2024-03-22 A (+128d) |  | 0% → 100% | 25d → none |  | was named SCL FINAL LIGHTING INSPECTION, MAD AND 5TH; resources none → MBRT NEW |
| 1-1795 | COMMISSION LIGHTING, MAD AND 5TH | 2023-11-16 → 2024-03-25 A (+130d) | 2023-11-17 → 2024-03-25 A (+129d) |  | 0% → 100% | 25d → none |  | resources none → MBRT NEW [16 h] |
| 1-1065 | INST POLES, MAD 7TH TO 8TH | 2023-10-30 → 2023-11-20 A (+21d) | 2023-10-31 → 2023-11-22 A (+22d) |  | 0% → 100% | -41d → none | 1-1063, 1-1455 → 1-1455 | resources none → MBRT BASE [24 h] |
| 1-1066 | INST WIRING, MAD 7TH TO 8TH | 2023-11-01 → 2023-11-20 A (+19d) | 2023-11-03 → 2023-11-22 A (+19d) |  | 0% → 100% | -41d → none | 1-1065, 1-0940 → 1-1065, 1-0940, 1-1588 | resources none → MBRT BASE [24 h] |
| 1-1800 | SCL INSPECTION BEFORE SERVICE, MAD 7TH TO 8TH | 2023-11-08 → 2023-11-22 A (+14d) | 2023-12-22 → 2023-11-22 A (-30d) | 30d → 10d | 0% → 100% | -12d → none |  | resources none → MBRT NEW [80 h] |
| 1-1805 | NOTIFY SCL, MAD 7TH TO 8TH | 2023-11-06 → 2023-11-22 A (+16d) | 2023-11-07 → 2023-11-22 A (+15d) |  | 0% → 100% | -12d → none |  | resources none → MBRT NEW [16 h] |
| 1-1820 | NOTIFY SCL, MAD 7TH TO 8TH (Schematic 7) | 2023-12-26 → 2023-12-11 A (-15d) | 2023-12-27 → 2023-12-11 A (-16d) |  | 0% → 100% | -12d → none |  | was named NOTIFY SCL, MAD 7TH TO 8TH; resources none → MBRT NEW [16 h] |
| 1-1810 | SCL FINAL LIGHTING INSPECTION, MAD 7TH TO 8TH (Schematic 7) | 2023-12-28 → 2023-12-13 A (-15d) | 2024-01-11 → 2024-01-19 A (+8d) |  | 0% → 100% | -12d → none |  | was named SCL FINAL LIGHTING INSPECTION, MAD 7TH TO 8TH; resources none → MBRT NEW [80 h] |
| 1-1815 | COMMISSION LIGHTING, MAD 7TH TO 8TH (Schematic 7) | 2024-01-12 → 2024-01-22 A (+10d) | 2024-01-16 → 2024-01-24 A (+8d) |  | 0% → 100% | -12d → none |  | was named COMMISSION LIGHTING, MAD 7TH TO 8TH; resources none → MBRT NEW [16 h] |
| 1-1068 | INST POLES, MAD AND 9TH | 2024-02-28 → 2024-02-29 A (+1d) | 2024-02-28 → 2024-02-29 A (+1d) |  | 0% → 100% | -116d → none |  | resources none → MBRT BASE [8 h] |
| 1-1069 | INST WIRING, MAD AND 9TH | 2024-02-29 → 2024-03-01 A (+1d) | 2024-03-01 → 2024-04-15 (+45d) |  |  | -116d → -110d |  | resources none → MBRT BASE [8 h] |
| 1-1071 | INST POLES, MAD AND TERRY | 2024-03-04 → 2024-01-29 A (-35d) | 2024-03-07 → 2024-02-01 A (-35d) |  | 0% → 100% | -116d → none | 1-1069 → 1-1065 | resources none → MBRT BASE [32 h] |
| 1-1072 | INST WIRING, MAD AND TERRY | 2024-03-08 → 2024-01-29 A (-39d) | 2024-03-14 → 2024-04-15 (+32d) |  |  | -116d → -110d |  | resources none → MBRT BASE [192 h] |
| 10 | **MADISON AND BOREN** | 2023-07-14 → 2024-01-29 (+199d) | 2024-05-17 → 2024-05-09 (-8d) |  |  |  |  |  |
| 1-1074 | INST POLES, MAD AND BOREN | 2023-07-14 A → 2024-01-29 A (+199d) | 2023-07-17 A → 2024-02-01 A (+199d) |  |  |  |  | resources none → MBRT BASE [32 h] |
| 1-1075 | INST WIRING, MAD AND BOREN | 2024-01-02 → 2024-01-29 A (+27d) | 2024-01-04 → 2024-04-15 (+102d) |  |  | -68d → -110d | 1-1074, 1-0997 → 1-1074 SS | resources none → MBRT BASE [192 h] |
| 1-1860 | NOTIFY SCL, MAD AND BOREN | 2024-03-15 → 2024-04-16 (+32d) | 2024-03-18 → 2024-04-17 (+30d) |  |  | -116d → -110d |  | resources none → MBRT NEW |
| 1-1855 | SCL Lighting Final Inspection, MAD AND BOREN | 2024-03-19 → 2024-04-18 (+30d) | 2024-04-29 → 2024-04-19 (-10d) | 30d → 2d |  | -116d → -110d |  | was named SCL INSPECTION BEFORE SERVICE, MAD AND BOREN; resources none → MBRT NEW [16 h] |
| 1-1875 | NOTIFY SCL, MAD AND BOREN | 2024-04-30 → 2024-04-22 (-8d) | 2024-05-01 → 2024-04-23 (-8d) |  |  | -116d → -110d |  | resources none → MBRT NEW |
| 1-1865 | SCL FINAL LIGHTING MAD AND BOREN | 2024-05-02 → 2024-04-24 (-8d) | 2024-05-15 → 2024-05-07 (-8d) |  |  | -116d → -110d |  | resources none → MBRT NEW [80 h] |
| 1-1870 | COMMISSION LIGHTING, MAD AND BOREN | 2024-05-16 → 2024-05-08 (-8d) | 2024-05-17 → 2024-05-09 (-8d) |  |  | -116d → -110d | 1-1865 → 1-1865, 1-2130 | resources none → MBRT NEW [16 h] |
| 1-1077 | INST POLES, MAD AND MINOR | 2023-11-21 → 2023-12-26 A (+35d) | 2023-11-22 → 2023-12-26 A (+34d) |  | 0% → 100% | -30d → none | 1-1020 → 1-1065 | resources none → MBRT BASE [8 h] |
| 1-1078 | INST WIRING, MAD AND MINOR | 2023-11-27 → 2023-12-27 A (+30d) | 2023-11-29 → 2024-03-01 A (+93d) |  | 0% → 100% | -30d → none | 1-1077, 1-1010 → 1-1077 | resources none → MBRT BASE [360 h] |
| 12 | **MADISON AND SUMMIT** | 2023-11-21 → 2023-12-26 (+35d) | 2024-02-12 → 2024-03-22 (+39d) |  |  |  |  |  |
| 1-1080 | INST POLES, MAD AND SUMMIT | 2023-11-21 → 2023-12-26 A (+35d) | 2023-11-22 → 2023-12-27 A (+35d) |  | 0% → 100% | -33d → none | 1-1020 → 1-1077 SS | resources none → MBRT BASE [16 h] |
| 1-1081 | INST WIRING, MAD AND SUMMIT | 2023-12-01 → 2023-12-27 A (+26d) | 2023-12-05 → 2024-03-01 A (+87d) |  | 0% → 100% | -37d → none | 1-1080, 1-1024 → 1-1080 | resources none → MBRT BASE [360 h] |
| 1-1885 | NOTIFY SCL, MAD AND SUMMIT | 2023-12-06 → 2024-03-01 A (+86d) | 2023-12-07 → 2024-03-01 A (+85d) |  | 0% → 100% | -34d → none |  | resources none → MBRT NEW [16 h] |

| ID | Task | Start | Finish | Duration | Complete | Total float | Predecessors | Other |
| --- | --- | --- | --- | --- | --- | --- | --- | --- |
| 1-1880 | SCL Lighting Final Inspection, MAD AND SUMMIT | 2023-12-08 → 2024-03-04 A (+87d) | 2024-01-23 → 2024-03-08 A (+45d) | 30d → 2d | 0% → 100% | -34d → none |  | was named SCL INSPECTION BEFORE SERVICE, MAD AND SUMMIT; resources none → MBRT NEW [16 h] |
| 1-1900 | NOTIFY SCL, MAD AND SUMMIT | 2024-01-24 → 2024-03-11 A (+47d) | 2024-01-25 → 2024-03-11 A (+46d) |  | 0% → 100% | -34d → none |  | resources none → MBRT NEW |
| 1-1890 | SCL Commissioning Inspection, MAD AND SUMMIT | 2024-01-26 → 2024-03-12 A (+46d) | 2024-02-08 → 2024-03-15 A (+36d) |  | 0% → 100% | -34d → none |  | was named SCL FINAL LIGHTING INSPECTION, MAD AND SUMMIT; resources none → MBRT NEW |
| 1-1895 | COMMISSION LIGHTING, MAD AND SUMMIT | 2024-02-09 → 2024-03-18 A (+38d) | 2024-02-12 → 2024-03-22 A (+39d) |  | 0% → 100% | -34d → none | 1-1890 → 1-1890, 1-1143 FF | resources none → MBRT NEW [16 h] |
| 1-1083 | INST POLES, MAD AND BOYLSTON | 2023-12-06 → 2023-12-26 A (+20d) | 2023-12-07 → 2023-12-26 A (+19d) |  | 0% → 100% | -37d → none | 1-1081 → 1-1573 SF, 1-1077 SS | resources none → MBRT BASE [8 h] |
| 1-1295 | INST WIRING, MAD AND BOYLSTON (25% OF LUMP SUM) | 2022-09-30 A → 2023-12-26 A (+452d) | 2022-09-30 A → 2024-01-16 A (+473d) |  |  |  |  | resources none → MBRT NEW [8 h] |
| 1-1084 | INST WIRING, MAD AND BOYLSTON (75% OF LUMP SUM) | 2023-12-08 → 2024-01-17 A (+40d) | 2023-12-12 → 2024-02-28 A (+78d) |  | 0% → 100% | -37d → none |  | resources none → MBRT BASE [240 h] |
| 1-1910 | NOTIFY SCL, MAD AND BOYLSTON | 2023-12-13 → 2024-02-29 A (+78d) | 2023-12-14 → 2024-02-29 A (+77d) |  | 0% → 100% | -37d → none |  | resources none → MBRT NEW [16 h] |
| 1-1905 | SCL Lighting Final Inspection, MAD AND BOYLSTON | 2023-12-15 → 2024-03-04 A (+80d) | 2024-01-30 → 2024-03-12 A (+42d) | 30d → 2d | 0% → 100% | -37d → none |  | was named SCL INSPECTION BEFORE SERVICE, MAD AND BOYLSTON; resources none → MBRT NEW [16 h] |
| 1-1925 | NOTIFY SCL, MAD AND BOYLSTON | 2024-01-31 → 2024-03-13 A (+42d) | 2024-02-01 → 2024-03-14 A (+42d) |  | 0% → 100% | -37d → none |  | resources none → MBRT NEW |
| 1-1915 | SCL Commissioning Inspection, MAD AND BOYLSTON | 2024-02-02 → 2024-03-15 A (+42d) | 2024-02-15 → 2024-04-02 (+47d) |  |  | -37d → -69d |  | was named SCL FINAL LIGHTING INSPECTION, MAD AND BOYLSTON; resources none → MBRT NEW |
| 1-1920 | COMMISSION LIGHTING, MAD AND BOYLSTON | 2024-02-16 → 2024-04-03 (+47d) | 2024-02-20 → 2024-04-04 (+44d) |  |  | -37d → -69d |  | resources none → MBRT NEW [16 h] |
| 14 | **MADISON AND 8TH CENTER ISLAND** | 2023-12-13 → 2024-04-02 (+111d) | 2024-02-22 → 2024-04-29 (+67d) |  |  |  |  |  |
| 1-1086 | INST POLES, MAD & 8TH CENTER ISLAND | 2023-12-13 → 2024-04-02 (+111d) | 2023-12-13 → 2024-04-02 (+111d) |  |  | -37d → -80d |  | resources none → MBRT BASE [8 h] |
| 1-1087 | INST WIRING, MAD & 8TH CENTER ISLAND | 2023-12-14 → 2024-04-03 (+111d) | 2023-12-14 → 2024-04-03 (+111d) |  |  | -37d → -80d |  | resources none → MBRT BASE [8 h] |
| 1-1935 | NOTIFY SCL, MAD & 8TH CENTER ISLAND | 2023-12-15 → 2024-04-04 (+111d) | 2023-12-18 → 2024-04-05 (+109d) |  |  | -33d → -80d |  | resources none → MBRT NEW |
| 1-1930 | SCL Lighting Final Inspection, MAD & 8TH CENTER ISLAND | 2023-12-19 → 2024-04-08 (+111d) | 2024-02-01 → 2024-04-09 (+68d) | 30d → 2d |  | -33d → -80d |  | was named SCL INSPECTION BEFORE SERVICE, MAD & 8TH CENTER ISLAND; resources none → MBRT NEW [16 h] |
| 1-1950 | NOTIFY SCL, MAD & 8TH CENTER ISLAND | 2024-02-02 → 2024-04-10 (+68d) | 2024-02-05 → 2024-04-11 (+66d) |  |  | -33d → -80d |  | resources none → MBRT NEW |
| 1-1940 | SCL Commissioning Inspection, MAD & 8TH CENTER ISLAND | 2024-02-06 → 2024-04-12 (+66d) | 2024-02-20 → 2024-04-25 (+65d) |  |  | -33d → -80d |  | was named SCL FINAL LIGHTING INSPECTION, MAD & 8TH CENTER ISLAND; resources none → MBRT NEW |
| 1-1945 | COMMISSION LIGHTING, MAD & 8TH CENTER ISLAND | 2024-02-21 → 2024-04-26 (+65d) | 2024-02-22 → 2024-04-29 (+67d) |  |  | -33d → -80d |  | resources none → MBRT NEW [16 h] |
| 15 | **MADISON AND TERRY CENTER ISLAND** | 2023-12-15 → 2024-03-08 (+84d) | 2024-02-26 → 2024-04-29 (+63d) |  |  |  |  |  |
| 1-1089 | INST POLES, MAD & TERRY CENTER ISLAND | 2023-12-15 → 2024-03-08 A (+84d) | 2023-12-15 → 2024-04-02 (+109d) |  |  | -37d → -109d | 1-0774, 1-1087 → 1-0774 | resources none → MBRT BASE [8 h] |
| 1-1090 | INST WIRING, MAD & TERRY CENTER ISLAND | 2023-12-18 → 2024-04-03 (+107d) | 2023-12-18 → 2024-04-03 (+107d) |  |  | -37d → -109d |  | resources none → MBRT BASE [8 h] |
| 1-1960 | NOTIFY SCL, MAD & TERRY CENTER ISLAND | 2023-12-19 → 2024-04-04 (+107d) | 2023-12-20 → 2024-04-05 (+107d) |  |  | -35d → -80d |  | resources none → MBRT NEW |
| 1-1955 | SCL Lighting Final Inspection, MAD & TERRY CENTER ISLAND | 2023-12-21 → 2024-04-08 (+109d) | 2024-02-05 → 2024-04-09 (+64d) | 30d → 2d |  | -35d → -80d |  | was named SCL INSPECTION BEFORE SERVICE, MAD & TERRY CENTER ISLAND; resources none → MBRT NEW [16 h] |
| 1-1975 | NOTIFY SCL, MAD & TERRY CENTER ISLAND | 2024-02-06 → 2024-04-10 (+64d) | 2024-02-07 → 2024-04-11 (+64d) |  |  | -35d → -80d |  | resources none → MBRT NEW |
| 1-1965 | SCL Commissioning Inspection, MAD & TERRY CENTER ISLAND | 2024-02-08 → 2024-04-12 (+64d) | 2024-02-22 → 2024-04-25 (+63d) |  |  | -35d → -80d |  | was named SCL FINAL LIGHTING INSPECTION, MAD & TERRY CENTER ISLAND; resources none → MBRT NEW |
| 1-1970 | COMMISSION LIGHTING, MAD & TERRY CENTER ISLAND | 2024-02-23 → 2024-04-26 (+63d) | 2024-02-26 → 2024-04-29 (+63d) |  |  | -35d → -80d |  | resources none → MBRT NEW [16 h] |
| 16 | **MADISON AND BOYLSTON CENTER ISLAND** | 2023-12-19 → 2024-03-12 (+84d) | 2024-02-28 → 2024-04-29 (+61d) |  |  |  |  |  |
| 1-1092 | INST POLES, MAD & BOYLSTON CENTER ISLAND | 2023-12-19 → 2024-03-12 A (+84d) | 2023-12-19 → 2024-04-02 (+105d) |  |  | -37d → -92d | 1-0782, 1-1090 → 1-0782 | resources none → MBRT BASE [8 h] |
| 1-1093 | INST WIRING, MAD & BOYLSTON CENTER ISLAND | 2023-12-20 → 2024-04-03 (+105d) | 2023-12-20 → 2024-04-03 (+105d) |  |  | -37d → -92d |  | resources none → MBRT BASE [8 h] |
| 1-1985 | NOTIFY SCL, MAD & BOYLSTON CENTER ISLAND | 2023-12-21 → 2024-04-04 (+105d) | 2023-12-22 → 2024-04-05 (+105d) |  |  | -37d → -80d |  | resources none → MBRT NEW |
| 1-1980 | SCL Lighting Final Inspection, MAD & BOYLSTON CENTER ISLAND | 2023-12-26 → 2024-04-08 (+104d) | 2024-02-07 → 2024-04-09 (+62d) | 30d → 2d |  | -37d → -80d |  | was named SCL INSPECTION BEFORE SERVICE, MAD & BOYLSTON CENTER ISLAND; resources none → MBRT NEW [16 h] |
| 1-2000 | NOTIFY SCL, MAD & BOYLSTON CENTER ISLAND | 2024-02-08 → 2024-04-10 (+62d) | 2024-02-09 → 2024-04-11 (+62d) |  |  | -37d → -80d |  | resources none → MBRT NEW |
| 1-1990 | SCL Commissioning Inspection, MAD & BOYLSTON CENTER ISLAND | 2024-02-12 → 2024-04-12 (+60d) | 2024-02-26 → 2024-04-25 (+59d) |  |  | -37d → -80d |  | was named SCL FINAL LIGHTING INSPECTION, MAD & BOYLSTON CENTER ISLAND; resources none → MBRT NEW |
| 1-1995 | COMMISSION LIGHTING, MAD & BOYLSTON CENTER ISLAND | 2024-02-27 → 2024-04-26 (+59d) | 2024-02-28 → 2024-04-29 (+61d) |  |  | -37d → -80d |  | resources none → MBRT NEW [16 h] |
| 21 | **WORK TO COMPLETE AFTER SIGNAL AND LIGHTING IS COMMISSIONED** | 2023-09-27 → 2023-10-13 (+16d) | 2024-06-19 → 2024-07-19 (+30d) |  |  |  |  |  |
| 20 | **7TH AND SPRING** | 2024-02-09 → 2024-05-28 (+109d) | 2024-02-16 → 2024-06-04 (+109d) |  |  |  |  |  |
| 1-2015 | REMOVE POLES AND CABINETS | 2024-02-09 → 2024-05-28 (+109d) | 2024-02-12 → 2024-05-29 (+107d) |  |  | -36d → -111d |  | resources none → MBRT ADDED [16 h] |
| 1-2020 | REMOVE POLE FOUNDATIONS | 2024-02-13 → 2024-05-30 (+107d) | 2024-02-13 → 2024-05-30 (+107d) |  |  | -36d → -111d |  | resources none → MBRT ADDED [8 h] |
| 1-2025 | GRADE SIDEWALK | 2024-02-14 → 2024-05-31 (+107d) | 2024-02-14 → 2024-05-31 (+107d) |  |  | -36d → -111d |  | resources none → MBRT ADDED [8 h] |
| 1-2030 | POUR REMAINING SIDEWALK | 2024-02-15 → 2024-06-03 (+109d) | 2024-02-16 → 2024-06-04 (+109d) |  |  | -36d → -111d |  | resources none → MBRT ADDED [16 h] |
| 1 | **8TH AND SPRING** | 2024-01-18 → 2024-04-23 (+96d) | 2024-02-22 → 2024-06-07 (+106d) |  |  |  |  |  |
| 1-2035 | REMOVE TEMP LIGHTING | 2024-01-18 → 2024-04-23 (+96d) | 2024-01-18 → 2024-04-23 (+96d) |  |  | -18d → -85d |  | resources none → MBRT ADDED [8 h] |
| 1-2040 | REMOVE LIGHT POLES | 2024-01-19 → 2024-04-24 (+96d) | 2024-01-19 → 2024-04-24 (+96d) |  |  | -18d → -85d |  | resources none → MBRT ADDED [8 h] |
| 1-2045 | REMOVE FOUNDATION | 2024-02-15 → 2024-06-03 (+109d) | 2024-02-15 → 2024-06-03 (+109d) |  |  | -36d → -111d |  | resources none → MBRT ADDED [8 h] |
| 1-2050 | GRADE SIDEWALKS | 2024-02-20 → 2024-06-05 (+106d) | 2024-02-20 → 2024-06-05 (+106d) |  |  | -36d → -111d |  | resources none → MBRT ADDED [8 h] |
| 1-2075 | POUR SIDEWALKS | 2024-02-21 → 2024-06-06 (+106d) | 2024-02-22 → 2024-06-07 (+106d) |  |  | -36d → -111d |  | resources none → MBRT ADDED [16 h] |
| 2 | **9TH AND SPRING** | 2024-04-02 → 2024-07-09 (+98d) | 2024-04-05 → 2024-07-12 (+98d) |  |  |  |  |  |
| 1-2055 | REMOVE TEMP LIGHTING | 2024-04-02 → 2024-07-09 (+98d) | 2024-04-02 → 2024-07-09 (+98d) |  |  | -69d → -138d |  | resources none → MBRT ADDED [8 h] |
| 1-2060 | REMOVE LIGHT POLE NE CORNER | 2024-04-03 → 2024-07-10 (+98d) | 2024-04-03 → 2024-07-10 (+98d) |  |  | -69d → -138d |  | resources none → MBRT ADDED [8 h] |
| 1-2065 | REMOVE FOUNDATION | 2024-04-04 → 2024-07-11 (+98d) | 2024-04-04 → 2024-07-11 (+98d) |  |  | -69d → -138d |  | resources none → MBRT ADDED [8 h] |
| 1-2070 | COMPLETE LANDSCAPE | 2024-04-05 → 2024-07-12 (+98d) | 2024-04-05 → 2024-07-12 (+98d) |  |  | -64d → -133d |  | resources none → MBRT ADDED [8 h] |
| 3 | **1ST AND MADISON** | 2023-10-11 → 2024-02-12 (+124d) | 2024-04-12 → 2024-07-19 (+98d) |  |  |  |  |  |
| 1-2080 | REMOVE PEDESTAL | 2023-10-11 → 2024-02-12 A (+124d) | 2023-10-11 → 2024-02-12 A (+124d) |  | 0% → 100% | 50d → none |  | resources none → MBRT ADDED [8 h] |
| 1-2085 | REMOVE PEDESTAL FOUNDATION | 2024-04-05 → 2024-07-12 (+98d) | 2024-04-05 → 2024-07-12 (+98d) |  |  | -69d → -138d |  | resources none → MBRT ADDED [8 h] |
| 1-2090 | REMOVE SIDEWALKS | 2024-04-08 → 2024-07-15 (+98d) | 2024-04-08 → 2024-07-15 (+98d) |  |  | -69d → -138d |  | resources none → MBRT ADDED [8 h] |
| 1-2095 | GRADE SIDEWALKS | 2024-04-09 → 2024-07-16 (+98d) | 2024-04-09 → 2024-07-16 (+98d) |  |  | -69d → -138d |  | resources none → MBRT ADDED [8 h] |
| 1-2100 | CURB RAMP | 2024-04-10 → 2024-07-17 (+98d) | 2024-04-11 → 2024-07-18 (+98d) |  |  | -69d → -138d |  | resources none → MBRT ADDED [16 h] |
| 1-2105 | POUR SIDEWALKS | 2024-04-12 → 2024-07-19 (+98d) | 2024-04-12 → 2024-07-19 (+98d) |  |  | -69d → -138d |  | resources none → MBRT ADDED [8 h] |
| 4 | **3RD AND MADISON** | 2023-10-31 → 2024-03-04 (+125d) | 2023-11-06 → 2024-04-04 (+150d) |  |  |  |  |  |
| 1-2110 | REMOVE SIGNAL CABINET | 2023-10-31 → 2024-03-04 A (+125d) | 2023-10-31 → 2024-03-04 A (+125d) |  | 0% → 100% | 38d → none |  | resources none → MBRT ADDED [8 h] |
| 1-2115 | REMOVE SIGNAL CABINET FOUNDATION | 2023-11-01 → 2024-03-05 A (+125d) | 2023-11-01 → 2024-03-05 A (+125d) |  | 0% → 100% | 38d → none |  | resources none → MBRT ADDED [8 h] |
| 1-2125 | GRADE SIDEWALKS | 2023-11-02 → 2024-04-02 (+152d) | 2023-11-02 → 2024-04-02 (+152d) |  |  | 38d → -63d |  | resources none → MBRT ADDED [8 h] |
| 1-2135 | POUR SIDEWALKS | 2023-11-03 → 2024-04-03 (+152d) | 2023-11-06 → 2024-04-04 (+150d) |  |  | 38d → -63d |  | resources none → MBRT ADDED [16 h] |
| 5 | **5TH AND MADISON** | 2023-11-20 → 2024-04-02 (+134d) | 2023-11-28 → 2024-04-08 (+132d) |  |  |  |  |  |
| 1-2140 | REMOVE TEMP LIGHTING | 2023-11-20 → 2024-04-02 (+134d) | 2023-11-21 → 2024-04-03 (+134d) |  |  | 25d → -65d |  | resources none → MBRT ADDED [16 h] |
| 1-2145 | GRADE SIDEWALKS | 2023-11-22 → 2024-04-04 (+134d) | 2023-11-22 → 2024-04-04 (+134d) |  |  | 25d → -65d |  | resources none → MBRT ADDED [8 h] |
| 1-2150 | POUR SIDEWALKS | 2023-11-27 → 2024-04-05 (+130d) | 2023-11-28 → 2024-04-08 (+132d) |  |  | 25d → -65d |  | resources none → MBRT ADDED [16 h] |
| 6 | **6TH AND MADISON** | 2023-12-05 → 2024-02-08 (+65d) | 2023-12-13 → 2024-03-20 (+98d) |  |  |  |  |  |

| ID | Task | Start | Finish | Duration | Complete | Total float | Predecessors | Other |
| --- | --- | --- | --- | --- | --- | --- | --- | --- |
| 1-2170 | REMOVE TEMP SIGNAL | 2023-12-05 → 2024-02-08 A (+65d) | 2023-12-06 → 2024-02-09 A (+65d) |  | 0% → 100% | 14d → none |  | resources none → MBRT ADDED [16 h] |
| 1-2175 | REMOVE SIGNAL CABINET | 2023-12-07 → 2024-02-08 A (+63d) | 2023-12-07 → 2024-02-09 A (+64d) |  | 0% → 100% | 14d → none |  | resources none → MBRT ADDED [8 h] |
| 1-2180 | REMOVE SIGNAL CABINET FOUNDATION | 2023-12-08 → 2024-03-04 A (+87d) | 2023-12-08 → 2024-03-04 A (+87d) |  | 0% → 100% | 14d → none |  | resources none → MBRT ADDED [8 h] |
| 1-2185 | GRADE SIDEWALKS | 2023-12-11 → 2024-03-18 A (+98d) | 2023-12-11 → 2024-03-19 A (+99d) |  | 0% → 100% | 14d → none |  | resources none → MBRT ADDED [8 h] |
| 1-2195 | POUR SIDEWALKS | 2023-12-12 → 2024-03-20 A (+99d) | 2023-12-13 → 2024-03-20 A (+98d) |  | 0% → 100% | 14d → none |  | resources none → MBRT ADDED [16 h] |
| 7 | **7TH AND MADISON** | 2023-09-27 → 2024-03-28 (+183d) | 2024-01-23 → 2024-04-08 (+76d) |  |  |  |  |  |
| 1-2200 | REMOVE OLD SIGNAL SYSTEM | 2023-09-27 → 2024-03-28 A (+183d) | 2023-09-29 → 2024-04-01 A (+185d) |  | 0% → 100% | 59d → none |  | resources none → MBRT ADDED [24 h] |
| 1-2205 | REMOVE TEMP LIGHITNG | 2024-01-17 → 2024-04-02 (+76d) | 2024-01-18 → 2024-04-03 (+76d) |  |  | -12d → -65d |  | resources none → MBRT ADDED [16 h] |
| 1-2215 | GRADE SIDEWALKS | 2024-01-19 → 2024-04-04 (+76d) | 2024-01-19 → 2024-04-04 (+76d) |  |  | -12d → -65d |  | resources none → MBRT ADDED [8 h] |
| 1-2225 | POUR SIDEWALKS | 2024-01-22 → 2024-04-05 (+74d) | 2024-01-23 → 2024-04-08 (+76d) |  |  | -12d → -65d |  | resources none → MBRT ADDED [16 h] |
| 8 | **8TH AND MADISON** | 2023-10-20 → 2024-03-04 (+136d) | 2023-11-30 → 2024-04-16 (+138d) |  |  |  |  |  |
| 1-2230 | REMOVE EXISTING SIGNAL SYSTEM | 2023-10-20 → 2024-03-04 A (+136d) | 2023-10-24 → 2024-03-06 A (+134d) |  | 0% → 100% | 23d → none | 1-0960 → 1-0960, 1-2170 | resources none → MBRT ADDED [24 h] |
| 1-2235 | REMOVE STRAIN POLES | 2023-10-25 → 2024-03-07 A (+134d) | 2023-10-26 → 2024-03-08 A (+134d) |  | 0% → 100% | 23d → none |  | resources none → MBRT ADDED [16 h] |
| 1-2240 | REMOVE TEMP LIGHTING | 2023-10-27 → 2024-03-11 A (+136d) | 2023-10-30 → 2024-03-12 A (+134d) |  | 0% → 100% | 23d → none |  | resources none → MBRT ADDED [16 h] |
| 1-2245 | REMOVE FOUNDATION 1ST CORNER | 2023-10-31 → 2024-03-13 A (+134d) | 2023-10-31 → 2024-03-15 A (+136d) |  | 0% → 100% | 23d → none |  | resources none → MBRT ADDED [8 h] |
| 1-2250 | GRADE SIDEWALKS 1ST CORNER | 2023-11-01 → 2024-03-18 A (+138d) | 2023-11-01 → 2024-03-19 A (+139d) |  | 0% → 100% | 23d → none |  | resources none → MBRT ADDED [8 h] |
| 1-2255 | CURB RAMP 1ST CORNER | 2023-11-02 → 2024-03-20 A (+139d) | 2023-11-03 → 2024-03-21 A (+139d) |  | 0% → 100% | 23d → none |  | resources none → MBRT ADDED [16 h] |
| 1-2260 | POUR SIDEWALKS 1ST CORNER | 2023-11-06 → 2024-03-22 A (+137d) | 2023-11-06 → 2024-03-22 A (+137d) |  | 0% → 100% | 23d → none |  | resources none → MBRT ADDED [8 h] |
| 1-2265 | REMOVE FOUNDATION 2ND CORNER | 2023-11-07 → 2024-03-25 A (+139d) | 2023-11-07 → 2024-03-26 A (+140d) |  | 0% → 100% | 23d → none |  | resources none → MBRT ADDED [8 h] |
| 1-2270 | GRADE SIDEWALKS 2ND CORNER | 2023-11-08 → 2024-03-27 A (+140d) | 2023-11-08 → 2024-03-27 A (+140d) |  | 0% → 100% | 23d → none |  | resources none → MBRT ADDED [8 h] |
| 1-2275 | CURB RAMP 2ND CORNER | 2023-11-09 → 2024-03-28 A (+140d) | 2023-11-10 → 2024-03-29 A (+140d) |  | 0% → 100% | 23d → none |  | resources none → MBRT ADDED [16 h] |
| 1-2280 | POUR SIDEWALKS 2ND CORNER | 2023-11-14 → 2024-04-02 (+140d) | 2023-11-14 → 2024-04-02 (+140d) |  |  | 23d → -71d |  | resources none → MBRT ADDED [8 h] |
| 1-2285 | REMOVE FOUNDATION 3RD CORNER | 2023-11-15 → 2024-04-03 (+140d) | 2023-11-15 → 2024-04-03 (+140d) |  |  | 23d → -71d |  | resources none → MBRT ADDED [8 h] |
| 1-2290 | GRADE SIDEWALKS 3RD CORNER | 2023-11-16 → 2024-04-04 (+140d) | 2023-11-16 → 2024-04-04 (+140d) |  |  | 23d → -71d |  | resources none → MBRT ADDED [8 h] |
| 1-2295 | CURB RAMP 3RD CORNER | 2023-11-17 → 2024-04-05 (+140d) | 2023-11-20 → 2024-04-08 (+140d) |  |  | 23d → -71d |  | resources none → MBRT ADDED [16 h] |
| 1-2300 | POUR SIDEWALKS 3RD CORNER | 2023-11-21 → 2024-04-09 (+140d) | 2023-11-21 → 2024-04-09 (+140d) |  |  | 23d → -71d |  | resources none → MBRT ADDED [8 h] |
| 1-2305 | REMOVE FOUNDATION 4TH CORNER | 2023-11-22 → 2024-04-10 (+140d) | 2023-11-22 → 2024-04-10 (+140d) |  |  | 23d → -71d |  | resources none → MBRT ADDED [8 h] |
| 1-2310 | GRADE SIDEWALKS 4TH CORNER | 2023-11-27 → 2024-04-11 (+136d) | 2023-11-27 → 2024-04-11 (+136d) |  |  | 23d → -71d |  | resources none → MBRT ADDED [8 h] |
| 1-2315 | CURB RAMP 4TH CORNER | 2023-11-28 → 2024-04-12 (+136d) | 2023-11-29 → 2024-04-15 (+138d) |  |  | 23d → -71d |  | resources none → MBRT ADDED [16 h] |
| 1-2320 | POUR SIDEWALKS 4TH CORNER | 2023-11-30 → 2024-04-16 (+138d) | 2023-11-30 → 2024-04-16 (+138d) |  |  | 23d → -71d |  | resources none → MBRT ADDED [8 h] |
| 9 | **9TH AND MADISON** | 2024-03-12 → 2024-02-28 (-13d) | 2024-05-23 → 2024-05-15 (-8d) |  |  |  |  |  |
| 1-2325 | REMOVE EXISTING SIGNAL SYSTEM | 2024-03-12 → 2024-02-28 A (-13d) | 2024-03-14 → 2024-02-29 A (-14d) |  | 0% → 100% | -70d → none |  | resources none → MBRT ADDED [24 h] |
| 1-2330 | REMOVE STRAIN POLES | 2024-03-15 → 2024-03-01 A (-14d) | 2024-03-18 → 2024-04-05 (+18d) |  |  | -70d → -69d | 1-2325 → 1-2325, 1-0983 SS | resources none → MBRT ADDED [16 h] |
| 1-2340 | REMOVE FOUNDATION 1ST CORNER | 2024-03-19 → 2024-03-06 A (-13d) | 2024-03-19 → 2024-03-06 A (-13d) |  | 0% → 100% | -70d → none | 1-2330 → 1-2325 | resources none → MBRT ADDED [8 h] |
| 1-2345 | GRADE SIDEWALKS 1ST CORNER | 2024-03-20 → 2024-03-07 A (-13d) | 2024-03-20 → 2024-03-07 A (-13d) |  | 0% → 100% | -70d → none |  | resources none → MBRT ADDED [8 h] |
| 1-2350 | CURB RAMP 1ST CORNER | 2024-03-21 → 2024-03-08 A (-13d) | 2024-03-22 → 2024-03-11 A (-11d) |  | 0% → 100% | -70d → none |  | resources none → MBRT ADDED [16 h] |
| 1-2355 | POUR SIDEWALKS 1ST CORNER | 2024-03-25 → 2024-03-12 A (-13d) | 2024-03-25 → 2024-03-12 A (-13d) |  | 0% → 100% | -70d → none |  | resources none → MBRT ADDED [8 h] |
| 1-2360 | REMOVE FOUNDATION 2ND CORNER | 2024-03-26 → 2024-03-13 A (-13d) | 2024-03-26 → 2024-03-13 A (-13d) |  | 0% → 100% | -70d → none |  | resources none → MBRT ADDED [8 h] |
| 1-2365 | GRADE SIDEWALKS 2ND CORNER | 2024-03-27 → 2024-03-14 A (-13d) | 2024-03-27 → 2024-03-14 A (-13d) |  | 0% → 100% | -70d → none |  | resources none → MBRT ADDED [8 h] |
| 1-2370 | CURB RAMP 2ND CORNER | 2024-03-28 → 2024-03-15 A (-13d) | 2024-03-29 → 2024-03-18 A (-11d) |  | 0% → 100% | -70d → none |  | resources none → MBRT ADDED [16 h] |
| 1-2375 | POUR SIDEWALKS 2ND CORNER | 2024-04-01 → 2024-03-19 A (-13d) | 2024-04-01 → 2024-03-19 A (-13d) |  | 0% → 100% | -70d → none |  | resources none → MBRT ADDED [8 h] |
| 1-2380 | REMOVE FOUNDATION 3RD CORNER | 2024-04-02 → 2024-03-20 A (-13d) | 2024-04-02 → 2024-03-20 A (-13d) |  | 0% → 100% | -70d → none |  | resources none → MBRT ADDED [8 h] |
| 1-2385 | GRADE SIDEWALKS 3RD CORNER | 2024-04-03 → 2024-03-21 A (-13d) | 2024-04-03 → 2024-03-21 A (-13d) |  | 0% → 100% | -70d → none |  | resources none → MBRT ADDED [8 h] |
| 1-2390 | CURB RAMP 3RD CORNER | 2024-04-04 → 2024-03-22 A (-13d) | 2024-04-05 → 2024-03-25 A (-11d) |  | 0% → 100% | -70d → none |  | resources none → MBRT ADDED [16 h] |
| 1-2395 | POUR SIDEWALKS 3RD CORNER | 2024-04-08 → 2024-03-26 A (-13d) | 2024-04-08 → 2024-03-26 A (-13d) |  | 0% → 100% | -70d → none |  | resources none → MBRT ADDED [8 h] |
| 1-2400 | REMOVE FOUNDATION 4TH CORNER (SWC) | 2024-04-09 → 2024-04-08 (-1d) | 2024-04-09 → 2024-04-08 (-1d) |  |  | -70d → -69d | 1-2395 → 1-2395, DSC-719, 1-2330 | was named REMOVE FOUNDATION 4TH CORNER; resources none → MBRT ADDED [8 h] |
| 1-2405 | GRADE SIDEWALKS 4TH CORNER | 2024-04-10 → 2024-04-09 (-1d) | 2024-04-10 → 2024-04-09 (-1d) |  |  | -70d → -69d |  | resources none → MBRT ADDED [8 h] |
| 1-2410 | CURB RAMP 4TH CORNER | 2024-04-11 → 2024-04-10 (-1d) | 2024-04-12 → 2024-04-11 (-1d) |  |  | -70d → -69d |  | resources none → MBRT ADDED [16 h] |
| 1-2415 | POUR SIDEWALKS 4TH CORNER | 2024-04-15 → 2024-04-12 (-3d) | 2024-04-15 → 2024-04-12 (-3d) |  |  | -70d → -69d |  | resources none → MBRT ADDED [8 h] |
| 1-2335 | REMOVE TEMP LIGHTING | 2024-05-20 → 2024-05-10 (-10d) | 2024-05-21 → 2024-05-13 (-8d) |  |  | -98d → -92d |  | resources none → MBRT ADDED [16 h] |
| 1-2420 | GRADE SIDEWALK AFTER TEMP LIGHTING IS REMOVED | 2024-05-22 → 2024-05-14 (-8d) | 2024-05-22 → 2024-05-14 (-8d) |  |  | -98d → -92d |  | resources none → MBRT ADDED [8 h] |
| 1-2425 | POUR REMAINING SIDEWALKS | 2024-05-23 → 2024-05-15 (-8d) | 2024-05-23 → 2024-05-15 (-8d) |  |  | -98d → -92d |  | resources none → MBRT ADDED [8 h] |
| 11 | **TERRY AND MADISON** | 2023-10-16 → 2023-10-13 (-3d) | 2024-05-24 → 2024-05-16 (-8d) |  |  |  |  |  |
| 1-2525 | REMOVE EXISTING SIGNAL SYSTEM | 2023-10-16 → 2024-02-06 A (+113d) | 2023-10-17 → 2024-02-07 A (+113d) |  | 0% → 100% | 41d → none | 1-0988 → 1-0988, 1-2590 | resources none → MBRT ADDED [16 h] |
| 1-2530 | REMOVE STRAIN POLES | 2023-10-18 → 2024-02-08 A (+113d) | 2023-10-18 → 2024-02-08 A (+113d) |  | 0% → 100% | 41d → none |  | resources none → MBRT ADDED [8 h] |
| 1-2540 | REMOVE FOUNDATION 1ST CORNER | 2023-10-19 → 2024-03-04 A (+137d) | 2023-10-19 → 2024-03-04 A (+137d) |  | 0% → 100% | 41d → none | 1-2530 → 1-2530, DSC-733, DSC-732 | resources none → MBRT ADDED [8 h] |
| 1-2545 | GRADE SIDEWALKS 1ST CORNER | 2023-10-20 → 2024-03-05 A (+137d) | 2023-10-20 → 2024-03-05 A (+137d) |  | 0% → 100% | 41d → none |  | resources none → MBRT ADDED [8 h] |
| 1-2550 | CURB RAMP 1ST CORNER | 2023-10-23 → 2024-03-06 A (+135d) | 2023-10-24 → 2024-03-07 A (+135d) |  | 0% → 100% | 41d → none |  | resources none → MBRT ADDED [16 h] |
| 1-2555 | POUR SIDEWALKS 1ST CORNER | 2023-10-25 → 2024-03-08 A (+135d) | 2023-10-25 → 2024-03-08 A (+135d) |  | 0% → 100% | 41d → none |  | resources none → MBRT ADDED [8 h] |
| 1-2560 | REMOVE FOUNDATION 2ND CORNER | 2023-10-26 → 2024-03-11 A (+137d) | 2023-10-26 → 2024-03-11 A (+137d) |  | 0% → 100% | 41d → none |  | resources none → MBRT ADDED [8 h] |
| 1-2565 | GRADE SIDEWALKS 2ND CORNER | 2023-10-27 → 2024-03-12 A (+137d) | 2023-10-27 → 2024-03-15 A (+140d) |  | 0% → 100% | 41d → none |  | resources none → MBRT ADDED [8 h] |
| 1-2570 | CURB RAMP 2ND CORNER | 2023-10-30 → 2024-03-18 A (+140d) | 2023-10-31 → 2024-03-19 A (+140d) |  | 0% → 100% | 41d → none |  | resources none → MBRT ADDED [16 h] |
| 1-2575 | POUR SIDEWALKS 2ND CORNER | 2023-11-01 → 2024-03-20 A (+140d) | 2023-11-01 → 2024-03-28 A (+148d) | 1d → 10d | 0% → 100% | 41d → none |  | resources none → MBRT ADDED [8 h] |
| 1-2535 | REMOVE TEMP LIGHTING | 2024-05-20 → 2024-05-10 (-10d) | 2024-05-21 → 2024-05-13 (-8d) |  |  | -99d → -93d |  | resources none → MBRT ADDED [16 h] |
| 1-2580 | GRADE SIDEWALK AFTER TEMP LIGHITNG IS REMOVED | 2024-05-22 → 2024-05-14 (-8d) | 2024-05-22 → 2024-05-14 (-8d) |  |  | -99d → -93d |  | resources none → MBRT ADDED [8 h] |
| 1-2585 | POUR REMAINING SIDEWALKS | 2024-05-23 → 2024-05-15 (-8d) | 2024-05-24 → 2024-05-16 (-8d) |  |  | -99d → -93d |  | resources none → MBRT ADDED [16 h] |
| 10 | **BOREN AND MADISON** | 2024-01-10 → 2024-03-04 (+54d) | 2024-06-19 → 2024-06-11 (-8d) |  |  |  |  |  |
| 1-2430 | REMOVE EXISTING SIGNAL SYSTEM | 2024-01-10 → 2024-04-02 (+83d) | 2024-01-12 → 2024-04-04 (+83d) |  |  | -30d → -87d |  | resources none → MBRT ADDED [24 h] |
| 1-2435 | REMOVE STRAIN POLES | 2024-01-16 → 2024-04-09 (+84d) | 2024-01-17 → 2024-04-10 (+84d) |  |  | -30d → -89d | 1-2430 → 1-2430, DSC-722 | resources none → MBRT ADDED [16 h] |
| 1-2440 | REMOVE TEMP LIGHTING | 2024-05-20 → 2024-05-10 (-10d) | 2024-05-21 → 2024-05-13 (-8d) |  |  | -116d → -110d |  | resources none → MBRT ADDED [16 h] |

| ID | Task | Start | Finish | Duration | Complete | Total float | Predecessors | Other |
| --- | --- | --- | --- | --- | --- | --- | --- | --- |
| 1-2445 | REMOVE FOUNDATION 1ST CORNER | 2024-05-22 → 2024-05-14 (-8d) | 2024-05-22 → 2024-05-14 (-8d) |  |  | -116d → -110d |  | resources none → MBRT ADDED [8 h] |
| 1-2450 | GRADE SIDEWALKS 1ST CORNER | 2024-05-23 → 2024-05-15 (-8d) | 2024-05-23 → 2024-05-15 (-8d) |  |  | -116d → -110d |  | resources none → MBRT ADDED [8 h] |
| 1-2455 | CURB RAMP 1ST CORNER | 2024-05-24 → 2024-05-16 (-8d) | 2024-05-28 → 2024-05-17 (-11d) |  |  | -116d → -110d |  | resources none → MBRT ADDED [16 h] |
| 1-2460 | POUR SIDEWALKS 1ST CORNER | 2024-05-29 → 2024-05-20 (-9d) | 2024-05-29 → 2024-05-20 (-9d) |  |  | -116d → -110d |  | resources none → MBRT ADDED [8 h] |
| 1-2465 | REMOVE FOUNDATION 2ND CORNER | 2024-05-30 → 2024-05-21 (-9d) | 2024-05-30 → 2024-05-21 (-9d) |  |  | -116d → -110d |  | resources none → MBRT ADDED [8 h] |
| 1-2470 | GRADE SIDEWALKS 2ND CORNER | 2024-05-31 → 2024-05-22 (-9d) | 2024-05-31 → 2024-05-22 (-9d) |  |  | -116d → -110d |  | resources none → MBRT ADDED [8 h] |
| 1-2475 | CURB RAMP 2ND CORNER | 2024-06-03 → 2024-05-23 (-11d) | 2024-06-04 → 2024-05-24 (-11d) |  |  | -116d → -110d |  | resources none → MBRT ADDED [16 h] |
| 1-2480 | POUR SIDEWALKS 2ND CORNER | 2024-06-05 → 2024-05-28 (-8d) | 2024-06-05 → 2024-05-28 (-8d) |  |  | -116d → -110d |  | resources none → MBRT ADDED [8 h] |
| 1-2485 | REMOVE FOUNDATION 3RD CORNER | 2024-06-06 → 2024-05-29 (-8d) | 2024-06-06 → 2024-05-29 (-8d) |  |  | -116d → -110d |  | resources none → MBRT ADDED [8 h] |
| 1-2490 | GRADE SIDEWALKS 3RD CORNER | 2024-06-07 → 2024-05-30 (-8d) | 2024-06-07 → 2024-05-30 (-8d) |  |  | -116d → -110d |  | resources none → MBRT ADDED [8 h] |
| 1-2495 | CURB RAMP 3RD CORNER | 2024-06-10 → 2024-05-31 (-10d) | 2024-06-11 → 2024-06-03 (-8d) |  |  | -116d → -110d |  | resources none → MBRT ADDED [16 h] |
| 1-2500 | POUR SIDEWALKS 3RD CORNER | 2024-06-12 → 2024-06-04 (-8d) | 2024-06-12 → 2024-06-04 (-8d) |  |  | -116d → -110d |  | resources none → MBRT ADDED [8 h] |
| 1-2505 | REMOVE FOUNDATION 4TH CORNER | 2024-06-13 → 2024-06-05 (-8d) | 2024-06-13 → 2024-06-05 (-8d) |  |  | -116d → -110d |  | resources none → MBRT ADDED [8 h] |
| 1-2510 | GRADE SIDEWALKS 4TH CORNER | 2024-06-14 → 2024-06-06 (-8d) | 2024-06-14 → 2024-06-06 (-8d) |  |  | -116d → -110d |  | resources none → MBRT ADDED [8 h] |
| 1-2515 | CURB RAMP 4TH CORNER | 2024-06-17 → 2024-06-07 (-10d) | 2024-06-18 → 2024-06-10 (-8d) |  |  | -116d → -110d |  | resources none → MBRT ADDED [16 h] |
| 1-2520 | POUR SIDEWALKS 4TH CORNER | 2024-06-19 → 2024-06-11 (-8d) | 2024-06-19 → 2024-06-11 (-8d) |  |  | -116d → -110d |  | resources none → MBRT ADDED [8 h] |
| 13 | **MINOR AND MADISON** | 2023-12-11 → 2024-03-28 (+108d) | 2023-12-15 → 2024-04-03 (+110d) |  |  |  |  |  |
| 1-2650 | REMOVE SIGNAL CABINET | 2023-12-11 → 2024-03-28 A (+108d) | 2023-12-11 → 2024-03-28 A (+108d) |  | 0% → 100% | 12d → none |  | resources none → MBRT ADDED [8 h] |
| 1-2655 | REMOVE SIGNAL CABINET FOUNDATION | 2023-12-12 → 2024-03-29 A (+108d) | 2023-12-12 → 2024-03-29 A (+108d) |  | 0% → 100% | 12d → none |  | resources none → MBRT ADDED [8 h] |
| 1-2660 | GRADE SIDEWALKS | 2023-12-13 → 2024-04-01 A (+110d) | 2023-12-13 → 2024-04-01 A (+110d) |  | 0% → 100% | 12d → none |  | resources none → MBRT ADDED [8 h] |
| 1-2665 | POUR SIDEWALKS | 2023-12-14 → 2024-04-02 (+110d) | 2023-12-15 → 2024-04-03 (+110d) |  |  | 12d → -62d |  | resources none → MBRT ADDED [16 h] |
| 12 | **SUMMIT AND MADISON** | 2023-12-11 → 2024-03-26 (+106d) | 2024-02-23 → 2024-04-09 (+46d) |  |  |  |  |  |
| 1-2630 | REMOVE TEMP LIGHITNG | 2024-02-13 → 2024-03-26 A (+42d) | 2024-02-13 → 2024-03-26 A (+42d) |  | 0% → 100% | -34d → none |  | resources none → MBRT ADDED [8 h] |
| 1-2620 | REMOVE SIGNAL CABINET | 2023-12-11 → 2024-03-28 A (+108d) | 2023-12-11 → 2024-03-28 A (+108d) |  | 0% → 100% | 8d → none |  | resources none → MBRT ADDED [8 h] |
| 1-2625 | REMOVE POLE | 2023-12-12 → 2024-03-29 A (+108d) | 2023-12-12 → 2024-03-29 A (+108d) |  | 0% → 100% | 8d → none |  | resources none → MBRT ADDED [8 h] |
| 1-2635 | REMOVE CABINET FOUNDATION | 2024-02-14 → 2024-04-01 A (+47d) | 2024-02-14 → 2024-04-01 A (+47d) |  | 0% → 100% | -34d → none |  | resources none → MBRT ADDED [8 h] |
| 1-2640 | REMOVE MAST ARM FOUNDATION | 2024-02-15 → 2024-04-02 (+47d) | 2024-02-15 → 2024-04-02 (+47d) |  |  | -34d → -66d |  | resources none → MBRT ADDED [8 h] |
| 1-2695 | GRADE SIDEWALK | 2024-02-16 → 2024-04-03 (+47d) | 2024-02-20 → 2024-04-04 (+44d) |  |  | -34d → -66d |  | resources none → MBRT ADDED [16 h] |
| 1-2700 | POUR SIDEWALK | 2024-02-21 → 2024-04-05 (+44d) | 2024-02-23 → 2024-04-09 (+46d) |  |  | -34d → -66d |  | resources none → MBRT ADDED [24 h] |
| 14 | **BOYLSTON AND MADISON** | 2023-12-26 → 2024-02-21 (+57d) | 2024-02-28 → 2024-04-12 (+44d) |  |  |  |  |  |
| 1-2670 | REMOVE CABINET | 2023-12-26 → 2024-02-21 A (+57d) | 2023-12-26 → 2024-02-21 A (+57d) |  | 0% → 100% | -1d → none |  | resources none → MBRT ADDED [8 h] |
| 1-2675 | REMOVE PEDESTALS | 2023-12-27 → 2024-02-22 A (+57d) | 2023-12-27 → 2024-02-22 A (+57d) |  | 0% → 100% | -1d → none |  | resources none → MBRT ADDED [8 h] |
| 1-2680 | REMOVE TEMP LIGHTING | 2024-02-21 → 2024-04-05 (+44d) | 2024-02-22 → 2024-04-08 (+46d) |  |  | -37d → -69d |  | resources none → MBRT ADDED [16 h] |
| 1-2685 | REMOVE FOUNDATIONS | 2024-02-23 → 2024-04-09 (+46d) | 2024-02-23 → 2024-04-09 (+46d) |  |  | -37d → -69d |  | resources none → MBRT ADDED [8 h] |
| 1-2690 | GRADE SIDEWALKS | 2024-02-26 → 2024-04-10 (+44d) | 2024-02-26 → 2024-04-10 (+44d) |  |  | -37d → -69d |  | resources none → MBRT ADDED [8 h] |
| 1-2705 | POUR SIDEWALKS | 2024-02-27 → 2024-04-11 (+44d) | 2024-02-28 → 2024-04-12 (+44d) |  |  | -37d → -69d |  | resources none → MBRT ADDED [16 h] |
| 20 | **KCM SERVICE CONECTIONS** |  | 2023-10-17 → 2024-05-20 (+216d) |  |  |  |  |  |
| 7 | **8TH AND MADISON** | 2023-07-07 → 2024-04-02 (+270d) | 2023-10-17 → 2024-05-20 (+216d) |  |  |  |  |  |
| 1-9961 | SERVICE CABINET | 2023-07-07 A → 2024-04-02 (+270d) | 2023-07-07 A → 2024-04-02 (+270d) |  | 100% → 0% | none → -95d |  | resources none → MBRT KCM [8 h] |
| 1-9976 | SDCI INSPECTION | 2023-07-10 A → 2024-04-03 (+268d) | 2023-07-10 A → 2024-04-03 (+268d) |  | 100% → 0% | none → -95d |  | resources none → MBRT KCM [8 h] |
| 1-9966 | REQUEST KCM INSPECTION | 2023-07-11 A → 2024-04-04 (+268d) | 2023-07-11 A → 2024-04-04 (+268d) |  | 100% → 0% | none → -95d | 1-9961 → 1-9961, 1-9976 | resources none → MBRT KCM [8 h] |
| 1-9971 | WAIT FOR KCM TO INSPECT | 2023-07-12 A → 2024-04-05 (+268d) | 2023-07-18 A → 2024-04-11 (+268d) | 4d → 5d | 100% → 0% | none → -95d |  | resources none → MBRT KCM |
| 1-9981 | NOTIFY SCL FOR INSPECTION | 2023-08-14 → 2024-04-12 (+242d) | 2023-08-14 → 2024-04-12 (+242d) |  |  | 52d → -95d | 1-9976 → 1-9976, 1-9971 | constraint start on or after 2023-07-03 → none; resources none → MBRT KCM |
| 1-9986 | 30 DAY WAIT FOR SCL TO INSPECT | 2023-08-15 → 2024-04-15 (+244d) | 2023-09-14 → 2024-04-16 (+215d) | 22d → 2d |  | 52d → -95d |  | resources none → MBRT KCM |
| 1-9991 | SCL INSPECTION | 2023-09-15 → 2024-04-17 (+215d) | 2023-09-15 → 2024-04-17 (+215d) |  |  | 52d → -95d |  | resources none → MBRT KCM [8 h] |
| 1-9996 | NOTIFY SCL TO COMMISION | 2023-09-18 → 2024-04-18 (+213d) | 2023-09-18 → 2024-04-18 (+213d) |  |  | 52d → -95d |  | resources none → MBRT KCM |
| 1-10001 | 30 DAY WAIT FOR SCL TO COMMISION | 2023-09-19 → 2024-04-19 (+213d) | 2023-10-16 → 2024-05-17 (+214d) | 20d → 21d |  | 52d → -95d |  | resources none → MBRT KCM |
| 1-10006 | COMMISION SERVICE | 2023-10-17 → 2024-05-20 (+216d) | 2023-10-17 → 2024-05-20 (+216d) |  |  | 52d → -95d |  | resources none → MBRT KCM [8 h] |
| 2 | **3RD AND SPRING** |  | 2023-10-17 → 2023-09-26 (-21d) |  |  |  |  |  |
| 1-6609 | SERVICE CABINET |  |  |  |  |  |  | resources none → MBRT KCM |
| 1-6612 | SDCI INSPECTION |  |  |  |  |  |  | resources none → MBRT KCM [8 h] |
| 1-6610 | REQUEST KCM INSPECTION |  |  |  |  |  |  | resources none → MBRT KCM [8 h] |
| 1-6611 | WAIT FOR KCM TO INSPECT |  |  |  |  |  |  | resources none → MBRT KCM [32 h] |
| 1-6613 | NOTIFY SCL FOR INSPECTION | 2023-08-14 → 2023-09-19 A (+36d) | 2023-08-14 → 2023-09-19 A (+36d) |  | 0% → 100% | 52d → none |  | constraint start on or after 2023-07-03 → none; resources none → MBRT KCM [8 h] |
| 1-6614 | 30 DAY WAIT FOR SCL TO INSPECT | 2023-08-15 → 2023-09-20 A (+36d) | 2023-09-14 → 2023-09-20 A (+6d) | 22d → 21d | 0% → 100% | 52d → none |  | resources none → MBRT KCM |
| 1-6615 | SCL INSPECTION | 2023-09-15 → 2023-09-21 A (+6d) | 2023-09-15 → 2023-09-21 A (+6d) |  | 0% → 100% | 52d → none |  | resources none → MBRT KCM [8 h] |
| 1-6616 | NOTIFY SCL TO COMMISION | 2023-09-18 → 2023-09-22 A (+4d) | 2023-09-18 → 2023-09-22 A (+4d) |  | 0% → 100% | 52d → none |  | resources none → MBRT KCM [8 h] |
| 1-6617 | 30 DAY WAIT FOR SCL TO COMMISION | 2023-09-19 → 2023-09-25 A (+6d) | 2023-10-16 → 2023-09-25 A (-21d) | 20d → 21d | 0% → 100% | 52d → none |  | resources none → MBRT KCM |
| 1-6618 | COMMISION SERVICE | 2023-10-17 → 2023-09-26 A (-21d) | 2023-10-17 → 2023-09-26 A (-21d) |  | 0% → 100% | 52d → none |  | resources none → MBRT KCM [8 h] |
| 3 | **4TH AND SPRING** |  | 2023-09-22 → 2023-09-07 (-15d) |  |  |  |  |  |
| 1-6620 | SERVICE CABINET |  |  |  |  |  |  | resources none → MBRT KCM [8 h] |
| 1-6623 | SDCI INSPECTION |  |  |  |  |  |  | resources none → MBRT KCM [8 h] |
| 1-6621 | REQUEST KCM INSPECTION |  |  |  |  |  |  | resources none → MBRT KCM [8 h] |
| 1-6622 | WAIT FOR KCM TO INSPECT |  |  |  |  |  |  | resources none → MBRT KCM [32 h] |
| 1-6624 | NOTIFY SCL FOR INSPECTION |  |  |  |  |  |  | constraint start on or after 2023-07-03 → none; resources none → MBRT KCM [8 h] |
| 1-6625 | 30 DAY WAIT FOR SCL TO INSPECT |  |  |  |  |  |  | resources none → MBRT KCM |
| 1-6626 | SCL INSPECTION |  |  |  |  |  |  | resources none → MBRT KCM [8 h] |
| 1-6627 | NOTIFY SCL TO COMMISION |  |  |  |  |  |  | resources none → MBRT KCM [8 h] |
| 1-6628 | 30 DAY WAIT FOR SCL TO COMMISION |  | 2023-09-21 → 2023-09-06 A (-15d) |  | 0% → 100% | 69d → none |  | resources none → MBRT KCM |
| 1-6629 | COMMISION SERVICE | 2023-09-22 → 2023-09-07 A (-15d) | 2023-09-22 → 2023-09-07 A (-15d) |  | 0% → 100% | 69d → none |  | resources none → MBRT KCM [8 h] |

| ID | Task | Start | Finish | Duration | Complete | Total float | Predecessors | Other |
| --- | --- | --- | --- | --- | --- | --- | --- | --- |
| 4 | **8TH AND SPRING** | 2023-05-31 → 2023-09-07 (+99d) | 2023-10-06 → 2024-02-01 (+118d) |  |  |  |  |  |
| 1-6631 | SERVICE CABINET | 2023-05-31 A → 2023-09-07 A (+99d) | 2023-05-31 A → 2023-09-07 A (+99d) |  |  |  |  | resources none → MBRT KCM [8 h] |
| 1-6632 | REQUEST KCM INSPECTION | 2023-06-01 A → 2023-11-21 A (+173d) | 2023-06-01 A → 2023-11-22 A (+174d) |  |  |  |  | resources none → MBRT KCM [8 h] |
| 1-6633 | WAIT FOR KCM TO INSPECT | 2023-06-02 A → 2023-11-27 A (+178d) | 2023-06-08 A → 2023-11-28 A (+173d) |  |  |  |  | resources none → MBRT KCM [40 h] |
| 1-6634 | SDCI INSPECTION | 2023-06-09 A → 2023-11-29 A (+173d) | 2023-06-09 A → 2023-11-29 A (+173d) |  |  |  |  | resources none → MBRT KCM [8 h] |
| 1-6635 | NOTIFY SCL FOR INSPECTION | 2023-06-12 A → 2023-11-30 A (+171d) | 2023-06-12 A → 2023-11-30 A (+171d) |  |  |  |  | resources none → MBRT KCM [8 h] |
| 1-6636 | 30 DAY WAIT FOR SCL TO INSPECT | 2023-06-13 A → 2023-12-01 A (+171d) | 2023-09-05 → 2023-12-28 A (+114d) | 22d → 21d | 0% → 100% | 59d → none |  | resources none → MBRT KCM |
| 1-6637 | SCL INSPECTION | 2023-09-06 → 2023-12-29 A (+114d) | 2023-09-06 → 2023-12-29 A (+114d) |  | 0% → 100% | 59d → none |  | resources none → MBRT KCM [8 h] |
| 1-6638 | NOTIFY SCL TO COMMISION | 2023-09-07 → 2024-01-02 A (+117d) | 2023-09-07 → 2024-01-02 A (+117d) |  | 0% → 100% | 59d → none |  | resources none → MBRT KCM [8 h] |
| 1-6639 | 30 DAY WAIT FOR SCL TO COMMISION | 2023-09-08 → 2024-01-03 A (+117d) | 2023-10-05 → 2024-01-31 A (+118d) | 20d → 21d | 0% → 100% | 59d → none |  | resources none → MBRT KCM |
| 1-6640 | COMMISION SERVICE | 2023-10-06 → 2024-02-01 A (+118d) | 2023-10-06 → 2024-02-01 A (+118d) |  | 0% → 100% | 59d → none |  | resources none → MBRT KCM [8 h] |
| 5 | **3RD AND MADISON** |  | 2023-09-22 → 2023-09-07 (-15d) |  |  |  |  |  |
| 1-6642 | SERVICE CABINET |  |  |  |  |  |  | resources none → MBRT KCM [8 h] |
| 1-6645 | SDCI INSPECTION |  |  |  |  |  |  | resources none → MBRT KCM [8 h] |
| 1-6643 | REQUEST KCM INSPECTION |  |  |  |  |  |  | resources none → MBRT KCM [8 h] |
| 1-6644 | WAIT FOR KCM TO INSPECT |  |  |  |  |  |  | resources none → MBRT KCM [32 h] |
| 1-6646 | NOTIFY SCL FOR INSPECTION |  |  |  |  |  |  | constraint start on or after 2023-07-03 → none; resources none → MBRT KCM [8 h] |
| 1-6647 | 30 DAY WAIT FOR SCL TO INSPECT |  |  |  |  |  |  | resources none → MBRT KCM |
| 1-6648 | SCL INSPECTION |  |  |  |  |  |  | resources none → MBRT KCM [8 h] |
| 1-6649 | NOTIFY SCL TO COMMISION |  |  |  |  |  |  | resources none → MBRT KCM [8 h] |
| 1-6650 | 30 DAY WAIT FOR SCL TO COMMISION |  | 2023-09-21 → 2023-09-06 A (-15d) |  | 0% → 100% | 69d → none |  | resources none → MBRT KCM |
| 1-6651 | COMMISION SERVICE | 2023-09-22 → 2023-09-07 A (-15d) | 2023-09-22 → 2023-09-07 A (-15d) |  | 0% → 100% | 69d → none |  | resources none → MBRT KCM [8 h] |
| 6 | **5TH AND MADISON** |  | 2023-09-22 → 2023-09-07 (-15d) |  |  |  |  |  |
| 1-6653 | SERVICE CABINET |  |  |  |  |  |  | resources none → MBRT KCM [8 h] |
| 1-6656 | SDCI INSPECTION |  |  |  |  |  |  | resources none → MBRT KCM [8 h] |
| 1-6654 | REQUEST KCM INSPECTION |  |  |  |  |  |  | resources none → MBRT KCM [8 h] |
| 1-6655 | WAIT FOR KCM TO INSPECT |  |  |  |  |  |  | resources none → MBRT KCM [32 h] |
| 1-6657 | NOTIFY SCL FOR INSPECTION |  |  |  |  |  |  | constraint start on or after 2023-07-03 → none; resources none → MBRT KCM [8 h] |
| 1-6658 | 30 DAY WAIT FOR SCL TO INSPECT |  |  |  |  |  |  | resources none → MBRT KCM |
| 1-6659 | SCL INSPECTION |  |  |  |  |  |  | resources none → MBRT KCM [8 h] |
| 1-6660 | NOTIFY SCL TO COMMISION |  |  |  |  |  |  | resources none → MBRT KCM [8 h] |
| 1-6661 | 30 DAY WAIT FOR SCL TO COMMISION |  | 2023-09-21 → 2023-09-06 A (-15d) |  | 0% → 100% | 69d → none |  | resources none → MBRT KCM |
| 1-6662 | COMMISION SERVICE | 2023-09-22 → 2023-09-07 A (-15d) | 2023-09-22 → 2023-09-07 A (-15d) |  | 0% → 100% | 69d → none |  | resources none → MBRT KCM [8 h] |
| 1 | **1ST AVE** |  | 2023-10-06 → 2023-10-09 (+3d) |  |  |  |  |  |
| 1-6598 | SERVICE CABINET |  |  |  |  |  |  | resources none → MBRT KCM [8 h] |
| 1-6601 | SDCI INSPECTION |  |  |  |  |  |  | resources none → MBRT KCM [8 h] |
| 1-6599 | REQUEST KCM INSPECTION |  |  |  |  |  |  | resources none → MBRT KCM [8 h] |
| 1-6600 | WAIT FOR KCM TO INSPECT |  |  |  |  |  |  | resources none → MBRT KCM [32 h] |
| 1-6602 | NOTIFY SCL FOR INSPECTION | 2023-07-24 A → 2023-09-20 A (+58d) | 2023-07-24 A → 2023-09-20 A (+58d) |  |  |  |  | constraint start on or after 2023-07-03 → none; resources none → MBRT KCM [8 h] |
| 1-6603 | 30 DAY WAIT FOR SCL TO INSPECT | 2023-07-25 A → 2023-09-21 A (+58d) | 2023-09-05 → 2023-09-29 A (+24d) | 30d → 21d | 0% → 100% | 59d → none |  | resources none → MBRT KCM |
| 1-6604 | SCL INSPECTION | 2023-09-06 → 2023-10-04 A (+28d) | 2023-09-06 → 2023-10-04 A (+28d) |  | 0% → 100% | 59d → none |  | resources none → MBRT KCM [8 h] |
| 1-6605 | NOTIFY SCL TO COMMISION | 2023-09-07 → 2023-10-05 A (+28d) | 2023-09-07 → 2023-10-05 A (+28d) |  | 0% → 100% | 59d → none |  | resources none → MBRT KCM [8 h] |
| 1-6606 | 30 DAY WAIT FOR SCL TO COMMISION | 2023-09-08 → 2023-10-06 A (+28d) | 2023-10-05 → 2023-10-06 A (+1d) |  | 0% → 100% | 59d → none |  | resources none → MBRT KCM |
| 1-6607 | COMMISION SERVICE | 2023-10-06 → 2023-10-09 A (+3d) | 2023-10-06 → 2023-10-09 A (+3d) |  | 0% → 100% | 59d → none |  | resources none → MBRT KCM [8 h] |
| 17 | **STATIONS** | 2023-10-19 → 2023-11-27 (+39d) | 2024-03-20 → 2024-06-12 (+84d) |  |  |  |  |  |
| 1 | **SPRING AND 3RD EB STATION** | 2023-10-19 → 2023-11-27 (+39d) | 2023-10-27 → 2024-04-04 (+160d) |  |  |  |  |  |
| 1-1096 | INST SHELTER, SPRING & 3RD EB STATION | 2023-10-19 → 2023-11-27 A (+39d) | 2023-10-24 → 2023-11-27 A (+34d) |  | 0% → 100% | -30d → none |  | resources none → MBRT BASE [8 h] |
| 1-1097 | INST TEC PYLON, SPRING & 3RD EB STATION | 2023-10-25 → 2024-04-02 (+160d) | 2023-10-26 → 2024-04-03 (+160d) |  |  | -18d → -108d |  | resources none → MBRT BASE [16 h] |
| 1-1098 | INST AMENITIES, SPRING & 3RD EB STATION | 2023-10-27 → 2024-04-04 (+160d) | 2023-10-27 → 2024-04-04 (+160d) |  |  | -18d → -102d |  | resources none → MBRT BASE [8 h] |
| 2 | **SPRING AND 4TH EB** | 2023-10-25 → 2023-11-28 (+34d) | 2023-11-02 → 2024-04-08 (+158d) |  |  |  |  |  |
| 1-1100 | INST SHELTER, SPRING AND 4TH EB | 2023-10-25 → 2023-11-28 A (+34d) | 2023-10-30 → 2023-11-28 A (+29d) |  | 0% → 100% | -30d → none |  | resources none → MBRT BASE [8 h] |
| 1-1101 | INST TEC PYLON, SPRING AND 4TH EB | 2023-10-31 → 2024-04-04 (+156d) | 2023-11-01 → 2024-04-05 (+156d) |  |  | -21d → -108d | 1-1100 → 1-1100, 1-1097 | resources none → MBRT BASE [16 h] |
| 1-1102 | INST AMENITIES, SPRING AND 4TH EB | 2023-11-02 → 2024-04-08 (+158d) | 2023-11-02 → 2024-04-08 (+158d) |  |  | -21d → -103d |  | resources none → MBRT BASE [8 h] |
| 3 | **SPRING AND 8TH EB** | 2023-12-11 → 2023-12-19 (+8d) | 2023-12-19 → 2024-04-10 (+113d) |  |  |  |  |  |
| 1-1104 | INST SHELTER, SPRING AND 8TH EB | 2023-12-11 → 2023-12-19 A (+8d) | 2023-12-14 → 2023-12-19 A (+5d) |  | 0% → 100% | -52d → none |  | resources none → MBRT BASE [8 h] |
| 1-1105 | INST TEC PYLON, SPRING AND 8TH EB | 2023-12-15 → 2024-04-08 (+115d) | 2023-12-18 → 2024-04-09 (+113d) |  |  | -49d → -108d | 1-1104 → 1-1104, 1-1101 | resources none → MBRT BASE [16 h] |
| 1-1106 | INST AMENITIES, SPRING AND 8TH EB | 2023-12-19 → 2024-04-10 (+113d) | 2023-12-19 → 2024-04-10 (+113d) |  |  | -49d → -104d | 1-1105, 1-1110 → 1-1105 | resources none → MBRT BASE [8 h] |
| 4 | **1ST AVE** | 2023-10-31 → 2024-01-03 (+64d) | 2023-11-08 → 2024-04-12 (+156d) |  |  |  |  |  |
| 1-1108 | INST SHELTER, 1ST AVE | 2023-10-31 → 2024-01-03 A (+64d) | 2023-11-03 → 2024-01-03 A (+61d) |  | 0% → 100% | -30d → none |  | resources none → MBRT BASE [8 h] |
| 1-1109 | INST TEC PYLON, 1ST AVE | 2023-11-06 → 2024-04-10 (+156d) | 2023-11-07 → 2024-04-11 (+156d) |  |  | -24d → -108d | 1-1108 → 1-1108, 1-1101, 1-1105 | resources none → MBRT BASE [16 h] |
| 1-1110 | INST AMENITIES, 1ST AVE | 2023-11-08 → 2024-04-12 (+156d) | 2023-11-08 → 2024-04-12 (+156d) |  |  | -24d → -106d |  | resources none → MBRT BASE [8 h] |
| 5 | **MADISON AND 3RD WB** | 2023-12-15 → 2024-01-02 (+18d) | 2023-12-26 → 2024-04-16 (+112d) |  |  |  |  |  |
| 1-1112 | INST SHELTER, MAD AND 3RD WB | 2023-12-15 → 2024-01-02 A (+18d) | 2023-12-20 → 2024-01-02 A (+13d) |  | 0% → 100% | -52d → none |  | resources none → MBRT BASE [8 h] |
| 1-1113 | INST TEC PYLON, MAD AND 3RD WB | 2023-12-21 → 2024-04-12 (+113d) | 2023-12-22 → 2024-04-15 (+115d) |  |  | -52d → -108d | 1-1112 → 1-1112, 1-1109 | resources none → MBRT BASE [16 h] |
| 1-1114 | INST AMENITIES, MAD AND 3RD WB | 2023-12-26 → 2024-04-16 (+112d) | 2023-12-26 → 2024-04-16 (+112d) |  |  | -52d → -107d | 1-1113, 1-1106 → 1-1113, 1-1106, 1-1110 | resources none → MBRT BASE [8 h] |
| 6 | **MADISON AND 5TH WB** | 2023-11-07 → 2023-11-29 (+22d) | 2023-12-27 → 2024-04-18 (+113d) |  |  |  |  |  |
| 1-1116 | INST SHELTER, MAD AND 5TH | 2023-11-07 → 2023-11-29 A (+22d) | 2023-11-10 → 2023-11-29 A (+19d) |  | 0% → 100% | -26d → none |  | resources none → MBRT BASE [8 h] |
| 1-1117 | INST TEC PYLON, MAD AND 5TH | 2023-11-14 → 2024-04-16 (+154d) | 2023-11-15 → 2024-04-17 (+154d) |  |  | -26d → -108d | 1-1116 → 1-1116, 1-1109, 1-1113 | resources none → MBRT BASE [16 h] |
| 1-1118 | INST AMENITIES, MAD AND 5TH | 2023-12-27 → 2024-04-18 (+113d) | 2023-12-27 → 2024-04-18 (+113d) |  |  | -52d → -108d |  | resources none → MBRT BASE [8 h] |
| 7 | **MADISON AND 8TH WB** | 2023-12-28 → 2024-03-21 (+84d) | 2024-01-11 → 2024-04-05 (+85d) |  |  |  |  |  |

| ID | Task | Start | Finish | Complete | Total float | Predecessors | Other |
| --- | --- | --- | --- | --- | --- | --- | --- |
| 1-1120 | INST SHELTER, MAD AND 8TH WB | 2023-12-28 → 2024-03-21 A (+84d) | 2024-01-03 → 2024-03-26 A (+83d) | 0% → 100% | -52d → none | 1-1118 → 1-1108 | resources none → MBRT BASE [32 h] |
| 1-1121 | INST TEC PYLON, MAD AND 8TH WB | 2024-01-04 → 2024-03-27 A (+83d) | 2024-01-05 → 2024-03-28 A (+83d) | 0% → 100% | -52d → none |  | resources none → MBRT BASE [16 h] |
| 1-1122 | INST AMENITIES, MAD AND 8TH WB | 2024-01-08 → 2024-04-02 (+85d) | 2024-01-08 → 2024-04-02 (+85d) |  | -52d → -111d |  | resources none → MBRT BASE [8 h] |
| 1-1123 | INST HANDRAIL, MAD AND 8TH WB | 2024-01-09 → 2024-04-03 (+85d) | 2024-01-11 → 2024-04-05 (+85d) |  | -52d → -111d |  | resources none → MBRT BASE [24 h] |
| 8 | **MADISON AND TERRY** | 2024-03-04 → 2024-04-08 (+35d) | 2024-03-14 → 2024-04-30 (+47d) |  |  |  |  |
| 1-1125 | INST SHELTER, MAD AND TERRY | 2024-01-12 → 2024-04-08 (+87d) | 2024-01-24 → 2024-04-17 (+84d) |  | -52d → -111d |  | resources none → MBRT BASE [64 h] |
| 1-1126 | INST TEC PYLON, MAD AND TERRY | 2024-01-25 → 2024-04-18 (+84d) | 2024-01-30 → 2024-04-23 (+84d) |  | -52d → -111d |  | resources none → MBRT BASE [32 h] |
| 1-1127 | INST AMENITIES, MAD AND TERRY | 2024-01-31 → 2024-04-24 (+84d) | 2024-02-01 → 2024-04-25 (+84d) |  | -52d → -111d | 1-1126 → 1-1126, 1-1118 | resources none → MBRT BASE [16 h] |
| 1-1128 | INST HANDRAIL, MAD AND TERRY | 2024-02-02 → 2024-04-26 (+84d) | 2024-02-06 → 2024-04-30 (+84d) |  | -52d → -111d |  | resources none → MBRT BASE [24 h] |
| 9 | **MADISON AND BOYLSTON** | 2022-09-30 → 2024-05-01 (+579d) | 2024-02-20 → 2024-06-12 (+113d) |  |  |  |  |
| 1-1130 | INST SHELTER, MAD AND BOYLSTON | 2024-02-07 → 2024-05-01 (+84d) | 2024-02-29 → 2024-05-22 (+83d) |  | -52d → -111d |  | resources none → MBRT BASE [128 h] |
| 1-1131 | INST TEC PYLON, MAD AND BOYLSTON | 2024-03-01 → 2024-05-23 (+83d) | 2024-03-08 → 2024-05-31 (+84d) |  | -52d → -111d |  | resources none → MBRT BASE [48 h] |
| 1-1132 | INST AMENITIES, MAD AND BOYLSTON | 2024-03-11 → 2024-06-03 (+84d) | 2024-03-12 → 2024-06-04 (+84d) |  | -52d → -111d |  | resources none → MBRT BASE [16 h] |
| 1-1133 | INST HANDRAIL, MAD AND BOYLSTON | 2024-03-13 → 2024-06-05 (+84d) | 2024-03-20 → 2024-06-12 (+84d) |  | -52d → -111d |  | resources none → MBRT BASE [48 h] |
| 18 | **OCS POLES** | 2023-08-14 → 2023-07-25 (-20d) | 2023-09-13 → 2023-09-14 (+1d) |  |  |  |  |
| 1-1135 | INST REMAINING POLES, OCS POLES | 2023-08-14 → 2023-07-25 A (-20d) | 2023-09-13 → 2023-09-14 A (+1d) | 0% → 100% | 76d → none |  | resources none → MBRT BASE [296 h] |
| 5 | **ZONE 2 - BROADWAY TO 15TH** |  | 2024-07-10 → 2024-08-01 (+22d) |  |  |  |  |
| 2-1140 | POTHOLE FOUNDATIONS ZONE 2, POTHOLING FOUNDATIONS |  |  |  |  |  | resources none → MBRT BASE |
| 2-1141 | SUBMITAL REVIEW, POTHOLING FOUNDATIONS |  |  |  |  |  | resources none → MBRT BASE [80 h] |
| 2-1181 | FOUNDATION ONGOING CONFLICT RESOLUTION |  |  |  |  |  | resources none → MBRT NEW |
| 2-1154 | MAD AND 15TH, STORM WORK |  |  |  |  |  | resources none → MBRT BASE [8 h] |
| PCO010.01 | DSC 5-Unlocated 3" conduit under storm @ 15th/Madison |  |  |  |  | none → MS-0025 | resources none → MBRT DSC [16 h] |
| PCO080.01 | DSC 49-Existing MH 002 invert coflict |  |  |  |  | none → MS-0025 | resources none → MBRT DSC [152 h] |
| PCO085.01 | DSC 53-CB 18 conflicts |  |  |  |  | none → MS-0025 | resources none → MBRT DSC [40 h] |
| PCO096.01 | DSC 59-CB 19 conflicts |  |  |  |  | none → MS-0025 | resources none → MBRT DSC [8 h] |
| PCO159.01 | DSC 112-Inlet 22 Conflict |  |  |  |  | none → MS-0025 | resources none → MBRT DSC [8 h] |
| 2-1152 | MAD AND 13TH, STORM WORK |  |  |  |  |  | resources none → MBRT BASE [32 h] |
| PCO176.01 | DSC 124- Inlet 17 conflict |  |  |  |  | none → MS-0025 | resources none → MBRT DSC [16 h] |
| PCO180.01 | DSC 126-Power Conflict at Inlet 14 |  |  |  |  | none → MS-0025 | resources none → MBRT DSC [8 h] |
| 2-1150 | MAD AND 12TH, STORM WORK |  |  |  |  |  | resources none → MBRT BASE [24 h] |
| 2-1153 | MAD AND 14TH, STORM WORK |  |  |  |  |  | resources none → MBRT BASE [16 h] |
| 2-1148 | MAD AND 11TH, STORM WORK |  |  |  |  |  | resources none → MBRT BASE [8 h] |
| PCO201.01 | DSC 144-Inlet 12 conflict |  |  |  |  | none → MS-0025 | resources none → MBRT DSC [48 h] |
| 2-1146 | MH6 TO MH9, STORM WORK |  |  |  |  |  | resources none → MBRT BASE [224 h] |
| PCO217.01 | DSC 155-Ductbank conflict @ MH 6 |  |  |  |  | none → MS-0025 | resources none → MBRT DSC [8 h] |
| PCO220.01 | DSC 158-MH7 Conflicts |  |  |  |  | none → MS-0025 | resources none → MBRT DSC [72 h] |
| PCO225.01 | DSC 161-CB 007 Conflicts |  |  |  |  | none → MS-0025 | resources none → MBRT DSC [8 h] |
| PCO231.01 | DSC 166-CB 7 conflicts |  |  |  |  | none → MS-0025 | resources none → MBRT DSC [136 h] |
| PCO232.01 | DSC 167-Unknown unlocated Steel Line MH 6 to MH 7 |  |  |  |  | none → MS-0025 | resources none → MBRT DSC [32 h] |
| PCO234.01 | DSC 169-Ductbank conflict MH7 |  |  |  |  | none → MS-0025 | resources none → MBRT DSC [8 h] |
| PCO237.01 | DSC 171-Unlocated 2" steel Line 12th-13th |  |  |  |  | none → MS-0025 | resources none → MBRT DSC [8 h] |
| PCO240.01 | DSC 174-Lack of Locates, Madison & 13th |  |  |  |  | none → MS-0025 | resources none → MBRT DSC [88 h] |
| PCO251.01 | DSC 183-Union & 11th, Irrigation conflict @ Inlet 15 |  |  |  |  | none → MS-0025 | resources none → MBRT DSC [8 h] |
| 2-1144 | SENECA AND 10TH, STORM WORK |  |  |  |  | SC-0031 → SC-0031 SS | resources none → MBRT BASE [16 h] |
| PCO257.01 | DSC 187-Leaking waterline CB 13 |  |  |  |  | none → MS-0025 | resources none → MBRT DSC [8 h] |
| PCO259.01 | DSC 189-Unkown Utility CB 11 Cor Tap location |  |  |  |  | none → MS-0025 | resources none → MBRT DSC [8 h] |
| 2-1149 | UNION AND 11TH, STORM WORK |  |  |  |  |  | resources none → MBRT BASE [24 h] |
| 2-1147 | MAD AND 10TH, STORM WORK |  |  |  |  |  | resources none → MBRT BASE [32 h] |
| PCO264.01 | DSC 190-CB 6 Conflict |  |  |  |  | none → MS-0025 | resources none → MBRT DSC [8 h] |
| PCO269.01 | DSC 195-Duct Bank Conflict with CB 6A |  |  |  |  | none → MS-0025 | resources none → MBRT DSC [8 h] |
| PCO273.01 | DSC 199-CB 6A Concrete Obstruction |  |  |  |  | none → MS-0025 | resources none → MBRT DSC [8 h] |
| PCO274.01 | DSC 200-Unknown signal conduit in conflict Inlet 14 |  |  |  |  | none → MS-0025 | resources none → MBRT DSC [8 h] |
| 2-1145 | MH1 TO MH2, STORM WORK |  |  |  |  | SC-0031, 2-1144, LS-1450 FF → SC-0031 SS, 2-1144, LS-1450 FF | resources none → MBRT BASE [64 h] |
| 2-1151 | MAD & UNION SOUTH, STORM WORK |  |  |  |  |  | resources none → MBRT BASE [40 h] |
| 2-1158 | MAD AND UNION, SEWER CONNECTION |  |  |  |  |  | resources none → MBRT NEW [16 h] |
| PCO294.01 | DSC 216-Inlet 21 conduit conflict |  |  |  |  | none → MS-0025 | resources none → MBRT DSC [8 h] |
| PCO343.01 | DSC 252-Unlocated Conduit Under Existing Storm Stg 2 |  |  |  |  | none → MS-0025 | resources none → MBRT DSC [24 h] |
| 2-1143 | MH2 TO MH4 (10TH AVE), STORM WORK |  |  |  |  | MS-0026, PMP-0020, SC-0037, LS-1455 FF, 2-1146, 2-1147 → MS-0026, PMP-0020, SC-0037 SS, LS-1455 FF, 2-1146, 2-1147 | resources none → MBRT BASE [208 h] |
| PCO697.01 | DSC 499-CONTAMINATED SOILS |  |  |  |  |  | resources none → MBRT DSC [88 h] |
| 3 | **DUCT BANK WORK** |  | 2023-08-28 → 2023-09-13 (+16d) |  |  |  |  |
| PCO285.01 | DSC 210-Prime Ductbank Union St. - Timbers |  |  |  |  | none → MS-0025 | resources none → MBRT DSC [16 h] |
| 2-1157 | UNION, DUCT BANK WORK |  |  |  |  |  | resources none → MBRT BASE [112 h] |
| 2-1156 | MAD AND 11TH, DUCT BANK WORK - PRIOR TO DELAY |  |  |  |  | SC-0031, 2-1152, 2-1157 → SC-0031 SS, 2-1152, 2-1157 | resources none → MBRT BASE [120 h] |
| PCO379.01 | DSC 276-power line in conflict with Vault at 11th |  |  |  |  | none → MS-0025 | resources none → MBRT DSC [88 h] |
| PCO383.01 | DSC 279-Unkown conduit in conflict with vault at 11th |  |  |  |  | none → MS-0025 | resources none → MBRT DSC [40 h] |
| PCO386.01 | DSC 282-Buried Sidewalk 11th Ave Ductbank |  |  |  |  | none → MS-0025 | resources none → MBRT DSC [24 h] |
| PCO388.01 | DSC 284-Steel Pipe in conflict with Vault at 11th |  |  |  |  | none → MS-0025 | resources none → MBRT DSC [8 h] |
| PCO395.01 | DSC 288-Artifacts at 11th Electrical Vault |  |  |  |  | none → MS-0025 | resources none → MBRT DSC [24 h] |
| PCO399.01 | DSC 291-Existing DB Conflict with new, 11th Avenue |  |  |  |  | none → MS-0025 | resources none → MBRT DSC [104 h] |
| PCO404.01 | DSC 295-Prime 444 Vault Conflict at 11th |  |  |  |  | none → MS-0025 | resources none → MBRT DSC [24 h] |

| ID | Task | Start | Finish | Complete | Total float | Predecessors | Other |
| --- | --- | --- | --- | --- | --- | --- | --- |
| 2-1732 | MAD AND 11TH, DUCT BANK WORK - CITY CAUSED DELAY |  |  |  |  |  | resources none → MBRT NEW [120 h] |
| 2-1737 | MAD AND 11TH, DUCT BANK WORK - AFTER DELAY |  |  |  |  |  | resources none → MBRT NEW [120 h] |
| PCO467.01 | DSC 339-Prime Notice of unsuatable soils DB at 11th |  |  |  |  | none → MS-0025 | resources none → MBRT DSC [40 h] |
| PCO468.01 | DSC 340-Prime electic unkown utility DB at 11th |  |  |  |  | none → MS-0025 | resources none → MBRT DSC [152 h] |
| PCO471.01 | DSC 343-Prime Electric Unknown Utility DB at 11th #2 |  |  |  |  | none → MS-0025 | resources none → MBRT DSC [24 h] |
| PCO472.01 | DSC 344-Steel Structure Conflict DB at 11th |  |  |  |  | none → MS-0025 | resources none → MBRT DSC [8 h] |
| PCO490.01 | DSC 351-11th Ave Ductbank Rail conflicts |  |  |  |  | none → MS-0025 | resources none → MBRT DSC [8 h] |
| PCO494.01 | DSC 353-Prime DSC Soils caving 11th duct bank |  |  |  |  | none → MS-0025 | resources none → MBRT DSC [48 h] |
| 2-1742 | EASEMENT - CITY CAUSED DELAY |  | 2023-08-21 A | 0% → 100% | -106d → none |  | resources none → MBRT NEW |
| 2-2662 | KCM DUCT BANK BEFORE DSC 455 |  |  |  |  |  | resources none → MBRT DSC [8 h] |
| PCO645.01 | DSC 455-KCM DUCT BANK CONFLICT WITH OLD VAULT |  |  |  |  |  | resources none → MBRT DSC [8 h] |
| 2-2667 | KCM DUCT BANK AFTER DSC 455 |  |  |  |  |  | resources none → MBRT DSC [24 h] |
| 2-1747 | MAD AND 11TH, DUCT BANK WORK - AFTER EASEMENT DELAY | 2023-08-22 A | 2023-08-28 → 2023-09-13 A (+16d) | 0% → 100% | -106d → none |  | resources none → MBRT NEW [40 h] |
| 2-1160 | TEMP MAIN, SERVICES & LATERALS, STAGE 2 (BROADWAY TO 11TH) |  |  |  |  | PMP-0017, SC-0031, 2-1146 → PMP-0017, SC-0031 SS, 2-1146 | resources none → MBRT BASE [184 h] |
| 2-1161 | FLUSH, PRESSURE TEST & DISINFECT TEMP MAIN, STAGE 2 (BROADWAY TO 11TH) |  |  |  |  |  | resources none → MBRT BASE [16 h] |
| 2-1162 | BAC T RESULTS, STAGE 2 (BROADWAY TO 11TH) |  |  |  |  |  | resources none → MBRT BASE [24 h] |
| 2-1163 | SPU CUSTOMER NOTIFICATON, STAGE 2 (BROADWAY TO 11TH) |  |  |  |  |  | resources none → MBRT BASE |
| 2-1164 | TAP TEM MAIN 1/CC01, STAGE 2 (BROADWAY TO 11TH) |  |  |  |  |  | resources none → MBRT BASE |
| 2-1165 | TAP TEMP MAIN 2 & 3 / CC03, STAGE 2 (BROADWAY TO 11TH) |  |  |  |  |  | resources none → MBRT BASE |
| 2-1166 | TRANSFER SERVICES TO TEMP MAIN, STAGE 2 (BROADWAY TO 11TH) |  |  |  |  |  | resources none → MBRT BASE |
| 2-1167 | CUT & CAP CCO1, CC02 STAGE 2 (BROADWAY TO 11TH) |  |  |  |  |  | resources none → MBRT BASE [64 h] |
| 2-1667 | SPU DELAY CC04, STAGE 2 (BROADWAY TO 11TH) |  |  |  |  |  | resources none → MBRT NEW [8 h] |
| 2-1168 | INST MAIN TO STA 253+78 INCLUDING VALVE CHAMBERS, STAGE 2 (BROADWAY TO 11TH) |  |  |  |  |  | resources none → MBRT BASE [96 h] |
| PCO296.01 | DSC 218-I-beams in roadway zone 2 waterline |  |  |  |  | none → MS-0025 | resources none → MBRT DSC [16 h] |
| 2-1239 | NOTIFY SPU, TEST STATIONS |  |  |  |  |  | resources none → MBRT BASE [24 h] |
| PCO333.01 | DSC 243-Re-Excavate Cut & Cap Stage 2 |  |  |  |  | none → MS-0025 | resources none → MBRT DSC [8 h] |
| 2-1662 | CUT & CAP CC04, STAGE 2 (BROADWAY TO 11TH) |  |  |  |  |  | resources none → MBRT NEW [8 h] |
| 2-1672 | INST MAIN TO STA 253+78 INCLUDING ADDED VALVE CHAMBER, STAGE 2 (BROADWAY TO 11TH) AFTER SPU DELAY |  |  |  |  |  | resources none → MBRT NEW [112 h] |
| 2-1169 | INST MAIN AT BROADWAY, STAGE 2 (BROADWAY TO 11TH) |  |  |  |  |  | resources none → MBRT BASE [8 h] |
| PCO345.01 | DSC 254-Stage 2 Water Main, CDF obstructions |  |  |  |  | none → MS-0025 | resources none → MBRT DSC [104 h] |
| 2-1170 | INST MAIN AT 11TH, STAGE 2 (BROADWAY TO 11TH) |  |  |  |  |  | resources none → MBRT BASE [8 h] |
| 2-1171 | INST THRUST BLOCKS & THRUST COLLARS, STAGE 2 (BROADWAY TO 11TH) |  |  |  |  |  | resources none → MBRT BASE [16 h] |
| 2-1172 | INST FIRE HYDRANTS, STAGE 2 (BROADWAY TO 11TH) |  |  |  |  |  | resources none → MBRT BASE [8 h] |
| 2-1173 | FLUSH, TEST & DISINFECT MAIN, STAGE 2 (BROADWAY TO 11TH) |  |  |  |  |  | resources none → MBRT BASE [16 h] |
| 2-1174 | BAC T RESULTS, STAGE 2 (BROADWAY TO 11TH) |  |  |  |  |  | resources none → MBRT BASE [24 h] |
| 2-1175 | 5d NOTICE FOR SPU, STAGE 2 (BROADWAY TO 11TH) |  |  |  |  |  | resources none → MBRT BASE |
| 2-1176 | CONNECT NEW MAIN AT CC02, STAGE 2 (BROADWAY TO 11TH) |  |  |  |  |  | resources none → MBRT BASE [16 h] |
| 2-1177 | TRANSFER ALL SERVICES: TEMP MAIN 01,02 & 03 TO NEW MAIN, STAGE 2 (BROADWAY TO 11TH) |  |  |  |  |  | resources none → MBRT BASE [16 h] |
| 2-1178 | CONNECT AT CC01 & CC03, STAGE 2 (BROADWAY TO 11TH) |  |  |  |  |  | resources none → MBRT BASE [8 h] |
| 2-1179 | TEST STATIONS, STAGE 2 (BROADWAY TO 11TH) |  |  |  |  |  | resources none → MBRT BASE [8 h] |
| 2-1180 | REM TEMP MAIN, STAGE 2 (BROADWAY TO 11TH) |  |  |  |  |  | resources none → MBRT BASE [24 h] |
| PCO267.01 | DSC 193-duct bank conflict with temp main at 11th |  |  |  |  | none → MS-0025 | resources none → MBRT DSC [16 h] |
| 2-1182 | TEMP MAIN, SERVICES & LATERALS, TO3B, T04, & T05, STAGE 3 (11TH TO 12TH) |  |  |  |  |  | resources none → MBRT BASE [112 h] |
| PCO363.01 | DSC 264-Seattle U Fire Service Coroded Pipe |  |  |  |  | none → MS-0025 | resources none → MBRT DSC [40 h] |
| PCO377.01 | DSC 275-Stage 3 WM Ductbank Conflict |  |  |  |  | none → MS-0025 | resources none → MBRT DSC [8 h] |
| 2-1183 | FLUSH, TEST, DISINFECT TEMP MAIN, STAGE 3 (11TH TO 12TH) |  |  |  |  |  | resources none → MBRT BASE [16 h] |
| 2-1184 | BAC T RESULTS, STAGE 3 (11TH TO 12TH) |  |  |  |  |  | resources none → MBRT BASE [24 h] |
| 2-1677 | FM300 ISSUED |  |  |  |  | none → MS-0025 | constraint start on or after 2022-09-15 → none; resources none → MBRT NEW [8 h] |
| 2-1682 | CITY/JANSEN NEGOTIATE FM300 CHANGE ORDER |  |  |  |  |  | resources none → MBRT NEW [8 h] |
| 2-1185 | 5d NOTICE FOR SPU, STAGE 3 (11TH TO 12TH) |  |  |  |  |  | resources none → MBRT BASE |
| 2-1186 | TAP MAIN AT CC06/CONNECT TO T04, STAGE 3 (11TH TO 12TH) |  |  |  |  |  | resources none → MBRT BASE |
| 2-1187 | TAP MAIN AT CC07/ CONNECTION TO T05, STAGE 3 (11TH TO 12TH) |  |  |  |  |  | resources none → MBRT BASE |
| 2-1188 | TAP HYDRANT & MAKE CONNECTION TO T03B, STAGE 3 (11TH TO 12TH) |  |  |  |  |  | resources none → MBRT BASE |
| 2-1687 | FM300 UTILITY VERIFICATION |  |  |  |  |  | resources none → MBRT NEW [8 h] |
| 2-1717 | 10 DAY DELAY - SPU CREW AVAILABILITY |  |  |  |  |  | resources none → MBRT NEW [80 h] |
| 2-1692 | INSTALL FM300 TEMP MAIN |  |  |  |  |  | resources none → MBRT NEW [16 h] |
| 2-1697 | FM300 TESTING/FLUSHING |  |  |  |  |  | resources none → MBRT NEW [16 h] |
| 2-1702 | FM300 BAC-T RESULTS |  |  |  |  |  | resources none → MBRT NEW [24 h] |
| 2-1707 | FM300 5 DAY NOTIFICATION FOR SPU |  |  |  |  |  | resources none → MBRT NEW [16 h] |
| PCO407.01 | DSC 298-Unknown unlocated Water Service Stage 3 |  |  |  |  | none → MS-0025 | resources none → MBRT DSC [8 h] |
| 2-1712 | FM300 TIE-IN TEMP MAIN |  |  |  |  |  | resources none → MBRT NEW [8 h] |
| 2-1189 | CC05, CC06 & CC07, STAGE 3 (11TH TO 12TH) |  |  |  |  |  | resources none → MBRT BASE |
| 2-1190 | INST NEW MAIN 253+95 TO 257+41, STAGE 3 (11TH TO 12TH) - PRIOR TO DELAY |  |  |  |  |  | resources none → MBRT BASE [40 h] |
| PCO417.01 | DSC 307-42" Watermain leaking at 12th |  |  |  |  | none → MS-0025 | resources none → MBRT DSC [40 h] |
| 2-1727 | OWNER DELAY - LEAKING 48' MAIN; COULD NOT COMPLETE ON 1ST WEEKEND |  |  |  |  |  | resources none → MBRT NEW [40 h] |
| 2-1722 | INST NEW MAIN 253+95 TO 257+41, STAGE 3 (11TH TO 12TH) - AFTER DELAY |  |  |  |  |  | resources none → MBRT NEW [40 h] |
| 2-1191 | INST MAIN 12A 8+05 TO 11+32 INCLUDING VALVE CHAMBERS, STAGE 3 (11TH TO 12TH) |  |  |  |  |  | resources none → MBRT BASE [128 h] |
| PCO437.01 | DSC 319-Unknown Unlocated Conduit 12th and Union |  |  |  |  | none → MS-0025 | resources none → MBRT DSC [16 h] |
| PCO446.01 | DSC 326-Unlocated Ductbanks Stage 3 Watermain |  |  |  |  | none → MS-0025 | resources none → MBRT DSC [56 h] |
| 2-1192 | INST THRUST BLOCKS, STAGE 3 (11TH TO 12TH) |  |  |  |  |  | resources none → MBRT BASE [64 h] |

| ID | Task | Finish | Predecessors | Other |
| --- | --- | --- | --- | --- |
| PCO450.01 | DSC 329-unknown unlocated utilitiy in conflict with valve vault on 12th |  | none → MS-0025 | resources none → MBRT DSC [16 h] |
| 2-1251 | NOTIFY SPU, TEST STATIONS 72HOURS |  |  | resources none → MBRT BASE [24 h] |
| PCO458.01 | DSC 335-8" Service conflict with 48" transition main |  | none → MS-0025 | resources none → MBRT DSC [56 h] |
| PCO461.01 | DSC 336-Unknown Ductbanks Stage 3 |  | none → MS-0025 | resources none → MBRT DSC [16 h] |
| 2-1193 | INST FIRE HYDRANTS, STAGE 3 (11TH TO 12TH) |  |  | resources none → MBRT BASE [8 h] |
| 2-1194 | FLUSH, TEST & DISINFECT MAIN, STAGE 3 (11TH TO 12TH) |  |  | resources none → MBRT BASE [16 h] |
| 2-1195 | BAC T RESULTS, STAGE 3 (11TH TO 12TH) |  |  | resources none → MBRT BASE [8 h] |
| 2-1196 | 5d NOTICE FOR SPU, STAGE 3 (11TH TO 12TH) |  |  | resources none → MBRT BASE |
| 2-1197 | SPU CONNECT MAIN AT 253+95, STAGE 3 (11TH TO 12TH) |  |  | resources none → MBRT BASE [8 h] |
| 2-1198 | SPU TRANSFER SERVICES FROM T04 TO MAIN, STAGE 3 (11TH TO 12TH) |  |  | resources none → MBRT BASE [8 h] |
| 2-1907 | OWNER DELAY - WAIT FOR SPU TO COMPLETE WORK, STAGE 3 (11TH TO 12TH) |  |  | resources none → MBRT NEW [16 h] |
| 2-1199 | SPU CONECT AT CC06 & CC07, STAGE 3 (11TH TO 12TH) |  |  | resources none → MBRT BASE [8 h] |
| 2-1200 | SPU TRANFER SERVICES FROM T06 TO MAIN, STAGE 3 (11TH TO 12TH) |  |  | resources none → MBRT BASE [8 h] |
| 2-1201 | TEST STATIONS, STAGE 3 (11TH TO 12TH) |  |  | resources none → MBRT BASE [8 h] |
| 2-1202 | REMOVE TEMP MAIN, STAGE 3 (11TH TO 12TH) |  |  | resources none → MBRT BASE [8 h] |
| 2-1204 | TEMP MAIN, SERVICES & LATERALS, T10 & T07, STAGE 4 (12TH TO 13) |  |  | resources none → MBRT BASE [8 h] |
| 2-1205 | FLUSH, TEST & DISINFECT TEMP MAIN, STAGE 4 (12TH TO 13) |  |  | resources none → MBRT BASE [16 h] |
| 2-1206 | BAC T RESULTS, STAGE 4 (12TH TO 13) |  |  | resources none → MBRT BASE [24 h] |
| 2-1207 | 5d NOTICE FOR SPU, STAGE 4 (12TH TO 13) |  |  | resources none → MBRT BASE |
| 2-1208 | SPU TAP HYDRANT CONECT TO T16, STAGE 4 (12TH TO 13) |  |  | resources none → MBRT BASE [8 h] |
| 2-1211 | SPU TRANSFER SERVICES TO TEMP MAIN, STAGE 4 (12TH TO 13) |  |  | resources none → MBRT BASE [8 h] |
| 2-1897 | FIRST DELAY WAITING FOR SPU TRANSFER SERVICES TO TEMP MAIN, STAGE 4 (12TH TO 13) |  |  | resources none → MBRT NEW [24 h] |
| 2-1902 | SECOND DELAY WAITING FOR SPU TO PERFORM CUT AND CAPS, STAGE 4 (12TH TO 13) |  |  | resources none → MBRT NEW [24 h] |
| 2-1212 | SPU CUT & CAPS, STAGE 4 (12TH TO 13) |  |  | resources none → MBRT BASE |
| 2-1214 | INST MAIN FROM STA 257+55 TO 269+00, STAGE 4 & 5 (12TH TO 13) |  |  | resources none → MBRT BASE [40 h] |
| 2-1220 | INST THRUST BLOCKS, STAGE 4 (12TH TO 13) |  |  | resources none → MBRT BASE [16 h] |
| 2-1221 | INST THRUST COLLARS, STAGE 4 (12TH TO 13) |  |  | resources none → MBRT BASE [16 h] |
| 2-1222 | FLUSH, TEST & DISINFECT MAIN, STAGE 4 (12TH TO 13) |  |  | resources none → MBRT BASE |
| 2-1223 | BAC T RESULTS, STAGE 4 (12TH TO 13) |  |  | resources none → MBRT BASE [24 h] |
| 2-1224 | 5d NOTICE FOR SPU, STAGE 4 (12TH TO 13) |  |  | resources none → MBRT BASE |
| 2-1225 | PRIOR TO DELAY - SPU CONECT AT MAIN, STAGE 4 (12TH TO 13) |  |  | resources none → MBRT BASE [8 h] |
| PCO544.01 | DSC 384-Stage 4 crossing at Union conflict with duct bank |  | none → MS-0025 | resources none → MBRT DSC [56 h] |
| 2-1227 | SPU TRANSFER SERVICES, STAGE 4 (12TH TO 13) |  |  | resources none → MBRT BASE |
| 2-1228 | SPU CONNECT AT 13TH (12TH TO 13) |  |  | resources none → MBRT BASE |
| 2-1230 | TEST STATIONS, STAGE 4 (12TH TO 13) |  |  | resources none → MBRT BASE [8 h] |
| 2-1912 | OWNER CAUSED DELAY - SPU CONECT AT MAIN, STAGE 4 (12TH TO 13) |  |  | resources none → MBRT NEW [8 h] |
| 2-1917 | OWNER DIRECTION TO PERFORM INVESTIGATIVE EXCAVATION, STAGE 4 (12TH TO 13) |  |  | resources none → MBRT NEW [8 h] |
| 2-1922 | AFTER DELAY - SPU CONNECT AT UNION , STAGE 4 (12TH TO 13) |  |  | resources none → MBRT NEW [8 h] |
| 2-1231 | REM TEMP WATER MAINS, STAGE 4 (12TH TO 13) |  |  | resources none → MBRT BASE |
| 2-1927 | INSTALL MAIN LINE, STAGE 4B (13TH TO 14TH) |  |  | resources none → MBRT NEW [8 h] |
| 2-1932 | TESTING AND FLUSHING, STAGE 4B (13TH TO 14TH) |  |  | resources none → MBRT NEW [16 h] |
| 2-1937 | 5 DAY WAIT FOR SPU, STAGE 4B (13TH TO 14TH) |  |  | resources none → MBRT NEW [8 h] |
| 2-1942 | COMMISSION STAGE 4B, STAGE 4B (13TH TO 14TH) |  |  | resources none → MBRT NEW [32 h] |
| 2-1752 | TEMP MAIN, SERVICES & LATERALS, T16, T17, T06 & T11 STAGE 5 (12TH TO 15) |  |  | resources none → MBRT NEW [32 h] |
| 2-1757 | FLUSH, TEST & DISINFECT TEMP MAIN, STAGE 5 (12TH TO 15) |  |  | resources none → MBRT NEW [16 h] |
| 2-1762 | BAC T RESULTS, STAGE 5 (12TH TO 15) |  |  | resources none → MBRT NEW [24 h] |
| 2-1767 | 5d NOTICE FOR SPU, STAGE 5 (12TH TO 15) |  |  | resources none → MBRT NEW [40 h] |
| PCO519.01 | DSC 371-Stage 5 Temp Connection at 15th |  | none → MS-0025 | resources none → MBRT DSC [40 h] |
| PCO521.01 | DSC 373-Stage 5 Cut and Cap Concrete Obstruction |  | none → MS-0025 | resources none → MBRT DSC [8 h] |
| 2-1772 | SPU TAP HYDRANT CONECT TO T16, T17, T06 & T16 STAGE 5 (12TH TO 15) |  |  | resources none → MBRT NEW [8 h] |
| 2-1782 | SPU TRANSFER SERVICES TO TEMP MAIN, STAGE 5 (12TH TO 15) |  |  | resources none → MBRT NEW [24 h] |
| 2-1802 | SPU CUT & CAP AT STAGE 5 (12TH TO 15) |  |  | resources none → MBRT NEW [8 h] |
| 2-1792 | INST MAIN, STAGE 5 (12TH TO 15) |  |  | resources none → MBRT NEW [112 h] |
| 2-1837 | INST THRUST COLLARS, STAGE 5 (12TH TO 15) |  |  | resources none → MBRT NEW [24 h] |
| PCO627.01 | DSC 439-WATERMAIN CONFLICT WITH MAIN AT 15TH |  |  | resources none → MBRT DSC [16 h] |
| 2-1832 | INST THRUST BLOCKS, STAGE 5 (12TH TO 15) |  |  | resources none → MBRT NEW [16 h] |
| 2-1842 | FLUSH, TEST & DISINFECT MAIN, STAGE 5 (12TH TO 15) |  |  | resources none → MBRT NEW [16 h] |
| 2-1847 | BAC T RESULTS, STAGE 5 (12TH TO 15) |  |  | resources none → MBRT NEW [24 h] |
| 2-1852 | 5d NOTICE FOR SPU, STAGE 5 (12TH TO 15) |  |  | resources none → MBRT NEW [40 h] |
| 2-1857 | SPU CONECT AT 13TH NEW MAIN, STAGE 5 (12TH TO 15) |  |  | resources none → MBRT NEW [8 h] |
| 2-1867 | SPU TRANSFER SERVICES, STAGE 5 (12TH TO 15) |  |  | resources none → MBRT NEW [16 h] |
| 2-1872 | SPU CONNECT AT CC08 & CC09, STAGE 5 (12TH TO 15) |  |  | resources none → MBRT NEW [8 h] |
| 2-1882 | REM TEMP WATER MAIN, STAGE 5 (12TH TO 15) |  |  | resources none → MBRT NEW [32 h] |
| 2-1233 | 11TH AVE TEMP SIGNALS, TEMP SIGNALS |  | SC-0031 → SC-0031 SS | resources none → MBRT BASE [24 h] |
| 2-1234 | 12TH AVE TEMP SIGNALS, TEMP SIGNALS |  |  | resources none → MBRT BASE [24 h] |
| 2-1235 | 13TH AVE TEMP SIGNALS, TEMP SIGNALS |  |  | resources none → MBRT BASE [24 h] |
| 2-1236 | 14TH AVE TEMP SIGNALS, TEMP SIGNALS |  |  | resources none → MBRT BASE [24 h] |
| 2-1237 | 15TH AVE TEMP SIGNALS, TEMP SIGNALS |  |  | resources none → MBRT BASE [24 h] |
| PCO355.01 | DSC 260-Temp Signals 14th tied to Pike ST |  | none → MS-0025 | resources none → MBRT DSC [184 h] |
| 6 | **ROADWAY WORK** | 2023-09-29 → 2024-03-23 (+176d) |  |  |

| ID | Task | Finish | Duration | Predecessors | Other |
| --- | --- | --- | --- | --- | --- |
| 1 | **ROADWAY BETWEEN INTERSECTIONS** | 2023-09-29 → 2023-10-27 (+28d) |  |  |  |
| PCO565.01 | DSC 399-Unknown unlocated conduit roadway 10th to 11th south |  |  | none → MS-0025 | resources none → MBRT DSC [56 h] |
| PCO566.01 | DSC 400-Comm Vault intertwined with cable car 10th ave |  |  | none → MS-0025 | resources none → MBRT DSC [56 h] |
| 2-1241 | DEMO ROAD - COMMON EX - TYPE 2, 10TH AVE |  |  |  | resources none → MBRT BASE [48 h] |
| 2-1242 | F/P CURB AND GUTTER, 10TH AVE |  |  |  | resources none → MBRT BASE [32 h] |
| 2-1243 | ASPHALT PAVING, 10TH AVE |  |  |  | resources none → MBRT BASE [16 h] |
| 2-1259 | DEMO ROAD - COMMON EX - TYPE 2, BROADWAY TO 11TH NORTH SIDE |  |  |  | resources none → MBRT BASE [80 h] |
| 2-1260 | CONDUIT RD CROSSING, BROADWAY TO 11TH NORTH SIDE |  |  |  | resources none → MBRT BASE [80 h] |
| PCO413.01 | DSC 303-counduit directly under concretre NW 10th |  |  | none → MS-0025 | resources none → MBRT DSC [8 h] |
| 2-1261 | ROADWAY PAVING - 6 POURS, BROADWAY TO 11TH NORTH SIDE |  |  |  | resources none → MBRT BASE [88 h] |
| 2-1262 | CONCRETE CURE, BROADWAY TO 11TH NORTH SIDE |  |  |  | resources none → MBRT BASE |
| 2-1263 | F/P CURB BROADWAY TO 11TH NORTH SIDE, BROADWAY TO 11TH NORTH SIDE |  |  |  | resources none → MBRT BASE [48 h] |
| 2-1264 | TEMP PATCH BROADWAY TO 11TH NORTH SIDE, BROADWAY TO 11TH NORTH SIDE |  |  |  | resources none → MBRT BASE [8 h] |
| 2-1947 | OWNER DELAY - RESEQUENCE PAVING NEEDED FOR KCM TO ALLOW WORK |  |  |  | resources none → MBRT NEW [80 h] |
| 2-1273 | DEMO ROAD - COMMON EX - TYPE 2, BROADWAY TO 11TH SOUTH SIDE |  |  |  | resources none → MBRT BASE [128 h] |
| 2-1274 | CONDUIT RD CROSSING, BROADWAY TO 11TH SOUTH SIDE |  |  |  | resources none → MBRT BASE [96 h] |
| 2-1952 | DELAY AWAITING SCL TO INSPECT CONDUIT |  |  |  | resources none → MBRT NEW |
| 2-1957 | DELAY EAST OF BROADWAY TO ALLOW COMCAST TO BORE |  |  |  | resources none → MBRT NEW |
| 2-1275 | ROADWAY PAVING - OTHER THAN DELAYED PORTION |  |  |  | resources none → MBRT BASE [216 h] |
| 2-1277 | F/P CURB, BROADWAY TO 11TH SOUTH SIDE |  |  |  | resources none → MBRT BASE [8 h] |
| 2-1278 | TEMP PATCH, BROADWAY TO 11TH SOUTH SIDE |  |  |  | resources none → MBRT BASE [8 h] |
| 2-1276 | CONCRETE CURE, BROADWAY TO 11TH SOUTH SIDE |  |  |  | resources none → MBRT BASE |
| 2-2262 | REMOVE ROADWAY TYPE 2 DELAYED PORTION |  | 5d → 4d |  | resources none → MBRT NEW [32 h] |
| DSC-558 | DSC 558 INLET PIPE PRE EXISITNG BROKEN |  | 5d → 2d |  | resources none → MBRT DSC [16 h] |
| DSC-559 | DSC 559 UNKNOWN UNLOCATED CONDUIT |  | 5d → 2d |  | resources none → MBRT DSC [16 h] |
| 2-1962 | ROADWAY PAVING - DELAYED PORTION |  |  |  | resources none → MBRT NEW [32 h] |
| 2-1245 | DEMO ROAD - COMMON EX - TYPE 2, UNION ST NORTH |  |  |  | resources none → MBRT BASE [80 h] |
| 2-1246 | CONDUIT ROAD CROSSINGS, UNION ST NORTH |  |  |  | resources none → MBRT BASE [56 h] |
| 2-1247 | ROADWAY PAVING - 4 POURS, UNION ST NORTH |  |  |  | resources none → MBRT BASE [64 h] |
| 2-1249 | F/P CURB UNION ST NORTH, UNION ST NORTH |  |  |  | resources none → MBRT BASE [24 h] |
| 2-1248 | CONCRETE CURE, UNION ST NORTH |  |  |  | resources none → MBRT BASE |
| 2-1250 | TEMP PATCH UNION ST NORTH, UNION ST NORTH |  |  |  | resources none → MBRT BASE |
| 2-1252 | DEMO ROAD - COMMON EX - TYPE 2, UNION ST SOUTH |  |  |  | resources none → MBRT BASE [136 h] |
| 2-1253 | CONDUIT ROAD CROSSINGS, UNION ST SOUTH |  |  |  | resources none → MBRT BASE [136 h] |
| 2-1254 | ROADWAY PAVING - 8 POURS, UNION ST SOUTH |  |  |  | resources none → MBRT BASE [96 h] |
| 2-1255 | CONCRETE CURE, UNION ST SOUTH |  |  |  | resources none → MBRT BASE |
| 2-1256 | F/P CURB, UNION ST SOUTH |  |  |  | resources none → MBRT BASE [16 h] |
| 2-1257 | TEMP PATCH, UNION ST SOUTH |  |  |  | resources none → MBRT BASE [16 h] |
| 2-1266 | DEMO ROAD - COMMON EX - TYPE 2, 11TH TO 12TH NORTH SIDE |  |  |  | resources none → MBRT BASE [104 h] |
| 2-1267 | CONDUIT RD CROSSING, 11TH TO 12TH NORTH SIDE |  |  |  | resources none → MBRT BASE [104 h] |
| PCO516.01 | DSC 368-Unknown unlocated conduit Union North side |  |  | none → MS-0025 | resources none → MBRT DSC [16 h] |
| PCO517.01 | DSC 369-CDF Obstruction Union north side |  |  | none → MS-0025 | resources none → MBRT DSC [8 h] |
| PCO536.01 | DSC 378-unknown abandoned Catch Basin 12th north side |  |  | none → MS-0025 | resources none → MBRT DSC [8 h] |
| 2-1268 | ROADWAY PAVING - 4 POURS, 11TH TO 12TH NORTH SIDE |  |  |  | resources none → MBRT BASE [72 h] |
| 2-1269 | CONCRETE CURE, 11TH TO 12TH NORTH SIDE |  |  |  | resources none → MBRT BASE |
| 2-1270 | F/P CURB, 11TH TO 12TH NORTH SIDE |  |  |  | resources none → MBRT BASE [8 h] |
| 2-1271 | TEMP PATCH, 11TH TO 12TH NORTH SIDE |  |  |  | resources none → MBRT BASE [8 h] |
| 2-1280 | DEMO ROAD - COMMON EX - TYPE 2, 11TH TO 12TH SOUTH SIDE |  |  |  | resources none → MBRT BASE [56 h] |
| 2-1281 | CONDUIT RD CROSSING, 11TH TO 12TH SOUTH SIDE |  |  |  | resources none → MBRT BASE [24 h] |
| 2-1282 | ROADWAY PAVING - 4 POURS, 11TH TO 12TH SOUTH SIDE |  |  |  | resources none → MBRT BASE [224 h] |
| 2-1284 | F/P CURB, 11TH TO 12TH SOUTH SIDE |  |  |  | resources none → MBRT BASE [16 h] |
| 2-1285 | TEMP PATCH, 11TH TO 12TH SOUTH SIDE |  |  |  | resources none → MBRT BASE [8 h] |
| 2-1283 | CONCRETE CURE, 11TH TO 12TH SOUTH SIDE |  |  |  | resources none → MBRT BASE |
| 2-1308 | DEMO ROAD - COMMON EX - TYPE 2, 12TH TO 13TH NORTH SIDE |  |  |  | resources none → MBRT BASE [88 h] |
| 2-1309 | CONDUIT RD CROSSING, 12TH TO 13TH NORTH SIDE |  |  |  | resources none → MBRT BASE [64 h] |
| 2-1310 | ROADWAY PAVING - 4 POURS, 12TH TO 13TH NORTH SIDE |  |  |  | resources none → MBRT BASE [32 h] |
| 2-2722 | OWNER DIRECTED CHANGE TO JOINTS |  |  |  | resources none → MBRT NEW [40 h] |
| 2-1311 | CONCRETE CURE, 12TH TO 13TH NORTH SIDE |  |  |  | resources none → MBRT BASE |
| PCO682.01 | DSC 484-EXISTING CONCRETE DB CONFLICT WITH ROADWAY |  |  |  | resources none → MBRT DSC [8 h] |
| 2-1312 | F/P CURB, 12TH TO 13TH NORTH SIDE |  |  |  | resources none → MBRT BASE [16 h] |
| 2-1313 | TEMP PATCH, 12TH TO 13TH NORTH SIDE |  |  |  | resources none → MBRT BASE [8 h] |
| 2-1967 | DELAY AWAITING COMCAST TO FINISH |  |  |  | resources none → MBRT NEW |
| 2-1287 | DEMO ROAD - COMMON EX - TYPE 2, 12TH TO 13TH SOUTH SIDE |  |  |  | resources none → MBRT BASE [136 h] |
| 2-1288 | CONDUIT RD CROSSING, 12TH TO 13TH SOUTH SIDE |  |  |  | resources none → MBRT BASE [88 h] |
| PCO699.01 | DSC 501-CONDUIT ENCASED IN ROADWAY |  |  |  | resources none → MBRT DSC [16 h] |
| PCO703.01 | DSC 504-DUCTBANK CONFLICT WITH ROADWAY |  |  |  | resources none → MBRT DSC [40 h] |
| 2-2289 | MH 13 LID CONFLICT WITH ADA RAMP-ROTATE BARREL SECTION |  |  |  | resources none → MBRT NEW [8 h] |
| 2-1289 | ROADWAY PAVING - 4 POURS, 12TH TO 13TH SOUTH SIDE |  |  |  | resources none → MBRT BASE [128 h] |
| 2-1290 | CONCRETE CURE, 12TH TO 13TH SOUTH SIDE |  |  |  | resources none → MBRT BASE |
| 2-1291 | F/P CURB, 12TH TO 13TH SOUTH SIDE |  |  |  | resources none → MBRT BASE [8 h] |

| ID | Task | Start | Finish | Duration | Complete | Total float | Predecessors | Other |
| --- | --- | --- | --- | --- | --- | --- | --- | --- |
| 2-1292 | TEMP PATCH, 12TH TO 13TH SOUTH SIDE |  |  |  |  |  |  | resources none → MBRT BASE [8 h] |
| 12 | **13TH TO 14TH NORTH SIDE** | 2023-08-14 → 2023-08-23 (+9d) | 2023-09-06 → 2023-10-27 (+51d) |  |  |  |  |  |
| 2-1315 | DEMO ROAD - COMMON EX - TYPE 2, 13TH TO 14TH NORTH SIDE | 2023-08-14 → 2023-08-23 A (+9d) | 2023-08-21 → 2023-09-15 A (+25d) |  | 0% → 100% | -124d → none |  | resources none → MBRT BASE [136 h] |
| 2-1316 | CONDUIT RD CROSSING, 13TH TO 14TH NORTH SIDE | 2023-08-14 → 2023-09-01 A (+18d) | 2023-08-21 → 2023-09-08 A (+18d) |  | 0% → 100% | -124d → none |  | resources none → MBRT BASE [40 h] |
| 2-1317 | ROADWAY PAVING - 2 POURS, 13TH TO 14TH NORTH SIDE | 2023-08-22 → 2023-09-18 A (+27d) | 2023-08-31 → 2023-10-24 A (+54d) |  | 0% → 100% | -124d → none |  | resources none → MBRT BASE [216 h] |
| 2-1319 | F/P CURB, 13TH TO 14TH NORTH SIDE | 2023-09-05 → 2023-10-18 A (+43d) | 2023-09-05 → 2023-10-18 A (+43d) |  | 0% → 100% | -122d → none | 2-1318 → 2-1317 SS | resources none → MBRT BASE [8 h] |
| 2-1318 | CONCRETE CURE, 13TH TO 14TH NORTH SIDE | 2023-09-01 → 2023-10-25 A (+54d) | 2023-09-03 → 2023-10-27 A (+54d) |  | 0% → 100% | -174d → none |  | resources none → MBRT BASE |
| 2-1320 | TEMP PATCH, 13TH TO 14TH NORTH SIDE | 2023-09-06 → 2023-10-27 A (+51d) | 2023-09-06 → 2023-10-27 A (+51d) |  | 0% → 100% | -122d → none | 2-1319, 2-1306 → 2-1319, 2-1306, 2-1318 | resources none → MBRT BASE [8 h] |
| 2-1294 | DEMO ROAD - COMMON EX - TYPE 2, 13TH TO 14TH SOUTH SIDE |  |  |  |  |  |  | resources none → MBRT BASE [112 h] |
| 2-1295 | CONDUIT RD CROSSING, 13TH TO 14TH SOUTH SIDE |  |  |  |  |  |  | resources none → MBRT BASE [72 h] |
| PCO707.01 | DSC 507-LEAKING WATER SERVICE |  |  |  |  |  |  | resources none → MBRT DSC [24 h] |
| 2-2290 | DSC 508 Duct Bank Cast in Yoke To Be Removed |  |  |  |  |  |  | resources none → MBRT DSC [16 h] |
| 2-1296 | ROADWAY PAVING - 4 POURS, 13TH TO 14TH SOUTH SIDE |  |  |  |  |  |  | resources none → MBRT BASE [104 h] |
| 2-1297 | CONCRETE CURE, 13TH TO 14TH SOUTH SIDE |  |  |  |  |  |  | resources none → MBRT BASE |
| 2-1298 | F/P CURB, 13TH TO 14TH SOUTH SIDE |  |  |  |  |  |  | resources none → MBRT BASE [8 h] |
| 2-1299 | TEMP PATCH, 13TH TO 14TH SOUTH SIDE |  |  |  |  |  |  | resources none → MBRT BASE [8 h] |
| 13 | **14TH TO 15TH NORTH SIDE** | 2023-08-22 → 2023-08-23 (+1d) | 2023-09-20 → 2023-10-13 (+23d) |  |  |  |  |  |
| 2-1322 | DEMO ROAD - COMMON EX - TYPE 2, 14TH TO 15TH NORTH SIDE | 2023-08-22 → 2023-08-23 A (+1d) | 2023-08-29 → 2023-09-15 A (+17d) |  | 0% → 100% | -122d → none | 2-1315, 2-1237 → 2-1315 SS, 2-1237 | resources none → MBRT BASE [136 h] |
| 2-1323 | CONDUIT RD CROSSING, 14TH TO 15TH NORTH SIDE | 2023-08-22 → 2023-08-31 A (+9d) | 2023-08-29 → 2023-09-08 A (+10d) |  | 0% → 100% | -122d → none | 2-1322 SS → 2-1322 SS, 2-1368 FF, 2-1348 FF, 2-1328 FF | resources none → MBRT BASE [48 h] |
| 2-1324 | ROADWAY PAVING - 2 POURS, 14TH TO 15TH NORTH SIDE | 2023-09-01 → 2023-09-18 A (+17d) | 2023-09-13 → 2023-10-10 A (+27d) |  | 0% → 100% | -124d → none |  | resources none → MBRT BASE [128 h] |
| 2-1325 | CONCRETE CURE, 14TH TO 15TH NORTH SIDE | 2023-09-14 → 2023-10-09 A (+25d) | 2023-09-16 → 2023-10-10 A (+24d) |  | 0% → 100% | -177d → none |  | resources none → MBRT BASE |
| 2-1326 | F/P CURB, 14TH TO 15TH NORTH SIDE | 2023-09-18 → 2023-10-11 A (+23d) | 2023-09-19 → 2023-10-12 A (+23d) |  | 0% → 100% | -123d → none |  | resources none → MBRT BASE [16 h] |
| 2-1327 | TEMP PATCH, 14TH TO 15TH NORTH SIDE | 2023-09-20 → 2023-10-13 A (+23d) | 2023-09-20 → 2023-10-13 A (+23d) |  | 0% → 100% | -123d → none |  | resources none → MBRT BASE [8 h] |
| 10 | **14TH TO 15TH SOUTH SIDE** |  | 2023-08-23 → 2023-08-22 (-1d) |  |  |  |  |  |
| 2-1301 | DEMO ROAD - COMMON EX - TYPE 2, 14TH TO 15TH SOUTH SIDE |  |  |  |  |  |  | resources none → MBRT BASE [48 h] |
| 2-1302 | CONDUIT RD CROSSING, 14TH TO 15TH SOUTH SIDE |  |  |  |  |  |  | resources none → MBRT BASE [48 h] |
| 2-2915 | DSC 529 UNKNOWN UNLOCATED CONDUITS |  |  |  |  |  |  | constraint start on or after 2023-06-19 → none; resources none → MBRT DSC [120 h] |
| 2-2916 | DSC 531 DUCT BANK CONFLICT WITH MH 9 |  |  |  |  |  |  | resources none → MBRT DSC [264 h] |
| 2-2917 | DSC 533 WATERLINE CAST INTO CONCRETE |  |  |  |  |  |  | resources none → MBRT DSC [8 h] |
| 2-2918 | DSC 534 Shallow Conduit 8" below surface damaged by breaker |  |  |  |  |  |  | resources none → MBRT DSC [272 h] |
| 2-2921 | DSC 540 14th East Side Crossing Conflict with Ductbank |  |  |  |  |  |  | resources none → MBRT DSC [272 h] |
| 2-1303 | ROADWAY PAVING - 4 POURS, 14TH TO 15TH SOUTH SIDE |  | 2023-08-17 A |  | 0% → 100% | -116d → none |  | resources none → MBRT BASE [64 h] |
| 2-1304 | CONCRETE CURE, 14TH TO 15TH SOUTH SIDE | 2023-08-18 A | 2023-08-20 → 2023-08-22 A (+2d) |  | 0% → 100% | -164d → none |  | resources none → MBRT BASE |
| 2-1305 | F/P CURB, 14TH TO 15TH SOUTH SIDE | 2023-08-21 → 2023-08-18 A (-3d) | 2023-08-22 → 2023-08-18 A (-4d) |  | 0% → 100% | -114d → none |  | resources none → MBRT BASE [8 h] |
| 2-1306 | TEMP PATCH, 14TH TO 15TH SOUTH SIDE | 2023-08-23 → 2023-08-22 A (-1d) | 2023-08-23 → 2023-08-22 A (-1d) |  | 0% → 100% | -114d → none |  | resources none → MBRT BASE [8 h] |
| 14 | **14TH AND EAST PIKE** | 2023-08-30 → 2023-09-18 (+19d) | 2023-09-29 → 2023-10-10 (+11d) |  |  |  |  |  |
| 2-1329 | DEMO ROAD - COMMON EX - TYPE 2, 14TH & EAST PIKE | 2023-08-30 → 2023-09-18 A (+19d) | 2023-09-07 → 2023-09-25 A (+18d) |  | 0% → 100% | -107d → none |  | resources none → MBRT BASE [48 h] |
| 2-1330 | CONDUIT RD CROSSING, 14TH & EAST PIKE | 2023-08-30 → 2023-09-18 A (+19d) | 2023-09-07 → 2023-09-25 A (+18d) |  | 0% → 100% | -107d → none |  | resources none → MBRT BASE [48 h] |
| 2-1331 | ROADWAY PAVING - 2 POURS, 14TH & EAST PIKE | 2023-09-14 → 2023-10-02 A (+18d) | 2023-09-21 → 2023-10-05 A (+14d) |  | 0% → 100% | -111d → none |  | resources none → MBRT BASE [32 h] |
| 2-1332 | CONCRETE CURE, 14TH AND EAST PIKE | 2023-09-22 → 2023-10-06 A (+14d) | 2023-09-24 → 2023-10-10 A (+16d) |  | 0% → 100% | -158d → none |  | resources none → MBRT BASE |
| 2-1333 | F/P CURB, 14TH AND EAST PIKE | 2023-09-25 → 2023-10-09 A (+14d) | 2023-09-28 → 2023-10-09 A (+11d) |  | 0% → 100% | -109d → none |  | resources none → MBRT BASE [8 h] |
| 2-1334 | TEMP PATCH, 14TH AND EAST PIKE | 2023-09-29 → 2023-10-10 A (+11d) | 2023-09-29 → 2023-10-10 A (+11d) |  | 0% → 100% | -109d → none |  | resources none → MBRT BASE [8 h] |
| 2 | **INTERSECTION** |  | 2023-09-03 → 2024-03-23 (+202d) |  |  |  |  |  |
| 2-1337 | DEMO ROAD - COMMON EX - TYPE 2, 11TH NORTH SIDE |  |  |  |  |  |  | resources none → MBRT BASE [8 h] |
| 2-1338 | TRENCH CONDUIT, 11TH NORTH SIDE |  |  |  |  |  |  | resources none → MBRT BASE [8 h] |
| 2-1339 | ROADWAY PAVING, 11TH NORTH SIDE |  |  |  |  |  |  | resources none → MBRT BASE [8 h] |
| 10 | **14TH NORTH SIDE** | 2023-08-26 → 2023-10-17 (+52d) | 2023-08-27 → 2023-11-29 (+94d) |  |  |  |  |  |
| 2-1373 | DEMO ROAD - COMMON EX - TYPE 2, 14TH NORTH SIDE | 2023-08-26 → 2023-10-31 A (+66d) | 2023-08-26 → 2023-11-15 A (+81d) |  | 0% → 100% | 16d → none | 2-1322 SS, 2-1371 → 2-1322 SS, 2-1371, 2-1383 | resources none → MBRT BASE [88 h] |
| 2-1374 | TRENCH CONDUIT, 14TH NORTH SIDE | 2023-08-26 → 2023-11-15 A (+81d) | 2023-08-26 → 2023-11-17 A (+83d) | 1d → 3d | 0% → 100% | 16d → none | 2-1373 SS → 2-1373 SS, 2-1658 FF, 2-1538 FF, 2-1513 FF, 2-1423 FF | resources none → MBRT BASE [24 h] |
| 2-1375 | ROADWAY PAVING, 14TH NORTH SIDE | 2023-08-27 → 2023-11-22 A (+87d) | 2023-08-27 → 2023-11-29 A (+94d) | 1d → 3d | 0% → 100% | 16d → none |  | resources none → MBRT BASE [32 h] |
| 11 | **15TH NORTH SIDE** | 2023-09-02 → 2023-10-17 (+45d) | 2023-09-03 → 2023-11-10 (+68d) |  |  |  |  |  |
| 2-1377 | DEMO ROAD - COMMON EX - TYPE 2, 15TH NORTH SIDE | 2023-09-02 → 2023-10-31 A (+59d) | 2023-09-02 → 2023-11-01 A (+60d) |  | 0% → 100% | 16d → none | 2-1375 → 2-1382 | resources none → MBRT BASE [16 h] |
| 2-1378 | TRENCH CONDUIT, 15TH NORTH SIDE | 2023-09-02 → 2023-11-07 A (+66d) | 2023-09-02 → 2023-11-07 A (+66d) |  | 0% → 100% | 16d → none | 2-1377 SS → 2-1377 SS, 2-1374 | resources none → MBRT BASE [8 h] |
| 2-1379 | ROADWAY PAVING, 15TH NORTH SIDE | 2023-09-03 → 2023-11-10 A (+68d) | 2023-09-03 → 2023-11-10 A (+68d) |  | 0% → 100% | 16d → none |  | resources none → MBRT BASE [8 h] |
| 2-1341 | DEMO ROAD - COMMON EX - TYPE 2, 12TH NORTH SIDE PHASE 1 |  |  |  |  |  |  | resources none → MBRT BASE [8 h] |
| 2-1342 | TRENCH CONDUIT, 12TH NORTH SIDE PHASE 1 |  |  |  |  |  |  | resources none → MBRT BASE [8 h] |
| 2-1343 | ROADWAY PAVING, 12TH NORTH SIDE PHASE 1 |  |  |  |  |  |  | resources none → MBRT BASE [8 h] |
| 2-1345 | DEMO ROAD - COMMON EX - TYPE 2, 12TH NORTH SIDE PHASE 2 |  |  |  |  |  |  | resources none → MBRT BASE [8 h] |
| 2-1346 | TRENCH CONDUIT, 12TH NORTH SIDE PHASE 2 |  |  |  |  |  |  | resources none → MBRT BASE [8 h] |
| 2-1347 | ROADWAY PAVING, 12TH NORTH SIDE PHASE 2 |  |  |  |  |  |  | resources none → MBRT BASE [8 h] |
| 2-1349 | DEMO ROAD - COMMON EX - TYPE 2, 11TH SOUTH SIDE |  |  |  |  |  |  | resources none → MBRT BASE [8 h] |
| 2-1350 | TRENCH CONDUIT, 11TH SOUTH SIDE |  |  |  |  |  |  | resources none → MBRT BASE [8 h] |
| 2-1351 | ROADWAY PAVING, 11TH SOUTH SIDE |  |  |  |  |  |  | resources none → MBRT BASE [8 h] |
| 2-1354 | TRENCH CONDUIT, 12TH SOUTH SIDE |  |  |  |  |  |  | resources none → MBRT BASE [8 h] |
| 2-1353 | DEMO ROAD - COMMON EX - TYPE 2, 12TH SOUTH SIDE |  |  |  |  |  |  | resources none → MBRT BASE [64 h] |
| 2-1355 | ROADWAY PAVING, 12TH SOUTH SIDE |  |  |  |  |  |  | resources none → MBRT BASE [64 h] |
| PCO625.01 | DSC 437-WATERLINE IN CONFLICT WITH CONDUIT CROSSING |  |  |  |  |  |  | resources none → MBRT DSC [64 h] |
| 2-1357 | DEMO ROAD - COMMON EX - TYPE 2, 13TH SOUTH SIDE |  |  |  |  |  |  | resources none → MBRT BASE [8 h] |
| 2-1358 | TRENCH CONDUIT, 13TH SOUTH SIDE |  |  |  |  |  |  | resources none → MBRT BASE [8 h] |
| 2-1359 | ROADWAY PAVING, 13TH SOUTH SIDE |  |  |  |  |  |  | resources none → MBRT BASE [8 h] |

| ID | Task | Start | Finish | Duration | Complete | Total float | Predecessors | Other |
| --- | --- | --- | --- | --- | --- | --- | --- | --- |
| 7 | **14TH SOUTH SIDE** | 2023-06-18 → 2024-01-03 (+199d) | 2023-06-24 → 2024-03-23 (+273d) |  |  |  |  |  |
| 2-1361 | DEMO ROAD - COMMON EX - TYPE 2, 14TH SOUTH SIDE | 2023-06-18 A → 2024-01-03 A (+199d) | 2023-06-18 A → 2024-01-10 A (+206d) |  |  |  | 2-1357 → 2-1357, 2-1374 | resources none → MBRT BASE [48 h] |
| 2-1362 | TRENCH CONDUIT, 14TH SOUTH SIDE | 2023-06-18 A → 2024-01-03 A (+199d) | 2023-06-18 A → 2024-01-08 A (+204d) |  |  |  |  | resources none → MBRT BASE [32 h] |
| 2-1363 | ROADWAY PAVING, 14TH SOUTH SIDE | 2023-06-24 A → 2024-01-05 A (+195d) | 2023-06-24 A → 2024-01-17 A (+207d) |  |  |  | 2-1362, 2-1351 → 2-1362, 2-1351, 2-1375, DSC-683 FF | resources none → MBRT BASE [64 h] |
| 2-1365 | DEMO ROAD - COMMON EX - TYPE 2, 15TH SOUTH SIDE |  |  |  |  |  | 2-1363 → 2-1359 | resources none → MBRT BASE [8 h] |
| 2-1366 | TRENCH CONDUIT, 15TH SOUTH SIDE |  |  |  |  |  |  | resources none → MBRT BASE [8 h] |
| 2-1367 | ROADWAY PAVING, 15TH SOUTH SIDE |  |  |  |  |  |  | resources none → MBRT BASE [8 h] |
| 2-1369 | DEMO ROAD - COMMON EX - TYPE 2, 13TH NORTH SIDE |  |  |  |  |  |  | resources none → MBRT BASE [8 h] |
| 2-1370 | TRENCH CONDUIT, 13TH NORTH SIDE |  |  |  |  |  |  | resources none → MBRT BASE [8 h] |
| 2-1371 | ROADWAY PAVING, 13TH NORTH SIDE |  |  |  |  |  |  | resources none → MBRT BASE [8 h] |
| 2-1381 | INST POLE FOUNDATIONS, BROADWAY TO 10TH |  |  |  |  |  |  | resources none → MBRT BASE |
| 2-1471 | INST POLE FOUNDATIONS, 10TH TO 12TH |  |  |  |  |  |  | resources none → MBRT BASE |
| 2-1496 | INST POLE FOUNDATIONS, 12TH TO 14TH |  |  |  |  |  |  | resources none → MBRT BASE |
| 2-1641 | INST POLE FOUNDATIONS, 14TH TO 15TH |  |  |  |  |  |  | resources none → MBRT BASE |
| 8 | **SIDEWALKS** |  | 2023-11-14 → 2024-07-29 (+258d) |  |  |  |  |  |
| 29 | **SEC 12TH BEFORE POLE IS SET** |  | 2023-09-18 → 2023-12-12 (+85d) |  |  |  |  |  |
| 2-7000 | REMOVE SIDEWALK |  |  |  |  |  |  | resources none → MBRT NEW [16 h] |
| 2-7005 | TRENCH ELECTRICAL |  |  |  |  |  |  | resources none → MBRT NEW [16 h] |
| 2-7010 | DSC 556 EXISTING CONDUIT TO INTERSECEPT IS NOT THERE |  |  |  |  |  |  | resources none → MBRT DSC [40 h] |
| 2-7015 | DSC 566 POLE 40W-128-2 |  |  |  |  |  |  | resources none → MBRT DSC [24 h] |
| 2-7020 | DSC 575 UNKNOWN UNLOCATED CONDUITS |  |  |  |  |  |  | resources none → MBRT DSC [8 h] |
| 2-7025 | INSTALL ELECTRICAL |  | 2023-09-01 A |  | 17% → 100% | -110d → none |  | resources none → MBRT NEW [144 h] |
| 2-7030 | CHANGE SCL REQUIRNG ENGINEERING FOR POLE HOLDER | 2023-08-14 A | 2023-09-11 → 2023-09-22 A (+11d) | 20d → 0d | 0% → 100% | -110d → none |  | resources none → MBRT NEW |
| 2-7035 | GRADE SIDEWALKS | 2023-09-12 → 2023-11-13 A (+62d) | 2023-09-12 → 2023-12-05 A (+84d) | 1d → 14d | 0% → 100% | -110d → none | 2-7030 → 2-7030, 2-7055, 2-7060 SS | resources none → MBRT NEW [112 h] |
| 2-7040 | CURB RAMP | 2023-09-13 → 2023-12-06 A (+84d) | 2023-09-14 → 2023-12-07 A (+84d) |  | 0% → 100% | -110d → none |  | resources none → MBRT NEW [16 h] |
| 2-7045 | SIDEWALKS | 2023-09-15 → 2023-12-08 A (+84d) | 2023-09-18 → 2023-12-12 A (+85d) | 2d → 3d | 0% → 100% | -110d → none | 2-7040, 2-7140 → 2-7040 | resources none → MBRT NEW [24 h] |
| 30 | **SEC 12TH AFTER POLE IS SET** |  | 2023-08-30 → 2023-12-12 (+104d) |  |  |  |  |  |
| 2-7100 | DELAY AWAITING SCL TO SLEEVE OR TURN OF POWER |  | 2023-08-18 → 2023-10-31 A (+74d) | 48d → 0d | 90% → 100% | -100d → none |  | resources none → MBRT NEW |
| 2-7105 | SCL SLEAVE OR TURN OFF POWER | 2023-08-21 → 2023-11-01 A (+72d) | 2023-08-21 → 2023-11-01 A (+72d) | 1d → 0d | 0% → 100% | -100d → none |  | resources none → MBRT NEW |
| 2-7110 | INSTALL POLE | 2023-08-22 → 2023-11-01 A (+71d) | 2023-08-22 → 2023-11-01 A (+71d) |  | 0% → 100% | -100d → none |  | resources none → MBRT NEW [8 h] |
| 2-7115 | TRANSFER SPAN SIGNAL WIRES | 2023-08-23 → 2023-11-15 A (+84d) | 2023-08-23 → 2023-11-15 A (+84d) |  | 0% → 100% | -100d → none | 2-7110 → 2-7110, 2-7035 | resources none → MBRT NEW [8 h] |
| 2-7120 | TRENCH ELECTRICAL | 2023-08-24 → 2023-11-16 A (+84d) | 2023-08-24 → 2023-11-27 A (+95d) | 1d → 6d | 0% → 100% | -100d → none |  | resources none → MBRT NEW [48 h] |
| 2-7125 | INSTALL ELECTRICAL | 2023-08-25 → 2023-11-17 A (+84d) | 2023-08-25 → 2023-11-30 A (+97d) | 1d → 8d | 0% → 100% | -100d → none | 2-7120 → 2-7120, 2-7145 FF | resources none → MBRT NEW [64 h] |
| 2-7130 | GRADE SIDEWALKS | 2023-08-28 → 2023-12-05 A (+99d) | 2023-08-28 → 2023-12-05 A (+99d) |  | 0% → 100% | -100d → none |  | resources none → MBRT NEW [8 h] |
| 2-7135 | CURB RAMP | 2023-08-29 → 2023-12-06 A (+99d) | 2023-08-29 → 2023-12-07 A (+100d) | 1d → 2d | 0% → 100% | -100d → none |  | resources none → MBRT NEW [16 h] |
| 2-7140 | SIDEWALKS | 2023-08-30 → 2023-12-08 A (+100d) | 2023-08-30 → 2023-12-12 A (+104d) | 1d → 3d | 0% → 100% | -100d → none | 2-7135 → 2-7135, 2-7045 SS | resources none → MBRT NEW [24 h] |
| 31 | **Broadway CRT to 11th North Sdie** |  | 2023-10-03 → 2023-09-26 (-7d) |  |  |  |  |  |
| 2-7200 | Remvove Sidewalk |  | 2023-08-18 A | 8d → 7d | 38% → 100% | -118d → none |  | resources none → MBRT NEW [56 h] |
| 2-7205 | DSC 579 10TH NORTH DUCT BANK CONFICT |  | 2023-08-29 A | 14d → 13d | 14% → 100% | -118d → none |  | resources none → MBRT DSC [104 h] |
| 2-7210 | DSC 578 Broadway CRT to 10th North Duct Bank Conflicts |  | 2023-08-29 A | 14d → 13d | 14% → 100% | -118d → none |  | resources none → MBRT DSC [104 h] |
| 2-7215 | DSC 584 10th to Seneca Thick Sidewalk | 2023-08-14 A | 2023-08-14 A |  | 0% → 100% | -107d → none |  | resources none → MBRT DSC [8 h] |
| 2-7225 | DSC 587 NWC Seneca Unknown Conduit | 2023-08-14 A | 2023-08-29 → 2023-09-01 A (+3d) | 12d → 14d | 0% → 100% | -106d → none |  | resources none → MBRT DSC [112 h] |
| 2-7230 | DSC 588 Duct Bank Conflict 11th North Side | 2023-08-14 A | 2023-08-29 → 2023-09-01 A (+3d) | 12d → 14d | 0% → 100% | -106d → none |  | resources none → MBRT DSC [112 h] |
| 2-7220 | DSC 586 NEC 10th Duct Bank Conflict with with Ped Pole | 2023-08-15 A | 2023-08-28 → 2023-09-01 A (+4d) | 10d → 13d | 0% → 100% | -105d → none |  | resources none → MBRT DSC [104 h] |
| 2-7235 | Trench Conduit | 2023-08-30 → 2023-08-15 A (-15d) | 2023-09-19 → 2023-09-01 A (-18d) |  | 0% → 100% | -118d → none |  | resources none → MBRT NEW [112 h] |
| 2-7240 | DSC 590 NWC 11th Duct Bank Conflict with Conduit | 2023-09-07 → 2023-08-22 A (-16d) | 2023-09-15 → 2023-09-01 A (-14d) | 7d → 8d | 0% → 100% | -118d → none | 2-7235 SS+5d → 2-7235 SS+5d, 2-7220 SS | resources none → MBRT DSC [64 h] |
| 2-7245 | Install Conduit | 2023-09-18 → 2023-09-05 A (-13d) | 2023-09-26 → 2023-09-13 A (-13d) |  | 0% → 100% | -118d → none | 2-7240, 2-7230, 2-7225, 2-7220, 2-7240 FF → 2-7240, 2-7230, 2-7225, 2-7220 | resources none → MBRT NEW [56 h] |
| 2-7250 | Curb Ramps | 2023-09-27 → 2023-09-21 A (-6d) | 2023-09-28 → 2023-09-22 A (-6d) |  | 0% → 100% | -118d → none | 2-7245 → 2-7245, 2-7260 | resources none → MBRT NEW [16 h] |
| 2-7255 | Sidewalks | 2023-09-29 → 2023-09-25 A (-4d) | 2023-10-03 → 2023-09-26 A (-7d) | 3d → 2d | 0% → 100% | -118d → none | 2-7250, 2-7045 → 2-7250 | resources none → MBRT NEW [16 h] |
| 1 | **10TH AVE WEST SIDE** | 2023-08-17 → 2023-09-11 (+25d) | 2023-08-30 → 2023-09-26 (+27d) |  |  |  |  |  |
| 2-1384 | REMOVE SIDEWALKS, 10TH AVE WEST SIDE | 2023-08-17 → 2023-09-11 A (+25d) | 2023-08-18 → 2023-09-12 A (+25d) |  | 0% → 100% | -131d → none |  | resources none → MBRT BASE [16 h] |
| 2-1385 | TRENCH CONDUIT, 10TH AVE WEST SIDE | 2023-08-21 → 2023-09-13 A (+23d) | 2023-08-22 → 2023-09-14 A (+23d) |  | 0% → 100% | -131d → none |  | resources none → MBRT BASE [16 h] |
| 2-1386 | INST CONDUIT, 10TH AVE WEST SIDE | 2023-08-21 → 2023-09-15 A (+25d) | 2023-08-22 → 2023-09-19 A (+28d) |  | 0% → 100% | -131d → none |  | resources none → MBRT BASE [24 h] |
| 2-1387 | GRADE SIDEWALK, 10TH AVE WEST SIDE | 2023-08-23 → 2023-09-20 A (+28d) | 2023-08-24 → 2023-09-21 A (+28d) |  | 0% → 100% | -131d → none |  | resources none → MBRT BASE [16 h] |
| 2-1388 | F/P CURB RAMPS, 10TH AVE WEST SIDE | 2023-08-25 → 2023-09-21 A (+27d) | 2023-08-25 → 2023-09-22 A (+28d) |  | 0% → 100% | -131d → none |  | resources none → MBRT BASE [16 h] |
| 2-1389 | SIDEWALK, 10TH AVE WEST SIDE | 2023-08-28 → 2023-09-26 A (+29d) | 2023-08-30 → 2023-09-26 A (+27d) |  | 0% → 100% | -131d → none | 2-1388 → 2-1388, 2-1396 | resources none → MBRT BASE [8 h] |
| 2 | **10TH AVE EAST SIDE** | 2023-08-31 → 2023-09-11 (+11d) | 2023-09-14 → 2023-09-20 (+6d) |  |  |  |  |  |
| 2-1391 | REMOVE SIDEWALKS, 10TH AVE EAST SIDE | 2023-08-31 → 2023-09-11 A (+11d) | 2023-09-01 → 2023-09-12 A (+11d) |  | 0% → 100% | -131d → none | 2-1389 → 2-1384 SS | resources none → MBRT BASE [16 h] |
| 2-1392 | TRENCH CONDUIT, 10TH AVE EAST SIDE | 2023-08-31 → 2023-09-11 A (+11d) | 2023-09-01 → 2023-09-12 A (+11d) |  | 0% → 100% | -131d → none |  | resources none → MBRT BASE [16 h] |
| 2-1393 | INST CONDUIT, 10TH AVE EAST SIDE | 2023-09-05 → 2023-09-13 A (+8d) | 2023-09-06 → 2023-09-14 A (+8d) |  | 0% → 100% | -131d → none |  | resources none → MBRT BASE [16 h] |
| 2-1394 | GRADE SIDEWALK, 10TH AVE EAST SIDE | 2023-09-07 → 2023-09-15 A (+8d) | 2023-09-08 → 2023-09-18 A (+10d) |  | 0% → 100% | -131d → none |  | resources none → MBRT BASE [16 h] |
| 2-1395 | F/P CURB RAMPS, 10TH AVE EAST SIDE | 2023-09-11 → 2023-09-19 A (+8d) | 2023-09-11 → 2023-09-19 A (+8d) |  | 0% → 100% | -131d → none |  | resources none → MBRT BASE [8 h] |
| 2-1396 | SIDEWALK, 10TH AVE EAST SIDE | 2023-09-12 → 2023-09-20 A (+8d) | 2023-09-14 → 2023-09-20 A (+6d) |  | 0% → 100% | -131d → none |  | resources none → MBRT BASE [8 h] |
| 5 | **UNION ST 12TH TO 11TH NORTH SIDE** |  | 2023-09-06 → 2023-09-05 (-1d) |  |  |  |  |  |
| 2-1406 | REM SIDEWALK, UNION ST 12TH TO 11TH NORTH SIDE |  |  |  |  |  |  | resources none → MBRT BASE [40 h] |
| 2-1407 | GRADE SIDEWALK, UNION ST 12TH TO 11TH NORTH SIDE |  |  |  |  |  |  | resources none → MBRT BASE [32 h] |
| 2-1409 | SIDEWALK, UNION ST 12TH TO 11TH NORTH SIDE |  |  |  |  |  |  | resources none → MBRT BASE [104 h] |
| 2-2672 | REMOVE SIDEWALK; 12TH AND UNION |  |  |  |  |  |  | resources none → MBRT NEW [24 h] |
| PCO632.01 | DSC 444-PRIMARY POWER BACKFILLED WITH CONCRETE |  | 2023-08-22 A |  | 0% → 100% | -84d → none |  | resources none → MBRT DSC [760 h] |
| 2-2682 | TRENCH ELECTRICAL; 12TH AND UNION | 2023-08-23 A | 2023-08-23 A |  | 0% → 100% | -84d → none |  | resources none → MBRT NEW [8 h] |

| ID | Task | Start | Finish | Complete | Total float | Predecessors | Other |
| --- | --- | --- | --- | --- | --- | --- | --- |
| 2-2687 | INSTALL ELECTRICAL; 12TH AND UNION | 2023-08-24 A | 2023-08-29 → 2023-08-25 A (-4d) | 0% → 100% | -84d → none |  | resources none → MBRT NEW [32 h] |
| 2-2692 | GRADE SIDEWALKS; 12TH AND UNION | 2023-08-30 → 2023-08-28 A (-2d) | 2023-08-31 → 2023-08-29 A (-2d) | 0% → 100% | -84d → none |  | resources none → MBRT NEW [16 h] |
| 2-2697 | CURB RAMPS; 12TH AND UNION | 2023-09-01 → 2023-08-30 A (-2d) | 2023-09-05 → 2023-08-31 A (-5d) | 0% → 100% | -84d → none |  | resources none → MBRT NEW [16 h] |
| 2-2702 | POUR SIDEWALKS; 12TH AND UNION | 2023-09-06 → 2023-09-01 A (-5d) | 2023-09-06 → 2023-09-05 A (-1d) | 0% → 100% | -84d → none |  | resources none → MBRT NEW [8 h] |
| 2-1403 | REM DRIVEWAY, UNION ST 12TH TO 11TH SOUTH SIDE DRIVEWAYS |  |  |  |  |  | resources none → MBRT BASE [8 h] |
| 2-1404 | POUR DRIVEWAY, UNION ST 12TH TO 11TH SOUTH SIDE DRIVEWAYS |  |  |  |  |  | resources none → MBRT BASE [8 h] |
| 6 | **UNION 12TH TO 11TH NORTH SIDE DRIVEWAYS** | 2023-09-01 → 2023-08-30 (-2d) | 2023-09-05 → 2023-08-31 (-5d) |  |  |  |  |
| 2-1411 | REM DRIVEWAY, UNION 12TH TO 11TH NORTH SIDE DRIVEWAYS | 2023-09-01 → 2023-08-30 A (-2d) | 2023-09-01 → 2023-08-30 A (-2d) | 0% → 100% | -18d → none |  | resources none → MBRT BASE [8 h] |
| 2-1412 | POUR DRIVEWAY, UNION 12TH TO 11TH NORTH SIDE DRIVEWAYS | 2023-09-05 → 2023-08-31 A (-5d) | 2023-09-05 → 2023-08-31 A (-5d) | 0% → 100% | -18d → none |  | resources none → MBRT BASE [8 h] |
| 2-1414 | TRENCH CONDUIT, EAST UNION & 12TH STATION PLATFORM |  |  |  |  |  | resources none → MBRT BASE [8 h] |
| 2-1415 | INST CONDUIT, EAST UNION & 12TH STATION PLATFORM |  |  |  |  |  | resources none → MBRT BASE [8 h] |
| 2-1416 | POUR STATION FOUNDATION, EAST UNION & 12TH STATION PLATFORM |  |  |  |  |  | resources none → MBRT BASE [24 h] |
| 2-1417 | GRADE SIDEWALK, EAST UNION & 12TH STATION PLATFORM |  |  |  |  |  | resources none → MBRT BASE [8 h] |
| 2-1418 | POUR SIDEWALK, EAST UNION & 12TH STATION PLATFORM |  |  |  |  |  | resources none → MBRT BASE [16 h] |
| 2-1420 | REM SIDEWALK, UNION 12TH TO 13TH SOUTH SIDE |  |  |  |  |  | resources none → MBRT BASE [16 h] |
| 2-1421 | GRADE SIDEWALK, UNION 12TH TO 13TH SOUTH SIDE |  |  |  |  |  | resources none → MBRT BASE [8 h] |
| 2-1422 | SIDEWALK, UNION 12TH TO 13TH SOUTH SIDE |  |  |  |  |  | resources none → MBRT BASE [56 h] |
| 2-1424 | REM SIDEWALK, UNION 12TH TO 13TH NORTH SIDE |  |  |  |  |  | constraint start on or after 2023-07-05 → none; resources none → MBRT BASE [16 h] |
| 2-1425 | GRADE SIDEWALK, UNION 12TH TO 13TH NORTH SIDE |  |  |  |  |  | resources none → MBRT BASE [8 h] |
| 2-1426 | SIDEWALK, UNION 12TH TO 13TH NORTH SIDE |  |  |  |  |  | resources none → MBRT BASE [32 h] |
| 2-1428 | REM SIDEWALK, 13th AVE MAD TO UNION WEST SIDE |  |  |  |  |  | resources none → MBRT BASE [16 h] |
| 2-1429 | GRADE SIDEWALK, 13th AVE MAD TO UNION WEST SIDE |  |  |  |  |  | resources none → MBRT BASE [8 h] |
| 2-1430 | F/P CURB RAMPS, 13th AVE MAD TO UNION WEST SIDE |  |  |  |  |  | resources none → MBRT BASE [8 h] |
| 2-1431 | SIDEWALK, 13th AVE MAD TO UNION WEST SIDE |  |  |  |  |  | resources none → MBRT BASE [8 h] |
| 2-1433 | REM SIDEWALK, 13TH AVE MAD TO UNION EAST SIDE |  |  |  |  |  | resources none → MBRT BASE [8 h] |
| 2-1434 | GRADE SIDEWALK, 13TH AVE MAD TO UNION EAST SIDE |  |  |  |  |  | resources none → MBRT BASE [8 h] |
| 2-1435 | F/P CURB RAMPS, 13TH AVE MAD TO UNION EAST SIDE |  |  |  |  |  | resources none → MBRT BASE [8 h] |
| 2-1436 | SIDEWALK, 13TH AVE MAD TO UNION EAST SIDE |  |  |  |  |  | resources none → MBRT BASE [24 h] |
| 12 | **BROADWAY TO 11TH SOUTH SIDE** |  | 2023-09-12 → 2024-04-24 (+225d) |  |  |  |  |
| 2-2055 | DSC 513 POLE FOUDNATION 40W-788-2 GROUNDWATER |  |  |  |  | none → MS-0025 | constraint start on or after 2023-06-05 → none; resources none → MBRT DSC [80 h] |
| 2-2056 | DSC 537 Pole 40W-137-1 Tunnel Obstruction |  | 2023-08-25 → 2024-04-16 (+235d) |  | -99d → -142d |  | resources none → MBRT DSC [1480 h] |
| 2-2059 | DSC 538 Pole 40W-790-3 Conduit Obstruction |  | 2023-08-25 A | 0% → 100% | -99d → none |  | resources none → MBRT DSC [376 h] |
| 2-1438 | REM SIDEWALK, BROADWAY TO 11TH SOUTH SIDE | 2023-08-28 → 2023-08-14 A (-14d) | 2023-08-28 → 2023-11-03 A (+67d) | 0% → 100% | -99d → none | 2-1278, 2-2667, 2-2059, 2-2056 → 2-1278, 2-2667, 2-2059, 2-2056 SS | resources none → MBRT BASE [472 h] |
| 2-1439 | TRENCH CONDUIT, BROADWAY TO 11TH SOUTH SIDE | 2023-08-29 → 2023-08-17 A (-12d) | 2023-08-31 → 2023-11-03 A (+64d) | 0% → 100% | -99d → none | 2-1438 → 2-1438 SS | resources none → MBRT BASE [448 h] |
| 2-1440 | INST CONDUIT, BROADWAY TO 11TH SOUTH SIDE | 2023-08-29 → 2023-08-28 A (-1d) | 2023-08-31 → 2023-11-07 A (+68d) | 0% → 100% | -99d → none | 2-1439 SS → 2-1439 SS, 2-1490 FF, 2-1439 FF | resources none → MBRT BASE [408 h] |
| 2-1441 | GRADE SIDEWALK, BROADWAY TO 11TH SOUTH SIDE | 2023-09-01 → 2023-09-19 A (+18d) | 2023-09-05 → 2023-11-27 A (+83d) | 0% → 100% | -99d → none | 2-1440 → 2-1440 SS | resources none → MBRT BASE [376 h] |
| 2-1442 | F/P CURB RAMPS, BROADWAY TO 11TH SOUTH SIDE | 2023-09-06 → 2023-09-26 A (+20d) | 2023-09-07 → 2023-09-27 A (+20d) | 0% → 100% | -99d → none | 2-1441 → 2-1441 SS | resources none → MBRT BASE [16 h] |
| 2-1443 | SIDEWALK, BROADWAY TO 11TH SOUTH SIDE | 2023-09-08 → 2023-09-28 A (+20d) | 2023-09-12 → 2023-12-06 A (+85d) | 0% → 100% | -99d → none | 2-1442, 2-1431 → 2-1442, 2-1431, 2-1478 FF, 2-1458 FF | resources none → MBRT BASE [376 h] |
| 13 | **11TH TO 12TH SOUTH SIDE** |  | 2023-08-17 → 2023-08-16 (-1d) |  |  |  |  |
| PCO674.01 | DSC 477-POLE 40W-130-1 FOUNDATION CONFLICTS |  |  |  |  | none → MS-0025 | resources none → MBRT DSC [128 h] |
| PCO675.01 | DSC 478-POLE 40W-788-5 FOUNDATION CONFLICTS |  |  |  |  | none → MS-0025 | resources none → MBRT DSC [128 h] |
| PCO693.01 | DSC 495-CONTAMINATED SOILS POLE FND 40W-12-2 |  |  |  |  | none → MS-0025 | resources none → MBRT DSC [120 h] |
| 2-2068 | DSC 524 POLE 40W-128-1 FOUNDATION CONFLCIT |  |  |  |  |  | resources none → MBRT DSC [328 h] |
| 2-1445 | REM SIDEWALK, 11TH TO 12TH SOUTH SIDE BEFORE DSC |  |  |  |  |  | resources none → MBRT DSC [8 h] |
| 2-2069 | DSC 545 Water Vault Conflict |  |  |  |  |  | resources none → MBRT DSC [24 h] |
| 2-2071 | DSC 546 void under sidewalks |  |  |  |  |  | resources none → MBRT DSC [24 h] |
| 2-1446 | TRENCH CONDUIT, 11TH TO 12TH SOUTH SIDE |  |  |  |  |  | resources none → MBRT BASE [16 h] |
| 2-1447 | INST CONDUIT, 11TH TO 12TH SOUTH SIDE BEFORE DSC |  |  |  |  |  | resources none → MBRT DSC [104 h] |
| 2-2073 | DSC 548 UNKNOWN UNLOCATED CODUIT CONFLCIT WITH HH |  |  |  |  |  | resources none → MBRT DSC [48 h] |
| 2-1448 | GRADE SIDEWALK, 11TH TO 12TH SOUTH SIDE BEFORE DSC |  |  |  |  |  | resources none → MBRT DSC [8 h] |
| 2-1449 | SIDEWALK, 11TH TO 12TH SOUTH SIDE BEFORE DSC |  |  |  |  |  | resources none → MBRT DSC [32 h] |
| 2-2089 | TRENCH CONDUIT AFTER DSC 524 |  |  |  |  |  | resources none → MBRT DSC [8 h] |
| 2-2078 | INSTALL CONDUIT AFTER DSC 524 |  | 2023-08-14 A | 0% → 100% | -131d → none |  | resources none → MBRT DSC [16 h] |
| 2-2099 | GRADE SIDEWALKS AFTER DSC 524 | 2023-08-15 A | 2023-08-15 A | 0% → 100% | -131d → none |  | resources none → MBRT DSC [8 h] |
| 2-2080 | SIDEWALK AFTER DSC 524 | 2023-08-16 A | 2023-08-17 → 2023-08-16 A (-1d) | 0% → 100% | -131d → none |  | resources none → MBRT DSC [8 h] |
| 14 | **12TH TO 13TH SOUTH SIDE** | 2023-08-14 → 2024-02-12 (+182d) | 2023-09-05 → 2024-04-03 (+211d) |  |  |  |  |
| 2-1451 | REM SIDEWALK, 12TH TO 13TH SOUTH SIDE | 2023-08-14 → 2024-03-04 A (+203d) | 2023-08-15 → 2024-03-05 A (+203d) | 0% → 100% | -25d → none | 2-1449 FS-1d, 2-1367 → 2-1449 FS-1d, 2-1367, 2-1656 | resources none → MBRT BASE [16 h] |
| 2-1452 | TRENCH CONDUIT, 12TH TO 13TH SOUTH SIDE | 2023-08-16 → 2024-03-06 A (+203d) | 2023-08-17 → 2024-03-07 A (+203d) | 0% → 100% | -25d → none |  | resources none → MBRT BASE [16 h] |
| 2-1453 | INST CONDUIT, 12TH TO 13TH SOUTH SIDE | 2023-08-18 → 2024-03-07 A (+202d) | 2023-08-21 → 2024-03-07 A (+199d) | 0% → 100% | -25d → none |  | resources none → MBRT BASE [16 h] |
| 2-1454 | GRADE SIDEWALK, 12TH TO 13TH SOUTH SIDE | 2023-08-22 → 2024-03-08 A (+199d) | 2023-08-24 → 2024-03-08 A (+197d) | 0% → 100% | -25d → none |  | resources none → MBRT BASE [24 h] |
| 2-1455 | BIKE RAMP, 12TH TO 13TH SOUTH SIDE | 2023-08-25 → 2024-03-11 A (+199d) | 2023-08-28 → 2024-03-11 A (+196d) | 0% → 100% | -25d → none |  | resources none → MBRT BASE [16 h] |
| 2-1457 | SIDEWALK, 12TH TO 13TH SOUTH SIDE | 2023-08-29 → 2024-03-12 A (+196d) | 2023-08-31 → 2024-03-12 A (+194d) | 0% → 100% | -25d → none | 2-1455 → 2-1455, DSC-718, 2-1661 | resources none → MBRT BASE [24 h] |
| 2-1456 | INST WOOD RAMP, 12TH TO 13TH SOUTH SIDE | 2023-09-01 → 2024-04-02 (+214d) | 2023-09-05 → 2024-04-03 (+211d) |  | -18d → -77d |  | resources none → MBRT BASE [16 h] |
| 15 | **13TH TO 14TH SOUTH SIDE** | 2023-09-01 → 2023-10-24 (+53d) | 2023-09-14 → 2024-04-16 (+215d) |  |  |  |  |
| 2-1459 | REM SIDEWALK, 13TH TO 14TH SOUTH SIDE | 2023-09-01 → 2023-12-21 A (+111d) | 2023-09-05 → 2024-02-21 A (+169d) | 0% → 100% | -25d → none | 2-1299, 2-1457 → 2-1299, 2-1484, 2-1464 | resources none → MBRT BASE [328 h] |
| 2-1460 | TRENCH CONDUIT, 13TH TO 14TH SOUTH SIDE | 2023-09-01 → 2023-12-21 A (+111d) | 2023-09-05 → 2024-02-22 A (+170d) | 0% → 100% | -25d → none | 2-1459 SS → 2-1459 SS, DSC-676 SS, DSC-675 SS, DSC-711 FF | resources none → MBRT BASE [336 h] |
| 2-1461 | INST CONDUIT, 13TH TO 14TH SOUTH SIDE | 2023-09-06 → 2024-01-02 A (+118d) | 2023-09-07 → 2024-04-05 (+211d) |  | -25d → -142d | 2-1460 → 2-1460 SS, DSC-676, DSC-675, DSC-711 FF | resources none → MBRT BASE [336 h] |
| 2-1462 | GRADE SIDEWALK, 13TH TO 14TH SOUTH SIDE | 2023-09-08 → 2024-01-17 A (+131d) | 2023-09-11 → 2024-04-05 (+207d) |  | -25d → -142d | 2-1461 → 2-1461 SS, DSC-721 FF, DSC-723 FF | resources none → MBRT BASE [256 h] |
| 2-1463 | SIDEWALK, 13TH TO 14TH SOUTH SIDE | 2023-09-12 → 2024-01-23 A (+133d) | 2023-09-14 → 2024-04-16 (+215d) |  | -25d → -142d | 2-1462 → 2-1462 SS, DSC-688 FF | resources none → MBRT BASE [224 h] |
| 16 | **14TH TO 15TH SOUTH SIDE** | 2023-09-21 → 2024-03-25 (+186d) | 2023-10-04 → 2024-04-16 (+195d) |  |  |  |  |

| ID | Task | Start | Finish | Duration | Complete | Total float | Predecessors | Other |
| --- | --- | --- | --- | --- | --- | --- | --- | --- |
| 2-1465 | REM SIDEWALK, 14TH TO 15TH SOUTH SIDE | 2023-09-21 → 2024-03-25 A (+186d) | 2023-09-25 → 2024-03-26 A (+183d) |  | 0% → 100% | -29d → none | 2-1306, 2-1463, 2-1456, 2-1327, 2-1412 → 2-1306, 2-1463 SS, 2-1327, 2-1412 | resources none → MBRT BASE [24 h] |
| 2-1466 | TRENCH CONDUIT, 14TH TO 15TH SOUTH SIDE | 2023-09-26 → 2024-04-02 (+189d) | 2023-09-26 → 2024-04-02 (+189d) |  |  | -29d → -138d |  | resources none → MBRT BASE [8 h] |
| 2-1467 | INST CONDUIT, 14TH TO 15TH SOUTH SIDE | 2023-09-26 → 2024-04-08 (+195d) | 2023-09-26 → 2024-04-08 (+195d) |  |  | -29d → -142d | 2-1466 SS → 2-1466 SS, DSC-736, DSC-735 | resources none → MBRT BASE [8 h] |
| 2-1468 | GRADE SIDEWALK, 14TH TO 15TH SOUTH SIDE | 2023-09-27 → 2024-04-09 (+195d) | 2023-09-28 → 2024-04-10 (+195d) |  |  | -29d → -142d |  | resources none → MBRT BASE [16 h] |
| 2-1469 | F/P CURB RAMPS, 14TH TO 15TH SOUTH SIDE | 2023-09-29 → 2024-04-11 (+195d) | 2023-09-29 → 2024-04-11 (+195d) |  |  | -29d → -142d | 2-1468 → 2-1468, DSC-688 | resources none → MBRT BASE [8 h] |
| 2-1470 | SIDEWALK, 14TH TO 15TH SOUTH SIDE | 2023-10-02 → 2024-04-12 (+193d) | 2023-10-04 → 2024-04-16 (+195d) |  |  | -29d → -142d |  | resources none → MBRT BASE [24 h] |
| PCO661.01 | DSC 466-POLE FND 40E-845-1 UNSUITABLE SOILS |  |  |  |  |  | none → MS-0025 | resources none → MBRT DSC [16 h] |
| 2-1472 | REM SIDEWALK, BROADWAY TO 11TH NORTH SIDE |  |  |  |  |  |  | resources none → MBRT BASE [16 h] |
| 2-1473 | TRENCH CONDUIT, BROADWAY TO 11TH NORTH SIDE |  |  |  |  |  |  | resources none → MBRT BASE [40 h] |
| 2-2104 | DSC 515 BROADWAY TO BROADWAY COURT DUCT BANK CONFLCIT WITH CONDUIT |  |  |  |  |  |  | resources none → MBRT DSC [8 h] |
| 2-2105 | DSC 516 BROADWAY TO BROADWAY COURT NORTH SIDE BRICK WALL CONFLICT |  |  |  |  |  |  | resources none → MBRT DSC [88 h] |
| 2-2106 | DSC 517 BROADWAY TO BROADWAY COURT NORTH SIDE 8" THICK SIDEWALK |  |  |  |  |  |  | resources none → MBRT DSC [16 h] |
| 2-2111 | BROADWAY TO BROADWAY COURT MH CONFLICT |  |  |  |  |  |  | resources none → MBRT NEW [6 h] |
| 2-1474 | INST CONDUIT, BROADWAY TO 11TH NORTH SIDE |  |  |  |  |  |  | resources none → MBRT BASE [56 h] |
| 2-1475 | GRADE SIDEWALK, BROADWAY TO 11TH NORTH SIDE |  |  |  |  |  |  | resources none → MBRT BASE [16 h] |
| 2-1476 | F/P CURB RAMPS, BROADWAY TO 11TH NORTH SIDE |  |  |  |  |  |  | resources none → MBRT BASE [24 h] |
| 2-1477 | SIDEWALK, BROADWAY TO 11TH NORTH SIDE |  |  |  |  |  |  | resources none → MBRT BASE [32 h] |
| 2-2091 | REMOVE SIDEWALK |  |  |  |  |  | none → PCO693.01 SF | resources none → MBRT NEW [8 h] |
| 2-2093 | DSC 510 THICK SIDEWALS |  |  |  |  |  |  | resources none → MBRT DSC [8 h] |
| 2-2094 | DSC 511 OLD LIGHT POLE UNDER SIDEWALKS |  |  |  |  |  |  | resources none → MBRT DSC [8 h] |
| 2-2118 | DSC 512 MULTIPLE UNKNOWN UTILITIES |  |  |  |  |  |  | resources none → MBRT DSC [8 h] |
| 2-2119 | TRENCH ELECTRICAL |  |  |  |  |  |  | resources none → MBRT NEW [8 h] |
| 2-2120 | ELECTRICAL |  |  |  |  |  |  | resources none → MBRT NEW [32 h] |
| 2-2121 | GRADE SIDEWALKS |  |  |  |  |  |  | resources none → MBRT NEW [8 h] |
| 2-2129 | CURB RAMPS |  |  |  |  |  |  | resources none → MBRT NEW [16 h] |
| 2-2123 | SIDEWALKS |  |  |  |  |  |  | resources none → MBRT NEW [8 h] |
| 2-3125 | DSC 456 POLE 40W-787-3 TIE BACK CONFLICT |  |  |  |  |  | none → MS-0025 | resources none → MBRT DSC [40 h] |
| 2-3126 | DSC 463 40w-787-3 CONDUIT CONFLICTS |  |  |  |  |  |  | resources none → MBRT DSC [40 h] |
| 2-3127 | DSC 464 POLE 40w-787-2 UNSUATABLE SOILS |  |  |  |  |  | none → MS-0025 | resources none → MBRT DSC [24 h] |
| 2-3128 | COMPLETE POLE 40W-787-3 AFTER DSC'S |  |  |  |  |  |  | resources none → MBRT DSC [16 h] |
| 2-3129 | REMOVE SIDEWALKS |  |  |  |  |  |  | resources none → MBRT NEW [16 h] |
| 2-3131 | TRENCH CONDUIT Prior to Pride Parade |  |  |  |  |  |  | resources none → MBRT NEW [16 h] |
| 2-3130 | DSC 505 INTERCONTECT CONFLICT WITH ELECTRICAL |  |  |  |  |  | none → MS-0025 | resources none → MBRT DSC [128 h] |
| 2-3132 | Pride parade delay |  |  |  |  |  |  | resources none → MBRT NEW [40 h] |
| 2-3133 | trenching after pride parade |  |  |  |  |  |  | resources none → MBRT NEW [24 h] |
| 2-3134 | DSC 542 unknown foundation conflict |  |  |  |  |  |  | resources none → MBRT DSC [8 h] |
| 2-3135 | INSTALL CONDUIT |  |  |  |  |  |  | resources none → MBRT NEW [16 h] |
| 2-3136 | GRADE SIDEWALKS |  |  |  |  |  |  | resources none → MBRT NEW [16 h] |
| 2-3137 | SIDEWALK |  |  |  |  |  |  | resources none → MBRT NEW [32 h] |
| PCO658.01 | DSC 464-POLE 40W-787-2 UNSUITABLE SOILS |  |  |  |  |  | none → MS-0025 | resources none → MBRT DSC [352 h] |
| PCO646.01 | DSC 456-POLE 40W-787-3 TIE BACK CONFLICT |  |  |  |  |  |  | resources none → MBRT DSC [40 h] |
| PCO657.01 | DSC 463-POLE 40W-787-3 CONDUIT CONFLICT |  |  |  |  |  |  | resources none → MBRT DSC [40 h] |
| 2-2717 | COMPLETE POLE 40W-787-3 AFTER CONFLICTS |  |  |  |  |  |  | resources none → MBRT NEW [16 h] |
| 2-1479 | REM SIDEWALK, 11TH TO 12TH NORTH SIDE |  |  |  |  |  |  | resources none → MBRT BASE [48 h] |
| 2-1480 | TRENCH CONDUIT, 11TH TO 12TH NORTH SIDE |  |  |  |  |  |  | resources none → MBRT BASE [48 h] |
| PCO704.01 | DSC 505-INTERCONNECT CONFLICT WITH ELECTRICAL |  |  |  |  |  |  | resources none → MBRT DSC [48 h] |
| 2-1481 | INST CONDUIT, 11TH TO 12TH NORTH SIDE |  |  |  |  |  |  | resources none → MBRT BASE [16 h] |
| 2-1482 | GRADE SIDEWALK, 11TH TO 12TH NORTH SIDE |  |  |  |  |  |  | resources none → MBRT BASE [16 h] |
| 2-1483 | SIDEWALK, 11TH TO 12TH NORTH SIDE |  |  |  |  |  |  | resources none → MBRT BASE [32 h] |
| 19 | **12TH TO 13TH NORTH SIDE** | 2023-08-14 → 2023-08-21 (+7d) | 2023-08-24 → 2023-10-23 (+60d) |  |  |  |  |  |
| 2-1485 | REM SIDEWALK, 12TH TO 13TH NORTH SIDE | 2023-08-14 → 2023-08-21 A (+7d) | 2023-08-15 → 2023-08-24 A (+9d) |  | 0% → 100% | -114d → none |  | resources none → MBRT BASE [32 h] |
| 2-1486 | TRENCH CONDUIT, 12TH TO 13TH NORTH SIDE | 2023-08-16 → 2023-08-22 A (+6d) | 2023-08-17 → 2023-08-25 A (+8d) |  | 0% → 100% | -114d → none |  | resources none → MBRT BASE [32 h] |
| 2-1487 | INST CONDUIT, 12TH TO 13TH NORTH SIDE | 2023-08-16 → 2023-09-13 A (+28d) | 2023-08-17 → 2023-09-29 A (+43d) |  | 0% → 100% | -114d → none | 2-1486 SS → 2-1486 SS, 2-1585 FF, 2-1545, 2-1530, 2-1525, 2-1505 | resources none → MBRT BASE [104 h] |
| 2-1488 | GRADE SIDEWALK, 12TH TO 13TH NORTH SIDE | 2023-08-18 → 2023-10-02 A (+45d) | 2023-08-21 → 2023-10-03 A (+43d) |  | 0% → 100% | -114d → none |  | resources none → MBRT BASE [16 h] |
| 2-1489 | SIDEWALK, 12TH TO 13TH NORTH SIDE | 2023-08-22 → 2023-10-05 A (+44d) | 2023-08-24 → 2023-10-23 A (+60d) |  | 0% → 100% | -114d → none |  | resources none → MBRT BASE [104 h] |
| 20 | **13TH TO 14TH NORTH SIDE** |  | 2023-09-19 → 2024-04-19 (+213d) |  |  |  |  |  |
| 2-1314-SCL | DELAY AWAITING SCL TO SLEEVE OR TURN OF POWER LINE SO THE SIGNAL POLE CAN BE SET |  | 2023-08-14 → 2023-11-01 A (+79d) | 31d → 0d | 97% → 100% | -106d → none |  | resources none → MBRT NEW |
| 2-1491 | REM SIDEWALK, 13TH TO 14TH NORTH SIDE | 2023-09-07 → 2023-11-28 A (+82d) | 2023-09-08 → 2023-12-07 A (+90d) |  | 0% → 100% | -122d → none |  | resources none → MBRT BASE [64 h] |
| 2-1492 | TRENCH CONDUIT, 13TH TO 14TH NORTH SIDE | 2023-09-11 → 2023-11-28 A (+78d) | 2023-09-12 → 2023-11-29 A (+78d) |  | 0% → 100% | -122d → none | 2-1491 → 2-1491, 2-1491 SS | resources none → MBRT BASE [16 h] |
| 2-1493 | INST CONDUIT, 13TH TO 14TH NORTH SIDE | 2023-09-11 → 2023-12-08 A (+88d) | 2023-09-12 → 2024-02-05 A (+146d) |  | 0% → 100% | -122d → none |  | resources none → MBRT BASE [312 h] |
| 2-1494 | GRADE SIDEWALK, 13TH TO 14TH NORTH SIDE | 2023-09-13 → 2024-01-04 A (+113d) | 2023-09-14 → 2024-02-06 A (+145d) |  | 0% → 100% | -122d → none | 2-1493 → 2-1493, 2-1777, 2-1627, 2-1542, 2-1517 | resources none → MBRT BASE [184 h] |
| 2-1495 | SIDEWALK, 13TH TO 14TH NORTH SIDE | 2023-09-15 → 2024-01-23 A (+130d) | 2023-09-19 → 2024-02-09 A (+143d) |  | 0% → 100% | -122d → none |  | resources none → MBRT BASE [112 h] |
| 22 | **14TH TO 15TH NORTH SIDE** | 2023-09-21 → 2023-11-28 (+68d) | 2023-10-05 → 2024-03-14 (+161d) |  |  |  |  |  |
| 2-1500 | REM SIDEWALK, 14TH TO 15TH NORTH SIDE | 2023-09-21 → 2024-01-11 A (+112d) | 2023-09-22 → 2024-01-12 A (+112d) |  | 0% → 100% | -123d → none | 2-1306, 2-1495, 2-1327 → 2-1306, 2-1327, 2-1494 SS | resources none → MBRT BASE [16 h] |
| 2-1501 | TRENCH CONDUIT, 14TH TO 15TH NORTH SIDE | 2023-09-25 → 2024-01-12 A (+109d) | 2023-09-26 → 2024-01-31 A (+127d) |  | 0% → 100% | -123d → none |  | resources none → MBRT BASE [104 h] |
| 2-1502 | INST CONDUIT, 14TH TO 15TH NORTH SIDE | 2023-09-25 → 2024-01-15 A (+112d) | 2023-09-26 → 2024-02-09 A (+136d) |  | 0% → 100% | -123d → none |  | resources none → MBRT BASE [152 h] |
| 2-1503 | GRADE SIDEWALK, 14TH TO 15TH NORTH SIDE | 2023-09-27 → 2024-02-14 A (+140d) | 2023-09-28 → 2024-02-15 A (+140d) |  | 0% → 100% | -123d → none | 2-1502 → 2-1502, DSC-693, DSC-686, 2-1683 SF | resources none → MBRT BASE [16 h] |
| 2-1504 | SIDEWALK, 14TH TO 15TH NORTH SIDE | 2023-09-29 → 2024-02-15 A (+139d) | 2023-10-05 → 2024-03-14 A (+161d) |  | 0% → 100% | -123d → none | 2-1503, 2-1498 → 2-1503, 2-1498, 2-1683 FF+1d | resources none → MBRT BASE [88 h] |
| 21 | **DRIVEWAYS 13TH TO 14TH NORTH SIDE** | 2023-09-23 → 2024-02-01 (+131d) | 2023-09-24 → 2024-02-02 (+131d) |  |  |  |  |  |
| 2-1497 | REM SIDEWALK, DRIVEWAYS 13TH TO 14TH NORTH SIDE | 2023-09-23 → 2024-02-01 A (+131d) | 2023-09-23 → 2024-02-01 A (+131d) |  | 0% → 100% | -50d → none |  | resources none → MBRT BASE [8 h] |

| ID | Task | Start | Finish | Duration | Complete | Total float | Predecessors | Other |
| --- | --- | --- | --- | --- | --- | --- | --- | --- |
| 2-1498 | POUR DRIVEWAYS, DRIVEWAYS 13TH TO 14TH NORTH SIDE | 2023-09-24 → 2024-02-02 A (+131d) | 2023-09-24 → 2024-02-02 A (+131d) |  | 0% → 100% | -50d → none |  | resources none → MBRT BASE [8 h] |
| 23 | **DRIVEWAYS 14TH TO 15TH NORTH SIDE** | 2023-10-07 → 2024-03-18 (+163d) | 2023-10-08 → 2024-03-22 (+166d) |  |  |  |  |  |
| 2-1506 | REM SIDEWALK, DRIVEWAYS 14TH TO 15TH NORTH SIDE | 2023-10-07 → 2024-03-18 A (+163d) | 2023-10-07 → 2024-03-18 A (+163d) |  | 0% → 100% | -14d → none |  | resources none → MBRT BASE [8 h] |
| 2-1507 | INST CONDUIT, DRIVEWAYS 14TH TO 15TH NORTH SIDE | 2023-10-07 → 2024-03-19 A (+164d) | 2023-10-07 → 2024-03-19 A (+164d) |  | 0% → 100% | -14d → none |  | resources none → MBRT BASE [8 h] |
| 2-1508 | F/P CURB RAMPS & SIDEWALK, DRIVEWAYS 14TH TO 15TH NORTH SIDE | 2023-10-08 → 2024-03-20 A (+164d) | 2023-10-08 → 2024-03-22 A (+166d) |  | 0% → 100% | -14d → none |  | resources none → MBRT BASE [8 h] |
| 24 | **12TH MADISON TO PIKE NORTH WEST SIDE** | 2023-10-06 → 2024-03-22 (+168d) | 2023-10-12 → 2024-03-28 (+168d) |  |  |  |  |  |
| 2-1510 | REM SIDEWALK, 12TH MAD TO PIKE NORTH WEST SIDE | 2023-10-06 → 2024-03-22 A (+168d) | 2023-10-09 → 2024-03-25 A (+168d) |  | 0% → 100% | -123d → none |  | resources none → MBRT BASE [16 h] |
| 2-1511 | GRADE SIDEWALK, 12TH MAD TO PIKE NORTH WEST SIDE | 2023-10-10 → 2024-03-26 A (+168d) | 2023-10-10 → 2024-03-26 A (+168d) |  | 0% → 100% | -123d → none |  | resources none → MBRT BASE [8 h] |
| 2-1512 | SIDEWALK, 12TH MAD TO PIKE NORTH WEST SIDE | 2023-10-11 → 2024-03-27 A (+168d) | 2023-10-12 → 2024-03-28 A (+168d) |  | 0% → 100% | -123d → none |  | resources none → MBRT BASE [16 h] |
| 25 | **12TH MADISON TO PIKE SOUTH EAST SIDE** | 2023-10-13 → 2024-03-29 (+168d) | 2023-10-19 → 2024-04-25 (+189d) |  |  |  |  |  |
| 2-1514 | REM SIDEWALK, 12TH MAD TO PIKE SOUTH EAST SIDE | 2023-10-13 → 2024-03-29 A (+168d) | 2023-10-16 → 2024-04-01 A (+168d) |  | 0% → 100% | -123d → none |  | resources none → MBRT BASE [16 h] |
| 2-1515 | GRADE SIDEWALK, 12TH MAD TO PIKE SOUTH EAST SIDE | 2023-10-17 → 2024-04-02 (+168d) | 2023-10-17 → 2024-04-02 (+168d) |  |  | -123d → -63d |  | resources none → MBRT BASE [8 h] |
| 2-1516 | SIDEWALK, 12TH MAD TO PIKE SOUTH EAST SIDE | 2023-10-18 → 2024-04-24 (+189d) | 2023-10-19 → 2024-04-25 (+189d) |  |  | -123d → -78d | 2-1515 → 2-1515, 1-0650, DSC-741 | resources none → MBRT BASE [16 h] |
| 26 | **14TH AND EAST PIKE** | 2023-10-20 → 2024-02-13 (+116d) | 2023-11-14 → 2024-07-29 (+258d) |  |  |  |  |  |
| 2-1518 | REMOVE SIDEWALK, 14TH AND EAST PIKE | 2023-10-20 → 2024-02-13 A (+116d) | 2023-10-23 → 2024-02-23 A (+123d) |  | 0% → 100% | -123d → none | 2-1516, 2-1334 → 2-1334 | resources none → MBRT BASE [64 h] |
| 2-1519 | TRENCH CONDUIT, 14TH AND EAST PIKE | 2023-10-24 → 2024-02-14 A (+113d) | 2023-10-25 → 2024-02-27 A (+125d) |  | 0% → 100% | -123d → none | 2-1518 → 2-1518 SS+1d | resources none → MBRT BASE [72 h] |
| 2-1520 | INST CONDUIT, 14TH AND EAST PIKE | 2023-10-24 → 2024-02-19 A (+118d) | 2023-10-25 → 2024-03-01 A (+128d) |  | 0% → 100% | -123d → none | 2-1519 SS → 2-1519 SS+3d | resources none → MBRT BASE [72 h] |
| 2-1521 | GRADE SIDEWALK, 14TH AND EAST PIKE | 2023-10-26 → 2024-02-21 A (+118d) | 2023-10-27 → 2024-03-04 A (+129d) |  | 0% → 100% | -123d → none | 2-1520 → 2-1520 SS+2d, DSC-713 FF, DSC-715 FF | resources none → MBRT BASE [64 h] |
| 2-1522 | F/P CURB RAMPS, 14TH AND EAST PIKE | 2023-10-30 → 2024-02-22 A (+115d) | 2023-11-02 → 2024-03-06 A (+125d) |  | 0% → 100% | -123d → none | 2-1521 → 2-1521 SS | resources none → MBRT BASE [56 h] |
| 2-1523 | SIDEWALK, 14TH AND EAST PIKE | 2023-11-03 → 2024-03-07 A (+125d) | 2023-11-08 → 2024-03-19 A (+132d) |  | 0% → 100% | -123d → none |  | resources none → MBRT BASE [32 h] |
| 2-1524 | ART FOUNDATIONS & INSTALL, 14TH AND EAST PIKE | 2023-11-09 → 2024-05-06 (+179d) | 2023-11-14 → 2024-07-29 (+258d) | 3d → 60d |  | 33d → -144d | 2-1523 → 2-1523, 2-1688 | was named ART FOUNDATIONS, 14TH AND EAST PIKE; constraint none → start on or after 2024-05-06; resources none → MBRT BASE [480 h] |
| 2-1398 | REM SIDEWALK, UNION ST 12TH TO 11TH SOUTH SIDE |  |  |  |  |  |  | resources none → MBRT BASE [16 h] |
| 2-1399 | GRADE SIDEWALK, UNION ST 12TH TO 11TH SOUTH SIDE |  |  |  |  |  |  | resources none → MBRT BASE [16 h] |
| 2-1400 | F/P CURB RAMPS, UNION ST 12TH TO 11TH SOUTH SIDE |  |  |  |  |  |  | resources none → MBRT BASE [8 h] |
| 2-1401 | SIDEWALK, UNION ST 12TH TO 11TH SOUTH SIDE |  |  |  |  |  |  | resources none → MBRT BASE [24 h] |
| 9 | **MILLING AND PAVING** | 2024-04-01 → 2024-04-02 (+1d) | 2024-04-08 → 2024-04-09 (+1d) |  |  |  |  |  |
| 2-1526 | MILL ZONE 2, MILLING AND PAVING | 2024-04-01 → 2024-04-02 (+1d) | 2024-04-02 → 2024-04-03 (+1d) |  |  | -109d → -110d |  | resources none → MBRT BASE [16 h] |
| 2-1651 | HOLD FOR WEATHER - PAVING | 2024-04-01 → 2024-04-02 (+1d) | 2024-04-01 → 2024-04-02 (+1d) |  |  | -109d → -110d | none → MS-0025 SS |  |
| 2-1527 | PREP FOR PAVING, MILLING AND PAVING | 2024-04-03 → 2024-04-04 (+1d) | 2024-04-04 → 2024-04-05 (+1d) |  |  | -109d → -110d |  | resources none → MBRT BASE [16 h] |
| 2-1528 | PAVE ZONE 2, MILLING AND PAVING | 2024-04-05 → 2024-04-08 (+3d) | 2024-04-08 → 2024-04-09 (+1d) |  |  | -109d → -110d |  | resources none → MBRT BASE [16 h] |
| 10 | **MEDIAN STATION PLATFORMS** | 2023-10-30 → 2024-03-19 (+141d) | 2023-11-22 → 2024-04-19 (+149d) |  |  |  |  |  |
| 1 | **MADISON AND EAST UNION STREET** | 2023-10-30 → 2024-03-19 (+141d) | 2023-11-22 → 2024-04-19 (+149d) |  |  |  |  |  |
| 2-1531 | REM TEMP PAVING, MAD & EAST UNION STREET | 2023-10-30 → 2024-03-19 A (+141d) | 2023-10-30 → 2024-03-19 A (+141d) |  | 0% → 100% | 7d → none |  | resources none → MBRT BASE [8 h] |
| 2-1532 | TRENCH CONDUIT, MAD & EAST UNION STREET | 2023-10-31 → 2024-03-20 A (+141d) | 2023-11-01 → 2024-03-22 A (+142d) |  | 0% → 100% | 7d → none |  | resources none → MBRT BASE [16 h] |
| 2-1533 | INST CONDUIT, MAD & EAST UNION STREET | 2023-10-31 → 2024-03-20 A (+141d) | 2023-11-01 → 2024-03-22 A (+142d) |  | 0% → 100% | 7d → none |  | resources none → MBRT BASE [16 h] |
| 2-1534 | STATION FOUNDATIONS, MAD & EAST UNION STREET | 2023-11-02 → 2024-03-25 A (+144d) | 2023-11-07 → 2024-04-05 (+150d) |  |  | 7d → -94d |  | resources none → MBRT BASE [32 h] |
| 2-1535 | STATION NOSING, MAD & EAST UNION STREET | 2023-11-08 → 2024-04-08 (+152d) | 2023-11-09 → 2024-04-09 (+152d) |  |  | 7d → -94d |  | resources none → MBRT BASE [16 h] |
| 2-1536 | GRADE FOR CONCRETE, MAD & EAST UNION STREET | 2023-11-10 → 2024-04-10 (+152d) | 2023-11-16 → 2024-04-15 (+151d) |  |  | 7d → -94d |  | resources none → MBRT BASE [32 h] |
| 2-1537 | STATION SIDEWALK, MAD & EAST UNION STREET | 2023-11-17 → 2024-04-16 (+151d) | 2023-11-22 → 2024-04-19 (+149d) |  |  | 7d → -94d |  | resources none → MBRT BASE [32 h] |
| 11 | **STRIPING AND SIGNS** | 2024-04-09 → 2024-04-10 (+1d) | 2024-06-11 → 2024-06-12 (+1d) |  |  |  |  |  |
| 2-1539 | CURE TIME, STRIPING AND SIGNS | 2024-04-09 → 2024-04-10 (+1d) | 2024-04-29 → 2024-04-30 (+1d) |  |  | -162d → -163d |  | resources none → MBRT BASE |
| 2-1540 | CHANNELIZATION, STRIPING AND SIGNS | 2024-04-30 → 2024-05-01 (+1d) | 2024-05-20 → 2024-05-21 (+1d) |  |  | -110d → -111d |  | resources none → MBRT BASE [120 h] |
| 2-1541 | INST SIGNS, STRIPING AND SIGNS | 2024-05-21 → 2024-05-22 (+1d) | 2024-06-11 → 2024-06-12 (+1d) |  |  | -110d → -111d | 2-1540 → 2-1540, 2-1456 | resources none → MBRT BASE [120 h] |
| 13 | **SIGNALS** |  | 2024-03-06 → 2024-06-12 (+98d) |  |  |  |  |  |
| 1 | **MADISON AND BROADWAY** |  | 2023-12-11 → 2024-06-12 (+184d) |  |  |  |  |  |
| 2-1972 | INST POLES, MAD AND BROADWAY |  |  |  |  |  |  | resources none → MBRT NEW [8 h] |
| 2-1547 | INST SERVICE CABINET, MAD & BROADWAY | 2023-08-14 → 2024-03-01 A (+200d) | 2023-08-14 → 2024-03-01 A (+200d) |  | 0% → 100% | -123d → none | 2-1477 → 2-1477, 2-1572, 2-7255, 2-1812, 2-1812 FF, 2-1822, 2-1817 SS, 2-1822 FF | resources none → MBRT BASE [8 h] |
| 2-2050 | SDCI INSPECTION | 2023-08-15 → 2024-03-04 A (+202d) | 2023-08-15 → 2024-03-04 A (+202d) |  | 0% → 100% | -123d → none |  | resources none → MBRT NEW [8 h] |
| 2-2070 | SDOT INSPECTION | 2023-08-16 → 2024-03-05 A (+202d) | 2023-08-16 → 2024-03-05 A (+202d) |  | 0% → 100% | -123d → none |  | resources none → MBRT NEW [8 h] |
| 2-2038 | SCL INSPECTION REQUEST | 2023-08-17 → 2024-03-06 A (+202d) | 2023-08-17 → 2024-03-06 A (+202d) |  | 0% → 100% | -123d → none |  | resources none → MBRT NEW |
| 2-2039 | 30 DAY WAIT FOR SCL TO INSPECT, MAD AND BOYLSTON | 2023-08-18 → 2024-03-07 A (+202d) | 2023-09-29 → 2024-03-08 A (+161d) | 30d → 2d | 0% → 100% | -123d → none |  | resources none → MBRT NEW |
| 2-1554 | 30 DAY WAIT FOR SCL TO COMMISION | 2023-10-04 → 2024-03-11 A (+159d) | 2023-11-15 → 2024-04-09 (+146d) | 30d → 21d |  | -123d → -113d | 2-1553 → 2-1553 FF, 2-2039 | resources none → MBRT BASE |
| 2-2079 | SCL INSPECTION | 2023-10-02 → 2024-04-08 (+189d) | 2023-10-02 → 2024-04-08 (+189d) |  |  | -123d → -113d | 2-2039 → 2-2039, 2-1817 | resources none → MBRT NEW [8 h] |
| 2-1553 | COMMISION NOTIFICATION | 2023-10-03 → 2024-04-09 (+189d) | 2023-10-03 → 2024-04-09 (+189d) |  |  | -123d → -113d |  | resources none → MBRT BASE |
| 2-1555 | COMM SERVICE, MAD AND BROADWAY | 2023-11-16 → 2024-04-10 (+146d) | 2023-11-16 → 2024-04-10 (+146d) |  |  | -123d → -113d |  | resources none → MBRT BASE [8 h] |
| 2-1546 | INST SIGNAL CABINET, MAD & BROADWAY | 2023-11-17 → 2024-05-30 (+195d) | 2023-11-17 → 2024-05-30 (+195d) |  |  | -123d → -147d | 2-1477, 2-1641, 2-1555 → 2-1477, 2-1641, 2-1555, 2-1817, 2-1613, 2-1827, 2-1626, 3-2473 | resources none → MBRT BASE [8 h] |
| 2-1548 | INST MAGNOMETETERS, MAD & BROADWAY | 2023-11-20 → 2024-05-31 (+193d) | 2023-11-20 → 2024-05-31 (+193d) |  |  | -123d → -147d |  | resources none → MBRT BASE [8 h] |
| 2-1549 | INST MAST ARMS, MAD AND BROADWAY | 2023-11-21 → 2024-06-03 (+195d) | 2023-11-21 → 2024-06-03 (+195d) |  |  | -123d → -147d |  | resources none → MBRT BASE [8 h] |
| 2-1550 | INST SIGNAL GEAR, MAD & BROADWAY | 2023-11-22 → 2024-06-04 (+195d) | 2023-11-22 → 2024-06-04 (+195d) |  |  | -60d → -136d |  | resources none → MBRT BASE [8 h] |
| 2-1551 | INST PEDISTALS, MAD AND BROADWAY | 2023-11-27 → 2024-06-05 (+191d) | 2023-11-27 → 2024-06-05 (+191d) |  |  | -60d → -136d |  | resources none → MBRT BASE [8 h] |
| 2-1552 | INST WIRING, MAD AND BROADWAY | 2023-11-28 → 2024-06-06 (+191d) | 2023-11-30 → 2024-06-07 (+190d) | 3d → 2d |  | -60d → -136d |  | resources none → MBRT BASE [16 h] |
| 2-1556 | NOTIFY SDOT, MAD AND BROADWAY | 2023-12-01 → 2024-06-10 (+192d) | 2023-12-01 → 2024-06-10 (+192d) |  |  | -21d → -121d |  | resources none → MBRT BASE |
| 2-1557 | SDOT INSPECTION, MAD AND BROADWAY | 2023-12-04 → 2024-06-11 (+190d) | 2023-12-08 → 2024-06-11 (+186d) | 5d → 1d |  | -21d → -121d |  | resources none → MBRT BASE [8 h] |
| 2-1558 | COMM SIGNAL, MAD AND BROADWAY | 2023-12-11 → 2024-06-12 (+184d) | 2023-12-11 → 2024-06-12 (+184d) |  |  | -21d → -121d |  | resources none → MBRT BASE [8 h] |
| 2 | **10TH AND MADISON** |  | 2024-01-17 → 2024-01-25 (+8d) |  |  |  |  |  |
| 2-1977 | INST POLES, 10TH AND MAD |  |  |  |  |  |  | resources none → MBRT NEW [16 h] |
| 2-1561 | INST SERVICE CABINET, 10TH & MAD | 2023-09-15 → 2023-11-28 A (+74d) | 2023-09-15 → 2023-11-28 A (+74d) |  | 0% → 100% | -131d → none | 2-1477, 2-1396 → 2-1477, 2-1396, 2-1389 | resources none → MBRT BASE [8 h] |
| 2-1050 | SDCI INSPECTION | 2023-09-18 → 2023-11-29 A (+72d) | 2023-09-18 → 2023-11-29 A (+72d) |  | 0% → 100% | -131d → none |  | resources none → MBRT NEW |
| 2-1070 | SDOT INSPECTION | 2023-09-19 → 2023-11-30 A (+72d) | 2023-09-19 → 2023-11-30 A (+72d) |  | 0% → 100% | -131d → none |  | resources none → MBRT NEW |
| 2-1038 | SCL INSPECTION REQUEST | 2023-09-20 → 2024-01-02 A (+104d) | 2023-09-20 → 2024-01-02 A (+104d) |  | 0% → 100% | -131d → none |  | resources none → MBRT NEW |

| ID | Task | Start | Finish | Duration | Complete | Total float | Predecessors | Other |
| --- | --- | --- | --- | --- | --- | --- | --- | --- |
| 2-1039 | 30 DAY WAIT FOR SCL TO INSPECT, MAD AND BOYLSTON | 2023-09-21 → 2024-01-03 A (+104d) | 2023-11-01 → 2024-01-09 A (+69d) | 30d → 21d | 0% → 100% | -131d → none |  | resources none → MBRT NEW |
| 2-1079 | SCL INSPECTION | 2023-11-02 → 2024-01-10 A (+69d) | 2023-11-02 → 2024-01-10 A (+69d) |  | 0% → 100% | -131d → none |  | resources none → MBRT NEW |
| 2-1566 | COMMISION NOTIFICATION | 2023-11-03 → 2024-01-11 A (+69d) | 2023-11-03 → 2024-01-11 A (+69d) |  | 0% → 100% | -131d → none |  | resources none → MBRT BASE |
| 2-1567 | 30 DAY WAIT FOR SCL TO COMMISION | 2023-11-06 → 2024-01-12 A (+67d) | 2023-12-20 → 2024-01-16 A (+27d) | 30d → 21d | 0% → 100% | -131d → none |  | resources none → MBRT BASE |
| 2-1568 | COMM SERVICE, 10TH AND MAD | 2023-12-21 → 2024-01-17 A (+27d) | 2023-12-21 → 2024-01-17 A (+27d) |  | 0% → 100% | -131d → none |  | resources none → MBRT BASE [8 h] |
| 2-1560 | INST SIGNAL CABINET, 10TH AND MAD | 2023-12-22 → 2024-01-18 A (+27d) | 2023-12-22 → 2024-01-18 A (+27d) |  | 0% → 100% | -131d → none |  | resources none → MBRT BASE [8 h] |
| 2-1562 | INST MAST ARMS, 10TH AND MAD | 2023-12-26 → 2024-01-19 A (+24d) | 2023-12-27 → 2024-01-19 A (+23d) |  | 0% → 100% | -131d → none |  | resources none → MBRT BASE [8 h] |
| 2-1563 | INST PPB POST, 10TH AND MAD | 2023-12-28 → 2024-01-22 A (+25d) | 2023-12-29 → 2024-01-22 A (+24d) |  | 0% → 100% | -55d → none |  | resources none → MBRT BASE [8 h] |
| 2-1564 | INST PEDESTALS, 10TH AND MAD | 2024-01-02 → 2024-01-22 A (+20d) | 2024-01-02 → 2024-01-22 A (+20d) |  | 0% → 100% | -55d → none |  | resources none → MBRT BASE [8 h] |
| 2-1565 | INST WIRING, 10TH AND MAD | 2024-01-03 → 2024-01-22 A (+19d) | 2024-01-05 → 2024-01-22 A (+17d) |  | 0% → 100% | -55d → none |  | resources none → MBRT BASE [8 h] |
| 2-1569 | NOTIFY SDOT, 10TH AND MAD | 2024-01-08 → 2024-01-22 A (+14d) | 2024-01-08 → 2024-01-22 A (+14d) |  | 0% → 100% | -55d → none |  | resources none → MBRT BASE [8 h] |
| 2-1570 | SDOT INSPECTION, 10TH AND MAD | 2024-01-09 → 2024-01-22 A (+13d) | 2024-01-16 → 2024-01-23 A (+7d) |  | 0% → 100% | -55d → none |  | resources none → MBRT BASE [16 h] |
| 2-1571 | COMM SIGNAL, 10TH AND MAD | 2024-01-17 → 2024-01-25 A (+8d) | 2024-01-17 → 2024-01-25 A (+8d) |  | 0% → 100% | -55d → none |  | resources none → MBRT BASE [8 h] |
| 3 | **MADISON AND 11TH** |  | 2024-01-18 → 2024-02-15 (+28d) |  |  |  |  |  |
| 2-2217 | INST POLES, MAD AND 11TH |  |  |  |  |  |  | resources none → MBRT NEW [16 h] |
| 2-1574 | INST SERVICE CABINET, MAD & 11TH | 2023-09-13 → 2023-11-01 A (+49d) | 2023-09-13 → 2023-11-01 A (+49d) |  | 0% → 100% | -99d → none |  | resources none → MBRT BASE [8 h] |
| 2-3050 | SDCI INSPECTION | 2023-09-14 → 2023-11-03 A (+50d) | 2023-09-14 → 2023-11-03 A (+50d) |  | 0% → 100% | -99d → none |  | resources none → MBRT NEW |
| 2-3070 | SDOT INSPECTION | 2023-09-15 → 2023-11-04 A (+50d) | 2023-09-15 → 2023-11-06 A (+52d) |  | 0% → 100% | -99d → none |  | resources none → MBRT NEW |
| 2-3038 | SCL INSPECTION REQUEST | 2023-09-18 → 2023-11-07 A (+50d) | 2023-09-18 → 2023-11-07 A (+50d) |  | 0% → 100% | -99d → none |  | resources none → MBRT NEW |
| 2-3039 | 30 DAY WAIT FOR SCL TO INSPECT, MAD AND BOYLSTON | 2023-09-19 → 2023-11-08 A (+50d) | 2023-10-30 → 2023-12-11 A (+42d) | 30d → 21d | 0% → 100% | -99d → none |  | resources none → MBRT NEW |
| 2-3079 | SCL INSPECTION | 2023-10-31 → 2024-01-19 A (+80d) | 2023-10-31 → 2024-01-19 A (+80d) |  | 0% → 100% | -99d → none | 2-3039 → 2-3039, 2-3044 | resources none → MBRT NEW |
| 2-1579 | COMMISION NOTIFICATION | 2023-11-01 → 2024-01-22 A (+82d) | 2023-11-01 → 2024-01-22 A (+82d) |  | 0% → 100% | -99d → none |  | resources none → MBRT BASE |
| 2-1580 | 30 DAY WAIT FOR SCL TO COMMISION | 2023-11-02 → 2024-01-23 A (+82d) | 2023-12-18 → 2024-02-13 A (+57d) | 30d → 21d | 0% → 100% | -99d → none |  | resources none → MBRT BASE |
| 2-1573 | INST SIGNAL CABINET, MAD AND 11TH | 2023-12-20 → 2024-02-05 A (+47d) | 2023-12-20 → 2024-02-14 A (+56d) |  | 0% → 100% | -99d → none | 2-1483, 2-1581 → 2-1483, 2-1579 | resources none → MBRT BASE [64 h] |
| 2-1575 | INST MAST ARMS, MAD AND 11TH | 2023-12-21 → 2024-02-05 A (+46d) | 2023-12-22 → 2024-02-14 A (+54d) |  | 0% → 100% | -99d → none | PMP-36, 2-2217, 2-1573 → PMP-36, 2-2217, 2-1573 SS, 2-1579 | resources none → MBRT BASE [64 h] |
| 2-1576 | INST PPB POST, MAD AND 11TH | 2023-12-26 → 2024-02-05 A (+41d) | 2023-12-27 → 2024-02-14 A (+49d) |  | 0% → 100% | -99d → none | 2-1575 → 2-1575 SS, 2-1579 | resources none → MBRT BASE [64 h] |
| 2-1577 | INST PEDESTAL, MAD AND 11TH | 2023-12-28 → 2024-02-05 A (+39d) | 2023-12-28 → 2024-02-14 A (+48d) |  | 0% → 100% | -99d → none | 2-1576 → 2-1576 SS, 2-1579 | resources none → MBRT BASE [64 h] |
| 2-1578 | INST WIRING, MAD AND 11TH | 2023-12-29 → 2024-02-05 A (+38d) | 2024-01-03 → 2024-02-14 A (+42d) |  | 0% → 100% | -99d → none | 2-1577 → 2-1577 SS, 2-1579 | resources none → MBRT BASE [64 h] |
| 2-1581 | COMM SERVICE, MAD AND 11TH | 2023-12-19 → 2024-02-14 A (+57d) | 2023-12-19 → 2024-02-14 A (+57d) |  | 0% → 100% | -99d → none |  | resources none → MBRT BASE [8 h] |
| 2-1582 | NOTIFY SDOT, MAD AND 11TH | 2024-01-04 → 2024-02-15 A (+42d) | 2024-01-04 → 2024-02-15 A (+42d) |  | 0% → 100% | -52d → none |  | resources none → MBRT BASE [8 h] |
| 2-1583 | SDOT INSPECTION, MAD AND 11TH | 2024-01-05 → 2024-02-15 A (+41d) | 2024-01-11 → 2024-02-15 A (+35d) |  | 0% → 100% | -52d → none |  | resources none → MBRT BASE [8 h] |
| 2-1584 | COMM SIGNAL, MAD AND 11TH | 2024-01-18 → 2024-02-15 A (+28d) | 2024-01-18 → 2024-02-15 A (+28d) |  | 0% → 100% | -55d → none |  | resources none → MBRT BASE [8 h] |
| 4 | **MADISON AND 12TH** | 2023-08-14 → 2023-11-21 (+99d) | 2024-01-19 → 2024-03-26 (+67d) |  |  |  |  |  |
| 2-1587 | INST SERVICE CABINET, MAD & 12TH | 2023-09-07 → 2023-11-21 A (+75d) | 2023-09-07 → 2023-11-21 A (+75d) |  | 0% → 100% | -84d → none |  | resources none → MBRT BASE [8 h] |
| 2-4050 | SDCI INSPECTION | 2023-09-08 → 2023-11-22 A (+75d) | 2023-09-08 → 2023-11-22 A (+75d) |  | 0% → 100% | -84d → none |  | resources none → MBRT NEW |
| 2-4038 | SCL INSPECTION REQUEST | 2023-09-12 → 2023-11-27 A (+76d) | 2023-09-12 → 2023-11-27 A (+76d) | 0d → 1d | 0% → 100% | -84d → none |  | resources none → MBRT NEW |
| 2-4070 | SDOT INSPECTION | 2023-09-11 → 2023-11-27 A (+77d) | 2023-09-11 → 2023-11-27 A (+77d) |  | 0% → 100% | -84d → none |  | resources none → MBRT NEW |
| 2-1590 | INST OCS POLES, MAD AND 12TH | 2023-08-16 → 2023-11-28 A (+104d) | 2023-08-17 → 2023-11-29 A (+104d) |  | 0% → 100% | -8d → none |  | resources none → MBRT BASE [16 h] |
| 2-1982 | INST MAST ARM POLES, MAD AND 12TH | 2023-08-14 → 2023-11-28 A (+106d) | 2023-08-15 → 2023-11-29 A (+106d) |  | 0% → 100% | -8d → none |  | resources none → MBRT NEW [16 h] |
| 2-4039 | 30 DAY WAIT FOR SCL TO INSPECT, MAD AND BOYLSTON | 2023-09-12 → 2023-12-01 A (+80d) | 2023-10-23 → 2024-01-16 A (+85d) | 30d → 21d | 0% → 100% | -84d → none |  | resources none → MBRT NEW |
| 2-4079 | SCL INSPECTION | 2023-10-24 → 2024-01-17 A (+85d) | 2023-10-24 → 2024-01-17 A (+85d) |  | 0% → 100% | -84d → none |  | resources none → MBRT NEW |
| 2-1594 | COMMISION NOTIFICATION | 2023-10-25 → 2024-01-18 A (+85d) | 2023-10-25 → 2024-01-18 A (+85d) |  | 0% → 100% | -84d → none |  | resources none → MBRT BASE |
| 2-1595 | 30 DAY WAIT FOR SCL TO COMMISION | 2023-10-26 → 2024-01-19 A (+85d) | 2023-12-11 → 2024-02-23 A (+74d) | 30d → 21d | 0% → 100% | -84d → none |  | resources none → MBRT BASE |
| 2-1596 | COMM SERVICE, MAD AND 12TH | 2023-12-12 → 2024-02-26 A (+76d) | 2023-12-12 → 2024-02-26 A (+76d) |  | 0% → 100% | -84d → none |  | resources none → MBRT BASE [8 h] |
| 2-1586 | INST SIGNAL CABINET, MAD AND 12TH | 2023-12-13 → 2024-03-04 A (+82d) | 2023-12-13 → 2024-03-05 A (+83d) | 1d → 2d | 0% → 100% | -84d → none |  | resources none → MBRT BASE [16 h] |
| 2-1588 | INST MAGNOMETERS, MAD AND 12TH | 2023-12-14 → 2024-03-06 A (+83d) | 2023-12-14 → 2024-03-07 A (+84d) | 1d → 2d | 0% → 100% | -84d → none |  | resources none → MBRT BASE [16 h] |
| 2-1589 | INST MAST ARMS, MAD AND 12TH | 2023-12-15 → 2024-03-08 A (+84d) | 2023-12-18 → 2024-03-12 A (+85d) | 2d → 3d | 0% → 100% | -84d → none |  | resources none → MBRT BASE [24 h] |
| 2-1591 | INST PPB POST, MAD AND 12TH | 2023-12-19 → 2024-03-13 A (+85d) | 2023-12-20 → 2024-03-15 A (+86d) | 2d → 3d | 0% → 100% | -72d → none |  | resources none → MBRT BASE [24 h] |
| 2-1592 | INST PEDISTAL, MAD AND 12TH | 2023-12-21 → 2024-03-18 A (+88d) | 2023-12-22 → 2024-03-20 A (+89d) | 2d → 3d | 0% → 100% | -72d → none |  | resources none → MBRT BASE [24 h] |
| 2-1593 | INST WIRING, MAD AND 12TH | 2023-12-26 → 2024-03-21 A (+86d) | 2023-12-27 → 2024-03-21 A (+85d) | 2d → 3d | 0% → 100% | -72d → none |  | resources none → MBRT BASE [24 h] |
| 2-1597 | NOTIFY SDOT, MAD AND 12TH | 2023-12-28 → 2024-03-22 A (+85d) | 2023-12-28 → 2024-03-22 A (+85d) |  | 0% → 100% | -27d → none |  | resources none → MBRT BASE |
| 2-1598 | SDOT INSPECTION, MAD AND 12TH | 2023-12-29 → 2024-03-25 A (+87d) | 2024-01-05 → 2024-03-25 A (+80d) |  | 0% → 100% | -27d → none |  | resources none → MBRT BASE [40 h] |
| 2-1599 | COMM SIGNAL, MAD AND 12TH | 2024-01-19 → 2024-03-26 A (+67d) | 2024-01-19 → 2024-03-26 A (+67d) |  | 0% → 100% | -35d → none |  | resources none → MBRT BASE [8 h] |
| 5 | **MADISON AND 13TH** | 2023-08-18 → 2023-11-30 (+104d) | 2024-01-23 → 2024-04-23 (+91d) |  |  |  |  |  |
| 2-1987 | INST MAST ARM POLES, MAD AND 13TH | 2023-08-18 → 2023-11-30 A (+104d) | 2023-08-21 → 2023-12-01 A (+102d) |  | 0% → 100% | -8d → none |  | resources none → MBRT NEW [16 h] |
| 2-1604 | INST OCS POLES, MAD AND 13TH | 2023-08-22 → 2023-12-04 A (+104d) | 2023-08-23 → 2023-12-05 A (+104d) |  | 0% → 100% | -8d → none |  | resources none → MBRT BASE [16 h] |
| 2-1602 | INST SERVICE CABINET, MAD & 13TH | 2023-09-20 → 2024-02-24 A (+157d) | 2023-09-20 → 2024-02-26 A (+159d) |  | 0% → 100% | -89d → none |  | resources none → MBRT BASE [8 h] |
| 2-5038 | SCL INSPECTION REQUEST | 2023-09-25 → 2024-02-26 A (+154d) | 2023-09-25 → 2024-02-26 A (+154d) |  | 0% → 100% | -89d → none |  | resources none → MBRT NEW |
| 2-5050 | SDCI INSPECTION | 2023-09-21 → 2024-02-26 A (+158d) | 2023-09-21 → 2024-02-26 A (+158d) |  | 0% → 100% | -89d → none |  | resources none → MBRT NEW |
| 2-5070 | SDOT INSPECTION | 2023-09-22 → 2024-02-26 A (+157d) | 2023-09-22 → 2024-02-26 A (+157d) |  | 0% → 100% | -89d → none |  | resources none → MBRT NEW |
| 2-5039 | 30 DAY WAIT FOR SCL TO INSPECT, MAD AND BOYLSTON | 2023-09-26 → 2024-02-27 A (+154d) | 2023-11-06 → 2024-03-14 A (+129d) | 30d → 11d | 0% → 100% | -89d → none |  | resources none → MBRT NEW |
| 2-5079 | SCL INSPECTION | 2023-11-07 → 2024-03-15 A (+129d) | 2023-11-07 → 2024-03-15 A (+129d) |  | 0% → 100% | -89d → none |  | resources none → MBRT NEW [8 h] |
| 2-1608 | COMMISION NOTIFICATION | 2023-11-08 → 2024-03-18 A (+131d) | 2023-11-08 → 2024-03-18 A (+131d) |  | 0% → 100% | -89d → none |  | resources none → MBRT BASE |
| 2-1609 | 30 DAY WAIT FOR SCL TO COMMISION | 2023-11-08 → 2024-03-18 A (+131d) | 2023-12-22 → 2024-03-22 A (+91d) | 30d → 5d | 0% → 100% | -89d → none |  | resources none → MBRT BASE |
| 2-1610 | COMM SERVICE, MAD AND 13TH | 2023-12-26 → 2024-03-25 A (+90d) | 2023-12-26 → 2024-03-25 A (+90d) |  | 0% → 100% | -89d → none |  | resources none → MBRT BASE [8 h] |
| 2-1601 | INST SIGNAL CABINET, MAD AND 13TH | 2023-12-27 → 2024-03-26 A (+90d) | 2023-12-27 → 2024-03-27 A (+91d) | 1d → 2d | 0% → 100% | -89d → none |  | resources none → MBRT BASE [16 h] |
| 2-1603 | INST MAST ARMS, MAD AND 13TH | 2023-12-28 → 2024-03-28 A (+91d) | 2023-12-29 → 2024-04-01 A (+94d) | 2d → 3d | 0% → 100% | -89d → none |  | resources none → MBRT BASE [24 h] |
| 2-1605 | INST PPB POST, MAD AND 13TH | 2024-01-02 → 2024-04-02 (+91d) | 2024-01-02 → 2024-04-04 (+93d) | 1d → 3d |  | -76d → -147d |  | resources none → MBRT BASE [24 h] |
| 2-1606 | INST PEDISTAL, MAD AND 13TH | 2024-01-03 → 2024-04-05 (+93d) | 2024-01-03 → 2024-04-09 (+97d) | 1d → 3d |  | -76d → -147d |  | resources none → MBRT BASE [24 h] |
| 2-1607 | INST WIRING, MAD AND 13TH | 2024-01-04 → 2024-04-10 (+97d) | 2024-01-08 → 2024-04-12 (+95d) |  |  | -76d → -147d |  | resources none → MBRT BASE [24 h] |

| ID | Task | Start | Finish | Duration | Complete | Total float | Predecessors | Other |
| --- | --- | --- | --- | --- | --- | --- | --- | --- |
| 2-1611 | NOTIFY SDOT, MAD AND 13TH | 2024-01-09 → 2024-04-15 (+97d) | 2024-01-09 → 2024-04-15 (+97d) |  |  | -32d → -147d |  | resources none → MBRT BASE |
| 2-1612 | SDOT INSPECTION, MAD AND 13TH | 2024-01-10 → 2024-04-16 (+97d) | 2024-01-16 → 2024-04-19 (+94d) |  |  | -32d → -147d |  | resources none → MBRT BASE [32 h] |
| 2-1613 | COMM SIGNAL, MAD AND 13TH | 2024-01-22 → 2024-04-22 (+91d) | 2024-01-23 → 2024-04-23 (+91d) |  |  | -35d → -147d |  | resources none → MBRT BASE [16 h] |
| 6 | **MADISON AND 14TH** | 2023-08-24 → 2023-12-06 (+104d) | 2024-03-06 → 2024-05-14 (+69d) |  |  |  |  |  |
| 2-1992 | INST POLES, MAD AND 14TH | 2023-08-24 → 2023-12-06 A (+104d) | 2023-08-28 → 2023-12-06 A (+100d) |  | 0% → 100% | -8d → none |  | resources none → MBRT NEW [24 h] |
| 2-1616 | INST SERVICE CABINET, MAD & 14TH | 2023-11-09 → 2024-02-24 A (+107d) | 2023-11-09 → 2024-02-26 A (+109d) |  | 0% → 100% | -123d → none | 2-1504, 2-1523 → 2-1504 SS | resources none → MBRT BASE [8 h] |
| 2-6038 | SCL INSPECTION REQUEST | 2023-11-10 → 2024-02-26 A (+108d) | 2023-11-10 → 2024-02-26 A (+108d) | 0d → 1d | 0% → 100% | -123d → none |  | resources none → MBRT NEW |
| 2-6050 | SDCI INSPECTION | 2023-11-09 → 2024-02-26 A (+109d) | 2023-11-09 → 2024-02-26 A (+109d) |  | 0% → 100% | -123d → none |  | resources none → MBRT NEW |
| 2-6070 | SDOT INSPECTION | 2023-11-09 → 2024-02-26 A (+109d) | 2023-11-09 → 2024-02-26 A (+109d) |  | 0% → 100% | -123d → none |  | resources none → MBRT NEW |
| 2-6039 | 30 DAY WAIT FOR SCL TO INSPECT, MAD AND BOYLSTON | 2023-11-10 → 2024-02-27 A (+109d) | 2023-12-27 → 2024-03-15 A (+79d) | 30d → 2d | 0% → 100% | -123d → none |  | resources none → MBRT NEW |
| 2-6079 | SCL INSPECTION | 2023-12-28 → 2024-03-18 A (+81d) | 2023-12-28 → 2024-03-18 A (+81d) |  | 0% → 100% | -123d → none |  | resources none → MBRT NEW [8 h] |
| 2-1621 | COMMISION NOTIFICATION | 2023-12-29 → 2024-03-19 A (+81d) | 2023-12-29 → 2024-03-19 A (+81d) |  | 0% → 100% | -123d → none |  | resources none → MBRT BASE |
| 2-1622 | 30 DAY WAIT FOR SCL TO COMMISION | 2023-12-29 → 2024-03-19 A (+81d) | 2024-02-12 → 2024-03-21 A (+38d) | 30d → 3d | 0% → 100% | -123d → none |  | resources none → MBRT BASE |
| 2-1623 | COMM SERVICE, MAD AND 14TH | 2024-02-13 → 2024-03-22 A (+38d) | 2024-02-13 → 2024-03-22 A (+38d) |  | 0% → 100% | -123d → none |  | resources none → MBRT BASE [8 h] |
| 2-1615 | INST SIGNAL CABINET, MAD AND 14TH | 2024-02-14 → 2024-04-24 (+70d) | 2024-02-14 → 2024-04-24 (+70d) |  |  | -123d → -147d | 2-1504, 2-1623 → 2-1504, 2-1623, 2-1470, 2-1613 | resources none → MBRT BASE [8 h] |
| 2-1617 | INST MAST ARMS, MAD AND 14TH | 2024-02-15 → 2024-04-25 (+70d) | 2024-02-15 → 2024-04-25 (+70d) |  |  | -123d → -147d |  | resources none → MBRT BASE [8 h] |
| 2-1618 | INST PPB POST, MAD AND 14TH | 2024-02-16 → 2024-04-26 (+70d) | 2024-02-20 → 2024-04-29 (+69d) |  |  | -112d → -147d |  | resources none → MBRT BASE [16 h] |
| 2-1619 | INST PEDISTAL, MAD AND 14TH | 2024-02-21 → 2024-04-30 (+69d) | 2024-02-22 → 2024-05-01 (+69d) |  |  | -112d → -147d |  | resources none → MBRT BASE [16 h] |
| 2-1620 | INST WIRING, MAD AND 14TH | 2024-02-23 → 2024-05-02 (+69d) | 2024-02-26 → 2024-05-03 (+67d) |  |  | -112d → -147d |  | resources none → MBRT BASE [16 h] |
| 2-1624 | NOTIFY SDOT, MAD AND 14TH | 2024-02-27 → 2024-05-06 (+69d) | 2024-02-27 → 2024-05-06 (+69d) |  |  | -42d → -147d |  | resources none → MBRT BASE |
| 2-1625 | SDOT INSPECTION, MAD AND 14TH | 2024-02-28 → 2024-05-07 (+69d) | 2024-03-05 → 2024-05-13 (+69d) |  |  | -42d → -147d |  | resources none → MBRT BASE [40 h] |
| 2-1626 | COMM SIGNAL, MAD AND 14TH | 2024-03-06 → 2024-05-14 (+69d) | 2024-03-06 → 2024-05-14 (+69d) |  |  | -42d → -147d |  | resources none → MBRT BASE [8 h] |
| 7 | **MADISON AND 15TH** | 2023-08-29 → 2023-12-11 (+104d) | 2024-02-12 → 2024-04-30 (+78d) |  |  |  |  |  |
| 2-1997 | INST POLES, MAD AND 15TH | 2023-08-29 → 2023-12-11 A (+104d) | 2023-08-30 → 2023-12-12 A (+104d) |  | 0% → 100% | 15d → none |  | resources none → MBRT NEW [16 h] |
| 2-1629 | INST SERVICE CABINET, MAD & 15TH | 2023-10-09 → 2024-03-26 A (+169d) | 2023-10-09 → 2024-03-26 A (+169d) |  | 0% → 100% | -31d → none | 2-1508, 2-1470 → 2-1508, 3-2115 | resources none → MBRT BASE [8 h] |
| 2-7050 | SDCI INSPECTION | 2023-10-10 → 2024-03-27 A (+169d) | 2023-10-10 → 2024-03-27 A (+169d) |  | 0% → 100% | -31d → none |  | resources none → MBRT NEW [8 h] |
| 2-7070 | SDOT INSPECTION | 2023-10-11 → 2024-03-28 A (+169d) | 2023-10-11 → 2024-03-28 A (+169d) |  | 0% → 100% | -31d → none |  | resources none → MBRT NEW [8 h] |
| 2-7038 | SCL INSPECTION REQUEST | 2023-10-12 → 2024-03-29 A (+169d) | 2023-10-12 → 2024-03-29 A (+169d) |  | 0% → 100% | -31d → none |  | resources none → MBRT NEW |
| 2-7039 | 30 DAY WAIT FOR SCL TO INSPECT, MAD AND BOYLSTON | 2023-10-12 → 2024-03-29 A (+169d) | 2023-11-27 → 2024-04-01 A (+126d) | 30d → 2d | 0% → 100% | -31d → none |  | resources none → MBRT NEW |
| 2-7079 | SCL INSPECTION | 2023-11-28 → 2024-04-02 (+126d) | 2023-11-28 → 2024-04-02 (+126d) |  |  | -31d → -130d |  | resources none → MBRT NEW [8 h] |
| 2-1635 | COMMISION NOTIFICATION | 2023-11-29 → 2024-04-03 (+126d) | 2023-11-29 → 2024-04-03 (+126d) |  |  | -31d → -130d |  | resources none → MBRT BASE |
| 2-1636 | 30 DAY WAIT FOR SCL TO COMMISION | 2023-11-29 → 2024-04-03 (+126d) | 2024-01-11 → 2024-04-05 (+85d) | 30d → 3d |  | -31d → -130d |  | resources none → MBRT BASE |
| 2-1637 | COMM SERVICE, MAD AND 15TH | 2024-01-12 → 2024-04-08 (+87d) | 2024-01-12 → 2024-04-08 (+87d) |  |  | -31d → -130d | 2-1636 → 2-1636, 2-1997 | resources none → MBRT BASE [8 h] |
| 2-1628 | INST SIGNAL CABINET, MAD AND 15TH | 2024-01-16 → 2024-04-17 (+92d) | 2024-01-16 → 2024-04-17 (+92d) |  |  | -31d → -136d | 2-1508, 2-1637 → 2-1637, 3-2116, 2-1607, 3-2389 | resources none → MBRT BASE [8 h] |
| 2-1630 | INST MAGNOMETERS, MAD AND 15TH | 2024-01-17 → 2024-04-18 (+92d) | 2024-01-17 → 2024-04-18 (+92d) |  |  | -31d → -136d |  | resources none → MBRT BASE [8 h] |
| 2-1631 | INST MAST ARMS, MAD AND 15TH | 2024-01-18 → 2024-04-19 (+92d) | 2024-01-22 → 2024-04-19 (+88d) | 3d → 1d |  | -31d → -136d |  | resources none → MBRT BASE [8 h] |
| 2-1632 | INST PPB POST, MAD AND 15TH | 2024-01-23 → 2024-04-22 (+90d) | 2024-01-25 → 2024-04-22 (+88d) | 3d → 1d |  | -31d → -136d |  | resources none → MBRT BASE [8 h] |
| 2-1633 | INST PEDISTAL, MAD AND 15TH | 2024-01-26 → 2024-04-23 (+88d) | 2024-01-29 → 2024-04-23 (+85d) | 2d → 1d |  | -31d → -136d |  | resources none → MBRT BASE [8 h] |
| 2-1634 | INST WIRING, MAD AND 15TH | 2024-01-30 → 2024-04-24 (+85d) | 2024-02-01 → 2024-04-25 (+84d) | 3d → 2d |  | -31d → -136d |  | resources none → MBRT BASE [16 h] |
| 2-1638 | NOTIFY SDOT, MAD AND 15TH | 2024-02-02 → 2024-04-26 (+84d) | 2024-02-02 → 2024-04-26 (+84d) |  |  | -31d → -136d |  | resources none → MBRT BASE |
| 2-1639 | SDOT INSPECTION, MAD AND 15TH | 2024-02-05 → 2024-04-29 (+84d) | 2024-02-09 → 2024-04-29 (+80d) | 5d → 1d |  | -31d → -136d |  | resources none → MBRT BASE [8 h] |
| 2-1640 | COMM SIGNAL, MAD AND 15TH | 2024-02-12 → 2024-04-30 (+78d) | 2024-02-12 → 2024-04-30 (+78d) |  |  | -31d → -136d |  | resources none → MBRT BASE [8 h] |
| 12 | **LANDSCAPING** | 2023-11-27 → 2024-03-28 (+122d) | 2023-12-22 → 2024-05-17 (+147d) |  |  |  |  |  |
| 2-1543 | INST POUROUS PAVMENT, POROUS PAVMENT | 2023-11-27 → 2024-03-28 A (+122d) | 2023-12-08 → 2024-04-15 (+129d) |  |  | 17d → -70d | 2-1537 → 2-1504 | resources none → MBRT BASE [80 h] |
| 2-1643 | INSTALL TREES, LANDSCAPING & SHRUBS | 2023-11-27 → 2024-04-22 (+147d) | 2023-12-22 → 2024-05-17 (+147d) |  |  | 7d → -94d |  | resources none → MBRT BASE [160 h] |
| 14 | **ITS WIRING** | 2024-02-13 → 2024-05-01 (+78d) | 2024-02-20 → 2024-05-07 (+77d) |  |  |  |  |  |
| 2-1642 | INST WIRING, ITS, ITS WIRING | 2024-02-13 → 2024-05-01 (+78d) | 2024-02-20 → 2024-05-07 (+77d) |  |  | -31d → -86d |  | resources none → MBRT BASE [40 h] |
| 15 | **LIGHTING** | 2023-11-22 → 2023-12-26 (+34d) | 2024-05-23 → 2024-07-26 (+64d) |  |  |  |  |  |
| 2-1645 | INST POLES, BROADWAY | 2023-11-22 → 2024-06-04 (+195d) | 2023-12-14 → 2024-06-24 (+193d) |  |  | -123d → -147d |  | resources none → MBRT BASE [120 h] |
| 2-1646 | INST WIRING, BROADWAY | 2023-12-15 → 2024-06-25 (+193d) | 2023-12-29 → 2024-07-08 (+192d) |  |  | -70d → -147d |  | resources none → MBRT BASE [80 h] |
| 2-1647 | NOTIFY SCL, BROADWAY | 2024-01-02 → 2024-07-09 (+189d) | 2024-01-02 → 2024-07-09 (+189d) |  |  | -70d → -147d |  | resources none → MBRT BASE |
| 2-1648 | SCL Lighting Final Inspection, BROADWAY | 2024-01-02 → 2024-07-09 (+189d) | 2024-02-13 → 2024-07-10 (+148d) | 30d → 2d |  | -70d → -147d |  | was named SCL INSPECTION, BROADWAY; resources none → MBRT BASE [16 h] |
| 2-1649 | COMM SERVICE,BROADWAY | 2024-02-14 → 2024-07-11 (+148d) | 2024-02-14 → 2024-07-11 (+148d) |  |  | -70d → -147d |  | resources none → MBRT BASE [8 h] |
| 2-2127 | NOTIFY SCL, BROADWAY | 2024-02-15 → 2024-07-12 (+148d) | 2024-02-15 → 2024-07-12 (+148d) |  |  | -70d → -147d |  | resources none → MBRT NEW |
| 2-2132 | SCL Commissioning Inspection, BROADWAY | 2024-02-15 → 2024-07-12 (+148d) | 2024-02-29 → 2024-07-25 (+147d) |  |  | -70d → -147d |  | was named SCL INSPECTION, BROADWAY; resources none → MBRT NEW |
| 2-2137 | COMM LIGHTING, BROADWAY | 2024-03-01 → 2024-07-26 (+147d) | 2024-03-01 → 2024-07-26 (+147d) |  |  | -70d → -147d |  | resources none → MBRT NEW [8 h] |
| 2-2002 | INST POLES, 10TH | 2023-12-28 → 2023-12-26 A (-2d) | 2024-01-24 → 2023-12-26 A (-29d) |  | 0% → 100% | -131d → none | 2-1645, 2-1562 → 2-1562 | resources none → MBRT NEW [144 h] |
| 2-2007 | INST WIRING, 10TH | 2024-01-25 → 2023-12-26 A (-30d) | 2024-02-07 → 2024-01-09 A (-29d) |  | 0% → 100% | -65d → none |  | resources none → MBRT NEW [80 h] |
| 2-2012 | NOTIFY SCL, 10TH | 2024-02-08 → 2024-01-11 A (-28d) | 2024-02-08 → 2024-01-11 A (-28d) |  | 0% → 100% | -65d → none |  | resources none → MBRT NEW |
| 2-2017 | SCL Lighting Final Inspection, 10TH | 2024-02-08 → 2024-01-11 A (-28d) | 2024-03-21 → 2024-01-18 A (-63d) | 30d → 10d | 0% → 100% | -65d → none |  | was named SCL INSPECTION, 10TH; resources none → MBRT NEW [80 h] |
| 2-2022 | COMM SERVICE, 10TH | 2024-03-22 → 2024-01-19 A (-63d) | 2024-03-22 → 2024-01-19 A (-63d) |  | 0% → 100% | -65d → none |  | resources none → MBRT NEW [8 h] |
| 2-2142 | NOTIFY SCL, 10TH | 2024-03-25 → 2024-01-19 A (-66d) | 2024-03-25 → 2024-01-19 A (-66d) |  | 0% → 100% | -65d → none |  | resources none → MBRT NEW |
| 2-2147 | SCL Commissioning Inspection, 10TH | 2024-03-25 → 2024-01-22 A (-63d) | 2024-04-05 → 2024-01-23 A (-73d) |  | 0% → 100% | -65d → none |  | was named SCL INSPECTION, 10TH; resources none → MBRT NEW [80 h] |
| 2-2152 | COMM LIGHTING, 10TH | 2024-04-08 → 2024-01-24 A (-75d) | 2024-04-08 → 2024-01-24 A (-75d) |  | 0% → 100% | -65d → none |  | resources none → MBRT NEW [8 h] |
| 2-2027 | INST POLES, 11TH | 2024-01-25 → 2023-12-27 A (-29d) | 2024-02-20 → 2023-12-27 A (-55d) |  | 0% → 100% | -131d → none |  | resources none → MBRT NEW [144 h] |
| 2-2032 | INST WIRING, 11TH | 2024-02-21 → 2024-02-05 A (-16d) | 2024-03-05 → 2024-02-28 A (-6d) |  | 0% → 100% | -131d → none | 2-2027, 2-1578 → 2-2027, 2-1578, 2-2632 | resources none → MBRT NEW [80 h] |
| 2-2037 | NOTIFY SCL, 11TH | 2024-03-06 → 2024-02-28 A (-7d) | 2024-03-06 → 2024-02-28 A (-7d) | 0d → 1d | 0% → 100% | -131d → none |  | resources none → MBRT NEW [8 h] |
| 2-2042 | SCL Lighting Final Inspection, 11TH | 2024-03-06 → 2024-02-29 A (-6d) | 2024-04-16 → 2024-03-12 A (-35d) | 30d → 10d | 0% → 100% | -131d → none |  | was named SCL INSPECTION, 11TH; resources none → MBRT NEW [80 h] |
| 2-2047 | COMM SERVICE, 11TH | 2024-04-17 → 2024-03-13 A (-35d) | 2024-04-17 → 2024-03-27 A (-21d) |  | 0% → 100% | -131d → none |  | resources none → MBRT NEW [8 h] |
| 2-2157 | NOTIFY SCL, 11TH | 2024-04-18 → 2024-03-28 A (-21d) | 2024-04-18 → 2024-03-28 A (-21d) |  | 0% → 100% | -131d → none |  | resources none → MBRT NEW |

| ID | Task | Start | Finish | Duration | Complete | Total float | Predecessors | Other |
| --- | --- | --- | --- | --- | --- | --- | --- | --- |
| 2-2162 | SCL Commissioning Inspection, 11TH - DELAY | 2024-04-18 → 2024-03-29 A (-20d) | 2024-05-01 → 2024-04-12 (-19d) |  |  | -131d → -92d |  | was named SCL INSPECTION, 11TH; resources none → MBRT NEW |
| 2-2167 | COMM LIGHTING, 11TH | 2024-05-02 → 2024-04-15 (-17d) | 2024-05-02 → 2024-04-15 (-17d) |  |  | -131d → -92d |  | resources none → MBRT NEW [8 h] |
| 2-2052 | INST POLES, 12TH | 2023-12-19 → 2023-12-26 A (+7d) | 2024-01-16 → 2023-12-26 A (-21d) |  | 0% → 100% | -84d → none | 2-1589 → 2-2002 SS | resources none → MBRT NEW [144 h] |
| 2-2057 | INST WIRING, 12TH | 2024-01-17 → 2023-12-26 A (-22d) | 2024-01-30 → 2024-03-08 A (+38d) |  | 0% → 100% | -84d → none | 2-2052, 2-1593 → 2-2052 | resources none → MBRT NEW [80 h] |
| 2-2062 | NOTIFY SCL, 12TH | 2024-01-31 → 2024-03-11 A (+40d) | 2024-01-31 → 2024-03-11 A (+40d) | 0d → 1d | 0% → 100% | -84d → none |  | resources none → MBRT NEW [8 h] |
| 2-2067 | SCL Lighting Final Inspection, 12TH | 2024-01-31 → 2024-03-12 A (+41d) | 2024-03-13 → 2024-03-12 A (-1d) | 30d → 2d | 0% → 100% | -84d → none |  | was named SCL INSPECTION, 12TH; resources none → MBRT NEW [16 h] |
| 2-2072 | COMM SERVICE, 12TH | 2024-03-14 → 2024-03-13 A (-1d) | 2024-03-14 → 2024-03-13 A (-1d) |  | 0% → 100% | -84d → none |  | resources none → MBRT NEW [8 h] |
| 2-2172 | NOTIFY SCL, 12TH | 2024-03-15 → 2024-03-14 A (-1d) | 2024-03-15 → 2024-03-14 A (-1d) |  | 0% → 100% | -84d → none |  | resources none → MBRT NEW |
| 2-2177 | SCL Commissioning Inspection, 12TH - DELAY | 2024-03-15 A | 2024-03-28 → 2024-03-15 A (-13d) |  | 0% → 100% | -84d → none |  | was named SCL INSPECTION, 12TH; resources none → MBRT NEW |
| 2-2182 | COMM LIGHTING, 12TH | 2024-03-29 → 2024-03-18 A (-11d) | 2024-03-29 → 2024-03-18 A (-11d) |  | 0% → 100% | -84d → none |  | resources none → MBRT NEW [8 h] |
| 2-2077 | INST POLES, 13TH | 2024-01-02 → 2024-04-02 (+91d) | 2024-01-26 → 2024-04-25 (+90d) |  |  | -89d → -124d |  | resources none → MBRT NEW [144 h] |
| 2-2082 | INST WIRING, 13TH | 2024-01-29 → 2024-04-26 (+88d) | 2024-02-09 → 2024-05-09 (+90d) |  |  | -89d → -124d |  | resources none → MBRT NEW [80 h] |
| 2-2087 | NOTIFY SCL, 13TH | 2024-02-12 → 2024-05-10 (+88d) | 2024-02-12 → 2024-05-10 (+88d) |  |  | -89d → -124d |  | resources none → MBRT NEW |
| 2-2092 | SCL Lighting Final Inspection, 13TH | 2024-02-12 → 2024-05-10 (+88d) | 2024-03-25 → 2024-05-13 (+49d) | 30d → 2d |  | -89d → -124d |  | was named SCL INSPECTION, 13TH; resources none → MBRT NEW [16 h] |
| 2-2097 | COMM SERVICE, 13TH | 2024-03-26 → 2024-05-14 (+49d) | 2024-03-26 → 2024-05-14 (+49d) |  |  | -89d → -124d |  | resources none → MBRT NEW [8 h] |
| 2-2187 | NOTIFY SCL, 13TH | 2024-03-27 → 2024-05-15 (+49d) | 2024-03-27 → 2024-05-15 (+49d) |  |  | -89d → -124d |  | resources none → MBRT NEW |
| 2-2192 | SCL Commissioning Inspection, 13TH | 2024-03-27 → 2024-05-15 (+49d) | 2024-04-09 → 2024-05-29 (+50d) |  |  | -89d → -124d |  | was named SCL INSPECTION, 13TH; resources none → MBRT NEW |
| 2-2197 | COMM LIGHTING, 13TH | 2024-04-10 → 2024-05-30 (+50d) | 2024-04-10 → 2024-05-30 (+50d) |  |  | -89d → -124d |  | resources none → MBRT NEW [8 h] |
| 2-2102 | INST POLES, 14TH | 2024-02-15 → 2024-04-25 (+70d) | 2024-03-12 → 2024-04-25 (+44d) | 18d → 1d |  | -123d → -127d |  | resources none → MBRT NEW [8 h] |
| 2-2107 | INST WIRING, 14TH | 2024-03-13 → 2024-05-06 (+54d) | 2024-03-26 → 2024-05-17 (+52d) |  |  | -123d → -133d |  | resources none → MBRT NEW [80 h] |
| 2-2112 | NOTIFY SCL, 14TH | 2024-03-27 → 2024-05-20 (+54d) | 2024-03-27 → 2024-05-20 (+54d) |  |  | -123d → -133d |  | resources none → MBRT NEW |
| 2-2117 | SCL Lighting Final Inspection, 14TH | 2024-03-27 → 2024-05-20 (+54d) | 2024-05-07 → 2024-05-21 (+14d) | 30d → 2d |  | -123d → -133d |  | was named SCL INSPECTION, 14TH; resources none → MBRT NEW [16 h] |
| 2-2122 | COMM SERVICE, 14TH | 2024-05-08 → 2024-05-22 (+14d) | 2024-05-08 → 2024-05-22 (+14d) |  |  | -123d → -133d |  | resources none → MBRT NEW [8 h] |
| 2-2202 | NOTIFY SCL, 14TH | 2024-05-09 → 2024-05-23 (+14d) | 2024-05-09 → 2024-05-23 (+14d) |  |  | -123d → -133d |  | resources none → MBRT NEW |
| 2-2207 | SCL Commissioning Inspection, 14TH | 2024-05-09 → 2024-05-23 (+14d) | 2024-05-22 → 2024-06-06 (+15d) |  |  | -123d → -133d |  | was named SCL INSPECTION, 14TH; resources none → MBRT NEW |
| 2-2212 | COMM LIGHTING, 14TH | 2024-05-23 → 2024-06-07 (+15d) | 2024-05-23 → 2024-06-07 (+15d) |  |  | -123d → -133d |  | resources none → MBRT NEW [8 h] |
| 19 | **WORK TO COMPLETE AFTER SIGNAL/LIGHTING COMMISSIONING** | 2023-12-01 → 2024-03-27 (+117d) | 2024-06-28 → 2024-08-01 (+34d) |  |  |  |  |  |
| 27 | **BROADWAY** | 2023-11-22 → 2024-06-10 (+201d) | 2024-03-01 → 2024-07-31 (+152d) |  |  |  |  |  |
| 2-2222 | KCM RELOCATE OCS LINE | 2023-12-01 → 2024-06-10 (+192d) | 2023-12-14 → 2024-06-21 (+190d) |  |  | -18d → -122d |  | resources none → MBRT ADDED [80 h] |
| 2-2232 | REMOVE POLES | 2023-12-12 → 2024-06-13 (+184d) | 2023-12-13 → 2024-06-14 (+184d) |  |  | -21d → -121d |  | resources none → MBRT ADDED [16 h] |
| 2-2237 | REMOVE CABINET | 2023-12-14 → 2024-06-17 (+186d) | 2023-12-14 → 2024-06-17 (+186d) |  |  | -21d → -121d |  | resources none → MBRT ADDED [8 h] |
| 2-2242 | REMOVE FOUNDATIONS | 2023-12-15 → 2024-06-18 (+186d) | 2023-12-18 → 2024-06-19 (+184d) |  |  | -21d → -121d |  | resources none → MBRT ADDED [16 h] |
| 2-2247 | GRADE SIDEWALK | 2023-12-19 → 2024-06-20 (+184d) | 2023-12-19 → 2024-06-20 (+184d) |  |  | -21d → -121d |  | resources none → MBRT ADDED [8 h] |
| 2-2252 | CURB RAMP | 2023-12-20 → 2024-06-21 (+184d) | 2023-12-21 → 2024-06-24 (+186d) |  |  | -21d → -121d |  | resources none → MBRT ADDED [16 h] |
| 2-2227 | REMOVE TEMP LIGHTING | 2024-03-04 → 2024-07-29 (+147d) | 2024-03-05 → 2024-07-30 (+147d) |  |  | -70d → -147d |  | resources none → MBRT ADDED [16 h] |
| 2-2257 | SIDEWALKS | 2024-03-06 → 2024-07-31 (+147d) | 2024-03-06 → 2024-07-31 (+147d) |  |  | -70d → -147d |  | resources none → MBRT ADDED [8 h] |
| 1 | **MADISON AND 11TH** | 2024-05-03 → 2024-04-16 (-17d) | 2024-05-31 → 2024-05-13 (-18d) |  |  |  |  |  |
| 2-2267 | REMOVE TEMP LIGHTING | 2024-05-03 → 2024-04-16 (-17d) | 2024-05-06 → 2024-04-17 (-19d) |  |  | -131d → -92d |  | resources none → MBRT ADDED [16 h] |
| 2-2272 | REMOVE POLES | 2024-05-07 → 2024-04-18 (-19d) | 2024-05-08 → 2024-04-19 (-19d) |  |  | -131d → -92d |  | resources none → MBRT ADDED [16 h] |
| 2-2277 | REMOVE CABINET | 2024-05-09 → 2024-04-22 (-17d) | 2024-05-09 → 2024-04-22 (-17d) |  |  | -131d → -92d |  | resources none → MBRT ADDED [8 h] |
| 2-2282 | REMOVE FOUNDATIONS 1ST CORNER | 2024-05-10 → 2024-04-23 (-17d) | 2024-05-10 → 2024-04-23 (-17d) |  |  | -131d → -92d |  | resources none → MBRT ADDED [8 h] |
| 2-2287 | GRADE SIDEWALK 1ST CORNER | 2024-05-13 → 2024-04-24 (-19d) | 2024-05-13 → 2024-04-24 (-19d) |  |  | -131d → -92d |  | resources none → MBRT ADDED [8 h] |
| 2-2292 | CURB RAMPS 1ST CORNER | 2024-05-14 → 2024-04-25 (-19d) | 2024-05-15 → 2024-04-26 (-19d) |  |  | -131d → -92d |  | resources none → MBRT ADDED [16 h] |
| 2-2297 | SIDEWALKS 1ST CORNER | 2024-05-16 → 2024-04-29 (-17d) | 2024-05-16 → 2024-04-29 (-17d) |  |  | -131d → -92d |  | resources none → MBRT ADDED [8 h] |
| 2-2302 | REMOVE FOUNDATIONS 2ND CORNER | 2024-05-17 → 2024-04-30 (-17d) | 2024-05-17 → 2024-04-30 (-17d) |  |  | -131d → -92d |  | resources none → MBRT ADDED [8 h] |
| 2-2307 | GRADE SIDEWALKS 2ND CORNER | 2024-05-20 → 2024-05-01 (-19d) | 2024-05-20 → 2024-05-01 (-19d) |  |  | -131d → -92d |  | resources none → MBRT ADDED [8 h] |
| 2-2312 | CURB RAMPS 2ND CORNER | 2024-05-21 → 2024-05-02 (-19d) | 2024-05-22 → 2024-05-03 (-19d) |  |  | -131d → -92d |  | resources none → MBRT ADDED [16 h] |
| 2-2317 | SIDEWALKS 2ND CORNER | 2024-05-23 → 2024-05-06 (-17d) | 2024-05-23 → 2024-05-06 (-17d) |  |  | -131d → -92d |  | resources none → MBRT ADDED [8 h] |
| 2-2322 | REMOVE FOUNDATIONS 3RD CORNER | 2024-05-24 → 2024-05-07 (-17d) | 2024-05-24 → 2024-05-07 (-17d) |  |  | -131d → -92d |  | resources none → MBRT ADDED [8 h] |
| 2-2327 | GRADE SIDEWALKS 3RD CORNER | 2024-05-28 → 2024-05-08 (-20d) | 2024-05-28 → 2024-05-08 (-20d) |  |  | -131d → -92d |  | resources none → MBRT ADDED [8 h] |
| 2-2332 | CURB RAMPS 3RD CORNER | 2024-05-29 → 2024-05-09 (-20d) | 2024-05-30 → 2024-05-10 (-20d) |  |  | -131d → -92d |  | resources none → MBRT ADDED [16 h] |
| 2-2337 | SIDEWALKS 3RD CORNER | 2024-05-31 → 2024-05-13 (-18d) | 2024-05-31 → 2024-05-13 (-18d) |  |  | -131d → -92d |  | resources none → MBRT ADDED [8 h] |
| 2 | **MADISON AND 12TH** | 2024-04-01 → 2024-03-27 (-5d) | 2024-05-03 → 2024-05-14 (+11d) |  |  |  |  |  |
| 2-2342 | REMOVE TEMP LIGHTING | 2024-04-01 → 2024-03-27 A (-5d) | 2024-04-02 → 2024-03-28 A (-5d) |  | 0% → 100% | -84d → none |  | resources none → MBRT ADDED [16 h] |
| 2-2347 | REMOVE POLES | 2024-04-03 → 2024-03-27 A (-7d) | 2024-04-04 → 2024-03-28 A (-7d) |  | 0% → 100% | -84d → none |  | resources none → MBRT ADDED [16 h] |
| 2-2352 | REMOVE CABINET | 2024-04-05 → 2024-04-02 (-3d) | 2024-04-05 → 2024-04-02 (-3d) |  |  | -84d → -82d |  | resources none → MBRT ADDED [8 h] |
| 2-2357 | REMOVE FOUNDATIONS 1ST CORNER | 2024-04-08 → 2024-04-03 (-5d) | 2024-04-08 → 2024-04-03 (-5d) |  |  | -84d → -82d |  | resources none → MBRT ADDED [8 h] |
| 2-2362 | GRADE SIDEWALK 1ST CORNER | 2024-04-09 → 2024-04-04 (-5d) | 2024-04-09 → 2024-04-04 (-5d) |  |  | -84d → -82d |  | resources none → MBRT ADDED [8 h] |
| 2-2367 | CURB RAMPS 1ST CORNER | 2024-04-10 → 2024-04-05 (-5d) | 2024-04-11 → 2024-04-08 (-3d) |  |  | -84d → -82d |  | resources none → MBRT ADDED [16 h] |
| 2-2372 | SIDEWALKS 1ST CORNER | 2024-04-12 → 2024-04-09 (-3d) | 2024-04-12 → 2024-04-09 (-3d) |  |  | -84d → -82d |  | resources none → MBRT ADDED [8 h] |
| 2-2377 | REMOVE FOUNDATIONS 2ND CORNER | 2024-04-15 → 2024-04-10 (-5d) | 2024-04-15 → 2024-04-10 (-5d) |  |  | -84d → -82d |  | resources none → MBRT ADDED [8 h] |
| 2-2382 | GRADE SIDEWALKS 2ND CORNER | 2024-04-16 → 2024-04-11 (-5d) | 2024-04-16 → 2024-04-11 (-5d) |  |  | -84d → -82d |  | resources none → MBRT ADDED [8 h] |
| 2-2387 | CURB RAMPS 2ND CORNER | 2024-04-17 → 2024-04-12 (-5d) | 2024-04-18 → 2024-04-15 (-3d) |  |  | -84d → -82d |  | resources none → MBRT ADDED [16 h] |
| 2-2392 | SIDEWALKS 2ND CORNER | 2024-04-19 → 2024-04-16 (-3d) | 2024-04-19 → 2024-04-16 (-3d) |  |  | -84d → -82d |  | resources none → MBRT ADDED [8 h] |
| 2-2397 | REMOVE FOUNDATIONS 3RD CORNER | 2024-04-22 → 2024-04-17 (-5d) | 2024-04-22 → 2024-04-17 (-5d) |  |  | -84d → -82d |  | resources none → MBRT ADDED [8 h] |
| 2-2402 | GRADE SIDEWALKS 3RD CORNER | 2024-04-23 → 2024-04-18 (-5d) | 2024-04-23 → 2024-04-18 (-5d) |  |  | -84d → -82d |  | resources none → MBRT ADDED [8 h] |
| 2-2407 | CURB RAMPS 3RD CORNER | 2024-04-24 → 2024-04-19 (-5d) | 2024-04-25 → 2024-04-22 (-3d) |  |  | -84d → -82d |  | resources none → MBRT ADDED [16 h] |
| 2-2412 | SIDEWALKS 3RD CORNER | 2024-04-26 → 2024-04-23 (-3d) | 2024-04-26 → 2024-04-23 (-3d) |  |  | -84d → -82d |  | resources none → MBRT ADDED [8 h] |
| 2-2417 | REMOVE FOUNDATIONS 4TH CORNER | 2024-04-29 → 2024-04-24 (-5d) | 2024-04-29 → 2024-04-24 (-5d) |  |  | -84d → -82d |  | resources none → MBRT ADDED [8 h] |
| 2-2422 | GRADE SIDEWALKS 4TH CORNER | 2024-04-30 → 2024-04-25 (-5d) | 2024-04-30 → 2024-04-25 (-5d) |  |  | -84d → -82d |  | resources none → MBRT ADDED [8 h] |

| ID | Task | Start | Finish | Complete | Total float | Predecessors | Other |
| --- | --- | --- | --- | --- | --- | --- | --- |
| 2-2427 | CURB RAMPS 4TH CORNER | 2024-05-01 → 2024-04-26 (-5d) | 2024-05-02 → 2024-04-29 (-3d) |  | -84d → -82d |  | resources none → MBRT ADDED [16 h] |
| 2-2432 | SIDEWALKS 4TH CORNER | 2024-05-03 → 2024-05-14 (+11d) | 2024-05-03 → 2024-05-14 (+11d) |  | -84d → -92d | 2-2427 → 2-2427, 2-2337 | resources none → MBRT ADDED [8 h] |
| 3 | **MADISON AND 13TH** | 2024-01-24 → 2024-04-24 (+91d) | 2024-05-10 → 2024-08-01 (+83d) |  |  |  |  |
| 2-2442 | REMOVE POLES | 2024-01-24 → 2024-04-24 (+91d) | 2024-01-25 → 2024-04-25 (+91d) |  | -35d → -99d |  | resources none → MBRT ADDED [16 h] |
| 2-2447 | REMOVE CABINET | 2024-01-26 → 2024-04-26 (+91d) | 2024-01-26 → 2024-04-26 (+91d) |  | -35d → -99d |  | resources none → MBRT ADDED [8 h] |
| 2-2437 | REMOVE TEMP LIGHTING | 2024-04-11 → 2024-05-31 (+50d) | 2024-04-12 → 2024-06-03 (+52d) |  | -89d → -124d |  | resources none → MBRT ADDED [16 h] |
| 2-2452 | REMOVE FOUNDATIONS 1ST CORNER | 2024-04-15 → 2024-06-04 (+50d) | 2024-04-15 → 2024-06-04 (+50d) |  | -89d → -124d |  | resources none → MBRT ADDED [8 h] |
| 2-2457 | GRADE SIDEWALK 1ST CORNER | 2024-04-16 → 2024-06-05 (+50d) | 2024-04-16 → 2024-06-05 (+50d) |  | -89d → -124d |  | resources none → MBRT ADDED [8 h] |
| 2-2462 | CURB RAMPS 1ST CORNER | 2024-04-17 → 2024-06-06 (+50d) | 2024-04-18 → 2024-06-07 (+50d) |  | -89d → -124d |  | resources none → MBRT ADDED [16 h] |
| 2-2467 | SIDEWALKS 1ST CORNER | 2024-04-19 → 2024-06-10 (+52d) | 2024-04-19 → 2024-06-10 (+52d) |  | -89d → -124d |  | resources none → MBRT ADDED [8 h] |
| 2-2472 | REMOVE FOUNDATIONS 2ND CORNER | 2024-04-22 → 2024-06-11 (+50d) | 2024-04-22 → 2024-06-11 (+50d) |  | -89d → -124d |  | resources none → MBRT ADDED [8 h] |
| 2-2477 | GRADE SIDEWALKS 2ND CORNER | 2024-04-23 → 2024-06-12 (+50d) | 2024-04-23 → 2024-06-12 (+50d) |  | -89d → -124d |  | resources none → MBRT ADDED [8 h] |
| 2-2482 | CURB RAMPS 2ND CORNER | 2024-04-24 → 2024-06-13 (+50d) | 2024-04-25 → 2024-06-14 (+50d) |  | -89d → -124d |  | resources none → MBRT ADDED [16 h] |
| 2-2487 | SIDEWALKS 2ND CORNER | 2024-04-26 → 2024-06-17 (+52d) | 2024-04-26 → 2024-06-17 (+52d) |  | -89d → -124d |  | resources none → MBRT ADDED [8 h] |
| 2-2492 | REMOVE FOUNDATIONS 3RD CORNER | 2024-04-29 → 2024-06-18 (+50d) | 2024-04-29 → 2024-06-18 (+50d) |  | -89d → -124d |  | resources none → MBRT ADDED [8 h] |
| 2-2497 | GRADE SIDEWALKS 3RD CORNER | 2024-04-30 → 2024-06-19 (+50d) | 2024-04-30 → 2024-06-19 (+50d) |  | -89d → -124d |  | resources none → MBRT ADDED [8 h] |
| 2-2502 | CURB RAMPS 3RD CORNER | 2024-05-01 → 2024-06-20 (+50d) | 2024-05-02 → 2024-06-21 (+50d) |  | -89d → -124d |  | resources none → MBRT ADDED [16 h] |
| 2-2507 | SIDEWALKS 3RD CORNER | 2024-05-03 → 2024-06-24 (+52d) | 2024-05-03 → 2024-06-24 (+52d) |  | -89d → -124d |  | resources none → MBRT ADDED [8 h] |
| 2-2512 | REMOVE FOUNDATIONS 4TH CORNER | 2024-05-06 → 2024-06-25 (+50d) | 2024-05-06 → 2024-06-25 (+50d) |  | -89d → -124d |  | resources none → MBRT ADDED [8 h] |
| 2-2517 | GRADE SIDEWALKS 4TH CORNER | 2024-05-07 → 2024-06-26 (+50d) | 2024-05-07 → 2024-06-26 (+50d) |  | -89d → -124d |  | resources none → MBRT ADDED [8 h] |
| 2-2522 | CURB RAMPS 4TH CORNER | 2024-05-08 → 2024-06-27 (+50d) | 2024-05-09 → 2024-06-28 (+50d) |  | -89d → -124d |  | resources none → MBRT ADDED [16 h] |
| 2-2527 | SIDEWALKS 4TH CORNER | 2024-05-10 → 2024-08-01 (+83d) | 2024-05-10 → 2024-08-01 (+83d) |  | -89d → -147d | 2-2522 → 2-2522, 2-2257, 2-2432 | resources none → MBRT ADDED [8 h] |
| 4 | **MADISON AND 14TH** | 2024-05-24 → 2024-06-10 (+17d) | 2024-06-28 → 2024-07-12 (+14d) |  |  |  |  |
| 2-2532 | REMOVE TEMP LIGHTING | 2024-05-24 → 2024-06-10 (+17d) | 2024-05-28 → 2024-06-11 (+14d) |  | -123d → -133d |  | resources none → MBRT ADDED [16 h] |
| 2-2537 | REMOVE POLES | 2024-05-29 → 2024-06-12 (+14d) | 2024-05-30 → 2024-06-13 (+14d) |  | -123d → -133d |  | resources none → MBRT ADDED [16 h] |
| 2-2542 | REMOVE CABINET | 2024-05-31 → 2024-06-14 (+14d) | 2024-05-31 → 2024-06-14 (+14d) |  | -123d → -133d |  | resources none → MBRT ADDED [8 h] |
| 2-2547 | REMOVE FOUNDATIONS 1ST CORNER | 2024-06-03 → 2024-06-17 (+14d) | 2024-06-03 → 2024-06-17 (+14d) |  | -123d → -133d |  | resources none → MBRT ADDED [8 h] |
| 2-2552 | GRADE SIDEWALK 1ST CORNER | 2024-06-04 → 2024-06-18 (+14d) | 2024-06-04 → 2024-06-18 (+14d) |  | -123d → -133d |  | resources none → MBRT ADDED [8 h] |
| 2-2557 | CURB RAMPS 1ST CORNER | 2024-06-05 → 2024-06-19 (+14d) | 2024-06-06 → 2024-06-20 (+14d) |  | -123d → -133d |  | resources none → MBRT ADDED [16 h] |
| 2-2562 | SIDEWALKS 1ST CORNER | 2024-06-07 → 2024-06-21 (+14d) | 2024-06-07 → 2024-06-21 (+14d) |  | -123d → -133d |  | resources none → MBRT ADDED [8 h] |
| 2-2567 | REMOVE FOUNDATIONS 2ND CORNER | 2024-06-10 → 2024-06-24 (+14d) | 2024-06-10 → 2024-06-24 (+14d) |  | -123d → -133d |  | resources none → MBRT ADDED [8 h] |
| 2-2572 | GRADE SIDEWALKS 2ND CORNER | 2024-06-11 → 2024-06-25 (+14d) | 2024-06-11 → 2024-06-25 (+14d) |  | -123d → -133d |  | resources none → MBRT ADDED [8 h] |
| 2-2577 | CURB RAMPS 2ND CORNER | 2024-06-12 → 2024-06-26 (+14d) | 2024-06-13 → 2024-06-27 (+14d) |  | -123d → -133d |  | resources none → MBRT ADDED [16 h] |
| 2-2582 | SIDEWALKS 2ND CORNER | 2024-06-14 → 2024-06-28 (+14d) | 2024-06-14 → 2024-06-28 (+14d) |  | -123d → -133d |  | resources none → MBRT ADDED [8 h] |
| 2-2587 | REMOVE FOUNDATIONS 3RD CORNER | 2024-06-17 → 2024-07-01 (+14d) | 2024-06-17 → 2024-07-01 (+14d) |  | -123d → -133d |  | resources none → MBRT ADDED [8 h] |
| 2-2592 | GRADE SIDEWALKS 3RD CORNER | 2024-06-18 → 2024-07-02 (+14d) | 2024-06-18 → 2024-07-02 (+14d) |  | -123d → -133d |  | resources none → MBRT ADDED [8 h] |
| 2-2597 | CURB RAMPS 3RD CORNER | 2024-06-19 → 2024-07-03 (+14d) | 2024-06-20 → 2024-07-04 (+14d) |  | -123d → -133d |  | resources none → MBRT ADDED [16 h] |
| 2-2602 | SIDEWALKS 3RD CORNER | 2024-06-21 → 2024-07-05 (+14d) | 2024-06-21 → 2024-07-05 (+14d) |  | -123d → -133d |  | resources none → MBRT ADDED [8 h] |
| 2-2607 | REMOVE FOUNDATIONS 4TH CORNER | 2024-06-24 → 2024-07-08 (+14d) | 2024-06-24 → 2024-07-08 (+14d) |  | -123d → -133d |  | resources none → MBRT ADDED [8 h] |
| 2-2612 | GRADE SIDEWALKS 4TH CORNER | 2024-06-25 → 2024-07-09 (+14d) | 2024-06-25 → 2024-07-09 (+14d) |  | -123d → -133d |  | resources none → MBRT ADDED [8 h] |
| 2-2617 | CURB RAMPS 4TH CORNER | 2024-06-26 → 2024-07-10 (+14d) | 2024-06-27 → 2024-07-11 (+14d) |  | -123d → -133d |  | resources none → MBRT ADDED [16 h] |
| 2-2622 | SIDEWALKS 4TH CORNER | 2024-06-28 → 2024-07-12 (+14d) | 2024-06-28 → 2024-07-12 (+14d) |  | -123d → -133d |  | resources none → MBRT ADDED [8 h] |
| 5 | **MADISON AND 15TH** | 2024-02-13 → 2024-05-01 (+78d) | 2024-02-16 → 2024-05-06 (+80d) |  |  |  |  |
| 2-2627 | REMOVE SIGNAL CABINET | 2024-02-13 → 2024-05-01 (+78d) | 2024-02-13 → 2024-05-01 (+78d) |  | -30d → -85d |  | resources none → MBRT ADDED [8 h] |
| 2-2637 | REMOVE CABINET FOUNDATION | 2024-02-14 → 2024-05-02 (+78d) | 2024-02-14 → 2024-05-02 (+78d) |  | -30d → -85d |  | resources none → MBRT ADDED [8 h] |
| 2-2647 | GRADE SIDEWALK | 2024-02-15 → 2024-05-03 (+78d) | 2024-02-15 → 2024-05-03 (+78d) |  | -30d → -85d |  | resources none → MBRT ADDED [8 h] |
| 2-2657 | POUR SIDEWALK | 2024-02-16 → 2024-05-06 (+80d) | 2024-02-16 → 2024-05-06 (+80d) |  | -30d → -85d |  | resources none → MBRT ADDED [8 h] |
| 16 | **STATIONS** | 2023-11-27 → 2024-04-22 (+147d) | 2023-12-22 → 2024-05-17 (+147d) |  |  |  |  |
| 1 | **MADISON AND EAST UNION ST** | 2023-11-27 → 2024-04-22 (+147d) | 2023-12-22 → 2024-05-17 (+147d) |  |  |  |  |
| 2-1652 | INST SHELTER, MAD & EAST UNION ST | 2023-11-27 → 2024-04-22 (+147d) | 2023-12-04 → 2024-04-29 (+147d) |  | 7d → -94d |  | resources none → MBRT BASE [48 h] |
| 2-1653 | INST TEC PYLON, MAD & EAST UNION ST | 2023-12-05 → 2024-04-30 (+147d) | 2023-12-08 → 2024-05-03 (+147d) |  | 7d → -94d |  | resources none → MBRT BASE [32 h] |
| 2-1654 | INST AMENITIES, MAD & EAST UNION ST | 2023-12-11 → 2024-05-06 (+147d) | 2023-12-14 → 2024-05-09 (+147d) |  | 7d → -94d |  | resources none → MBRT BASE [32 h] |
| 2-1655 | INST RAILING, MAD & EAST UNION ST | 2023-12-15 → 2024-05-10 (+147d) | 2023-12-22 → 2024-05-17 (+147d) |  | 7d → -94d |  | resources none → MBRT BASE [48 h] |
| 17 | **REMANING OCS POLES** | 2024-06-03 → 2024-01-26 (-129d) | 2024-07-10 → 2024-02-02 (-159d) |  |  |  |  |
| 2-1657 | INST REMAINING OCS POLES, REMANING OCS POLES | 2024-06-03 → 2024-01-26 A (-129d) | 2024-07-10 → 2024-02-02 A (-159d) | 0% → 100% | -131d → none | 2-1379, 2-1641, OCS-0043, PMP-41, PMP-36, 2-2257, 2-2337, 2-2432 FF, 2-2527 FF → 2-1379, 2-1641, OCS-0043, PMP-41, PMP-36 | resources none → MBRT BASE [48 h] |
| 6 | **ZONE 3 - 15TH TO MLK** |  | 2024-05-30 → 2024-07-30 (+61d) |  |  |  |  |
| PCO101.01 | DSC 63-Zone 3 Unknown Clay Duct Bank |  |  |  |  | none → MS-0025 | resources none → MBRT DSC [8 h] |
| 3-1662 | POTHOLING FOUNDATIONS, POTHOLING FOUNDATIONS |  |  |  |  |  | resources none → MBRT BASE |
| 3-1663 | POTHOLE SUBMITAL REVIEW, POTHOLING FOUNDATIONS |  |  |  |  |  | resources none → MBRT BASE [72 h] |
| 3-1850 | FM 001 DEWATERING PH, WAITING ON OWNER DIRECTION |  |  |  |  |  | resources none → MBRT NEW [40 h] |
| 3-1671 | MAD AND 15TH, STORM |  |  |  |  |  | resources none → MBRT BASE [16 h] |
| 3-1885 | FM 037_DIRECTION REGARDING DEWATERING, STORM Z3 |  |  |  |  |  | resources none → MBRT NEW [8 h] |
| 3-1665 | STORM MH17 TO MH 15 (DENNY TO 20TH), STORM |  |  |  |  |  | resources none → MBRT BASE [152 h] |
| PCO059.01 | DSC 37-Existing Storm Pipe at MH 17 |  |  |  |  | none → MS-0025 | resources none → MBRT DSC [8 h] |
| PCO060.01 | DSC 38-Side Sewer Conflict Denny to 20th |  |  |  |  | none → MS-0025 | resources none → MBRT DSC [16 h] |
| PCO062.01 | DSC 39-Buried logs Storm MH 17 to MH 16 |  |  |  |  | none → MS-0025 | resources none → MBRT DSC [8 h] |
| PCO066.01 | DSC 42-Concrete foundation Storm Conflict MH 17 to MH 16 |  |  |  |  | none → MS-0025 | resources none → MBRT DSC [16 h] |
| 3-1683 | MAD AND 28TH, STORM |  |  |  |  |  | resources none → MBRT BASE [8 h] |
| 3-1684 | ARTHUR AND MLK, STORM |  |  |  |  |  | resources none → MBRT BASE [16 h] |
| 3-1685 | SIDE SEWER ARTHUR AND MLK, STORM |  |  |  |  |  | resources none → MBRT BASE [40 h] |

| ID | Task | Predecessors | Other |
| --- | --- | --- | --- |
| PCO072.01 | DSC 44-Unknown Duct Bank Storm 20th Ave intersection | none → MS-0025 | resources none → MBRT DSC [16 h] |
| 3-1666 | EXISTING SDMH2 TO MH11 (19TH TO 18TH), PRIOR TO DSC 054 |  | resources none → MBRT DSC [32 h] |
| 3-1675 | STORM MAD 20TH TO DENNY, STORM |  | resources none → MBRT BASE [232 h] |
| 3-1682 | MAD AND 27TH, STORM |  | resources none → MBRT BASE [16 h] |
| PCO081.01 | DSC 50-Concrete obstuctions Storm Mainline 18th to 19th | none → MS-0025 | resources none → MBRT DSC [72 h] |
| 3-1681 | MAD AND 26TH, STORM |  | resources none → MBRT BASE [40 h] |
| PCO087.01 | DSC 54-Side Sewer Conflict Storm STA 281+90 | none → MS-0025 | resources none → MBRT DSC [48 h] |
| 3-1678 | STORM MAD AND JOHN, STORM |  | resources none → MBRT BASE [8 h] |
| 3-1769 | WAITING FOR DIRECTION ON DSC 054 |  | resources none → MBRT DSC [40 h] |
| PCO094.01 | DSC 58-Inlet 28B Conflict | none → MS-0025 | resources none → MBRT DSC [8 h] |
| 3-1679 | STORM MAD AND 24TH, STORM |  | resources none → MBRT BASE [24 h] |
| 3-1677 | STORM MAD AND 22ND, STORM |  | resources none → MBRT BASE [8 h] |
| PCO100.01 | DSC 62-Inlet 34 connection existing WYE | none → MS-0025 | resources none → MBRT DSC [56 h] |
| 3-1674 | STORM MAD AND 20TH INLET & CB CONN, STORM |  | resources none → MBRT BASE [104 h] |
| 3-1676 | STORM MAD AND DENNY, STORM |  | resources none → MBRT BASE [16 h] |
| 3-1680 | STORM MAD AND 25TH, STORM |  | resources none → MBRT BASE [32 h] |
| 3-1686 | EXISTING SDMH2 TO MH11 (19TH TO 18TH), AFTER DSC 054 |  | resources none → MBRT DSC [112 h] |
| PCO110.01 | DSC 71-CDF/Concrete obstruction @ Storm Conn @ Madison/Thomas | none → MS-0025 | resources none → MBRT DSC [328 h] |
| PCO114.01 | DSC 74-Inlet 35 conflict | none → MS-0025 | resources none → MBRT DSC [8 h] |
| PCO124.01 | DSC 82-Inlett 33 conflict | none → MS-0025 | resources none → MBRT DSC [16 h] |
| PCO126.01 | DSC 84-CB-29 Connection Concrete Wall Obstruction | none → MS-0025 | resources none → MBRT DSC [48 h] |
| PCO127.01 | DSC 85-Inlet 30 Gas Line and Tree roots | none → MS-0025 | resources none → MBRT DSC [8 h] |
| 3-1672 | STORM MAD AND 18TH, STORM |  | resources none → MBRT BASE [56 h] |
| PCO129.01 | DSC 87-Inlet 27A Conflict | none → MS-0025 | resources none → MBRT DSC [8 h] |
| 3-1667 | MH 12 TO EXISTING MH ON OLIVE & 18TH, SEWER |  | resources none → MBRT BASE [16 h] |
| 3-1673 | STORM MAD AND 19TH, STORM |  | resources none → MBRT BASE [8 h] |
| PCO133.01 | DSC 90-Gas Main conflict with Sewer MH at 18th | none → MS-0025 | resources none → MBRT DSC [8 h] |
| 3-1708 | DSC 090 GAS MAIN CONFLICT WITH SEWER LINE MH12 |  | resources none → MBRT DSC [40 h] |
| PCO134.01 | DSC 91-Leaking waterline at inlet 25B | none → MS-0025 | resources none → MBRT DSC [8 h] |
| 3-1788 | COMPLETE SDMH2 TO MH ON OLIVE & 18TH, AFTER DSC 090 |  | resources none → MBRT DSC [16 h] |
| PCO144.01 | DSC 101-Tree Roots Conflict Sewer 18th | none → MS-0025 | resources none → MBRT DSC [8 h] |
| 3-1828 | HUB COORDINATION & SHORING DELAY WITH PRIVATE CONTRACTOR |  | resources none → MBRT NEW [40 h] |
| 3-1668 | INST SHORING FOR STORM & PINE, STORM |  | resources none → MBRT BASE [88 h] |
| PCO156.01 | DSC 110-Gas Line Conflict Detention Pipe Pine Street | none → MS-0025 | resources none → MBRT DSC [48 h] |
| PCO158.01 | DSC 111-Unknown abandoned Gas line conflict slide rail | none → MS-0025 | resources none → MBRT DSC [8 h] |
| PCO167.01 | DSC 116-Inlet 37C conflict | none → MS-0025 | resources none → MBRT DSC [8 h] |
| 3-1669 | MH 10C TO MH10 (PINE ST), STORM |  | resources none → MBRT BASE [96 h] |
| PCO168.01 | DSC 117-Inlet 32 Root conflict | none → MS-0025 | resources none → MBRT DSC [56 h] |
| 3-1670 | REMOVE SHORING, STORM |  | resources none → MBRT BASE [72 h] |
| PCO192.01 | DSC 137-Gas line Conflict MH 10A | none → MS-0025 | resources none → MBRT DSC [40 h] |
| PCO199.01 | DSC 142-Utility Conflicts MH 10 | none → MS-0025 | resources none → MBRT DSC [32 h] |
| PCO203.01 | DSC 146-Unlocated Conduites MH10 | none → MS-0025 | resources none → MBRT DSC [8 h] |
| PCO205.01 | DSC 147-2nd unlocated side sewer MH10 | none → MS-0025 | resources none → MBRT DSC [8 h] |
| PCO282.01 | DSC 207-CB10 - Utility Conflict 3" Steel Line | none → MS-0025 | resources none → MBRT DSC [8 h] |
| PCO424.01 | DSC 310-Unknown Conduit conflict with Storm Denny | none → MS-0025 | resources none → MBRT DSC [32 h] |
| 3-1688 | INST TEMP MAIN, SERVICES & LATERALS, T08 & T09, STAGE 6 (18TH TO 19TH) |  | resources none → MBRT BASE [16 h] |
| 3-1689 | FLUSH, TEST & DISINFECT TEMP MAIN, STAGE 6 (18TH TO 19TH) |  | resources none → MBRT BASE [16 h] |
| 3-1690 | BAC T RESULTS, STAGE 6 (18TH TO 19TH) |  | resources none → MBRT BASE [16 h] |
| 3-1696 | INST MAIN LINE FROM 18TH TO 19TH, STAGE 6 (18TH TO 19TH) |  | resources none → MBRT BASE [88 h] |
| 3-1691 | 5d NOTICE FOR SPU, STAGE 6 (18TH TO 19TH) |  | resources none → MBRT BASE |
| PCO150.01 | DSC 107-CC18 Relocation at 18th | none → MS-0025 | resources none → MBRT DSC [120 h] |
| 3-1692 | SPU TAP MAIN AT CC17 & CONNECT TO T08, STAGE 6 (18TH TO 19TH) |  | resources none → MBRT BASE [8 h] |
| 3-1693 | SPU TAP MAIN AT CC19 & CONNECT TO T09, STAGE 6 (18TH TO 19TH) |  | resources none → MBRT BASE [8 h] |
| 3-1694 | SPU TRANSFER SERVICES TO TEMP MAIN, STAGE 6 (18TH TO 19TH) |  | resources none → MBRT BASE [8 h] |
| 3-1695 | SPU CUT & CAP AT CC16, CC17 & CC19, STAGE 6 (18TH TO 19TH) |  | resources none → MBRT BASE [8 h] |
| PCO162.01 | DSC 113-Conduit Laying on top of watermain at 18th & Madison | none → MS-0025 | resources none → MBRT DSC [32 h] |
| 3-1697 | INST MAIN ON 18TH, STAGE 6 (18TH TO 19TH) |  | resources none → MBRT BASE [16 h] |
| PCO165.01 | DSC 115-Valve Vault conflcit stage 6 | none → MS-0025 | resources none → MBRT DSC [8 h] |
| 3-1698 | INST FIRE HYDRANTS, STAGE 6 (18TH TO 19TH) |  | resources none → MBRT BASE [8 h] |
| 3-1699 | INST THRUST BLOCKS, STAGE 6 (18TH TO 19TH) |  | resources none → MBRT BASE [8 h] |
| 3-1700 | INST THRUST COLLAR, STAGE 6 (18TH TO 19TH) |  | resources none → MBRT BASE [32 h] |
| 3-1701 | FLUSH, TEST & DISINFECT MAIN, STAGE 6 (18TH TO 19TH) |  | resources none → MBRT BASE [16 h] |
| 3-1702 | BAC T RESULTS, STAGE 6 (18TH TO 19TH) |  | resources none → MBRT BASE [24 h] |
| 3-1703 | 5d NOTICE FOR SPU, STAGE 6 (18TH TO 19TH) |  | resources none → MBRT BASE |
| 3-1704 | SPU CONNECT TO CC16 & CC18, STAGE 6 (18TH TO 19TH) |  | resources none → MBRT BASE [8 h] |
| 3-1705 | SPU TRANFER SERVICES, STAGE 6 (18TH TO 19TH) |  | resources none → MBRT BASE [8 h] |
| 3-1706 | SPU CONNECT TO CC17, STAGE 6 (18TH TO 19TH) |  | resources none → MBRT BASE [8 h] |
| 3-1707 | REMOVE TEMP MAIN, STAGE 6 (18TH TO 19TH) |  | resources none → MBRT BASE [8 h] |
| PCO185.01 | DSC 131-CC20 North Side 19th conflict | none → MS-0025 | was named *DSC 131-CC20 North Side 19th conflict; resources none → MBRT DSC [8 h] |
| 3-1709 | SPU CUT & CAPCC20, CC21 & CC22, STAGE 7 (19TH TO 20TH) |  | resources none → MBRT BASE [8 h] |

| ID | Task | Predecessors | Other |
| --- | --- | --- | --- |
| 3-1710 | INST MAIN 19TH TO 20TH, STAGE 7 (19TH TO 20TH) |  | resources none → MBRT BASE [40 h] |
| PCO216.01 | DSC 154-Unknown water service stage 7 | none → MS-0025 | resources none → MBRT DSC [8 h] |
| 3-1711 | INST MAIN ON 19TH, STAGE 7 (19TH TO 20TH) |  | resources none → MBRT BASE [40 h] |
| PCO227.01 | DSC 162-Waterline @ 19th Conflict | none → MS-0025 | resources none → MBRT DSC [72 h] |
| PCO233.01 | DSC 168-Unknown Unlocated Comm Line at 19th | none → MS-0025 | resources none → MBRT DSC [8 h] |
| 3-1712 | INST FIRE HYDRANTS, STAGE 7 (19TH TO 20TH) |  | resources none → MBRT BASE [8 h] |
| 3-1713 | INST THRUST BLOCKS, STAGE 7 (19TH TO 20TH) |  | resources none → MBRT BASE [8 h] |
| 3-1714 | INST THRUST COLLAR, STAGE 7 (19TH TO 20TH) |  | resources none → MBRT BASE [8 h] |
| 3-1715 | FLUSH, TEST & DISINFECT MAIN, STAGE 7 (19TH TO 20TH) |  | resources none → MBRT BASE [16 h] |
| 3-1716 | BAC T RESULTS, STAGE 7 (19TH TO 20TH) |  | resources none → MBRT BASE [16 h] |
| 3-1717 | 5d NOTICE FOR SPU, STAGE 7 (19TH TO 20TH) |  | resources none → MBRT BASE |
| 3-1718 | SPU CONNECT MAIN AT 283+40, CC20 & CC21, STAGE 7 (19TH TO 20TH) |  | resources none → MBRT BASE [8 h] |
| 3-1719 | SPU TRANSFER SERVICES, STAGE 7 (19TH TO 20TH) |  | resources none → MBRT BASE [8 h] |
| PCO247.01 | DSC 180-DSC Stage 7 at 20th 12" to 8" | none → MS-0025 | resources none → MBRT DSC [8 h] |
| 3-1720 | SPU INST PRE FLUSHED PIPE AT 90 BEND TO EX MAIN ON 20TH, STAGE 7 (19TH TO 20TH) |  | resources none → MBRT BASE [8 h] |
| 3-1840 | DELAY DUE TO CHANGING PIPE TO 8INCH AT 20TH |  | resources none → MBRT BASE [56 h] |
| 3-1920 | COMPLETE STAGE 7 AFTER DELAY |  | resources none → MBRT NEW [40 h] |
| PCO302.01 | DSC 223-unknown water services Stage 8 | none → MS-0025 | resources none → MBRT DSC [136 h] |
| PCO304.01 | DSC 224-Unknown CDF in conflict with Stage 8 watermain | none → MS-0025 | resources none → MBRT DSC [64 h] |
| 3-1722 | SPU CUT & CAP CC23 & CC24, STAGE 8 (20TH TO DENNY) |  | resources none → MBRT BASE [8 h] |
| PCO305.01 | DSC 225-Unlocated 2" Rigid Conduit - @ SCL trench | none → MS-0025 | resources none → MBRT DSC [8 h] |
| PCO306.01 | DSC 226-Ductbank Conflict with Watermain Stage 8 | none → MS-0025 | resources none → MBRT DSC [48 h] |
| PCO307.01 | DSC 227-Gas Pothole Conflict - Stage 8 Watermain | none → MS-0025 | resources none → MBRT DSC [88 h] |
| 3-1723 | INST MAIN 20TH TO WEST OF DENNY, STAGE 8 (20TH TO DENNY) |  | resources none → MBRT BASE [40 h] |
| PCO314.01 | DSC 231-Contaminated Soils 20th-22nd | none → MS-0025 | resources none → MBRT DSC [112 h] |
| 3-1725 | INST THRUST BLOCKS, STAGE 8 (20TH TO DENNY) |  | resources none → MBRT BASE [8 h] |
| 3-1726 | FLUSH, TEST & DISINFECT MAIN, STAGE 8 (20TH TO DENNY) |  | resources none → MBRT BASE [16 h] |
| 3-1727 | BAC T RESULTS, STAGE 8 (20TH TO DENNY) |  | resources none → MBRT BASE [24 h] |
| 3-1728 | 5d NOTICE FOR SPU, STAGE 8 (20TH TO DENNY) |  | resources none → MBRT BASE |
| 3-1724 | INST FIRE HYDRANTS, STAGE 8 (20TH TO DENNY) |  | resources none → MBRT BASE [8 h] |
| 3-1729 | SPU CONNECT NEW MAIN, STAGE 8 (20TH TO DENNY) |  | resources none → MBRT BASE [8 h] |
| 3-1730 | SPU TRANSFER SERVICES, STAGE 8 (20TH TO DENNY) |  | resources none → MBRT BASE [32 h] |
| PCO163.01 | DSC 114-Water Service Obstruction STA 299+50 | none → MS-0025 | was named *DSC 114-Water Service Obstruction STA 299+50; resources none → MBRT DSC [40 h] |
| 3-1742 | INST NEW MAIN FROM WEST OF DENNY TO 23RD, STAGE 9 (DENNY TO 23RD) |  | resources none → MBRT BASE [288 h] |
| 3-1732 | INST TEMP MAIN, SERVICES & LATERALS, T11, T12 & T13, STAGE 9 (DENNY TO 23RD) |  | resources none → MBRT BASE [24 h] |
| 3-1733 | FLUSH, TEST & DISINFECT TEMP MAIN, STAGE 9 (DENNY TO 23RD) |  | resources none → MBRT BASE [16 h] |
| 3-1734 | BAC T RESULTS, STAGE 9 (DENNY TO 23RD) |  | resources none → MBRT BASE [24 h] |
| 3-1735 | 5d NOTICE FOR SPU, STAGE 9 (DENNY TO 23RD) |  | resources none → MBRT BASE |
| 3-1736 | SPU TAP MAIN AT CC28 FOR TEMP MAIN T11, STAGE 9 (DENNY TO 23RD) |  | resources none → MBRT BASE [24 h] |
| 3-1737 | TRANSFER SERVICES TO T11, STAGE 9 (DENNY TO 23RD) |  | resources none → MBRT BASE [24 h] |
| 3-1738 | SPU CUT & CAP C29 & INST TEMP MAIN AT T12 & T13, STAGE 9 (DENNY TO 23RD) |  | resources none → MBRT BASE [24 h] |
| 3-1739 | SPU CUT & CAP CC30, STAGE 9 (DENNY TO 23RD) |  | resources none → MBRT BASE [24 h] |
| 3-1740 | SPU TRANSFER SERVICESS TO T12 & T13, STAGE 9 (DENNY TO 23RD) |  | resources none → MBRT BASE [24 h] |
| 3-1741 | SPU CUT & CAP AT CC26, CC27, CC28 & CC31, STAGE 9 (DENNY TO 23RD) |  | resources none → MBRT BASE [24 h] |
| PCO284.01 | DSC 209-Stage 9 Water - Ductbank Conflict | none → MS-0025 | resources none → MBRT DSC [16 h] |
| PCO286.01 | DSC 211-Stage 9 Water - CDF encased Gas line | none → MS-0025 | resources none → MBRT DSC [8 h] |
| PCO293.01 | DSC 215-Stage 9 Gas and Conduit Conflict at STA295+05 | none → MS-0025 | resources none → MBRT DSC [24 h] |
| 3-1743 | INST MAIN ON DENNY, STAGE 9 (DENNY TO 23RD) |  | resources none → MBRT BASE [16 h] |
| 3-1744 | INST MAIN ON 22ND, STAGE 9 (DENNY TO 23RD) |  | resources none → MBRT BASE [8 h] |
| 3-1747 | INST THRUST BLOCKS, STAGE 9 (DENNY TO 23RD) |  | resources none → MBRT BASE [8 h] |
| 3-1745 | INST MAIN ON 23RD, STAGE 9 (DENNY TO 23RD) |  | resources none → MBRT BASE [8 h] |
| 3-1748 | INST THRUST COLLARS, STAGE 9 (DENNY TO 23RD) |  | resources none → MBRT BASE [16 h] |
| 3-1749 | FLUSH, TEST & DISINFECT MAIN, STAGE 9 (DENNY TO 23RD) |  | resources none → MBRT BASE [16 h] |
| 3-1750 | BAC T RESULTS, STAGE 9 (DENNY TO 23RD) |  | resources none → MBRT BASE [24 h] |
| 3-1751 | 5d NOTICE FOR SPU, STAGE 9 (DENNY TO 23RD) |  | resources none → MBRT BASE |
| PCO335.01 | DSC 245-unknown water service | none → MS-0025 | resources none → MBRT DSC [56 h] |
| PCO336.01 | DSC 246-Concrete obstrution stage 9 tie in | none → MS-0025 | resources none → MBRT DSC [56 h] |
| 3-1746 | INST HYDRANTS, STAGE 9 (DENNY TO 23RD) |  | resources none → MBRT BASE [16 h] |
| 3-1752 | SPU CONNECT NEW MAIN AT 291+40 & CC27, STAGE 9 (DENNY TO 23RD) |  | resources none → MBRT BASE [8 h] |
| 3-1753 | SPU TRANSFER SERVICES, STAGE 9 (DENNY TO 23RD) |  | resources none → MBRT BASE [24 h] |
| 3-1754 | SPU CONNECT AT CC28, CC29, CC30 & CC31, STAGE 9 (DENNY TO 23RD) |  | resources none → MBRT BASE [8 h] |
| 3-1755 | REM TEMP MAIN, STAGE 9 (DENNY TO 23RD) |  | resources none → MBRT BASE [16 h] |
| 3-1757 | SPU CUT & CAP CC32A, CC32B, CC33, CC34, CC35A & CC35B, STAGE 10 (23RD TO 24TH) |  | resources none → MBRT BASE [64 h] |
| 3-1758 | INST MAIN 23RD TO 24TH, STAGE 10 (23RD TO 24TH) |  | resources none → MBRT BASE [112 h] |
| PCO128.01 | DSC 86-Ductbank conflict phase 10 waterline STA 303+20 | none → MS-0025 | resources none → MBRT DSC [48 h] |
| PCO135.01 | DSC 92-Gas Main conflict with Waterline at 24th South side | none → MS-0025 | resources none → MBRT DSC [16 h] |
| 3-1759 | INST MAIN AT 24TH, STAGE 10 (23RD TO 24TH) |  | resources none → MBRT BASE [48 h] |
| PCO140.01 | DSC 97-Watermain conflict 24th Ave north side | none → MS-0025 | resources none → MBRT DSC [8 h] |
| PCO147.01 | DSC 104-Concrete Obstructions deaper than 18" Waterline conflict east of 23rd | none → MS-0025 | resources none → MBRT DSC [32 h] |
| PCO149.01 | DSC 106-Tree Conflict Waterline Stage 10 | none → MS-0025 | resources none → MBRT DSC [8 h] |

| ID | Task | Predecessors | Other |
| --- | --- | --- | --- |
| 3-1761 | INST THRUST BLOCKS, STAGE 10 (23RD TO 24TH) |  | resources none → MBRT BASE [8 h] |
| PCO151.01 | DSC 108-unknown utility conflict waterline TEE zone 10 | none → MS-0025 | resources none → MBRT DSC [8 h] |
| 3-1762 | INST THRUST COLLARS, STAGE 10 (23RD TO 24TH) |  | resources none → MBRT BASE [8 h] |
| 3-1763 | FLUSH, TEST & DISINFECT MAIN, STAGE 10 (23RD TO 24TH) |  | resources none → MBRT BASE [16 h] |
| PCO155.01 | DSC 109-Unlocated unmarked water service STA 281+00 | none → MS-0025 | resources none → MBRT DSC [8 h] |
| 3-1764 | BAC T RESULTS, STAGE 10 (23RD TO 24TH) |  | resources none → MBRT BASE [24 h] |
| 3-1765 | 5d NOTICE FOR SPU, STAGE 10 (23RD TO 24TH) |  | resources none → MBRT BASE |
| 3-1766 | SPU CONECT AT CC32A, STAGE 10 (23RD TO 24TH) |  | resources none → MBRT BASE [8 h] |
| 3-1767 | SPU TRANSFER SERVICES, STAGE 10 (23RD TO 24TH) |  | resources none → MBRT BASE [16 h] |
| 3-1768 | SPU CONNECT AT CC33, CC34, CC35A & CC49, STAGE 10 (23RD TO 24TH) |  | resources none → MBRT BASE [80 h] |
| 3-1760 | INST HYDRANTS, STAGE 10 (23RD TO 24TH) |  | resources none → MBRT BASE [8 h] |
| 3-1770 | INST TEMP MAIN, SERVICES & LATERALS, T14, STAGE 11 (24TH TO 25TH) |  | resources none → MBRT BASE [8 h] |
| 3-1771 | FLUSH, TEST & DISINFECT MAIN, STAGE 11 (24TH TO 25TH) |  | resources none → MBRT BASE [16 h] |
| 3-1772 | BAC T RESULTS, STAGE 11 (24TH TO 25TH) |  | resources none → MBRT BASE [24 h] |
| 3-1773 | 5d NOTICE FOR SPU, STAGE 11 (24TH TO 25TH) |  | resources none → MBRT BASE |
| 3-1774 | SPU CUT & CAP AT CC36 & CONECT TO T14, STAGE 11 (24TH TO 25TH) |  | resources none → MBRT BASE [8 h] |
| 3-1775 | SPU TRANSER SERVICES TO T14, STAGE 11 (24TH TO 25TH) |  | resources none → MBRT BASE [8 h] |
| 3-1776 | SPU CUT & CAP CC37, CC38 & CC39, STAGE 11 (24TH TO 25TH) |  | resources none → MBRT BASE [8 h] |
| 3-1777 | INST MAIN 24TH TO 25TH, STAGE 11 (24TH TO 25TH) |  | resources none → MBRT BASE [256 h] |
| PCO188.01 | DSC 135-Unknown Unlocated Utility Waterline 308+00 | none → MS-0025 | resources none → MBRT DSC [16 h] |
| 3-1780 | INST THRUST BLOCKS, STAGE 11 (24TH TO 25TH) |  | resources none → MBRT BASE [16 h] |
| 3-1778 | INST MAIN AT 25TH, STAGE 11 (24TH TO 25TH) |  | resources none → MBRT BASE [8 h] |
| 3-1779 | INST MAIN AT STA 310+00, STAGE 11 (24TH TO 25TH) |  | resources none → MBRT BASE |
| 3-1781 | FLUSH, TEST & DISINFECT MAIN, STAGE 11 (24TH TO 25TH) |  | resources none → MBRT BASE [8 h] |
| 3-1782 | BAC T RESULTS, STAGE 11 (24TH TO 25TH) |  | resources none → MBRT BASE [24 h] |
| 3-1783 | 5d NOTICE FOR SPU, STAGE 11 (24TH TO 25TH) |  | resources none → MBRT BASE |
| PCO308.01 | DSC 228-Unknown Unlocated utilities by stage 11 south side connection | none → MS-0025 | resources none → MBRT DSC [8 h] |
| 3-1784 | SPU CONNECT AT 307+15, STAGE 11 (24TH TO 25TH) |  | resources none → MBRT BASE [8 h] |
| 3-1785 | SPU TRANSFER SERVICES, STAGE 11 (24TH TO 25TH) |  | resources none → MBRT BASE [8 h] |
| 3-1786 | SPU CONECT AT CC36, CC37 ANC CC38, STAGE 11 (24TH TO 25TH) |  | resources none → MBRT BASE [8 h] |
| 3-1787 | REM TEMP MAIN, STAGE 11 (24TH TO 25TH) |  | resources none → MBRT BASE [8 h] |
| 3-1789 | INST TEMP MAIN, SERVICES & LATERALS, T15, STAGE 12 (ST 311+00 TO 26TH) |  | resources none → MBRT BASE [24 h] |
| 3-1790 | FLUSH, TEST & DISINFECT TEMP MAIN, STAGE 12 (ST 311+00 TO 26TH) |  | resources none → MBRT BASE [16 h] |
| 3-1791 | BAC T RESULTS, STAGE 12 (ST 311+00 TO 26TH) |  | resources none → MBRT BASE [24 h] |
| 3-1792 | 5d NOTICE FOR SPU, STAGE 12 (ST 311+00 TO 26TH) |  | resources none → MBRT BASE |
| 3-1793 | SPU CONNECT TEMP MAIN TO FIRE HYDRANT, STAGE 12 (ST 311+00 TO 26TH) |  | resources none → MBRT BASE [8 h] |
| 3-1794 | SPU TRANSFER SERVICES TO TEMP MAIN, STAGE 12 (ST 311+00 TO 26TH) |  | resources none → MBRT BASE [8 h] |
| 3-1795 | SPU CUT & CAP CC40, STAGE 12 (ST 311+00 TO 26TH) |  | resources none → MBRT BASE [8 h] |
| 3-1796 | INST NEW MAIN STA 311+00 TO 312+58, STAGE 12 (ST 311+00 TO 26TH) |  | resources none → MBRT BASE [24 h] |
| 3-1797 | INST THRUST BLOCKS, STAGE 12 (ST 311+00 TO 26TH) |  | resources none → MBRT BASE [8 h] |
| 3-1798 | FLUSH, TEST & DISINFECT MAIN, STAGE 12 (ST 311+00 TO 26TH) |  | resources none → MBRT BASE [16 h] |
| 3-1799 | BAC T RESULTS, STAGE 12 (ST 311+00 TO 26TH) |  | resources none → MBRT BASE [24 h] |
| 3-1800 | 5d NOTICE FOR SPU, STAGE 12 (ST 311+00 TO 26TH) |  | resources none → MBRT BASE |
| 3-2605 | CONNECT NEW MAIN DELAY (SPU WOULD NOT CONNECT DUE TO LOSS OF <2GAL OF WATER) |  | resources none → MBRT NEW [8 h] |
| 3-2610 | RE-FLUSH NEW MAIN (SPU DELAY) |  | resources none → MBRT NEW [16 h] |
| 3-2615 | RE-BAC-T TEST NEW MAIN (SPU DELAY) |  | resources none → MBRT NEW [24 h] |
| 3-2620 | 5 DAY WAIT FOR SPU (SPU DELAY) |  | resources none → MBRT NEW [40 h] |
| 3-1801 | SPU CONNECT NEW MAIN, STAGE 12 (ST 311+00 TO 26TH) |  | resources none → MBRT BASE |
| 3-1802 | SPU TRANSFER SERVICES, STAGE 12 (ST 311+00 TO 26TH) - PRIOR TO DELAY |  | resources none → MBRT BASE |
| 3-2625 | SPU TRANSFER SERVICES DELAY - SPU CREWS LEFT WITHOUT FINISHING WORK |  | resources none → MBRT NEW [8 h] |
| PCO431.01 | DSC 314-Backside of Service leaking Stage 12 | none → MS-0025 | resources none → MBRT DSC [8 h] |
| 3-2630 | SPU TRANSFER SERVICES - AFTER DELAY |  | resources none → MBRT NEW [8 h] |
| 3-1803 | REM TEM MAIN, STAGE 12 (ST 311+00 TO 26TH) |  | resources none → MBRT BASE [8 h] |
| 3-2585 | INSTALL TEMP MAIN (CHANGE) |  | resources none → MBRT NEW [8 h] |
| 3-2590 | FLUSH AND TEST TEMP MAIN |  | resources none → MBRT NEW [8 h] |
| 3-2595 | BAC-T RESULTS |  | resources none → MBRT NEW [8 h] |
| 3-2635 | 5 DAY WAIT FOR SPU |  | resources none → MBRT NEW [8 h] |
| 3-2600 | DELAY WAITING FOR SUPPORT SPU TO CONNECT TO TEMP MAIN |  | resources none → MBRT NEW [8 h] |
| 3-2640 | SUPPORT SPU TO CONNECT TO TEMP MAIN AFTER DELAY |  | resources none → MBRT NEW [24 h] |
| 3-1805 | SPU CUT & CAP AT CC43, STAGE 13 (26TH TO MLK) |  | resources none → MBRT BASE |
| 3-1806 | INST NEW MAIN 26TH TO MLK, STAGE 13 (26TH TO MLK) |  | resources none → MBRT BASE [120 h] |
| PCO522.01 | DSC 374-Stage 13 Gas line Conflict | none → MS-0025 | resources none → MBRT DSC [8 h] |
| PCO527.01 | DSC 375-6 Inch Clay Storm Line Stage 13 | none → MS-0025 | resources none → MBRT DSC [8 h] |
| PCO548.01 | DSC 385-MLK Stage 13 CDF conflict | none → MS-0025 | resources none → MBRT DSC [64 h] |
| 3-1807 | INST MAIN AT 26TH, STAGE 13 (26TH TO MLK) |  | resources none → MBRT BASE [16 h] |
| 3-1808 | INST MAIN AT 27TH, STAGE 13 (26TH TO MLK) |  | resources none → MBRT BASE [16 h] |
| 3-1809 | INST THRUST BLOCKS, STAGE 13 (26TH TO MLK) |  | resources none → MBRT BASE [8 h] |
| 3-1810 | FLUSH, TEST & DISINFECT MAIN, STAGE 13 (26TH TO MLK) |  | resources none → MBRT BASE [16 h] |
| 3-1811 | BAC T RESULTS, STAGE 13 (26TH TO MLK) |  | resources none → MBRT BASE [24 h] |
| 3-1812 | 5d NOTICE FOR SPU, STAGE 13 (26TH TO MLK) |  | resources none → MBRT BASE |

| ID | Task | Finish | Predecessors | Other |
| --- | --- | --- | --- | --- |
| 3-1813 | SPU CONNECT NEW MAIN AT CC41, CC42 & CC43, STAGE 13 (26TH TO MLK) |  |  | resources none → MBRT BASE [8 h] |
| 3-1814 | SPU TRANSFER SERVICES, STAGE 13 (26TH TO MLK) |  |  | resources none → MBRT BASE [32 h] |
| 3-3320 | OWNER CAUSED DELAY CONNECTION AT 26TH |  |  | resources none → MBRT NEW [8 h] |
| 3-1815 | SPU CONNECT AT 320+30, STAGE 13 (26TH TO MLK) |  |  | resources none → MBRT BASE |
| 3-1817 | SPU CUT & CAP CC44 & CC45 & PROVIDE TEMP SERVICE 085, STAGE 14 ARTHUR/MLK/E HARRISON |  |  | resources none → MBRT BASE [8 h] |
| 3-1818 | SPU CUT & CAP AT CC46 & TEMP SERVICE 088, STAGE 14 ARTHUR/MLK/E HARRISON |  |  | resources none → MBRT BASE [8 h] |
| 3-1819 | INST MAIN LINE, STAGE 14 ARTHUR/MLK/E HARRISON |  |  | resources none → MBRT BASE [32 h] |
| 3-1820 | INST FIRE HYDRANT, STAGE 14 ARTHUR/MLK/E HARRISON |  |  | resources none → MBRT BASE [8 h] |
| 3-1821 | INST THRUST BLOCKS, STAGE 14 ARTHUR/MLK/E HARRISON |  |  | resources none → MBRT BASE [8 h] |
| 3-1822 | FLUSH, TEST & DISINFECT MAIN, STAGE 14 ARTHUR/MLK/E HARRISON |  |  | resources none → MBRT BASE [16 h] |
| 3-1823 | BAC T RESULTS, STAGE 14 ARTHUR/MLK/E HARRISON |  |  | resources none → MBRT BASE [24 h] |
| 3-1824 | 5d NOTICE FOR SPU, STAGE 14 ARTHUR/MLK/E HARRISON |  |  | resources none → MBRT BASE |
| 3-1825 | SPU CONNECT AT CC45, STAGE 14 ARTHUR/MLK/E HARRISON |  |  | resources none → MBRT BASE [8 h] |
| 3-1826 | SPU CONNECT AT CC44 & CC46, STAGE 14 ARTHUR/MLK/E HARRISON |  |  | resources none → MBRT BASE [8 h] |
| 3-1827 | SPU CONNECT SERVICES & REM TEMP SERVICES, STAGE 14 ARTHUR/MLK/E HARRISON |  |  | resources none → MBRT BASE [8 h] |
| 3-1829 | MAD AND 16TH, TEMP SIGNALS |  |  | resources none → MBRT BASE [48 h] |
| 3-1830 | MAD AND 17TH, TEMP SIGNALS |  |  | resources none → MBRT BASE [48 h] |
| 3-1832 | MAD AND 19TH, TEMP SIGNALS |  |  | resources none → MBRT BASE [8 h] |
| 3-1833 | MAD AND 20TH, TEMP SIGNALS |  |  | resources none → MBRT BASE [8 h] |
| 3-1834 | MAD AND 22ND(DENNY), TEMP SIGNALS |  |  | resources none → MBRT BASE [16 h] |
| PCO142.01 | DSC 99-Exposed Wire SDOT Juntion Box 19th |  | none → MS-0025 | resources none → MBRT DSC [8 h] |
| PCO143.01 | DSC 100-Service and Interconnect 19th same box |  | none → MS-0025 | resources none → MBRT DSC [40 h] |
| 3-1838 | MAD AND JOHN, TEMP SIGNALS |  |  | resources none → MBRT BASE [8 h] |
| 3-1839 | MAD AND MLK, TEMP SIGNALS |  |  | resources none → MBRT BASE [16 h] |
| 3-1835 | MAD AND 23RD, TEMP SIGNALS |  |  | resources none → MBRT BASE [16 h] |
| 3-1837 | MAD AND 25TH, TEMP SIGNALS |  |  | resources none → MBRT BASE [16 h] |
| 5 | **ROADWAY WORK** | 2023-09-28 → 2024-02-09 (+134d) |  |  |
| 1 | **ROADWAY 15TH TO MLK BETWEEN INTERSECTIONS** | 2023-09-28 → 2024-02-09 (+134d) |  |  |
| 3-1844 | DEMO ROAD - COMMON EX - TYPE 2, 15TH TO 16TH NORTH SIDE |  |  | resources none → MBRT BASE [32 h] |
| 3-1845 | CONDUIT RD CROSSING, 15TH TO 16TH NORTH SIDE |  |  | resources none → MBRT BASE [32 h] |
| 3-1846 | ROADWAY PAVING - 2 POURS, 15TH TO 16TH NORTH SIDE |  |  | resources none → MBRT BASE [32 h] |
| 3-1847 | CONCRETE CURE, 15TH TO 16TH NORTH SIDE |  |  | resources none → MBRT BASE |
| 3-1848 | F/P CURB, 15TH TO 16TH NORTH SIDE |  |  | resources none → MBRT BASE [16 h] |
| 3-1849 | TEMP PATCH, 15TH TO 16TH NORTH SIDE |  |  | resources none → MBRT BASE [8 h] |
| PCO025.01 | DSC 16-Existing storm pipe poured in exising road |  | none → MS-0025 | resources none → MBRT DSC [1920 h] |
| 3-1851 | DEMO ROAD - COMMON EX - TYPE 2, 16TH TO 17TH NORTH SIDE |  |  | resources none → MBRT BASE [32 h] |
| 3-1852 | CONDUIT RD CROSSING, 16TH TO 17TH NORTH SIDE |  |  | resources none → MBRT BASE [32 h] |
| 3-1853 | ROADWAY PAVING - 2 POURS, 16TH TO 17TH NORTH SIDE |  |  | resources none → MBRT BASE [32 h] |
| 3-1854 | CONCRETE CURE, 16TH TO 17TH NORTH SIDE |  |  | resources none → MBRT BASE |
| 3-1855 | F/P CURB, 16TH TO 17TH NORTH SIDE |  |  | resources none → MBRT BASE [16 h] |
| 3-1856 | TEMP PATCH, 16TH TO 17TH NORTH SIDE |  |  | resources none → MBRT BASE [8 h] |
| 3-1886 | DEMO ROAD - COMMON EX - TYPE 2, 17TH TO 18TH NORTH SIDE |  |  | resources none → MBRT BASE [32 h] |
| 3-1887 | CONDUIT RD CROSSING, 17TH TO 18TH NORTH SIDE |  |  | resources none → MBRT BASE [32 h] |
| 3-1888 | ROADWAY PAVING - 2 POURS, 17TH TO 18TH NORTH SIDE |  |  | resources none → MBRT BASE [16 h] |
| 3-1889 | CONCRETE CURE, 17TH TO 18TH NORTH SIDE |  |  | resources none → MBRT BASE |
| 3-1890 | F/P CURB, 17TH TO 18TH NORTH SIDE |  |  | resources none → MBRT BASE [8 h] |
| 3-1891 | TEMP PATCH, 17TH TO 18TH NORTH SIDE |  |  | resources none → MBRT BASE [8 h] |
| 3-1858 | DEMO ROAD - COMMON EX - TYPE 2, 15TH TO 16TH SOUTH SIDE |  |  | resources none → MBRT BASE [64 h] |
| 3-1859 | CONDUIT RD CROSSING, 15TH TO 16TH SOUTH SIDE |  |  | resources none → MBRT BASE [64 h] |
| PCO058.01 | DSC 36-Inlet Pipe in Exsing Roadway 16th South side |  | none → MS-0025 | resources none → MBRT DSC [40 h] |
| 3-1860 | ROADWAY PAVING - 2 POURS, 15TH TO 16TH SOUTH SIDE |  |  | resources none → MBRT BASE [48 h] |
| 3-1861 | CONCRETE CURE, 15TH TO 16TH SOUTH SIDE |  |  | resources none → MBRT BASE |
| 3-1862 | F/P CURB, 15TH TO 16TH SOUTH SIDE |  |  | resources none → MBRT BASE [16 h] |
| 3-1863 | TEMP PATCH, 15TH TO 16TH SOUTH SIDE |  |  | resources none → MBRT BASE [8 h] |
| 3-1865 | DEMO ROAD - COMMON EX - TYPE 2, 16TH TO 17TH SOUTH SIDE |  |  | resources none → MBRT BASE [64 h] |
| 3-1866 | CONDUIT RD CROSSING, 16TH TO 17TH SOUTH SIDE |  |  | resources none → MBRT BASE [64 h] |
| 3-1867 | ROADWAY PAVING - 2 POURS, 16TH TO 17TH SOUTH SIDE |  |  | resources none → MBRT BASE [48 h] |
| 3-1868 | CONCRETE CURE, 16TH TO 17TH SOUTH SIDE |  |  | resources none → MBRT BASE |
| 3-1869 | F/P CURB, 16TH TO 17TH SOUTH SIDE |  |  | resources none → MBRT BASE [16 h] |
| 3-1870 | TEMP PATCH, 16TH TO 17TH SOUTH SIDE |  |  | resources none → MBRT BASE [8 h] |
| 3-1892 | Delay Awaiting KCM to Allow The Work to Proceed |  | none → MS-0025 | resources none → MBRT NEW |
| 3-1872 | DEMO ROAD - COMMON EX - TYPE 2, 17TH TO 18TH SOUTH SIDE |  |  | resources none → MBRT BASE [112 h] |
| 3-1873 | CONDUIT RD CROSSING, 17TH TO 18TH SOUTH SIDE |  |  | resources none → MBRT BASE [112 h] |
| 3-1874 | ROADWAY PAVING - 2 POURS, 17TH TO 18TH SOUTH SIDE |  |  | resources none → MBRT BASE [80 h] |
| 3-1875 | CONCRETE CURE, 17TH TO 18TH SOUTH SIDE |  |  | resources none → MBRT BASE |
| 3-1876 | F/P CURB, 17TH TO 18TH SOUTH SIDE |  |  | resources none → MBRT BASE [16 h] |
| 3-1877 | TEMP PATCH, 17TH TO 18TH SOUTH SIDE |  |  | resources none → MBRT BASE [8 h] |
| 3-2665 | DELAY AWAITING KCM TO ALLOW THE WORK TO PROCEED |  |  | resources none → MBRT NEW |
| 3-1879 | DEMO ROAD - COMMON EX - TYPE 2, 18TH TO 19TH SOUTH SIDE |  |  | resources none → MBRT BASE [104 h] |
| 3-1880 | CONDUIT RD CROSSING, 18TH TO 19TH SOUTH SIDE |  |  | resources none → MBRT BASE [104 h] |

| ID | Task | Start | Finish | Complete | Total float | Predecessors | Other |
| --- | --- | --- | --- | --- | --- | --- | --- |
| 3-1881 | ROADWAY PAVING - 2 POURS, 18TH TO 19TH SOUTH SIDE |  |  |  |  |  | resources none → MBRT BASE [80 h] |
| 3-1882 | CONCRETE CURE, 18TH TO 19TH SOUTH SIDE |  |  |  |  |  | resources none → MBRT BASE |
| 3-1883 | F/P CURB, 18TH TO 19TH SOUTH SIDE |  |  |  |  |  | resources none → MBRT BASE [16 h] |
| 3-1884 | TEMP PATCH, 18TH TO 19TH SOUTH SIDE |  |  |  |  |  | resources none → MBRT BASE [8 h] |
| 8 | **18TH TO 19TH NORTH SIDE** |  | 2023-08-31 → 2023-09-20 (+20d) |  |  |  |  |
| 3-1893 | DEMO ROAD - COMMON EX - TYPE 2, 18TH TO 19TH NORTH SIDE |  | 2023-08-21 → 2023-08-30 A (+9d) | 0% → 100% | -98d → none |  | resources none → MBRT BASE [136 h] |
| 3-1894 | CONDUIT RD CROSSING, 18TH TO 19TH NORTH SIDE |  | 2023-08-21 → 2023-08-25 A (+4d) | 0% → 100% | -98d → none |  | resources none → MBRT BASE [112 h] |
| 3-1895 | ROADWAY PAVING - 2 POURS, 18TH TO 19TH NORTH SIDE | 2023-08-22 → 2023-09-06 A (+15d) | 2023-08-25 → 2023-09-15 A (+21d) | 0% → 100% | -98d → none |  | resources none → MBRT BASE [64 h] |
| 3-1896 | CONCRETE CURE, 18TH TO 19TH NORTH SIDE | 2023-08-26 → 2023-09-18 A (+23d) | 2023-08-28 → 2023-09-20 A (+23d) | 0% → 100% | -139d → none |  | resources none → MBRT BASE |
| 3-1897 | F/P CURB, 18TH TO 19TH NORTH SIDE | 2023-08-29 → 2023-09-19 A (+21d) | 2023-08-30 → 2023-09-19 A (+20d) | 0% → 100% | -97d → none |  | resources none → MBRT BASE [8 h] |
| 3-1898 | TEMP PATCH, 18TH TO 19TH NORTH SIDE | 2023-08-31 → 2023-09-20 A (+20d) | 2023-08-31 → 2023-09-20 A (+20d) | 0% → 100% | -97d → none |  | resources none → MBRT BASE [8 h] |
| 3-1914 | DEMO ROAD - COMMON EX - TYPE 2, 19TH TO 20TH NORTH SIDE |  |  |  |  |  | resources none → MBRT BASE [128 h] |
| 3-1915 | CONDUIT RD CROSSING, 19TH TO 20TH NORTH SIDE |  |  |  |  |  | resources none → MBRT BASE [128 h] |
| 3-1916 | ROADWAY PAVING - 2 POURS, 19TH TO 20TH NORTH SIDE |  |  |  |  |  | resources none → MBRT BASE [64 h] |
| 3-1917 | CONCRETE CURE, 19TH TO 20TH NORTH SIDE |  |  |  |  |  | resources none → MBRT BASE |
| 3-1918 | F/P CURB, 19TH TO 20TH NORTH SIDE |  |  |  |  |  | resources none → MBRT BASE [16 h] |
| 3-1919 | TEMP PATCH, 19TH TO 20TH NORTH SIDE |  |  |  |  |  | resources none → MBRT BASE [8 h] |
| PCO064.01 | DSC 41-I Beam in Roadway 22nd to 20th |  |  |  |  | none → MS-0025 | resources none → MBRT DSC [16 h] |
| PCO364.01 | DSC 265-Inlet NE Denny |  |  |  |  | none → MS-0025 | resources none → MBRT DSC [8 h] |
| 3-1921 | DEMO ROAD - COMMON EX - TYPE 2, 20TH TO DENNY NORTH SIDE |  |  |  |  |  | resources none → MBRT BASE [104 h] |
| 3-1922 | CONDUIT RD CROSSING, 20TH TO DENNY NORTH SIDE |  |  |  |  |  | resources none → MBRT BASE [104 h] |
| 3-1923 | ROADWAY PAVING - 2 POURS, 20TH TO DENNY NORTH SIDE |  |  |  |  |  | resources none → MBRT BASE [64 h] |
| 3-1924 | CONCRETE CURE, 20TH TO DENNY NORTH SIDE |  |  |  |  |  | resources none → MBRT BASE |
| 3-1925 | F/P CURB, 20TH TO DENNY NORTH SIDE |  |  |  |  |  | resources none → MBRT BASE [16 h] |
| 3-1926 | TEMP PATCH, 20TH TO DENNY NORTH SIDE |  |  |  |  |  | resources none → MBRT BASE [8 h] |
| 3-1935 | DEMO ROAD - COMMON EX - TYPE 2, DENNY TO 23RD NORTH SIDE |  |  |  |  |  | resources none → MBRT BASE [96 h] |
| 3-1936 | CONDUIT RD CROSSING, DENNY TO 23RD NORTH SIDE |  |  |  |  |  | resources none → MBRT BASE [64 h] |
| 3-1937 | ROADWAY PAVING - 2 POURS, DENNY TO 23RD NORTH SIDE |  |  |  |  |  | resources none → MBRT BASE [80 h] |
| 3-1938 | CONCRETE CURE, DENNY TO 23RD NORTH SIDE |  |  |  |  |  | resources none → MBRT BASE |
| 3-1939 | F/P CURB, DENNY TO 23RD NORTH SIDE |  |  |  |  |  | resources none → MBRT BASE [16 h] |
| 3-1940 | TEMP PATCH, DENNY TO 23RD NORTH SIDE |  |  |  |  |  | resources none → MBRT BASE [8 h] |
| 3-1900 | DEMO ROAD - COMMON EX - TYPE 2, 19TH TO 20TH SOUTH SIDE |  |  |  |  |  | resources none → MBRT BASE [144 h] |
| 3-1901 | CONDUIT RD CROSSING, 19TH TO 20TH SOUTH SIDE |  |  |  |  |  | resources none → MBRT BASE [144 h] |
| PCO485.01 | DSC 349-unknown gas line at 19th |  |  |  |  | none → MS-0025 | resources none → MBRT DSC [8 h] |
| 3-1902 | ROADWAY PAVING - 2 POURS, 19TH TO 20TH SOUTH SIDE |  |  |  |  |  | resources none → MBRT BASE [64 h] |
| 3-1904 | F/P CURB, 19TH TO 20TH SOUTH SIDE |  |  |  |  |  | resources none → MBRT BASE [8 h] |
| 3-1903 | CONCRETE CURE, 19TH TO 20TH SOUTH SIDE |  |  |  |  |  | resources none → MBRT BASE |
| 3-1905 | TEMP PATCH, 19TH TO 20TH SOUTH SIDE |  |  |  |  |  | resources none → MBRT BASE [8 h] |
| 3-1942 | DEMO ROAD - COMMON EX - TYPE 2, 23RD TO 24TH SOUTH SIDE |  |  |  |  |  | resources none → MBRT BASE [136 h] |
| 3-1943 | CONDUIT RD CROSSING, 23RD TO 24TH SOUTH SIDE |  |  |  |  |  | resources none → MBRT BASE [136 h] |
| PCO451.01 | DSC 330-CDF in subgrade 23rd to 25th 2319 Madison |  |  |  |  | none → MS-0025 | resources none → MBRT DSC [32 h] |
| PCO452.01 | DSC 331-Gas line conflict with Roadway 23rd to 25th |  |  |  |  | none → MS-0025 | resources none → MBRT DSC [24 h] |
| 3-1944 | ROADWAY PAVING - 2 POURS, 23RD TO 24TH SOUTH SIDE |  |  |  |  |  | resources none → MBRT BASE [56 h] |
| 3-1945 | CONCRETE CURE, 23RD TO 24TH SOUTH SIDE |  |  |  |  |  | resources none → MBRT BASE |
| 3-1946 | F/P CURB, 23RD TO 24TH SOUTH SIDE |  |  |  |  |  | resources none → MBRT BASE [16 h] |
| 3-1947 | TEMP PATCH, 23RD TO 24TH SOUTH SIDE |  |  |  |  |  | resources none → MBRT BASE [16 h] |
| 3-1907 | DEMO ROAD - COMMON EX - TYPE 2, 20TH TO DENNY SOUTH SIDE |  |  |  |  |  | resources none → MBRT BASE [144 h] |
| 3-1908 | CONDUIT RD CROSSING, 20TH TO DENNY SOUTH SIDE |  |  |  |  |  | resources none → MBRT BASE [144 h] |
| PCO491.01 | DSC 352-Unknown Unlocated Gas Line Struck 2020 Madison |  |  |  |  | none → MS-0025 | resources none → MBRT DSC [8 h] |
| 3-1909 | ROADWAY PAVING - 4 POURS, 20TH TO DENNY SOUTH SIDE |  |  |  |  |  | resources none → MBRT BASE [64 h] |
| 3-1910 | CONCRETE CURE, 20TH TO DENNY SOUTH SIDE |  |  |  |  |  | resources none → MBRT BASE |
| 3-1911 | F/P CURB, 20TH TO DENNY SOUTH SIDE |  |  |  |  |  | resources none → MBRT BASE [8 h] |
| 3-1912 | TEMP PATCH, 20TH TO DENNY SOUTH SIDE |  |  |  |  |  | resources none → MBRT BASE [8 h] |
| 3-1949 | DEMO ROAD - COMMON EX - TYPE 2, 23RD TO 24TH NORTH SIDE |  |  |  |  |  | resources none → MBRT BASE [80 h] |
| 3-1950 | CONDUIT RD CROSSING, 23RD TO 24TH NORTH SIDE |  |  |  |  |  | resources none → MBRT BASE [80 h] |
| PCO339.01 | DSC 248-Unknown Unlocated Gas service 24th to 23rd north side |  |  |  |  | none → MS-0025 | resources none → MBRT DSC [56 h] |
| PCO344.01 | DSC 253-Void in Road Madison, 24th-23rd |  |  |  |  | none → MS-0025 | resources none → MBRT DSC [16 h] |
| 3-1951 | ROADWAY PAVING - 2 POURS, 23RD TO 24TH NORTH SIDE |  |  |  |  |  | resources none → MBRT BASE [48 h] |
| 3-1952 | CONCRETE CURE, 23RD TO 24TH NORTH SIDE |  |  |  |  |  | resources none → MBRT BASE |
| 3-1953 | F/P CURB, 23RD TO 24TH NORTH SIDE |  |  |  |  |  | resources none → MBRT BASE [16 h] |
| 3-1954 | TEMP PATCH, 23RD TO 24TH NORTH SIDE |  |  |  |  |  | resources none → MBRT BASE [16 h] |
| 3-1928 | DEMO ROAD - COMMON EX - TYPE 2, DENNY TO 23RD SOUTH SIDE |  |  |  |  |  | resources none → MBRT BASE [96 h] |
| 3-1929 | CONDUIT RD CROSSING, DENNY TO 23RD SOUTH SIDE |  |  |  |  |  | resources none → MBRT BASE [104 h] |
| PCO432.01 | DSC 315-CDF in Roadway Denny Way South Side |  |  |  |  | none → MS-0025 | resources none → MBRT DSC [72 h] |
| 3-1930 | ROADWAY PAVING - 2 POURS, DENNY TO 23RD SOUTH SIDE |  |  |  |  |  | resources none → MBRT BASE [88 h] |
| 3-1931 | CONCRETE CURE, DENNY TO 23RD SOUTH SIDE |  |  |  |  |  | resources none → MBRT BASE |
| 3-1932 | F/P CURB, DENNY TO 23RD SOUTH SIDE |  |  |  |  |  | resources none → MBRT BASE [16 h] |
| 3-1933 | TEMP PATCH, DENNY TO 23RD SOUTH SIDE |  |  |  |  |  | resources none → MBRT BASE [8 h] |
| 3-1956 | DEMO ROAD - COMMON EX - TYPE 2, 24TH TO 25TH SOUTH SIDE |  |  |  |  |  | resources none → MBRT BASE [136 h] |
| 3-1957 | CONDUIT RD CROSSING, 24TH TO 25TH SOUTH SIDE |  |  |  |  |  | resources none → MBRT BASE [136 h] |

| ID | Task | Start | Finish | Complete | Total float | Predecessors | Other |
| --- | --- | --- | --- | --- | --- | --- | --- |
| 3-1958 | ROADWAY PAVING - 2 POURS, 24TH TO 25TH SOUTH SIDE |  |  |  |  |  | resources none → MBRT BASE [104 h] |
| 3-1959 | CONCRETE CURE, 24TH TO 25TH SOUTH SIDE |  |  |  |  |  | resources none → MBRT BASE |
| 3-1960 | F/P CURB, 24TH TO 25TH SOUTH SIDE |  |  |  |  |  | resources none → MBRT BASE [16 h] |
| 3-1961 | TEMP PATCH, 24TH TO 25TH SOUTH SIDE |  |  |  |  |  | resources none → MBRT BASE [8 h] |
| 3-1963 | DEMO ROAD - COMMON EX - TYPE 2, 24TH TO 25TH NORTH SIDE |  |  |  |  |  | resources none → MBRT BASE [80 h] |
| 3-1964 | CONDUIT RD CROSSING, 24TH TO 25TH NORTH SIDE |  |  |  |  |  | resources none → MBRT BASE [80 h] |
| 3-1965 | ROADWAY PAVING - 2 POURS, 24TH TO 25TH NORTH SIDE |  |  |  |  |  | resources none → MBRT BASE [32 h] |
| 3-1966 | CONCRETE CURE, 24TH TO 25TH NORTH SIDE |  |  |  |  |  | resources none → MBRT BASE |
| 3-1967 | F/P CURB, 24TH TO 25TH NORTH SIDE |  |  |  |  |  | resources none → MBRT BASE [16 h] |
| 3-1968 | TEMP PATCH, 24TH TO 25TH NORTH SIDE |  |  |  |  |  | resources none → MBRT BASE [8 h] |
| 19 | **25TH TO 27TH NORTH SIDE** |  | 2023-08-31 → 2023-09-06 (+6d) |  |  |  |  |
| 3-1970 | DEMO ROAD - COMMON EX - TYPE 2, 25TH TO 27TH NORTH SIDE |  |  |  |  |  | resources none → MBRT BASE [112 h] |
| 3-1971 | CONDUIT RD CROSSING, 25TH TO 27TH NORTH SIDE |  |  |  |  |  | resources none → MBRT BASE [112 h] |
| 3-1972 | ROADWAY PAVING - 4 POURS, 25TH TO 27TH NORTH SIDE | 2023-08-14 → 2023-08-15 A (+1d) | 2023-08-23 → 2023-08-30 A (+7d) | 0% → 100% | -101d → none |  | resources none → MBRT BASE [96 h] |
| 3-1973 | CONCRETE CURE, 25TH TO 27TH NORTH SIDE | 2023-08-24 → 2023-08-31 A (+7d) | 2023-08-26 → 2023-09-05 A (+10d) | 0% → 100% | -145d → none |  | resources none → MBRT BASE |
| 3-1974 | F/P CURB, 25TH TO 27TH NORTH SIDE | 2023-08-28 → 2023-09-01 A (+4d) | 2023-08-30 → 2023-09-01 A (+2d) | 0% → 100% | -102d → none |  | resources none → MBRT BASE [8 h] |
| 3-1975 | TEMP PATCH, 25TH TO 27TH NORTH SIDE | 2023-08-31 → 2023-09-06 A (+6d) | 2023-08-31 → 2023-09-06 A (+6d) | 0% → 100% | -102d → none |  | resources none → MBRT BASE [8 h] |
| 20 | **27TH TO MLK NORTH SIDE** | 2023-08-14 → 2023-09-25 (+42d) | 2023-09-08 → 2023-10-26 (+48d) |  |  |  |  |
| 3-1977 | DEMO ROAD - COMMON EX - TYPE 2, 27TH TO MLK NORTH SIDE | 2023-08-14 → 2023-09-25 A (+42d) | 2023-08-21 → 2023-10-14 A (+54d) | 0% → 100% | -89d → none | 3-1970 → 3-1970, 3-1975 | resources none → MBRT BASE [120 h] |
| 3-1978 | CONDUIT RD CROSSING, 27TH TO MLK NORTH SIDE | 2023-08-14 → 2023-10-05 A (+52d) | 2023-08-21 → 2023-10-06 A (+46d) | 0% → 100% | -89d → none | 3-1977 SS → 3-1977 SS, 3-1983 | resources none → MBRT BASE [16 h] |
| 3-1979 | ROADWAY PAVING - 2 POURS, 27TH TO MLK NORTH SIDE | 2023-08-24 → 2023-10-16 A (+53d) | 2023-08-29 → 2023-10-19 A (+51d) | 0% → 100% | -91d → none | 3-1972, 3-1978 → 3-1972, 3-1978, 3-1977 | resources none → MBRT BASE [32 h] |
| 3-1981 | F/P CURB, 27TH TO MLK NORTH SIDE | 2023-09-05 → 2023-10-18 A (+43d) | 2023-09-07 → 2023-10-18 A (+41d) | 0% → 100% | -93d → none | 3-1980 → 3-1979 SS | resources none → MBRT BASE [8 h] |
| 3-1980 | CONCRETE CURE, 27TH TO MLK NORTH SIDE | 2023-08-30 → 2023-10-20 A (+51d) | 2023-09-01 → 2023-10-24 A (+53d) | 0% → 100% | -131d → none |  | resources none → MBRT BASE |
| 3-1982 | TEMP PATCH, 27TH TO MLK NORTH SIDE | 2023-09-08 → 2023-10-26 A (+48d) | 2023-09-08 → 2023-10-26 A (+48d) | 0% → 100% | -93d → none | 3-1981 → 3-1981, 3-1980, 3-1981 FF | resources none → MBRT BASE [8 h] |
| 3-1984 | DEMO ROAD - COMMON EX - TYPE 2, 25TH TO 27TH SOUTH SIDE |  |  |  |  |  | resources none → MBRT BASE [80 h] |
| 3-1985 | CONDUIT RD CROSSING, 25TH TO 27TH SOUTH SIDE |  |  |  |  |  | resources none → MBRT BASE [80 h] |
| 3-1986 | ROADWAY PAVING - 4 POURS, 25TH TO 27TH SOUTH SIDE |  |  |  |  |  | resources none → MBRT BASE [184 h] |
| 3-1987 | CONCRETE CURE, 25TH TO 27TH SOUTH SIDE |  |  |  |  |  | resources none → MBRT BASE |
| 3-1988 | F/P CURB, 25TH TO 27TH SOUTH SIDE |  |  |  |  |  | resources none → MBRT BASE [16 h] |
| 3-1989 | TEMP PATCH, 25TH TO 27TH SOUTH SIDE |  |  |  |  |  | resources none → MBRT BASE [8 h] |
| 3-1991 | DEMO ROAD - COMMON EX - TYPE 2, 26TH TO MLK SOUTH SIDE |  |  |  |  |  | resources none → MBRT BASE [112 h] |
| 3-1992 | CONDUIT RD CROSSING, 26TH TO MLK SOUTH SIDE |  |  |  |  |  | resources none → MBRT BASE [112 h] |
| 3-1993 | ROADWAY PAVING - 2 POURS, 26TH TO MLK SOUTH SIDE |  |  |  |  |  | resources none → MBRT BASE [80 h] |
| 3-1994 | CONCRETE CURE, 26TH TO MLK SOUTH SIDE |  |  |  |  |  | resources none → MBRT BASE |
| 3-1995 | F/P CURB, 26TH TO MLK SOUTH SIDE |  |  |  |  |  | resources none → MBRT BASE [24 h] |
| 3-1996 | TEMP PATCH, 26TH TO MLK SOUTH SIDE |  |  |  |  |  | resources none → MBRT BASE [8 h] |
| 3-1998 | DEMO ROAD - COMMON EX - TYPE 2, MLK MAD TO HARRISON EAST SIDE |  |  |  |  |  | resources none → MBRT BASE [96 h] |
| 3-1999 | CONDUIT RD CROSSING, MLK MAD TO HARRISON EAST SIDE |  |  |  |  |  | resources none → MBRT BASE [56 h] |
| 3-2000 | ROADWAY PAVING - 2 POURS, MLK MAD TO HARRISON EAST SIDE |  |  |  |  |  | resources none → MBRT BASE [112 h] |
| 3-2001 | CONCRETE CURE, MLK MAD TO HARRISON EAST SIDE |  |  |  |  |  | resources none → MBRT BASE |
| 3-2002 | F/P CURB, MLK MAD TO HARRISON EAST SIDE |  |  |  |  |  | resources none → MBRT BASE [8 h] |
| 3-2003 | TEMP PATCH, MLK MAD TO HARRISON EAST SIDE |  |  |  |  |  | resources none → MBRT BASE [8 h] |
| 24 | **MLK MADISON TO HARRISON WEST SIDE** | 2023-08-22 → 2023-11-27 (+97d) | 2023-09-14 → 2024-02-09 (+148d) |  |  |  |  |
| 3-2005 | DEMO ROAD - COMMON EX - TYPE 2, MLK MAD TO HARRISON WEST SIDE | 2023-08-22 → 2023-11-27 A (+97d) | 2023-08-29 → 2023-12-29 A (+122d) | 0% → 100% | -79d → none |  | resources none → MBRT BASE [192 h] |
| 3-2006 | CONDUIT RD CROSSING, MLK MAD TO HARRISON WEST SIDE | 2023-08-22 → 2023-12-01 A (+101d) | 2023-08-29 → 2023-12-20 A (+113d) | 0% → 100% | -79d → none |  | resources none → MBRT BASE [112 h] |
| 3-2007 | ROADWAY PAVING - 2 POURS, MLK MAD TO HARRISON WEST SIDE | 2023-08-30 → 2023-12-08 A (+100d) | 2023-09-05 → 2024-01-18 A (+135d) | 0% → 100% | -79d → none | 3-2006 → 3-2006, 3-2011 | resources none → MBRT BASE [216 h] |
| 3-2008 | CONCRETE CURE, MLK MAD TO HARRISON WEST SIDE | 2023-09-06 → 2024-01-19 A (+135d) | 2023-09-08 → 2024-01-23 A (+137d) | 0% → 100% | -114d → none |  | resources none → MBRT BASE |
| 3-2009 | F/P CURB, MLK MAD TO HARRISON WEST SIDE | 2023-09-11 → 2024-02-06 A (+148d) | 2023-09-13 → 2024-02-08 A (+148d) | 0% → 100% | -79d → none |  | resources none → MBRT BASE [24 h] |
| 3-2010 | TEMP PATCH, MLK MAD TO HARRISON WEST SIDE | 2023-09-14 → 2024-02-09 A (+148d) | 2023-09-14 → 2024-02-09 A (+148d) | 0% → 100% | -79d → none |  | resources none → MBRT BASE [8 h] |
| 25 | **ARTHUR PL HARRISON ST INTERSECTION** | 2023-08-30 → 2024-01-11 (+134d) | 2023-09-28 → 2024-02-09 (+134d) |  |  |  |  |
| 3-2012 | DEMO ROAD - COMMON EX - TYPE 2, ARTHUR PL HARRISON ST INTERSECTION | 2023-08-30 → 2024-01-11 A (+134d) | 2023-09-11 → 2024-01-25 A (+136d) | 0% → 100% | 2d → none | 3-2005 → 3-2005, 3-2053 | resources none → MBRT BASE [80 h] |
| 3-2013 | CONDUIT RD CROSSING, ARTHUR PL HARRISON ST INTERSECTION | 2023-08-30 → 2024-01-11 A (+134d) | 2023-09-11 → 2024-01-18 A (+129d) | 0% → 100% | 2d → none |  | resources none → MBRT BASE [40 h] |
| 3-2014 | ROADWAY PAVING - 4 POURS, ARTHUR PL HARRISON ST INTERSECTION | 2023-09-12 → 2024-01-20 A (+130d) | 2023-09-21 → 2024-02-05 A (+137d) | 0% → 100% | 2d → none | 3-2013 → 3-2013, DSC-690, DSC-692 FF | resources none → MBRT BASE [88 h] |
| 3-2015 | CONCRETE CURE, ARTHUR PL HARRISON ST INTERSECTION | 2023-09-22 → 2024-02-06 A (+137d) | 2023-09-24 → 2024-02-08 A (+137d) | 0% → 100% | 4d → none |  | resources none → MBRT BASE |
| 3-2016 | F/P CURB, ARTHUR PL HARRISON ST INTERSECTION | 2023-09-25 → 2024-02-06 A (+134d) | 2023-09-27 → 2024-02-08 A (+134d) | 0% → 100% | 4d → none |  | resources none → MBRT BASE [24 h] |
| 3-2017 | TEMP PATCH, ARTHUR PL HARRISON ST INTERSECTION | 2023-09-28 → 2024-02-09 A (+134d) | 2023-09-28 → 2024-02-09 A (+134d) | 0% → 100% | 4d → none |  | resources none → MBRT BASE [8 h] |
| 3-2019 | DEMO ROAD - COMMON EX - TYPE 2, PINE ST |  |  |  |  |  | resources none → MBRT BASE [40 h] |
| 3-2020 | F/P CURB AND GUTTER, PINE ST |  |  |  |  |  | resources none → MBRT BASE [48 h] |
| 3-2021 | ROADWAY CONCRETE PAVING, PINE ST |  |  |  |  |  | resources none → MBRT BASE [16 h] |
| 3-2023 | F/P CURB, PINE ST |  |  |  |  |  | resources none → MBRT BASE [16 h] |
| 3-2024 | TEMP PAVING, PINE ST |  |  |  |  |  | resources none → MBRT BASE [8 h] |
| 3-2022 | ASPHALT PAVING, PINE ST |  |  |  |  |  | resources none → MBRT BASE [16 h] |
| 2 | **INTERSECTIONS** |  | 2023-09-17 → 2024-01-08 (+113d) |  |  |  |  |
| 3-2027 | DEMO ROAD - COMMON EX - TYPE 2, 16TH NORTH SIDE |  |  |  |  |  | resources none → MBRT BASE [8 h] |
| 3-2028 | TRENCH CONDUIT, 16TH NORTH SIDE |  |  |  |  |  | resources none → MBRT BASE [8 h] |
| 3-2029 | ROADWAY PAVING, 16TH NORTH SIDE |  |  |  |  |  | resources none → MBRT BASE [8 h] |
| 3-2063 | DEMO ROAD - COMMON EX - TYPE 2, 20TH NORTH SIDE |  |  |  |  |  | resources none → MBRT BASE [16 h] |
| 3-2064 | TRENCH CONDUIT, 20TH NORTH SIDE |  |  |  |  |  | resources none → MBRT BASE [16 h] |
| 3-2065 | ROADWAY PAVING, 20TH NORTH SIDE |  |  |  |  |  | resources none → MBRT BASE [8 h] |
| 3-2067 | DEMO ROAD - COMMON EX - TYPE 2, DENNY SOUTH SIDE |  |  |  |  |  | resources none → MBRT BASE [16 h] |

| ID | Task | Start | Finish | Complete | Total float | Predecessors | Other |
| --- | --- | --- | --- | --- | --- | --- | --- |
| 3-2068 | TRENCH CONDUIT, DENNY SOUTH SIDE |  |  |  |  |  | resources none → MBRT BASE |
| 3-2069 | ROADWAY PAVING, DENNY SOUTH SIDE |  |  |  |  |  | resources none → MBRT BASE [32 h] |
| 3-2071 | DEMO ROAD - COMMON EX - TYPE 2, DENNY NORTH SIDE |  |  |  |  |  | resources none → MBRT BASE [32 h] |
| 3-2072 | TRENCH CONDUIT, DENNY NORTH SIDE |  |  |  |  |  | resources none → MBRT BASE [32 h] |
| 3-2073 | ROADWAY PAVING, DENNY NORTH SIDE |  |  |  |  |  | resources none → MBRT BASE |
| 13 | **24TH SOUTH SIDE** |  | 2022-12-02 → 2022-12-11 (+9d) |  |  |  |  |
| 3-2075 | DEMO ROAD - COMMON EX - TYPE 2, 24TH SOUTH SIDE |  |  |  |  |  | resources none → MBRT BASE [32 h] |
| 3-2076 | TRENCH CONDUIT, 24TH SOUTH SIDE |  |  |  |  |  | resources none → MBRT BASE [32 h] |
| 3-2077 | ROADWAY PAVING, 24TH SOUTH SIDE |  | 2022-12-02 A → 2022-12-11 A (+9d) |  |  |  | resources none → MBRT BASE |
| 3-2080 | TRENCH CONDUIT, 24TH NORTH SIDE |  |  |  |  |  | resources none → MBRT BASE [80 h] |
| PCO504.01 | DSC 359-Lighting conduit conflict with vault and MH 24th and madison |  |  |  |  | none → MS-0025 | resources none → MBRT DSC [8 h] |
| PCO510.01 | DSC 365-Counduit Crossing @ John Ductbank Conflict |  |  |  |  | none → MS-0025 | resources none → MBRT DSC [32 h] |
| PCO513.01 | DSC 366-NWC John & Madison Ductbank Conflict |  |  |  |  | none → MS-0025 | resources none → MBRT DSC [8 h] |
| PCO541.01 | DSC 381-Existing Type 164 inlet 24th and John |  |  |  |  | none → MS-0025 | resources none → MBRT DSC [8 h] |
| 3-2079 | DEMO ROAD - COMMON EX - TYPE 2, 24TH NORTH SIDE |  |  |  |  |  | resources none → MBRT BASE [48 h] |
| 3-2081 | ROADWAY PAVING, 24TH NORTH SIDE |  |  |  |  |  | resources none → MBRT BASE [48 h] |
| 15 | **MLK NORTH SIDE** | 2023-09-09 → 2023-10-19 (+40d) | 2023-09-10 → 2023-11-14 (+65d) |  |  |  |  |
| 3-2083 | DEMO ROAD - COMMON EX - TYPE 2, MLK NORTH SIDE | 2023-09-09 → 2023-10-19 A (+40d) | 2023-09-09 → 2023-10-31 A (+52d) | 0% → 100% | -38d → none | 3-2061 → 3-2091 | resources none → MBRT BASE [72 h] |
| 3-2084 | TRENCH CONDUIT, MLK NORTH SIDE | 2023-09-09 → 2023-10-25 A (+46d) | 2023-09-09 → 2023-10-27 A (+48d) | 0% → 100% | -38d → none | 3-2083 SS → 3-2083 SS, 3-2103 | resources none → MBRT BASE [24 h] |
| 3-2085 | ROADWAY PAVING, MLK NORTH SIDE | 2023-09-10 → 2023-11-01 A (+52d) | 2023-09-10 → 2023-11-14 A (+65d) | 0% → 100% | -38d → none |  | resources none → MBRT BASE [72 h] |
| 16 | **MLK SOUTH SIDE** | 2023-09-16 → 2023-12-20 (+95d) | 2023-09-17 → 2023-12-21 (+95d) |  |  |  |  |
| 3-2087 | DEMO ROAD - COMMON EX - TYPE 2, MLK SOUTH SIDE | 2023-09-16 → 2023-12-20 A (+95d) | 2023-09-16 → 2023-12-20 A (+95d) | 0% → 100% | -38d → none |  | resources none → MBRT BASE [8 h] |
| 3-2088 | TRENCH CONDUIT, MLK SOUTH SIDE | 2023-09-16 → 2023-12-20 A (+95d) | 2023-09-16 → 2023-12-20 A (+95d) | 0% → 100% | -38d → none |  | resources none → MBRT BASE [8 h] |
| 3-2089 | ROADWAY PAVING, MLK SOUTH SIDE | 2023-09-17 → 2023-12-21 A (+95d) | 2023-09-17 → 2023-12-21 A (+95d) | 0% → 100% | -38d → none |  | resources none → MBRT BASE [8 h] |
| 3-2031 | DEMO ROAD - COMMON EX - TYPE 2, 16TH SOUTH SIDE |  |  |  |  |  | resources none → MBRT BASE [8 h] |
| 3-2032 | TRENCH CONDUIT, 16TH SOUTH SIDE |  |  |  |  |  | resources none → MBRT BASE [8 h] |
| 3-2033 | ROADWAY PAVING, 16TH SOUTH SIDE |  |  |  |  |  | resources none → MBRT BASE [8 h] |
| 3-2035 | DEMO ROAD - COMMON EX - TYPE 2, 17TH SOUTH SIDE |  |  |  |  |  | resources none → MBRT BASE [8 h] |
| 3-2036 | TRENCH CONDUIT, 17TH SOUTH SIDE |  |  |  |  |  | resources none → MBRT BASE [8 h] |
| 3-2037 | ROADWAY PAVING, 17TH SOUTH SIDE |  |  |  |  |  | resources none → MBRT BASE [8 h] |
| 3-2039 | DEMO ROAD - COMMON EX - TYPE 2, 18TH SOUTH SIDE |  |  |  |  |  | resources none → MBRT BASE [8 h] |
| 3-2040 | TRENCH CONDUIT, 18TH SOUTH SIDE |  |  |  |  |  | resources none → MBRT BASE [8 h] |
| 3-2041 | ROADWAY PAVING, 18TH SOUTH SIDE |  |  |  |  |  | resources none → MBRT BASE [8 h] |
| 5 | **17TH NORTH SIDE** | 2023-08-19 → 2023-08-18 (-1d) | 2023-08-20 → 2023-09-15 (+26d) |  |  |  |  |
| 3-2043 | DEMO ROAD - COMMON EX - TYPE 2, 17TH NORTH SIDE | 2023-08-19 → 2023-08-18 A (-1d) | 2023-08-19 → 2023-08-23 A (+4d) | 0% → 100% | -38d → none |  | resources none → MBRT BASE [16 h] |
| 3-2044 | TRENCH CONDUIT, 17TH NORTH SIDE | 2023-08-19 → 2023-08-18 A (-1d) | 2023-08-19 → 2023-08-23 A (+4d) | 0% → 100% | -38d → none |  | resources none → MBRT BASE [16 h] |
| 3-2045 | ROADWAY PAVING, 17TH NORTH SIDE | 2023-08-20 → 2023-09-06 A (+17d) | 2023-08-20 → 2023-09-15 A (+26d) | 0% → 100% | -38d → none | 3-2044 → 3-2044, 3-2058, 3-2078 | resources none → MBRT BASE [64 h] |
| 6 | **18TH NORTH SIDE** | 2023-08-22 → 2023-08-08 (-14d) | 2023-08-23 → 2023-09-15 (+23d) |  |  |  |  |
| 3-2047 | DEMO ROAD - COMMON EX - TYPE 2, 18TH NORTH SIDE | 2023-08-22 → 2023-08-08 A (-14d) | 2023-08-22 → 2023-08-30 A (+8d) | 0% → 100% | -91d → none | 3-1893 SS, 3-2045, 3-1893 → 3-1893 SS, 3-1893 | resources none → MBRT BASE [136 h] |
| 3-2048 | TRENCH CONDUIT, 18TH NORTH SIDE | 2023-08-22 → 2023-08-15 A (-7d) | 2023-08-22 → 2023-08-17 A (-5d) | 0% → 100% | -91d → none |  | resources none → MBRT BASE [24 h] |
| 3-2049 | ROADWAY PAVING, 18TH NORTH SIDE | 2023-08-23 → 2023-09-06 A (+14d) | 2023-08-23 → 2023-09-15 A (+23d) | 0% → 100% | -91d → none | 3-2048 → 3-2048, 3-2045 FF | resources none → MBRT BASE [64 h] |
| 7 | **19TH SOUTH SIDE** | 2023-08-26 → 2024-01-05 (+132d) | 2023-08-27 → 2024-01-08 (+134d) |  |  |  |  |
| 3-2051 | DEMO ROAD - COMMON EX - TYPE 2, 19TH SOUTH SIDE | 2023-08-26 → 2024-01-05 A (+132d) | 2023-08-26 → 2024-01-05 A (+132d) | 0% → 100% | -38d → none | 3-2049 → 3-2049, 3-2059, 3-2061 | resources none → MBRT BASE [8 h] |
| 3-2052 | TRENCH CONDUIT, 19TH SOUTH SIDE | 2023-08-26 → 2024-01-05 A (+132d) | 2023-08-26 → 2024-01-05 A (+132d) | 0% → 100% | -38d → none |  | resources none → MBRT BASE [8 h] |
| 3-2053 | ROADWAY PAVING, 19TH SOUTH SIDE | 2023-08-27 → 2024-01-06 A (+132d) | 2023-08-27 → 2024-01-08 A (+134d) | 0% → 100% | -38d → none | 3-2052 → 3-2052, DSC-681 | resources none → MBRT BASE [8 h] |
| 8 | **20TH SOUTH SIDE** | 2023-08-19 → 2023-01-26 (-205d) | 2023-08-20 → 2023-01-27 (-205d) |  |  |  |  |
| 3-2055 | DEMO ROAD - COMMON EX - TYPE 2, 20TH SOUTH SIDE | 2023-08-19 → 2023-01-26 A (-205d) | 2023-08-19 → 2023-01-26 A (-205d) | 0% → 100% | -36d → none |  | resources none → MBRT BASE [8 h] |
| 3-2056 | TRENCH CONDUIT, 20TH SOUTH SIDE | 2023-08-19 → 2023-01-26 A (-205d) | 2023-08-19 → 2023-01-26 A (-205d) | 0% → 100% | -36d → none |  | resources none → MBRT BASE [8 h] |
| 3-2057 | ROADWAY PAVING, 20TH SOUTH SIDE | 2023-08-20 → 2023-01-27 A (-205d) | 2023-08-20 → 2023-01-27 A (-205d) | 0% → 100% | -36d → none |  | resources none → MBRT BASE [8 h] |
| 9 | **19TH NORTH SIDE** | 2023-09-02 → 2023-10-21 (+49d) | 2023-09-03 → 2023-11-12 (+70d) |  |  |  |  |
| 3-2060 | TRENCH CONDUIT, 19TH NORTH SIDE | 2023-09-02 → 2023-10-21 A (+49d) | 2023-09-02 → 2023-10-22 A (+50d) | 0% → 100% | -38d → none | 3-2059 SS → 3-2049 | resources none → MBRT BASE |
| 3-2059 | DEMO ROAD - COMMON EX - TYPE 2, 19TH NORTH SIDE | 2023-09-02 → 2023-10-28 A (+56d) | 2023-09-02 → 2023-11-11 A (+70d) | 0% → 100% | -38d → none | 3-1914 SS, 3-2057, 3-1898, 3-2053 → 3-1914 SS, 3-2057, 3-1898, 3-2060 | resources none → MBRT BASE [80 h] |
| 3-2061 | ROADWAY PAVING, 19TH NORTH SIDE | 2023-09-03 → 2023-10-28 A (+55d) | 2023-09-03 → 2023-11-12 A (+70d) | 0% → 100% | -38d → none | 3-2060, 3-2065 → 3-2060, 3-2065, 3-2059 SS | resources none → MBRT BASE [80 h] |
| 6 | **POLE FOUNDATIONS** |  | 2023-09-01 → 2023-10-06 (+35d) |  |  |  |  |
| 3-2091 | INST POLE FOUNDATIONS, POLE FOUNDATIONS |  | 2023-09-01 → 2023-10-06 A (+35d) | 0% → 100% | 14d → none |  | resources none → MBRT BASE |
| 7 | **SIDEWALKS** |  | 2023-11-06 → 2024-05-21 (+197d) |  |  |  |  |
| PCO500.01 | DSC 357-Extra thick sidewalks NW 16th |  |  |  |  | none → MS-0025 | resources none → MBRT DSC [8 h] |
| 3-2094 | REMOVE SIDEWALK, 15TH TO 16TH NORTH SIDE |  |  |  |  |  | resources none → MBRT BASE [8 h] |
| 3-2095 | TRENCH CONDUIT, 15TH TO 16TH NORTH SIDE |  |  |  |  |  | resources none → MBRT BASE [8 h] |
| 3-2096 | INST CONDUIT, 15TH TO 16TH NORTH SIDE |  |  |  |  |  | resources none → MBRT BASE [8 h] |
| 3-2097 | GRADE SIDEWALK, 15TH TO 16TH NORTH SIDE |  |  |  |  |  | resources none → MBRT BASE [8 h] |
| 3-2098 | POUR SIDEWALK, 15TH TO 16TH NORTH SIDE |  |  |  |  |  | resources none → MBRT BASE [24 h] |
| 4 | **15TH TO 16TH SOUTH SIDE** | 2023-09-21 → 2024-03-14 (+175d) | 2023-09-29 → 2024-04-03 (+187d) |  |  |  |  |
| 3-2112 | REMOVE SIDEWALK, 15TH TO 16TH SOUTH SIDE | 2023-09-21 → 2024-03-14 A (+175d) | 2023-09-22 → 2024-03-15 A (+175d) | 0% → 100% | -94d → none | 3-2109, 2-1327 → 3-2109, 2-1327, 3-2059 | constraint start on or after 2023-07-05 → none; resources none → MBRT BASE [16 h] |
| 3-2113 | TRENCH CONDUIT, 15TH TO 16TH SOUTH SIDE | 2023-09-25 → 2024-03-15 A (+172d) | 2023-09-25 → 2024-03-20 A (+177d) | 0% → 100% | -94d → none |  | resources none → MBRT BASE [8 h] |
| 3-2114 | INST CONDUIT, 15TH TO 16TH SOUTH SIDE | 2023-09-25 → 2024-03-21 A (+178d) | 2023-09-25 → 2024-03-28 A (+185d) | 0% → 100% | -94d → none |  | resources none → MBRT BASE [8 h] |
| 3-2115 | GRADE SIDEWALK, 15TH TO 16TH SOUTH SIDE | 2023-09-26 → 2024-03-29 A (+185d) | 2023-09-26 → 2024-03-29 A (+185d) | 0% → 100% | -94d → none | 3-2114 → 3-2114, DSC-731, DSC-730, DSC-728, DSC-727 | resources none → MBRT BASE [8 h] |
| 3-2116 | POUR SIDEWALK, 15TH TO 16TH SOUTH SIDE | 2023-09-27 → 2024-04-01 A (+187d) | 2023-09-29 → 2024-04-03 (+187d) |  | -94d → -138d | 3-2115, 3-2110 FF → 3-2110 FF | resources none → MBRT BASE [24 h] |
| 2 | **DRIVEWAY BETWEEN 15TH AND 16TH NORTH SIDE** | 2023-09-23 → 2024-03-18 (+177d) | 2023-09-24 → 2024-04-07 (+196d) |  |  |  |  |
| 3-2100 | REM SIDEWALK, DRIVEWAY BETWEEN 15TH & 16TH NORTH SIDE | 2023-09-23 → 2024-04-06 (+196d) | 2023-09-23 → 2024-04-06 (+196d) |  | -38d → -60d |  | resources none → MBRT BASE [8 h] |

| ID | Task | Start | Finish | Complete | Total float | Predecessors | Other |
| --- | --- | --- | --- | --- | --- | --- | --- |
| 3-2101 | INST CONDUIT, DRIVEWAY BETWEEN 15TH & 16TH NORTH SIDE | 2023-09-23 → 2024-04-06 (+196d) | 2023-09-23 → 2024-04-06 (+196d) |  | -38d → -60d |  | resources none → MBRT BASE [8 h] |
| 3-2102 | POUR DRIVEWAY, DRIVEWAY BETWEEN 15TH & 16TH NORTH SIDE | 2023-09-24 → 2024-04-07 (+196d) | 2023-09-24 → 2024-04-07 (+196d) |  | -38d → -60d | 3-2101 → 3-2101, DSC-726, 3-2130 | resources none → MBRT BASE [8 h] |
| PCO659.01 | DSC 465-EXTRA THICK SIDEWALK |  |  |  |  | none → MS-0025 | resources none → MBRT DSC [8 h] |
| 3-2104 | REMOVE SIDEWALK, 16TH TO 17TH NORTH SIDE |  |  |  |  |  | resources none → MBRT BASE [24 h] |
| 3-2105 | TRENCH CONDUIT, 16TH TO 17TH NORTH SIDE |  |  |  |  |  | resources none → MBRT BASE [48 h] |
| 3-2106 | INST CONDUIT, 16TH TO 17TH NORTH SIDE |  |  |  |  |  | resources none → MBRT BASE [64 h] |
| 3-2107 | FORM BUS STATION FOUNDATIONS, 16TH TO 17TH NORTH SIDE |  |  |  |  |  | resources none → MBRT BASE [16 h] |
| 3-2108 | POUR BUS STATION FOUNDATIONS, 16TH TO 17TH NORTH SIDE |  |  |  |  |  | resources none → MBRT BASE [8 h] |
| 3-2109 | GRADE SIDEWALK, 16TH TO 17TH NORTH SIDE |  |  |  |  |  | resources none → MBRT BASE [16 h] |
| 3-2110 | POUR SIDEWALK, 16TH TO 17TH NORTH SIDE |  |  |  |  |  | resources none → MBRT BASE [24 h] |
| 3-2189 | INSTALL WHEEL GUIDES |  |  |  |  |  | resources none → MBRT NEW [8 h] |
| 3-2118 | REMOVE SIDEWALK, 16TH TO 17TH SOUTH SIDE |  |  |  |  |  | resources none → MBRT BASE [16 h] |
| PCO539.01 | DSC 379-SE Corner Madison and 16th Signal Wire Conflict |  |  |  |  |  | resources none → MBRT DSC [360 h] |
| 3-2119 | TRENCH CONDUIT, 16TH TO 17TH SOUTH SIDE |  |  |  |  |  | resources none → MBRT BASE [16 h] |
| 3-2645 | OWNER DELAY - DESIGN ISSUES, 16TH TO 17TH SOUTH SIDE |  |  |  |  |  | resources none → MBRT NEW [16 h] |
| PCO543.01 | DSC 383-South Crossing Madison and 16th Type 3 HH |  |  |  |  | none → MS-0025 | resources none → MBRT DSC [352 h] |
| 3-2675 | EXTRA WORK - DESIGN ISSUES, 16TH TO 17TH SOUTH SIDE |  |  |  |  |  | resources none → MBRT NEW [16 h] |
| 3-2120 | INST CONDUIT, 16TH TO 17TH SOUTH SIDE |  |  |  |  |  | resources none → MBRT BASE [104 h] |
| 3-2121 | GRADE SIDEWALK, 16TH TO 17TH SOUTH SIDE |  |  |  |  |  | resources none → MBRT BASE [16 h] |
| 3-2122 | POUR SIDEWALK, 16TH TO 17TH SOUTH SIDE |  |  |  |  |  | resources none → MBRT BASE [40 h] |
| 32 | **MID BLOCK 16TH TO 17TH** |  | 2023-08-30 → 2023-11-17 (+79d) |  |  |  |  |
| 3-7941 | REMOVE SIDEWALK |  |  |  |  |  | constraint start on or after 2023-06-14 → none; resources none → MBRT NEW [16 h] |
| 3-7943 | DSC 522 EXISTING LEAKING SPIGOT |  |  |  |  |  | resources none → MBRT DSC [8 h] |
| 3-7944 | DSC 523 EXTRA THICK SIDEWALK |  |  |  |  |  | resources none → MBRT DSC [8 h] |
| 3-7942 | TRENCH CONDUIT |  |  |  |  |  | resources none → MBRT NEW [64 h] |
| 3-7945 | DSC 525 COMM CONFLICT WITH ELECTRICAL |  | 2023-08-14 → 2023-11-07 A (+85d) | 0% → 100% | -90d → none |  | resources none → MBRT DSC [808 h] |
| 3-7946 | DSC 526 CDF BACKFILL |  |  |  |  |  | resources none → MBRT DSC [32 h] |
| 3-7947 | DSC 527 UNKNOWN UNLOCATED CONDUIT CONFLICT WITH ELECTRICAL |  | 2023-08-14 → 2023-11-07 A (+85d) | 0% → 100% | -96d → none |  | resources none → MBRT DSC [808 h] |
| 3-7948 | DSC 532 CONDUIT CONFLICT |  | 2023-08-14 → 2023-11-07 A (+85d) | 0% → 100% | -96d → none |  | resources none → MBRT DSC [792 h] |
| 3-7949 | DSC 535 LIVE WIRE |  |  |  |  |  | resources none → MBRT DSC [8 h] |
| 3-7950 | DSC 536 UNKNOWN UNLOCATED CONDUITS |  | 2023-08-14 → 2023-11-07 A (+85d) | 0% → 100% | -96d → none |  | resources none → MBRT DSC [792 h] |
| 3-7951 | INSTALL ELECTRICAL | 2023-08-15 → 2023-10-24 A (+70d) | 2023-08-22 → 2023-11-07 A (+77d) | 0% → 100% | -96d → none | 3-7942, 3-7943, 3-7944, 3-7946, 3-7950, 3-7948 → 3-7942, 3-7943, 3-7944, 3-7946, 3-7950 FF, 3-7948 FF, 3-7966, 3-7961, 3-7956 | constraint start on or after 2023-07-03 → none; resources none → MBRT NEW [48 h] |
| 3-7952 | GRADE SIDEWALKS | 2023-08-23 → 2023-11-10 A (+79d) | 2023-08-23 → 2023-11-14 A (+83d) | 0% → 100% | -96d → none |  | resources none → MBRT NEW [8 h] |
| 3-7953 | ROADWAY PANEL | 2023-08-24 → 2023-11-15 A (+83d) | 2023-08-25 → 2023-11-15 A (+82d) | 0% → 100% | -96d → none |  | resources none → MBRT NEW [16 h] |
| 3-7954 | CURB RAMPS | 2023-08-28 → 2023-11-16 A (+80d) | 2023-08-29 → 2023-11-16 A (+79d) | 0% → 100% | -96d → none |  | resources none → MBRT NEW [16 h] |
| 3-7955 | SIDEWALKS | 2023-08-30 → 2023-11-17 A (+79d) | 2023-08-30 → 2023-11-17 A (+79d) | 0% → 100% | -96d → none |  | resources none → MBRT NEW [8 h] |
| 6 | **17TH TO 18TH SOUTH SIDE** | 2023-09-01 → 2023-12-11 (+101d) | 2023-09-25 → 2024-04-04 (+192d) |  |  |  |  |
| 3-2124 | REMOVE SIDEWALK, 17TH TO 18TH SOUTH SIDE | 2023-09-01 → 2023-12-11 A (+101d) | 2023-09-05 → 2023-12-19 A (+105d) | 0% → 100% | -97d → none |  | resources none → MBRT BASE [56 h] |
| 3-2125 | TRENCH CONDUIT, 17TH TO 18TH SOUTH SIDE | 2023-09-06 → 2023-12-11 A (+96d) | 2023-09-07 → 2023-12-19 A (+103d) | 0% → 100% | -97d → none |  | resources none → MBRT BASE [56 h] |
| 3-2126 | INST CONDUIT, 17TH TO 18TH SOUTH SIDE | 2023-09-06 → 2023-12-13 A (+98d) | 2023-09-07 → 2024-03-01 A (+176d) | 0% → 100% | -97d → none | 3-2125 SS → 3-2125 SS, DSC-673 FF, DSC-668 FF | resources none → MBRT BASE [432 h] |
| 3-2127 | FORM BUS STATION FOUNDATIONS, 17TH TO 18TH SOUTH SIDE | 2023-09-08 → 2023-12-13 A (+96d) | 2023-09-11 → 2023-12-22 A (+102d) | 0% → 100% | -97d → none | 3-2126 → 3-2126 SS | resources none → MBRT BASE [64 h] |
| 3-2128 | POUR BUS STATION FOUNDATIONS, 17TH TO 18TH SOUTH SIDE | 2023-09-12 → 2023-12-26 A (+105d) | 2023-09-12 → 2023-12-27 A (+106d) | 0% → 100% | -97d → none |  | resources none → MBRT BASE [16 h] |
| 3-2129 | GRADE SIDEWALK, 17TH TO 18TH SOUTH SIDE | 2023-09-13 → 2024-01-02 A (+111d) | 2023-09-15 → 2024-04-03 (+201d) |  | -97d → -142d | 3-2128 → 3-2128, DSC-716 FF+1d | resources none → MBRT BASE [336 h] |
| 3-2130 | POUR SIDEWALK, 17TH TO 18TH SOUTH SIDE | 2023-09-18 → 2024-01-09 A (+113d) | 2023-09-25 → 2024-04-04 (+192d) |  | -97d → -142d | 3-2129, 3-2135 FF → 3-2129 SS, 3-2135 FF, DSC-716 FF+2d | resources none → MBRT BASE [296 h] |
| 3-2135 | INSTALL WHEEL GUIDES | 2023-09-18 → 2024-04-02 (+197d) | 2023-09-18 → 2024-04-02 (+197d) |  | -92d → -140d | 3-2129 → 3-2129 SS | resources none → MBRT NEW [8 h] |
| 7 | **DRIVEWAYS BETWEEN 17TH AND 18TH SOUTH SIDE** | 2023-09-09 → 2023-12-20 (+102d) | 2023-09-10 → 2023-12-26 (+107d) |  |  |  |  |
| 3-2132 | REM SIDEWALK, DRIVEWAYS BETWEEN 17TH & 18TH SOUTH SIDE | 2023-09-09 → 2023-12-20 A (+102d) | 2023-09-09 → 2023-12-20 A (+102d) | 0% → 100% | 6d → none |  | resources none → MBRT BASE [8 h] |
| 3-2133 | INST CONDUIT, DRIVEWAYS BETWEEN 17TH & 18TH SOUTH SIDE | 2023-09-09 → 2023-12-20 A (+102d) | 2023-09-09 → 2023-12-22 A (+104d) | 0% → 100% | 6d → none |  | resources none → MBRT BASE [24 h] |
| 3-2134 | POUR DRIVEWAYS, DRIVEWAYS BETWEEN 17TH & 18TH SOUTH SIDE | 2023-09-10 → 2023-12-26 A (+107d) | 2023-09-10 → 2023-12-26 A (+107d) | 0% → 100% | 6d → none |  | resources none → MBRT BASE [8 h] |
| 8 | **18TH TO 19TH SOUTH SIDE** | 2023-09-18 → 2023-12-13 (+86d) | 2023-09-28 → 2024-03-18 (+172d) |  |  |  |  |
| 3-2136 | REMOVE SIDEWALK, 18TH TO 19TH SOUTH SIDE | 2023-09-18 → 2024-01-04 A (+108d) | 2023-09-18 → 2024-02-01 A (+136d) | 0% → 100% | -95d → none | 3-2129, 3-1884, 3-2129 FF → 3-2129 SS, 3-1884, 3-2141 | resources none → MBRT BASE [160 h] |
| 3-2137 | TRENCH CONDUIT, 18TH TO 19TH SOUTH SIDE | 2023-09-19 → 2024-01-04 A (+107d) | 2023-09-19 → 2024-02-02 A (+136d) | 0% → 100% | -95d → none | 3-2136 → 3-2136 SS | resources none → MBRT BASE [168 h] |
| 3-2138 | INST CONDUIT, 18TH TO 19TH SOUTH SIDE | 2023-09-19 → 2024-01-10 A (+113d) | 2023-09-19 → 2024-02-12 A (+146d) | 0% → 100% | -95d → none | 3-2137 SS → 3-2137 SS, 3-2181 FF | resources none → MBRT BASE [184 h] |
| 3-2139 | GRADE SIDEWALK, 18TH TO 19TH SOUTH SIDE | 2023-09-20 → 2024-02-14 A (+147d) | 2023-09-21 → 2024-03-13 A (+174d) | 0% → 100% | -95d → none | 3-2138 → 3-2138, 3-2211 SS, 3-2211 FF | resources none → MBRT BASE [96 h] |
| 3-2140 | POUR SIDEWALK, 18TH TO 19TH SOUTH SIDE | 2023-09-26 → 2024-02-14 A (+141d) | 2023-09-28 → 2024-03-18 A (+172d) | 0% → 100% | -97d → none | 3-2139, 3-2130 FF, 3-2130 → 3-2139 SS, 3-2211 FF | resources none → MBRT BASE [96 h] |
| 9 | **17TH TO 18TH NORTH SIDE** | 2023-09-29 → 2024-01-28 (+121d) | 2023-10-11 → 2024-04-09 (+181d) |  |  |  |  |
| 3-2142 | REMOVE SIDEWALK, 17TH TO 18TH NORTH SIDE | 2023-09-29 → 2024-01-28 A (+121d) | 2023-09-29 → 2024-02-23 A (+147d) | 0% → 100% | -97d → none | 3-1898, 3-2140 → 3-1898, 3-2132 | resources none → MBRT BASE [152 h] |
| 3-2143 | TRENCH CONDUIT, 17TH TO 18TH NORTH SIDE | 2023-10-02 → 2024-01-29 A (+119d) | 2023-10-02 → 2024-02-23 A (+144d) | 0% → 100% | -97d → none |  | resources none → MBRT BASE [152 h] |
| 3-2144 | INST CONDUIT, 17TH TO 18TH NORTH SIDE | 2023-10-02 → 2024-01-31 A (+121d) | 2023-10-02 → 2024-03-01 A (+151d) | 0% → 100% | -97d → none | 3-2143 SS → 3-2143 SS, DSC-693A | resources none → MBRT BASE [176 h] |
| 3-2145 | GRADE SIDEWALK, 17TH TO 18TH NORTH SIDE | 2023-10-03 → 2024-02-05 A (+125d) | 2023-10-04 → 2024-03-07 A (+155d) | 0% → 100% | -97d → none | 3-2144 → 3-2144, 3-2221, DSC-712 | resources none → MBRT BASE [152 h] |
| 3-2146 | POUR SIDEWALK, 17TH TO 18TH NORTH SIDE | 2023-10-05 → 2024-02-05 A (+123d) | 2023-10-11 → 2024-03-15 A (+156d) | 0% → 100% | -96d → none | 3-2145, 3-1896 → 3-2145 SS, 3-1896 | resources none → MBRT BASE [152 h] |
| 10 | **DRIVEWAY BETWEEN 17TH AND 18TH NORTH SIDE** | 2023-09-30 → 2024-03-25 (+177d) | 2023-10-01 → 2024-04-02 (+184d) |  |  |  |  |
| 3-2148 | REM SIDEWALK, DRIVEWAY BETWEEN 17TH & 18TH NORTH SIDE | 2023-09-30 → 2024-03-25 A (+177d) | 2023-09-30 → 2024-03-25 A (+177d) | 0% → 100% | -39d → none | 3-2142, 3-2136 SS → 3-2142, 3-2136 SS, 3-2231 SS | resources none → MBRT BASE [8 h] |
| 3-2149 | INST CONDUIT, DRIVEWAY BETWEEN 17TH & 18TH NORTH SIDE | 2023-09-30 → 2024-03-26 A (+178d) | 2023-09-30 → 2024-03-28 A (+180d) | 0% → 100% | -26d → none |  | resources none → MBRT BASE [8 h] |
| 3-2150 | POUR DRIVEWAYS, DRIVEWAY BETWEEN 17TH & 18TH NORTH SIDE | 2023-10-01 → 2024-03-29 A (+180d) | 2023-10-01 → 2024-04-02 (+184d) |  | -26d → -134d |  | resources none → MBRT BASE [8 h] |
| 11 | **18TH TO 19TH NORTH SIDE** | 2023-10-05 → 2024-03-26 (+173d) | 2023-10-18 → 2024-04-26 (+191d) |  |  |  |  |
| 3-2152 | REMOVE SIDEWALK, 18TH TO 19TH NORTH SIDE | 2023-10-05 → 2024-03-26 A (+173d) | 2023-10-06 → 2024-03-29 A (+175d) | 0% → 100% | -97d → none | 3-2145, 3-2148, 3-2145 FF, 3-2116, 3-2102 → 3-2145, 3-2148, 3-2145 FF, 3-2112 | resources none → MBRT BASE [16 h] |
| 3-2153 | TRENCH CONDUIT, 18TH TO 19TH NORTH SIDE | 2023-10-09 → 2024-03-26 A (+169d) | 2023-10-10 → 2024-03-29 A (+171d) | 0% → 100% | -97d → none | 3-2152 → 3-2152 SS, 3-2113 | resources none → MBRT BASE [16 h] |
| 3-2154 | INST CONDUIT, 18TH TO 19TH NORTH SIDE | 2023-10-09 → 2024-04-02 (+176d) | 2023-10-10 → 2024-04-03 (+176d) |  | -97d → -140d |  | resources none → MBRT BASE [16 h] |
| 3-2155 | GRADE SIDEWALK, 18TH TO 19TH NORTH SIDE | 2023-10-11 → 2024-04-04 (+176d) | 2023-10-12 → 2024-04-05 (+176d) |  | -97d → -140d |  | resources none → MBRT BASE [16 h] |

| ID | Task | Start | Finish | Duration | Complete | Total float | Predecessors | Other |
| --- | --- | --- | --- | --- | --- | --- | --- | --- |
| 3-2156 | POUR SIDEWALK, 18TH TO 19TH NORTH SIDE | 2023-10-13 → 2024-04-08 (+178d) | 2023-10-18 → 2024-04-12 (+177d) | 4d → 5d |  | -97d → -140d | 3-2155, 3-2146, 3-2146 FF → 3-2155, 3-2146, 3-2146 FF, 3-2116, 3-2231 FF, 3-2102 | resources none → MBRT BASE [32 h] |
| 12 | **19TH TO 20TH NORTH SIDE** |  | 2023-08-23 → 2023-12-29 (+128d) |  |  |  |  |  |
| 3-2158 | REMOVE SIDEWALK, 19TH TO 20TH NORTH SIDE |  |  |  |  |  |  | resources none → MBRT BASE [8 h] |
| 3-2159 | TRENCH CONDUIT, 19TH TO 20TH NORTH SIDE |  |  |  |  |  |  | resources none → MBRT BASE [8 h] |
| 3-2160 | INST CONDUIT, 19TH TO 20TH NORTH SIDE |  |  |  |  |  |  | resources none → MBRT BASE [32 h] |
| DSC-568 | DSC 568 PAVEMENT INSTALLED BY SPU NOT PER PLAN |  | 2023-08-14 → 2023-12-08 A (+116d) | 15d → 95d | 93% → 100% | -39d → none | none → MS-0025 | resources none → MBRT DSC [760 h] |
| 3-2161 | GRADE SIDEWALK, 19TH TO 20TH NORTH SIDE | 2023-08-15 → 2023-12-13 A (+120d) | 2023-08-16 → 2023-12-14 A (+120d) |  | 0% → 100% | -39d → none |  | resources none → MBRT BASE [16 h] |
| 3-2162 | POUR SIDEWALK, 19TH TO 20TH NORTH SIDE | 2023-08-17 → 2023-12-26 A (+131d) | 2023-08-23 → 2023-12-29 A (+128d) |  | 0% → 100% | -39d → none | 3-2161 → 3-2161, DSC-669 | resources none → MBRT BASE [32 h] |
| 3-2164 | REM SIDEWALK, 20TH TO DENNY NORTH SIDE |  |  |  |  |  |  | resources none → MBRT BASE [8 h] |
| 3-2165 | TRENCH CONDUIT, 20TH TO DENNY NORTH SIDE |  |  |  |  |  |  | resources none → MBRT BASE [8 h] |
| 3-2166 | INST CONDUIT, 20TH TO DENNY NORTH SIDE |  |  |  |  |  |  | resources none → MBRT BASE [16 h] |
| 3-2167 | FORM BUS STATION FOUNDATIONS, 20TH TO DENNY NORTH SIDE |  |  |  |  |  |  | resources none → MBRT BASE [16 h] |
| 3-2168 | POUR BUS STATION FOUNDATIONS, 20TH TO DENNY NORTH SIDE |  |  |  |  |  |  | resources none → MBRT BASE [8 h] |
| 3-2169 | GRADE SIDEWALK, 20TH TO DENNY NORTH SIDE |  |  |  |  |  |  | resources none → MBRT BASE [40 h] |
| 3-3355 | ADDED STRAIN POLE FOUNDATION |  |  |  |  |  |  | resources none → MBRT NEW [48 h] |
| PCO628.01 | DSC 440-SIDE SEWER CONFLICT WITH POLE FOUNDATION |  |  |  |  |  |  | resources none → MBRT DSC [192 h] |
| 3-2170 | POUR SIDEWALK, OTHER THAN THE DELAYED SIDEWALK |  |  |  |  |  |  | resources none → MBRT BASE [40 h] |
| 3-3360 | COMPLETE SIDEWALK AFTER DSC 440 |  |  |  |  |  |  | resources none → MBRT DSC [24 h] |
| 3-2205 | INSTALL WHEEL GUIDES |  |  |  |  |  |  | resources none → MBRT NEW [8 h] |
| 14 | **19TH TO 20TH SOUTH SIDE** |  | 2023-08-18 → 2023-08-24 (+6d) |  |  |  |  |  |
| 3-2172 | REMOVE SIDEWALK, 19TH TO 20TH SOUTH SIDE |  |  |  |  |  |  | resources none → MBRT BASE [8 h] |
| 3-2173 | TRENCH CONDUIT, 19TH TO 20TH SOUTH SIDE |  |  |  |  |  |  | resources none → MBRT BASE [8 h] |
| 3-2174 | INST CONDUIT, 19TH TO 20TH SOUTH SIDE |  |  |  |  |  |  | resources none → MBRT BASE [80 h] |
| 3-2175 | GRADE SIDEWALK, 19TH TO 20TH SOUTH SIDE |  |  |  |  |  |  | resources none → MBRT BASE [16 h] |
| 3-2176 | POUR SIDEWALK, 19TH TO 20TH SOUTH SIDE | 2023-08-14 → 2023-08-21 A (+7d) | 2023-08-18 → 2023-08-24 A (+6d) |  | 0% → 100% | -36d → none |  | resources none → MBRT BASE [32 h] |
| 3-3365 | REM SIDEWALK, DENNY SE CORNER |  |  |  |  |  |  | resources none → MBRT NEW [16 h] |
| PCO648.01 | DSC 458-CONCRETE OBSTRUCTION SIGNAL CONDUIT |  |  |  |  |  |  | resources none → MBRT DSC [8 h] |
| 3-3370 | TRENCH CONDUIT, DENNY SE CORNER |  |  |  |  |  |  | resources none → MBRT NEW [16 h] |
| 3-3375 | INST CONDUIT, DENNY SE CORNER |  |  |  |  |  |  | resources none → MBRT NEW [16 h] |
| 3-3380 | GRADE SIDEWALK, DENNY SE CORNER |  |  |  |  |  |  | resources none → MBRT NEW [16 h] |
| 3-3385 | POUR SIDEWALK, DENNY SE CORNER |  |  |  |  |  |  | resources none → MBRT NEW [40 h] |
| PCO679.01 | DSC 481-EXISTING POLE FOUNDATION CONFLCIT WITH CURB RAMP |  |  |  |  |  | none → MS-0025 | resources none → MBRT DSC [16 h] |
| 3-3530 | REM SIDEWALK, 20TH SE CORNER |  |  |  |  |  |  | resources none → MBRT NEW [16 h] |
| 3-3535 | TRENCH CONDUIT, 20TH SE CORNER |  |  |  |  |  |  | resources none → MBRT NEW [16 h] |
| PCO694.01 | DSC 496-UNKNOWN UNLOCATED CONDUIT |  |  |  |  |  | none → MS-0025 | resources none → MBRT DSC [16 h] |
| 3-3540 | INST CONDUIT, 20TH SE CORNER |  |  |  |  |  |  | resources none → MBRT NEW [16 h] |
| 3-3545 | GRADE SIDEWALK, 20TH SE CORNER |  |  |  |  |  |  | resources none → MBRT NEW [16 h] |
| 3-3550 | POUR SIDEWALK, 20TH SE CORNER |  |  |  |  |  |  | resources none → MBRT NEW [40 h] |
| 3-2184 | REM SIDEWALK, DENNY TO 23TH NORTH SIDE |  |  |  |  |  |  | resources none → MBRT BASE [208 h] |
| 3-2185 | TRENCH CONDUIT, DENNY TO 23TH NORTH SIDE |  |  |  |  |  |  | resources none → MBRT BASE [16 h] |
| 3-2186 | INST CONDUIT, DENNY TO 23TH NORTH SIDE |  |  |  |  |  |  | resources none → MBRT BASE [40 h] |
| PCO570.01 | DSC 401-Prime NE Denny type 3 HH doesn't work |  |  |  |  |  | none → MS-0025 | resources none → MBRT DSC [112 h] |
| 3-2670 | DELAY DESIGN ISSUES |  |  |  |  |  |  | resources none → MBRT NEW [16 h] |
| 3-2187 | GRADE SIDEWALK, DENNY TO 23TH NORTH SIDE |  |  |  |  |  |  | resources none → MBRT BASE [8 h] |
| 3-2188 | POUR SIDEWALK, DENNY TO 23TH NORTH SIDE |  |  |  |  |  |  | resources none → MBRT BASE [48 h] |
| 17 | **DENNY TO 23RD SOUTH SIDE** |  | 2023-08-16 → 2023-10-10 (+55d) |  |  |  |  |  |
| 3-2190 | REM SIDEWALK, DENNY TO 23RD SOUTH SIDE |  |  |  |  |  |  | resources none → MBRT BASE [16 h] |
| 3-2191 | TRENCH CONDUIT, DENNY TO 23RD SOUTH SIDE |  |  |  |  |  |  | resources none → MBRT BASE [16 h] |
| 3-2192 | INST CONDUIT, DENNY TO 23RD SOUTH SIDE |  |  |  |  |  |  | resources none → MBRT BASE [80 h] |
| 3-2650 | FOUNDATION DELAY - CONFLICT WITH HANDHOLES; DENNY TO 23RD SOUTH SIDE |  |  |  |  |  |  | resources none → MBRT NEW |
| PCO501.01 | DSC 358-HH in conflict with Bus Foundation EB Denny |  |  |  |  |  | none → MS-0025 | resources none → MBRT DSC [856 h] |
| 3-2655 | GRADE SIDEWALK OTHER THAN SHELTER AREA, DENNY TO 23RD SOUTH SIDE |  |  |  |  |  |  | resources none → MBRT NEW [24 h] |
| 3-2660 | POUR SIDEWALK OTHER THAN SHELTER AREA, DENNY TO 23RD SOUTH SIDE |  |  |  |  |  |  | resources none → MBRT NEW [48 h] |
| 3-2193 | FORM BUS STATION FOUNDATIONS, DENNY TO 23RD SOUTH SIDE |  |  |  |  |  |  | resources none → MBRT BASE [16 h] |
| 3-2194 | POUR BUS STATION FOUNDATIONS, DENNY TO 23RD SOUTH SIDE |  |  |  |  |  |  | resources none → MBRT BASE [8 h] |
| 3-2195 | GRADE SIDEWALK, DENNY TO 23RD SOUTH SIDE |  |  |  |  |  |  | resources none → MBRT BASE [8 h] |
| 3-2196 | POUR SIDEWALK, DENNY TO 23RD SOUTH SIDE |  |  |  |  |  |  | resources none → MBRT BASE [80 h] |
| PCO671.01 | DSC 474-EXISTING HH'S TOO HIGH FOR SIDEWALK |  | 2023-08-14 → 2023-10-06 A (+53d) |  | 90% → 100% | 95.5d → none |  | resources none → MBRT DSC [848 h] |
| 3-3520 | FINISH SIDEWALK AFTER DSC 474 | 2023-08-14 → 2023-10-09 A (+56d) | 2023-08-15 → 2023-10-09 A (+55d) |  | 0% → 100% | 95.5d → none |  | resources none → MBRT DSC [8 h] |
| 3-2201 | INSTALL WHEEL GUIDES | 2023-08-15 → 2023-10-10 A (+56d) | 2023-08-16 → 2023-10-10 A (+55d) |  | 0% → 100% | 95.5d → none |  | resources none → MBRT NEW [8 h] |
| 3-2206 | REMOVE SIDEWALK, 23RD TO 24TH SOUTH SIDE |  |  |  |  |  |  | resources none → MBRT BASE [8 h] |
| 3-2209 | GRADE SIDEWALK, 23RD TO 24TH SOUTH SIDE |  |  |  |  |  |  | resources none → MBRT BASE [24 h] |
| 3-2210 | POUR SIDEWALK, 23RD TO 24TH SOUTH SIDE |  |  |  |  |  |  | resources none → MBRT BASE [72 h] |
| 3-6200 | REMOVE SIDEWALK BULLNOSE |  |  |  |  |  | none → 3-2210 SS | constraint start on or after 2023-05-26 → none; resources none → MBRT NEW [8 h] |
| 3-6210 | TRENCH CONDUIT BULENOSE |  |  |  |  |  |  | resources none → MBRT NEW [8 h] |
| 3-2207 | TRENCH CONDUIT, 23RD TO 24TH SOUTH SIDE |  |  |  |  |  |  | resources none → MBRT BASE [16 h] |
| 3-2208 | INST CONDUIT, 23RD TO 24TH SOUTH SIDE |  |  |  |  |  |  | resources none → MBRT BASE [16 h] |
| 3-6211 | INSTALL CONDUIT BULLNOSE |  |  |  |  |  |  | resources none → MBRT NEW [24 h] |
| 3-6212 | GRADE SIDEWALK BULLNOSE |  |  |  |  |  |  | resources none → MBRT NEW [8 h] |
| 3-6213 | CURB RAMPS BULLNOSE |  |  |  |  |  |  | constraint start on or after 2023-06-08 → none; resources none → MBRT NEW [16 h] |

| ID | Task | Start | Finish | Complete | Total float | Predecessors | Other |
| --- | --- | --- | --- | --- | --- | --- | --- |
| 3-6214 | DSC 521 TYPE 5 HH CONFLICT |  |  |  |  |  | resources none → MBRT DSC [48 h] |
| 3-6215 | SIDEWALKS BULLNOSE |  |  |  |  |  | resources none → MBRT NEW [8 h] |
| 3-2212 | REM SIDEWALK, DRIVWAYS BETWEEN 23RD & 24 SOUTH SIDE |  |  |  |  |  | resources none → MBRT BASE |
| 3-2213 | INST CONDUIT, DRIVWAYS BETWEEN 23RD & 24 SOUTH SIDE |  |  |  |  |  | resources none → MBRT BASE |
| 3-2214 | POUR DRIVEWAY, DRIVWAYS BETWEEN 23RD & 24 SOUTH SIDE |  |  |  |  |  | resources none → MBRT BASE |
| 3-2216 | REMOVE SIDEWALK, 23RD TO 24TH NORTH SIDE |  |  |  |  |  | resources none → MBRT BASE [16 h] |
| 3-2217 | TRENCH CONDUIT, 23RD TO 24TH NORTH SIDE |  |  |  |  |  | resources none → MBRT BASE [32 h] |
| 3-2218 | INST CONDUIT, 23RD TO 24TH NORTH SIDE |  |  |  |  |  | resources none → MBRT BASE [64 h] |
| PCO615.01 | DSC 430-DUCT BANK CONFLICT WITH ELECTRICAL |  |  |  |  | none → MS-0025 | resources none → MBRT DSC [64 h] |
| 3-2219 | GRADE SIDEWALK, 23RD TO 24TH NORTH SIDE |  |  |  |  |  | resources none → MBRT BASE [24 h] |
| PCO629.01 | DSC 441-PED POLE FOUNDATION CONFLICT WITH DUCT BANK |  |  |  |  | none → MS-0025 | resources none → MBRT DSC [8 h] |
| 3-2220 | POUR SIDEWALK, 23RD TO 24TH NORTH SIDE |  |  |  |  |  | resources none → MBRT BASE [32 h] |
| 3-2285 | INSTALL WHEEL GUIDES |  |  |  |  |  | resources none → MBRT NEW [32 h] |
| 3-3390 | REMOVE SIDEWALK, 23RD TO 24TH NORTH SIDE |  |  |  |  |  | resources none → MBRT NEW [16 h] |
| 3-3395 | TRENCH CONDUIT, PRIOR TO DSC |  |  |  |  |  | resources none → MBRT DSC [8 h] |
| PCO638.01 | DSC 449-CDF CONFLICT WITH TRENCH |  |  |  |  |  | resources none → MBRT DSC [8 h] |
| 3-3465 | TRENCH CONDUIT, AFTER DSC |  |  |  |  |  | resources none → MBRT DSC [16 h] |
| 3-3400 | INST CONDUIT, 23RD TO 24TH NORTH SIDE |  |  |  |  |  | resources none → MBRT NEW [16 h] |
| 3-3405 | GRADE SIDEWALK, 23RD TO 24TH NORTH SIDE |  |  |  |  |  | resources none → MBRT NEW [16 h] |
| 3-3495 | CURB RAMPS, 23RD TO 24TH NORTH SIDE |  |  |  |  |  | resources none → MBRT NEW [32 h] |
| 3-3410 | POUR SIDEWALK, 23RD TO 24TH NORTH SIDE |  |  |  |  |  | resources none → MBRT NEW [32 h] |
| 3-3460 | SAWCUT SIDEWALK LIKE SWISS CHEESE |  |  |  |  |  | resources none → MBRT NEW [16 h] |
| 3-3435 | REMOVE SIDEWALK, 23RD TO 24TH NORTH SIDE |  |  |  |  |  | resources none → MBRT NEW [16 h] |
| 3-3440 | TRENCH CONDUIT, 23RD TO 24TH NORTH SIDE |  |  |  |  |  | resources none → MBRT NEW [16 h] |
| 3-3445 | INST CONDUIT, 23RD TO 24TH NORTH SIDE |  |  |  |  |  | resources none → MBRT NEW [16 h] |
| PCO666.01 | DSC 469-LEAKING SPU WATER SERVICE |  |  |  |  | none → MS-0025 | resources none → MBRT DSC [8 h] |
| PCO673.01 | DSC 476-LEAKING SPU WATER SERVICE |  |  |  |  | none → MS-0025 | resources none → MBRT DSC [8 h] |
| 3-3450 | GRADE SIDEWALK, 23RD TO 24TH NORTH SIDE |  |  |  |  |  | resources none → MBRT NEW [16 h] |
| 3-3455 | POUR SIDEWALK, 23RD TO 24TH NORTH SIDE |  |  |  |  |  | resources none → MBRT NEW [32 h] |
| 3-4000 | REMOVE SIDEWALK |  |  |  |  | none → 3-3455 | resources none → MBRT NEW [8 h] |
| 3-4100 | TRENCH CONDUIT |  |  |  |  |  | resources none → MBRT NEW [16 h] |
| 3-4101 | INSTALL CONDUIT |  |  |  |  |  | resources none → MBRT NEW [16 h] |
| 3-4102 | GRADE SIDEWALK |  |  |  |  |  | resources none → MBRT NEW [16 h] |
| 3-4103 | POUR SIDEWALK |  |  |  |  |  | resources none → MBRT NEW [24 h] |
| 3-8210 | REMOVE SIDEWALK |  |  |  |  |  | constraint start on or after 2023-06-21 → none; resources none → MBRT NEW [24 h] |
| 3-8211 | TRENCH CONDUIT |  |  |  |  |  | resources none → MBRT NEW [24 h] |
| 3-8212 | DSC 541 Duct Bank Conflict |  |  |  |  |  | resources none → MBRT DSC [8 h] |
| 3-8213 | INSTALL CONDUIT |  |  |  |  |  | constraint start on or after 2023-06-26 → none; resources none → MBRT NEW [24 h] |
| 3-8214 | GRADE SIDEWALK |  |  |  |  |  | resources none → MBRT NEW [16 h] |
| 3-8215 | POUR SIDEWALK |  |  |  |  |  | resources none → MBRT NEW [48 h] |
| 23 | **24TH TO 25TH NORTH SIDE** | 2023-08-14 → 2023-11-30 (+108d) | 2023-08-25 → 2023-12-21 (+118d) |  |  |  |  |
| 3-2222 | REMOVE SIDEWALK, 24TH TO 25TH NORTH SIDE | 2023-08-14 → 2023-11-30 A (+108d) | 2023-08-14 → 2023-12-04 A (+112d) | 0% → 100% | -98d → none |  | resources none → MBRT BASE [24 h] |
| 3-2223 | TRENCH CONDUIT, 24TH TO 25TH NORTH SIDE | 2023-08-15 → 2023-12-05 A (+112d) | 2023-08-16 → 2023-12-06 A (+112d) | 0% → 100% | -98d → none |  | resources none → MBRT BASE [16 h] |
| 3-2224 | INST CONDUIT, 24TH TO 25TH NORTH SIDE | 2023-08-17 → 2023-12-05 A (+110d) | 2023-08-18 → 2023-12-08 A (+112d) | 0% → 100% | -98d → none |  | resources none → MBRT BASE [32 h] |
| 3-2225 | GRADE SIDEWALK, 24TH TO 25TH NORTH SIDE | 2023-08-21 → 2023-12-08 A (+109d) | 2023-08-22 → 2023-12-11 A (+111d) | 0% → 100% | -98d → none | 3-2224 → 3-2224, 3-2277, 3-2227 | resources none → MBRT BASE [16 h] |
| 3-2226 | POUR SIDEWALK, 24TH TO 25TH NORTH SIDE | 2023-08-23 → 2023-12-19 A (+118d) | 2023-08-25 → 2023-12-21 A (+118d) | 0% → 100% | -98d → none | 3-2225, 3-8215 → 3-2225, 3-8215, DSC-670 | resources none → MBRT BASE [24 h] |
| 24 | **DRIVEWAYS BETWEEN 24TH AND 25TH** | 2023-08-19 → 2024-02-02 (+167d) | 2023-08-20 → 2024-02-05 (+169d) |  |  |  |  |
| 3-2228 | REM SIDEWALK, DRIVEWAYS BETWEEN 24TH & 25TH | 2023-08-19 → 2024-02-02 A (+167d) | 2023-08-19 → 2024-02-02 A (+167d) | 0% → 100% | -38d → none |  | resources none → MBRT BASE [8 h] |
| 3-2229 | INST CONDUIT, DRIVEWAYS BETWEEN 24TH & 25TH | 2023-08-19 → 2024-02-02 A (+167d) | 2023-08-19 → 2024-02-02 A (+167d) | 0% → 100% | -38d → none |  | resources none → MBRT BASE [8 h] |
| 3-2230 | POUR DRIVEWAY, DRIVEWAYS BETWEEN 24TH & 25TH | 2023-08-20 → 2024-02-03 A (+167d) | 2023-08-20 → 2024-02-05 A (+169d) | 0% → 100% | -38d → none |  | resources none → MBRT BASE [8 h] |
| 3-2232 | REM SIDEWALK, 24TH SE CORNER |  |  |  |  |  | resources none → MBRT BASE [24 h] |
| 3-2233 | TRENCH CONDUIT, 24TH SE CORNER |  |  |  |  |  | resources none → MBRT BASE [24 h] |
| 3-2234 | INST CONDUIT, 24TH SE CORNER |  |  |  |  |  | resources none → MBRT BASE [24 h] |
| 3-2235 | FORM BUS STATION FOUNDATIONS, 24TH SE CORNER |  |  |  |  |  | resources none → MBRT BASE [56 h] |
| 3-2236 | POUR BUS STATION FOUNDATIONS, 24TH SE CORNER |  |  |  |  |  | resources none → MBRT BASE [8 h] |
| 3-2237 | GRADE SIDEWALK, 24TH SE CORNER |  |  |  |  |  | resources none → MBRT BASE [16 h] |
| 3-2238 | POUR SIDEWALK, 24TH SE CORNER |  |  |  |  |  | resources none → MBRT BASE [40 h] |
| 3-2267 | INSTALL WHEEL GUIDES |  |  |  |  |  | resources none → MBRT NEW [8 h] |
| 3-3470 | REM SIDEWALK, 25TH SW CORNER |  |  |  |  |  | resources none → MBRT NEW [16 h] |
| 3-3475 | TRENCH CONDUIT, 25TH SW CORNER |  |  |  |  |  | resources none → MBRT NEW [16 h] |
| 3-3480 | INST CONDUIT, 25TH SW CORNER |  |  |  |  |  | resources none → MBRT NEW [16 h] |
| 3-3560 | POUR BUS STATION FOUNDATIONS, 25TH SW CORNER |  |  |  |  |  | resources none → MBRT NEW [16 h] |
| 3-3555 | FORM BUS STATION FOUNDATIONS, 25TH SW CORNER |  |  |  |  |  | resources none → MBRT NEW [16 h] |
| 3-3485 | GRADE SIDEWALK, 25TH SW CORNER |  |  |  |  |  | resources none → MBRT NEW [16 h] |
| 3-3490 | POUR SIDEWALK, 25TH SW CORNER |  |  |  |  |  | resources none → MBRT NEW [40 h] |
| 26 | **25TH TO 26TH NORTH SIDE** | 2023-09-01 → 2023-12-11 (+101d) | 2023-09-20 → 2024-02-02 (+135d) |  |  |  |  |
| 3-2240 | REMOVE SIDEWALK, 25TH TO 26TH NORTH SIDE | 2023-09-01 → 2023-12-11 A (+101d) | 2023-09-05 → 2023-12-12 A (+98d) | 0% → 100% | -102d → none |  | resources none → MBRT BASE [16 h] |
| 3-2241 | TRENCH CONDUIT, 25TH TO 26TH NORTH SIDE | 2023-09-06 → 2023-12-13 A (+98d) | 2023-09-08 → 2023-12-18 A (+101d) | 0% → 100% | -102d → none |  | resources none → MBRT BASE [32 h] |
| 3-2242 | INST CONDUIT, 25TH TO 26TH NORTH SIDE | 2023-09-06 → 2023-12-15 A (+100d) | 2023-09-08 → 2023-12-19 A (+102d) | 0% → 100% | -102d → none |  | resources none → MBRT BASE [24 h] |
| 3-2243 | GRADE SIDEWALK, 25TH TO 26TH NORTH SIDE | 2023-09-11 → 2023-12-19 A (+99d) | 2023-09-12 → 2023-12-22 A (+101d) | 0% → 100% | -102d → none | 3-2242 → 3-2242, DSC-667 | resources none → MBRT BASE [32 h] |

| ID | Task | Start | Finish | Complete | Total float | Predecessors | Other |
| --- | --- | --- | --- | --- | --- | --- | --- |
| 3-2244 | POUR SIDEWALK, 25TH TO 26TH NORTH SIDE | 2023-09-13 → 2024-01-22 A (+131d) | 2023-09-20 → 2024-02-02 A (+135d) | 0% → 100% | -93d → none |  | resources none → MBRT BASE [80 h] |
| 27 | **DRIVEWAYS BETWWEN 25TH AND 26TH NORTH SIDE** | 2023-09-02 → 2024-02-02 (+153d) | 2023-09-03 → 2024-02-05 (+155d) |  |  |  |  |
| 3-2246 | REM SIDEWALK, DRIVEWAYS BETWWEN 25TH & 26TH NORTH SIDE | 2023-09-02 → 2024-02-02 A (+153d) | 2023-09-02 → 2024-02-02 A (+153d) | 0% → 100% | -36d → none |  | constraint start on or after 2023-07-06 → none; resources none → MBRT BASE [8 h] |
| 3-2247 | INST CONDUIT, DRIVEWAYS BETWWEN 25TH & 26TH NORTH SIDE | 2023-09-02 → 2024-02-02 A (+153d) | 2023-09-02 → 2024-02-02 A (+153d) | 0% → 100% | -36d → none |  | resources none → MBRT BASE [8 h] |
| 3-2248 | POUR DRIVEWAY, DRIVEWAYS BETWWEN 25TH & 26TH NORTH SIDE | 2023-09-03 → 2024-02-03 A (+153d) | 2023-09-03 → 2024-02-05 A (+155d) | 0% → 100% | -36d → none |  | resources none → MBRT BASE [8 h] |
| 28 | **26TH TO 27TH NORTH SIDE** | 2023-09-13 → 2023-12-26 (+104d) | 2023-09-29 → 2024-02-27 (+151d) |  |  |  |  |
| 3-2250 | REMOVE SIDEWALK, 26TH TO 27TH NORTH SIDE | 2023-09-13 → 2023-12-26 A (+104d) | 2023-09-14 → 2023-12-28 A (+105d) | 0% → 100% | -102d → none |  | constraint start on or after 2023-07-05 → none; resources none → MBRT BASE [24 h] |
| 3-2251 | TRENCH CONDUIT, 26TH TO 27TH NORTH SIDE | 2023-09-15 → 2023-12-29 A (+105d) | 2023-09-19 → 2024-01-03 A (+106d) | 0% → 100% | -102d → none |  | resources none → MBRT BASE [24 h] |
| 3-2252 | INST CONDUIT, 26TH TO 27TH NORTH SIDE | 2023-09-15 → 2024-01-04 A (+111d) | 2023-09-19 → 2024-01-08 A (+111d) | 0% → 100% | -102d → none |  | resources none → MBRT BASE [24 h] |
| 3-2253 | GRADE SIDEWALK, 26TH TO 27TH NORTH SIDE | 2023-09-20 → 2024-01-10 A (+112d) | 2023-09-21 → 2024-01-11 A (+112d) | 0% → 100% | -102d → none |  | resources none → MBRT BASE [16 h] |
| 3-2254 | POUR SIDEWALK, 26TH TO 27TH NORTH SIDE | 2023-09-22 → 2024-02-20 A (+151d) | 2023-09-29 → 2024-02-27 A (+151d) | 0% → 100% | -94d → none | 3-2244, 3-2253 → 3-2244, 3-2253, 3-2258 FF | resources none → MBRT BASE [48 h] |
| 29 | **DRIVEWAYS BETWEEN 26TH AND 27TH NORTH SIDE** | 2023-09-16 → 2024-02-23 (+160d) | 2023-09-17 → 2024-02-26 (+162d) |  |  |  |  |
| 3-2256 | REM SIDEWALK, DRIVEWAYS BETWEEN 26TH & 27TH NORTH SIDE | 2023-09-16 → 2024-02-23 A (+160d) | 2023-09-16 → 2024-02-23 A (+160d) | 0% → 100% | -42d → none |  | resources none → MBRT BASE [8 h] |
| 3-2257 | INST CONDUIT, DRIVEWAYS BETWEEN 26TH & 27TH NORTH SIDE | 2023-09-16 → 2024-02-23 A (+160d) | 2023-09-16 → 2024-02-23 A (+160d) | 0% → 100% | -42d → none |  | resources none → MBRT BASE [8 h] |
| 3-2258 | POUR DRIVEWAY, DRIVEWAYS BETWEEN 26TH & 27TH NORTH SIDE | 2023-09-17 → 2024-02-24 A (+160d) | 2023-09-17 → 2024-02-26 A (+162d) | 0% → 100% | -42d → none |  | resources none → MBRT BASE [8 h] |
| 30 | **27TH TO MLK NORTH SIDE** | 2023-09-22 → 2023-09-19 (-3d) | 2023-10-16 → 2024-03-15 (+151d) |  |  |  |  |
| 3-2260 | REMOVE SIDEWALK, 27TH TO MLK NORTH SIDE | 2023-09-22 → 2024-01-12 A (+112d) | 2023-09-25 → 2024-01-19 A (+116d) | 0% → 100% | -102d → none | 3-2253, 3-2258, 3-1982 → 3-2253, 3-1982, 3-2275 | resources none → MBRT BASE [40 h] |
| 3-2261 | TRENCH CONDUIT, 27TH TO MLK NORTH SIDE | 2023-09-26 → 2024-01-17 A (+113d) | 2023-09-28 → 2024-02-16 A (+141d) | 0% → 100% | -102d → none |  | resources none → MBRT BASE [184 h] |
| 3-2262 | INST CONDUIT, 27TH TO MLK NORTH SIDE | 2023-09-26 → 2024-01-19 A (+115d) | 2023-09-28 → 2024-02-28 A (+153d) | 0% → 100% | -102d → none | 3-2261 SS → 3-2261 SS, DSC-689 FF | resources none → MBRT BASE [224 h] |
| 3-2263 | FORM BUS STATION FOUNDATIONS, 27TH TO MLK NORTH SIDE | 2023-09-29 → 2024-02-21 A (+145d) | 2023-10-02 → 2024-02-28 A (+149d) | 0% → 100% | -102d → none | 3-2262 → 3-2262, DSC-701 | resources none → MBRT BASE [48 h] |
| 3-2264 | POUR BUS STATION FOUNDATIONS, 27TH TO MLK NORTH SIDE | 2023-10-03 → 2024-02-29 A (+149d) | 2023-10-03 → 2024-02-29 A (+149d) | 0% → 100% | -102d → none | 3-2263 → 3-2263, 3-2273 | resources none → MBRT BASE [8 h] |
| 3-2265 | GRADE SIDEWALK, 27TH TO MLK NORTH SIDE | 2023-10-04 → 2024-03-04 A (+152d) | 2023-10-06 → 2024-03-07 A (+153d) | 0% → 100% | -102d → none |  | resources none → MBRT BASE [24 h] |
| 3-2321 | INSTALL WHEEL GUIDES | 2023-10-04 → 2024-03-04 A (+152d) | 2023-10-04 → 2024-03-04 A (+152d) | 0% → 100% | -91d → none |  | resources none → MBRT NEW [8 h] |
| 3-2266 | POUR SIDEWALK, 27TH TO MLK NORTH SIDE | 2023-10-09 → 2024-03-08 A (+151d) | 2023-10-16 → 2024-03-15 A (+151d) | 0% → 100% | -99d → none | 3-2265, 3-2254, 3-2321 FF → 3-2265, 3-2254, 3-2321 FF, 3-2258 | resources none → MBRT BASE [48 h] |
| 31 | **MLK TO 322+50 NORTH SIDE** | 2023-10-09 → 2024-02-07 (+121d) | 2023-10-13 → 2024-03-08 (+147d) |  |  |  |  |
| 3-2268 | REM SIDEWALK, MLK TO 322+50 NORTH SIDE | 2023-10-09 → 2024-02-07 A (+121d) | 2023-10-09 → 2024-02-07 A (+121d) | 0% → 100% | -102d → none | 3-2265 → 3-2246, 3-2228 | resources none → MBRT BASE [8 h] |
| 3-2269 | TRENCH CONDUIT, MLK TO 322+50 NORTH SIDE | 2023-10-10 → 2024-02-08 A (+121d) | 2023-10-10 → 2024-02-09 A (+122d) | 0% → 100% | -102d → none |  | resources none → MBRT BASE [16 h] |
| 3-2270 | INST CONDUIT, MLK TO 322+50 NORTH SIDE | 2023-10-10 → 2024-02-09 A (+122d) | 2023-10-10 → 2024-02-26 A (+139d) | 0% → 100% | -102d → none |  | resources none → MBRT BASE [88 h] |
| 3-2271 | GRADE SIDEWALK, MLK TO 322+50 NORTH SIDE | 2023-10-11 → 2024-02-29 A (+141d) | 2023-10-11 → 2024-02-29 A (+141d) | 0% → 100% | -102d → none |  | resources none → MBRT BASE [8 h] |
| 3-2272 | POUR SIDEWALK, MLK TO 322+50 NORTH SIDE | 2023-10-12 → 2024-03-08 A (+148d) | 2023-10-13 → 2024-03-08 A (+147d) | 0% → 100% | -102d → none |  | resources none → MBRT BASE [16 h] |
| 3-2280 | REMOVE SIDEWALK, 25TH TO 27TH SOUTH SIDE |  |  |  |  |  | resources none → MBRT BASE [24 h] |
| 3-2281 | TRENCH CONDUIT, 25TH TO 27TH SOUTH SIDE |  |  |  |  |  | resources none → MBRT BASE [8 h] |
| 3-2282 | INST CONDUIT, 25TH TO 27TH SOUTH SIDE |  |  |  |  |  | resources none → MBRT BASE [8 h] |
| 3-2283 | GRADE SIDEWALK, 25TH TO 27TH SOUTH SIDE |  |  |  |  |  | resources none → MBRT BASE [16 h] |
| 3-2284 | POUR SIDEWALK, 25TH TO 27TH SOUTH SIDE |  |  |  |  |  | resources none → MBRT BASE [64 h] |
| 3-2286 | REM SIDEWALK, DRIVEWAY BETWEEN 25TH & 27TH SOUTH SIDE |  |  |  |  | none → 3-2280 | resources none → MBRT BASE [8 h] |
| 3-2287 | INST CONDUIT, DRIVEWAY BETWEEN 25TH & 27TH SOUTH SIDE |  |  |  |  |  | resources none → MBRT BASE [8 h] |
| 3-2288 | POUR DRIVEWAY, DRIVEWAY BETWEEN 25TH & 27TH SOUTH SIDE |  |  |  |  |  | resources none → MBRT BASE [8 h] |
| 35 | **27TH TO MLK SOUTH SIDE** | 2023-10-12 → 2024-03-15 (+155d) | 2023-11-06 → 2024-05-07 (+183d) |  |  |  |  |
| 3-2290 | REMOVE SIDEWALK, 27TH TO MLK SOUTH SIDE | 2023-10-12 → 2024-03-15 A (+155d) | 2023-10-13 → 2024-03-15 A (+154d) | 0% → 100% | -102d → none |  | resources none → MBRT BASE [16 h] |
| 3-2291 | TRENCH CONDUIT, 27TH TO MLK SOUTH SIDE | 2023-10-16 → 2024-03-15 A (+151d) | 2023-10-18 → 2024-03-18 A (+152d) | 0% → 100% | -102d → none |  | resources none → MBRT BASE [24 h] |
| 3-2292 | INST CONDUIT, 27TH TO MLK SOUTH SIDE | 2023-10-16 → 2024-03-19 A (+155d) | 2023-10-18 → 2024-04-04 (+169d) |  | -102d → -145d | 3-2291 SS → 3-2291 SS, DSC-734 FF | resources none → MBRT BASE [24 h] |
| 3-2293 | FORM BUS STATION FOUNDATIONS, 27TH TO MLK SOUTH SIDE | 2023-10-19 → 2024-03-20 A (+153d) | 2023-10-20 → 2024-03-27 A (+159d) | 0% → 100% | -102d → none | 3-2292 → 3-2292 SS | resources none → MBRT BASE [16 h] |
| 3-2294 | POUR BUS STATION FOUNDATIONS, 27TH TO MLK SOUTH SIDE | 2023-10-23 → 2024-03-28 A (+157d) | 2023-10-23 → 2024-04-04 (+164d) |  | -102d → -145d | 3-2293 → 3-2293, 3-2292 FF | resources none → MBRT BASE [8 h] |
| 3-2295 | GRADE SIDEWALK, 27TH TO MLK SOUTH SIDE | 2023-10-24 → 2024-04-05 (+164d) | 2023-10-25 → 2024-04-08 (+166d) |  | -102d → -145d |  | resources none → MBRT BASE [16 h] |
| 3-2580 | INSTALL WHEEL GUIDES | 2023-10-24 → 2024-04-05 (+164d) | 2023-10-24 → 2024-04-05 (+164d) |  | -93d → -133d |  | resources none → MBRT NEW [8 h] |
| 3-2296 | POUR SIDEWALK, 27TH TO MLK SOUTH SIDE | 2023-10-26 → 2024-04-12 (+169d) | 2023-11-06 → 2024-04-23 (+169d) |  | -102d → -145d | 3-2295, 3-2284, 3-2580 FF → 3-2295 FS+3d, 3-2284, 3-2580 FF | resources none → MBRT BASE [64 h] |
| 36 | **MADISON TO E. ARTHUR EAST SIDE** |  | 2023-08-24 → 2023-08-25 (+1d) |  |  |  |  |
| 3-2298 | REM SIDEWALK, MAD TO E ARTHUR EAST SIDE |  |  |  |  |  | resources none → MBRT BASE [104 h] |
| 3-2299 | TRENCH CONDUIT, MAD TO E ARTHUR EAST SIDE |  |  |  |  |  | resources none → MBRT BASE [104 h] |
| 3-2300 | INST CONDUIT, MAD TO E ARTHUR EAST SIDE |  | 2023-08-15 → 2023-08-22 A (+7d) | 0% → 100% | -73d → none |  | resources none → MBRT BASE [136 h] |
| 3-2301 | GRADE SIDEWALK, MAD TO E ARTHUR EAST SIDE | 2023-08-16 → 2023-08-23 A (+7d) | 2023-08-17 → 2023-08-24 A (+7d) | 0% → 100% | -73d → none |  | resources none → MBRT BASE [16 h] |
| 3-2302 | POUR SIDEWALK, MAD TO E ARTHUR EAST SIDE | 2023-08-18 → 2023-08-25 A (+7d) | 2023-08-24 → 2023-08-25 A (+1d) | 0% → 100% | -73d → none |  | resources none → MBRT BASE [8 h] |
| 37 | **E ARTHUR TO HARRISON EAST SIDE** |  | 2023-08-23 → 2023-11-02 (+71d) |  |  |  |  |
| 3-2304 | REM SIDEWALK, E ARTHUR TO HARRISON EAST SIDE |  |  |  |  |  | resources none → MBRT BASE [104 h] |
| 3-2305 | TRENCH CONDUIT, E ARTHUR TO HARRISON EAST SIDE |  |  |  |  |  | resources none → MBRT BASE [104 h] |
| 3-2306 | INST CONDUIT, E ARTHUR TO HARRISON EAST SIDE |  | 2023-08-15 → 2023-08-21 A (+6d) | 0% → 100% | -76d → none |  | resources none → MBRT BASE [128 h] |
| 3-2307 | GRADE SIDEWALK, E ARTHUR TO HARRISON EAST SIDE | 2023-08-16 → 2023-08-22 A (+6d) | 2023-08-16 → 2023-08-22 A (+6d) | 0% → 100% | -76d → none |  | resources none → MBRT BASE [8 h] |
| 3-2308 | POUR SIDEWALK, E ARTHUR TO HARRISON EAST SIDE | 2023-08-17 → 2023-08-22 A (+5d) | 2023-08-23 → 2023-11-02 A (+71d) | 0% → 100% | -76d → none | 3-2307 → 3-2307, 3-2363 FF | resources none → MBRT BASE [416 h] |
| 3-2310 | REM SIDEWALK, E HARRISON & MLK SW CORNER | 2023-09-18 → 2024-03-08 A (+172d) | 2023-09-18 → 2024-03-11 A (+175d) | 0% → 100% | -92d → none | 3-2308, 3-2089 → 3-2308, 3-2089, 3-2271 | was named REM SIDEWALK, E HARRISON & MLK SE CORNER; resources none → MBRT BASE [8 h] |
| 3-2311 | TRENCH CONDUIT, E HARRISON & MLK SW CORNER | 2023-09-19 → 2024-03-11 A (+174d) | 2023-09-19 → 2024-03-12 A (+175d) | 0% → 100% | -92d → none |  | was named TRENCH CONDUIT, E HARRISON & MLK SE CORNER; resources none → MBRT BASE [8 h] |
| 3-2312 | INST CONDUIT, E HARRISON & MLK SW CORNER | 2023-09-19 → 2024-03-12 A (+175d) | 2023-09-19 → 2024-03-18 A (+181d) | 0% → 100% | -92d → none |  | was named INST CONDUIT, E HARRISON & MLK SE CORNER; resources none → MBRT BASE [8 h] |
| 3-2313 | GRADE SIDEWALK, E HARRISON & MLK SW CORNER | 2023-09-20 → 2024-03-19 A (+181d) | 2023-09-20 → 2024-03-20 A (+182d) | 0% → 100% | -92d → none |  | was named GRADE SIDEWALK, E HARRISON & MLK SE CORNER; resources none → MBRT BASE [8 h] |
| 3-2314 | POUR SIDEWALK, E HARRISON & MLK SW CORNER | 2023-09-21 → 2024-03-22 A (+183d) | 2023-09-25 → 2024-03-28 A (+185d) | 0% → 100% | -92d → none |  | was named POUR SIDEWALK, E HARRISON & MLK SE CORNER; resources none → MBRT BASE [24 h] |
| 39 | **E. ARTHUR MLK TO 27TH NORTH SIDE** | 2023-09-26 → 2024-03-13 (+169d) | 2023-10-03 → 2024-04-08 (+188d) |  |  |  |  |
| 3-2316 | REM SIDEWALK, E ARTHUR MLK TO 27TH NORTH SIDE | 2023-09-26 → 2024-03-13 A (+169d) | 2023-09-26 → 2024-03-13 A (+169d) | 0% → 100% | -92d → none |  | resources none → MBRT BASE [8 h] |
| 3-2317 | TRENCH CONDUIT, E ARTHUR MLK TO 27TH NORTH SIDE | 2023-09-27 → 2024-03-14 A (+169d) | 2023-09-27 → 2024-03-14 A (+169d) | 0% → 100% | -92d → none |  | resources none → MBRT BASE [8 h] |
| 3-2318 | INST CONDUIT, E ARTHUR MLK TO 27TH NORTH SIDE | 2023-09-27 → 2024-03-14 A (+169d) | 2023-09-27 → 2024-04-02 (+188d) |  | -92d → -139d |  | resources none → MBRT BASE [8 h] |
| 3-2319 | GRADE SIDEWALK, E ARTHUR MLK TO 27TH NORTH SIDE | 2023-09-28 → 2024-04-03 (+188d) | 2023-09-28 → 2024-04-03 (+188d) |  | -92d → -139d |  | resources none → MBRT BASE [8 h] |
| 3-2320 | POUR SIDEWALK, E ARTHUR MLK TO 27TH NORTH SIDE | 2023-09-29 → 2024-04-04 (+188d) | 2023-10-03 → 2024-04-08 (+188d) |  | -92d → -139d |  | resources none → MBRT BASE [24 h] |

| ID | Task | Start | Finish | Duration | Complete | Total float | Predecessors | Other |
| --- | --- | --- | --- | --- | --- | --- | --- | --- |
| 40 | **E. HARRISON MLK TO E ARTHUR SOUTH SIDE** | 2023-10-04 → 2024-03-21 (+169d) | 2023-10-11 → 2024-04-11 (+183d) |  |  |  |  |  |
| 3-2322 | REM SIDEWALK, E HARRISON MLK TO E ARTHUR SOUTH SIDE | 2023-10-04 → 2024-03-21 A (+169d) | 2023-10-04 → 2024-03-21 A (+169d) |  | 0% → 100% | -92d → none | 3-2320, 3-2010 → 3-2010 | resources none → MBRT BASE [8 h] |
| 3-2323 | TRENCH CONDUIT, E HARRISON MLK TO E ARTHUR SOUTH SIDE | 2023-10-05 → 2024-03-22 A (+169d) | 2023-10-05 → 2024-03-22 A (+169d) |  | 0% → 100% | -92d → none |  | resources none → MBRT BASE [8 h] |
| 3-2324 | INST CONDUIT, E HARRISON MLK TO E ARTHUR SOUTH SIDE | 2023-10-05 → 2024-03-22 A (+169d) | 2023-10-05 → 2024-04-02 (+180d) |  |  | -92d → -134d |  | resources none → MBRT BASE [8 h] |
| 3-2325 | GRADE SIDEWALK, E HARRISON MLK TO E ARTHUR SOUTH SIDE | 2023-10-06 → 2024-04-03 (+180d) | 2023-10-06 → 2024-04-03 (+180d) |  |  | -92d → -134d |  | resources none → MBRT BASE [8 h] |
| 3-2326 | POUR SIDEWALK, E HARRISON MLK TO E ARTHUR SOUTH SIDE | 2023-10-09 → 2024-04-09 (+183d) | 2023-10-11 → 2024-04-11 (+183d) |  |  | -92d → -137d | 3-2325 → 3-2325, 3-2320 | resources none → MBRT BASE [24 h] |
| 41 | **MLK AND E. ARTHUR CENTER ISLAND** | 2023-10-19 → 2024-04-24 (+188d) | 2023-10-30 → 2024-05-10 (+193d) |  |  |  |  |  |
| 3-2328 | REM SIDEWALK, MLK & E ARTHUR CENTER ISLAND | 2023-10-19 → 2024-04-24 (+188d) | 2023-10-19 → 2024-04-24 (+188d) |  |  | -97d → -145d | 3-2326, 3-2156 → 3-2326, 3-2295, 3-2296 | resources none → MBRT BASE [8 h] |
| 3-2329 | TRENCH CONDUIT, MLK & E ARTHUR CENTER ISLAND | 2023-10-20 → 2024-04-25 (+188d) | 2023-10-20 → 2024-04-25 (+188d) |  |  | -97d → -145d |  | resources none → MBRT BASE [8 h] |
| 3-2330 | INST CONDUIT, MLK & E ARTHUR CENTER ISLAND | 2023-10-20 → 2024-04-25 (+188d) | 2023-10-20 → 2024-04-25 (+188d) |  |  | -97d → -145d |  | resources none → MBRT BASE [8 h] |
| 3-2331 | GRADE SIDEWALK, MLK & E ARTHUR CENTER ISLAND | 2023-10-23 → 2024-04-26 (+186d) | 2023-10-23 → 2024-04-26 (+186d) |  |  | -97d → -145d |  | resources none → MBRT BASE [8 h] |
| 3-2332 | POUR SIDEWALK, MLK & E ARTHUR CENTER ISLAND | 2023-10-24 → 2024-04-29 (+188d) | 2023-10-30 → 2024-05-10 (+193d) | 5d → 10d |  | -97d → -145d |  | resources none → MBRT BASE [80 h] |
| 42 | **19TH AND UNION ST** |  | 2023-10-04 → 2024-05-21 (+230d) |  |  |  |  |  |
| 3-2344 | POTHOLE FOUNDATIONS, 19TH & UNION ST |  |  |  |  |  |  | resources none → MBRT BASE [48 h] |
| 3-2334 | INST ELECTRICAL ROAD CROSSINGS, 19TH & UNION ST | 2023-08-25 → 2024-01-20 A (+148d) | 2023-09-01 → 2024-01-25 A (+146d) |  | 0% → 100% | -73d → none | 3-2344, MS-2576, 3-2302 → 3-2344, MS-2576, 3-2302, 3-2359, DSC-691 FF | resources none → MBRT BASE [32 h] |
| 3-2335 | CONCRETE PAVE ROAD CROSSING, 19TH & UNION ST | 2023-09-05 → 2024-03-01 A (+178d) | 2023-09-12 → 2024-03-08 A (+178d) |  | 0% → 100% | -73d → none |  | resources none → MBRT BASE [8 h] |
| 5 | **SW CORNER** | 2023-09-21 → 2024-03-21 (+182d) | 2023-09-27 → 2024-04-12 (+198d) |  |  |  |  |  |
| 3-2345 | REMOVE SIDEWALK, & Trench Conduit SW CORNER | 2023-09-21 → 2024-03-21 A (+182d) | 2023-09-22 → 2024-03-22 A (+182d) | 2d → 4d | 0% → 100% | -73d → none | 3-2343 → 3-2335 | was named REMOVE SIDEWALK, SW CORNER; resources none → MBRT BASE [32 h] |
| 3-2346 | INST CONDUIT, SW CORNER | 2023-09-21 → 2024-03-25 A (+186d) | 2023-09-22 → 2024-04-05 (+196d) | 2d → 4d |  | -73d → -134d | 3-2345 SS → 3-2345, DSC-738 FF | resources none → MBRT BASE [32 h] |
| 3-2347 | SIDEWALKS AND CURBS, SW CORNER | 2023-09-25 → 2024-04-08 (+196d) | 2023-09-27 → 2024-04-12 (+198d) | 3d → 5d |  | -73d → -134d |  | resources none → MBRT BASE [40 h] |
| 4 | **SE CORNER** | 2023-09-18 → 2024-04-15 (+210d) | 2023-09-20 → 2024-04-25 (+218d) |  |  |  |  |  |
| 3-2341 | REMOVE SIDEWALK, SE CORNER | 2023-09-18 → 2024-04-15 (+210d) | 2023-09-19 → 2024-04-16 (+210d) |  |  | -73d → -134d | 3-2339 → 3-2347 | resources none → MBRT BASE [16 h] |
| 3-2342 | INST CONDUIT, SE CORNER | 2023-09-18 → 2024-04-15 (+210d) | 2023-09-19 → 2024-04-22 (+216d) | 2d → 6d |  | -73d → -134d |  | resources none → MBRT BASE [48 h] |
| 3-2343 | SIDEWALKS AND CURBS, SE CORNER | 2023-09-20 → 2024-04-23 (+216d) | 2023-09-20 → 2024-04-25 (+218d) | 1d → 3d |  | -73d → -134d |  | resources none → MBRT BASE [24 h] |
| 3 | **NE CORNER** | 2023-09-13 → 2024-04-26 (+226d) | 2023-09-15 → 2024-05-08 (+236d) |  |  |  |  |  |
| 3-2337 | REMOVE SIDEWALK, NE CORNER | 2023-09-13 → 2024-04-26 (+226d) | 2023-09-14 → 2024-04-29 (+228d) |  |  | -73d → -134d | 3-2335 → 3-2335, 3-2343 | resources none → MBRT BASE [16 h] |
| 3-2338 | INST CONDUIT, NE CORNER | 2023-09-13 → 2024-04-26 (+226d) | 2023-09-14 → 2024-05-03 (+232d) | 2d → 6d |  | -73d → -134d |  | resources none → MBRT BASE [48 h] |
| 3-2339 | SIDEWALKS AND CURBS, NE CORNER | 2023-09-15 → 2024-05-06 (+234d) | 2023-09-15 → 2024-05-08 (+236d) | 1d → 3d |  | -73d → -134d |  | resources none → MBRT BASE [24 h] |
| 6 | **NW CORNER** | 2023-09-28 → 2024-05-09 (+224d) | 2023-10-04 → 2024-05-21 (+230d) |  |  |  |  |  |
| 3-2349 | REMOVE SIDEWALK, NW CORNER | 2023-09-28 → 2024-05-09 (+224d) | 2023-09-29 → 2024-05-10 (+224d) |  |  | -73d → -134d | 3-2347 → 3-2347, 3-2339 | resources none → MBRT BASE [16 h] |
| 3-2350 | INST CONDUIT, NW CORNER | 2023-09-28 → 2024-05-09 (+224d) | 2023-09-29 → 2024-05-16 (+230d) | 2d → 6d |  | -73d → -134d |  | resources none → MBRT BASE [48 h] |
| 3-2351 | SIDEWALKS AND CURBS, NW CORNER | 2023-10-02 → 2024-05-17 (+228d) | 2023-10-04 → 2024-05-21 (+230d) |  |  | -73d → -134d |  | resources none → MBRT BASE [24 h] |
| 3-2353 | REMOVE SIDEWALKS, PINE ST SOUTH SIDE |  |  |  |  |  |  | resources none → MBRT BASE [8 h] |
| 3-2354 | GRADE SIDEWALK, PINE ST SOUTH SIDE |  |  |  |  |  |  | resources none → MBRT BASE [8 h] |
| 3-2355 | POUR SIDEWALK & DRIVEWAY, PINE ST SOUTH SIDE |  |  |  |  |  |  | resources none → MBRT BASE [80 h] |
| PCO238.01 | DSC 172-Pine Sidewalks Pavement underneath |  |  |  |  |  | none → MS-0025 | resources none → MBRT DSC [64 h] |
| 8 | **MILLING AND PAVING** |  | 2023-11-06 → 2024-05-17 (+193d) |  |  |  |  |  |
| 3-3575 | PAVE, PINE STREET |  |  |  |  |  |  | resources none → MBRT NEW |
| 3-2357 | MILL, MILLING AND PAVING | 2023-10-31 → 2024-05-13 (+195d) | 2023-11-01 → 2024-05-14 (+195d) |  |  | -23d → -145d | 3-2176, 3-2355, 3-3575, 3-2332 → 3-2176, 3-2355, 3-3575, 3-2332, 3-2296 | resources none → MBRT BASE [16 h] |
| 3-2358 | PAVE, MILLING AND PAVING | 2023-11-02 → 2024-05-15 (+195d) | 2023-11-06 → 2024-05-17 (+193d) |  |  | -23d → -145d |  | resources none → MBRT BASE [24 h] |
| 9 | **STRIPING AND SIGNS** | 2023-11-07 → 2024-05-20 (+195d) | 2024-02-07 → 2024-07-30 (+174d) |  |  |  |  |  |
| 3-2360 | CURE TIME, STRIPING AND SIGNS | 2023-11-07 → 2024-05-20 (+195d) | 2023-12-08 → 2024-06-18 (+193d) |  |  | -23d → -145d |  | resources none → MBRT BASE |
| 3-2361 | STRIPING, STRIPING AND SIGNS | 2023-12-11 → 2024-06-19 (+191d) | 2024-01-09 → 2024-07-02 (+175d) | 20d → 10d |  | -23d → -145d | 3-2024, 3-2360 → 3-2024, 3-2360, 3-2157, 3-2356, 3-2336 | resources none → MBRT BASE [80 h] |
| 10 | **LANDSCAPING** |  | 2023-10-16 → 2024-06-03 (+231d) |  |  |  |  |  |
| 3-2379 | LANDSCAPING, INSTALL TREES, SHRUBS TOPSOIL |  |  |  |  |  |  | resources none → MBRT BASE [160 h] |
| 3-2364 | INST POUROUS PAVEMENT, POUROUS PAVEMENT | 2023-10-05 → 2024-05-22 (+230d) | 2023-10-16 → 2024-06-03 (+231d) |  |  | 53d → -104d |  | resources none → MBRT BASE [64 h] |
| 11 | **SIGNALS** |  | 2024-03-14 → 2024-07-03 (+111d) |  |  |  |  |  |
| 1 | **MADISON AND 16TH** |  | 2023-12-07 → 2024-01-24 (+48d) |  |  |  |  |  |
| 3-2368 | INSTALL SERVICE CABINET |  |  |  |  |  |  | resources none → MBRT BASE [8 h] |
| 3-7251 | SDCI INSPECTION |  |  |  |  |  |  | resources none → MBRT NEW |
| 3-7252 | SDOT INSPECTION |  |  |  |  |  |  | resources none → MBRT NEW |
| 3-7253 | SCL INSPECTION REQUEST | 2023-08-14 → 2023-10-24 A (+71d) | 2023-08-14 → 2023-10-24 A (+71d) |  | 0% → 100% | -35d → none |  | resources none → MBRT NEW |
| 3-2680 | INST POLES, MAD AND 16TH | 2023-08-31 → 2023-11-07 A (+68d) | 2023-09-01 → 2023-11-08 A (+68d) |  | 0% → 100% | 15d → none | 2-1997, 2-1997 FF → 3-7253 | resources none → MBRT NEW [16 h] |
| 3-7254 | 30 DAY WAIT FOR SCL TO INSPECT | 2023-08-15 → 2023-11-29 A (+106d) | 2023-09-26 → 2023-12-27 A (+92d) | 30d → 21d | 0% → 100% | -35d → none |  | resources none → MBRT NEW |
| 3-7255 | SCL INSPECTION | 2023-09-27 → 2023-12-28 A (+92d) | 2023-09-27 → 2023-12-28 A (+92d) |  | 0% → 100% | -35d → none |  | resources none → MBRT NEW |
| 3-7256 | COMMISION NOTIFICATION | 2023-09-28 → 2023-12-29 A (+92d) | 2023-09-28 → 2023-12-29 A (+92d) |  | 0% → 100% | -35d → none |  | resources none → MBRT NEW |
| 3-2367 | INST SIGNAL CABINET, MAD AND 16TH | 2023-11-14 → 2024-01-02 A (+49d) | 2023-11-14 → 2024-01-12 A (+59d) |  | 0% → 100% | -35d → none | 3-2122, 3-2091, 3-2375 → 3-2122, 3-2091 | resources none → MBRT BASE [72 h] |
| 3-2369 | INST MAST ARMS, MAD AND 16TH | 2023-11-15 → 2024-01-02 A (+48d) | 2023-11-16 → 2024-01-12 A (+57d) |  | 0% → 100% | -35d → none |  | resources none → MBRT BASE [72 h] |
| 3-2370 | INST PPB POST, MAD AND 16TH | 2023-11-17 → 2024-01-02 A (+46d) | 2023-11-17 → 2024-01-12 A (+56d) |  | 0% → 100% | -27d → none |  | resources none → MBRT BASE [72 h] |
| 3-2371 | INST PEDISTALS, MAD AND 16TH | 2023-11-20 → 2024-01-02 A (+43d) | 2023-11-21 → 2024-01-12 A (+52d) |  | 0% → 100% | -27d → none |  | resources none → MBRT BASE [72 h] |
| 3-2372 | INST WIRING, MAD AND 16TH | 2023-11-22 → 2024-01-02 A (+41d) | 2023-11-28 → 2024-01-12 A (+45d) |  | 0% → 100% | -27d → none |  | resources none → MBRT BASE [72 h] |
| 3-7257 | 30 DAY WAIT FOR SCL TO COMMISION | 2023-09-29 → 2024-01-02 A (+95d) | 2023-11-09 → 2024-01-11 A (+63d) | 30d → 21d | 0% → 100% | -35d → none |  | resources none → MBRT NEW |
| 3-2375 | COMM SERVICE, MAD AND 16TH | 2023-11-10 → 2024-01-12 A (+63d) | 2023-11-10 → 2024-01-12 A (+63d) |  | 0% → 100% | -35d → none |  | resources none → MBRT BASE [8 h] |
| 3-2376 | NOTIFY SDOT, MAD AND 16TH | 2023-11-29 → 2024-01-16 A (+48d) | 2023-11-29 → 2024-01-16 A (+48d) |  | 0% → 100% | 9d → none |  | resources none → MBRT BASE [8 h] |
| 3-2377 | SDOT INSPECTION, MAD AND 16TH | 2023-11-30 → 2024-01-17 A (+48d) | 2023-12-06 → 2024-01-23 A (+48d) |  | 0% → 100% | 9d → none |  | resources none → MBRT BASE [40 h] |
| 3-2378 | COMM SIGNAL, MAD AND 16TH | 2023-12-07 → 2024-01-24 A (+48d) | 2023-12-07 → 2024-01-24 A (+48d) |  | 0% → 100% | 9d → none |  | resources none → MBRT BASE [8 h] |
| 10 | **E HARRISON AND MLK** | 2023-09-01 → 2024-01-09 (+130d) | 2024-03-14 → 2024-06-03 (+81d) |  |  |  |  |  |
| 3-3120 | INST POLES, E HARRISON AND MLK | 2023-09-01 → 2024-01-09 A (+130d) | 2023-09-07 → 2024-01-10 A (+125d) |  | 0% → 100% | 18d → none |  | resources none → MBRT NEW [32 h] |
| 3-2476 | INST SERVICE METER CABINET, E HARRISON & MLK | 2023-11-07 → 2024-04-09 (+154d) | 2023-11-07 → 2024-04-09 (+154d) |  |  | -102d → -139d | 3-2332, 3-2296 → 3-2320 | resources none → MBRT BASE [8 h] |
| 3-9050 | SDCI INSPECTION | 2023-11-08 → 2024-04-10 (+154d) | 2023-11-08 → 2024-04-10 (+154d) |  |  | -102d → -139d |  | resources none → MBRT NEW [8 h] |

| ID | Task | Start | Finish | Duration | Complete | Total float | Predecessors | Other |
| --- | --- | --- | --- | --- | --- | --- | --- | --- |
| 3-9070 | SDOT INSPECTION | 2023-11-09 → 2024-04-11 (+154d) | 2023-11-09 → 2024-04-11 (+154d) |  |  | -102d → -139d |  | resources none → MBRT NEW [8 h] |
| 3-9038 | SCL INSPECTION REQUEST | 2023-11-10 → 2024-04-12 (+154d) | 2023-11-10 → 2024-04-12 (+154d) |  |  | -102d → -139d |  | resources none → MBRT NEW |
| 3-9039 | 30 DAY WAIT FOR SCL TO INSPECT, MAD AND BOYLSTON | 2023-11-10 → 2024-04-12 (+154d) | 2023-12-27 → 2024-04-15 (+110d) | 30d → 2d |  | -102d → -139d |  | resources none → MBRT NEW |
| 3-9079 | SCL INSPECTION | 2023-12-28 → 2024-04-16 (+110d) | 2023-12-28 → 2024-04-16 (+110d) |  |  | -102d → -139d |  | resources none → MBRT NEW [8 h] |
| 3-2481 | COMMISION NOTIFICATION | 2023-12-29 → 2024-04-17 (+110d) | 2023-12-29 → 2024-04-17 (+110d) |  |  | -102d → -139d |  | resources none → MBRT BASE |
| 3-2482 | 30 DAY WAIT FOR SCL TO COMMISION | 2024-01-02 → 2024-04-18 (+107d) | 2024-02-13 → 2024-05-16 (+93d) | 30d → 21d |  | -102d → -139d |  | resources none → MBRT BASE |
| 3-2483 | COMM SERVICE, E HARRISON AND MLK | 2024-02-14 → 2024-05-17 (+93d) | 2024-02-14 → 2024-05-17 (+93d) |  |  | -102d → -139d |  | resources none → MBRT BASE [8 h] |
| 3-2475 | INST SIGNAL CABINET, E HARRISON & MLK | 2024-02-15 → 2024-05-20 (+95d) | 2024-02-15 → 2024-05-20 (+95d) |  |  | -102d → -139d | 3-2332, 3-2483 → 3-2332, 3-2483, 3-2402 | resources none → MBRT BASE [8 h] |
| 3-2477 | INST MAST ARMS, E HARRISON AND MLK | 2024-02-16 → 2024-05-21 (+95d) | 2024-02-22 → 2024-05-21 (+89d) | 4d → 1d |  | -102d → -139d |  | resources none → MBRT BASE [8 h] |
| 3-2478 | INST PPB POST, E HARRISON AND MLK | 2024-02-23 → 2024-05-22 (+89d) | 2024-02-26 → 2024-05-22 (+86d) | 2d → 1d |  | -102d → -139d |  | resources none → MBRT BASE [8 h] |
| 3-2479 | INST PEDISTALS, E HARRISON AND MLK | 2024-02-27 → 2024-05-23 (+86d) | 2024-02-27 → 2024-05-23 (+86d) |  |  | -102d → -139d |  | resources none → MBRT BASE [8 h] |
| 3-2480 | INST WIRING, E HARRISON AND MLK | 2024-02-28 → 2024-05-24 (+86d) | 2024-03-05 → 2024-05-29 (+85d) | 5d → 3d |  | -102d → -139d |  | resources none → MBRT BASE [24 h] |
| 3-2484 | NOTIFY SDOT, E HARRISON AND MLK | 2024-03-06 → 2024-05-30 (+85d) | 2024-03-06 → 2024-05-30 (+85d) |  |  | -58d → -139d |  | resources none → MBRT BASE |
| 3-2485 | SDOT INSPECTION, E HARRISON AND MLK | 2024-03-07 → 2024-05-31 (+85d) | 2024-03-13 → 2024-05-31 (+79d) | 5d → 1d |  | -58d → -139d |  | resources none → MBRT BASE [8 h] |
| 3-2486 | COMM SIGNAL, E HARRISON AND MLK | 2024-03-14 → 2024-06-03 (+81d) | 2024-03-14 → 2024-06-03 (+81d) |  |  | -58d → -139d |  | resources none → MBRT BASE [8 h] |
| 11 | **19TH AND UNION** | 2023-10-05 → 2024-04-15 (+193d) | 2024-02-14 → 2024-07-03 (+140d) |  |  |  |  |  |
| 3-2489 | INST SERVICE METER CABINET, 19TH & UNION | 2023-10-05 → 2024-04-15 (+193d) | 2023-10-06 → 2024-04-16 (+193d) |  |  | -73d → -121d | 3-2351 → 3-2347 | resources none → MBRT BASE [16 h] |
| 3-6038 | SCL INSPECTION REQUEST | 2023-10-11 → 2024-04-15 (+187d) | 2023-10-11 → 2024-04-15 (+187d) |  |  | -73d → -121d | 3-6070 → 3-2347 | resources none → MBRT NEW |
| 3-6039 | 30 DAY WAIT FOR SCL TO INSPECT, MAD AND BOYLSTON | 2023-10-11 → 2024-04-15 (+187d) | 2023-11-22 → 2024-04-16 (+146d) | 30d → 2d |  | -73d → -121d |  | resources none → MBRT NEW |
| 3-2490 | INST MAST ARMS, 19TH AND UNION | 2024-01-17 → 2024-04-17 (+91d) | 2024-01-22 → 2024-04-22 (+91d) |  |  | -73d → -104d | 3-2489, 3-2488 → 3-2489 | resources none → MBRT BASE [32 h] |
| 3-6050 | SDCI INSPECTION | 2023-10-09 → 2024-04-17 (+191d) | 2023-10-09 → 2024-04-17 (+191d) |  |  | -73d → -121d |  | resources none → MBRT NEW [8 h] |
| 3-6079 | SCL INSPECTION | 2023-11-27 → 2024-04-17 (+142d) | 2023-11-27 → 2024-04-17 (+142d) |  |  | -73d → -121d |  | resources none → MBRT NEW [8 h] |
| 3-2494 | COMMISION NOTIFICATION | 2023-11-28 → 2024-04-18 (+142d) | 2023-11-28 → 2024-04-18 (+142d) |  |  | -73d → -121d |  | resources none → MBRT BASE |
| 3-6070 | SDOT INSPECTION | 2023-10-10 → 2024-04-18 (+191d) | 2023-10-10 → 2024-04-18 (+191d) |  |  | -73d → -121d |  | resources none → MBRT NEW [8 h] |
| 3-2495 | 30 DAY WAIT FOR SCL TO COMMISION | 2023-11-29 → 2024-04-19 (+142d) | 2024-01-11 → 2024-05-17 (+127d) | 30d → 21d |  | -73d → -121d | 3-2494 → 3-2494, 3-6070 | resources none → MBRT BASE |
| 3-2496 | COMM SERVICE, 19TH AND UNION | 2024-01-12 → 2024-05-20 (+129d) | 2024-01-12 → 2024-05-20 (+129d) |  |  | -73d → -121d |  | resources none → MBRT BASE [8 h] |
| 3-2488 | INST SIGNAL CABINET, 19TH AND UNION | 2024-01-16 → 2024-06-20 (+156d) | 2024-01-16 → 2024-06-20 (+156d) |  |  | -73d → -142d | 3-2351, PMP-31, 3-2496 → 3-2351, PMP-31, 3-2496, 1-0878 | resources none → MBRT BASE [8 h] |
| 3-2491 | INST PPB POST, 19TH AND UNION | 2024-01-23 → 2024-06-21 (+150d) | 2024-01-25 → 2024-06-21 (+148d) | 3d → 1d |  | -73d → -142d | 3-2490 → 3-2490, 3-2358, 3-2488 | resources none → MBRT BASE [8 h] |
| 3-2492 | INST PEDISTALS, 19TH AND UNION | 2024-01-26 → 2024-06-24 (+150d) | 2024-01-29 → 2024-06-24 (+147d) | 2d → 1d |  | -73d → -142d |  | resources none → MBRT BASE [8 h] |
| 3-2493 | INST WIRING, 19TH AND UNION | 2024-01-30 → 2024-06-25 (+147d) | 2024-02-05 → 2024-06-28 (+144d) | 5d → 4d |  | -73d → -142d |  | resources none → MBRT BASE [32 h] |
| 3-2497 | NOTIFY SDOT, 19TH AND UNION | 2024-02-06 → 2024-07-01 (+146d) | 2024-02-06 → 2024-07-01 (+146d) |  |  | -38d → -136d |  | resources none → MBRT BASE |
| 3-2498 | SDOT INSPECTION, 19TH AND UNION | 2024-02-07 → 2024-07-02 (+146d) | 2024-02-13 → 2024-07-02 (+140d) | 5d → 1d |  | -38d → -136d |  | resources none → MBRT BASE [8 h] |
| 3-2499 | COMM SIGNAL, 19TH AND UNION | 2024-02-14 → 2024-07-03 (+140d) | 2024-02-14 → 2024-07-03 (+140d) |  |  | -38d → -136d |  | resources none → MBRT BASE [8 h] |
| 2 | **MADISON AND 17TH** | 2023-10-12 → 2024-01-03 (+83d) | 2024-02-08 → 2024-04-16 (+68d) |  |  |  |  |  |
| 3-2381 | INST SERVICE METER CABINET, MAD & 17TH | 2023-10-12 → 2024-01-03 A (+83d) | 2023-10-12 → 2024-01-05 A (+85d) |  | 0% → 100% | -69d → none | 3-2150, 3-2146 → 3-7955 | resources none → MBRT BASE [24 h] |
| 3-7050 | SDCI INSPECTION | 2023-10-13 → 2024-01-08 A (+87d) | 2023-10-13 → 2024-01-08 A (+87d) |  | 0% → 100% | -69d → none |  | resources none → MBRT NEW |
| 3-7038 | SCL INSPECTION REQUEST | 2023-10-17 → 2024-01-09 A (+84d) | 2023-10-17 → 2024-01-10 A (+85d) | 0d → 2d | 0% → 100% | -69d → none |  | resources none → MBRT NEW |
| 3-7070 | SDOT INSPECTION | 2023-10-16 → 2024-01-09 A (+85d) | 2023-10-16 → 2024-01-09 A (+85d) |  | 0% → 100% | -69d → none |  | resources none → MBRT NEW |
| 3-7039 | 30 DAY WAIT FOR SCL TO INSPECT, MAD AND BOYLSTON | 2023-10-17 → 2024-01-11 A (+86d) | 2023-11-30 → 2024-01-24 A (+55d) | 30d → 21d | 0% → 100% | -69d → none |  | resources none → MBRT NEW |
| 3-7079 | SCL INSPECTION | 2023-12-01 → 2024-01-25 A (+55d) | 2023-12-01 → 2024-01-25 A (+55d) |  | 0% → 100% | -69d → none |  | resources none → MBRT NEW |
| 3-2384 | COMMISION NOTIFICATION | 2023-12-04 → 2024-01-26 A (+53d) | 2023-12-04 → 2024-01-26 A (+53d) |  | 0% → 100% | -69d → none | 3-7079 → 3-7050 | resources none → MBRT BASE |
| 3-2385 | 30 DAY WAIT FOR SCL TO COMMISION | 2023-12-05 → 2024-01-29 A (+55d) | 2024-01-18 → 2024-02-08 A (+21d) | 30d → 21d | 0% → 100% | -69d → none |  | resources none → MBRT BASE |
| 3-2386 | COMM SERVICE, MAD AND 17TH | 2024-01-19 → 2024-02-09 A (+21d) | 2024-01-19 → 2024-02-09 A (+21d) |  | 0% → 100% | -69d → none | 3-2385 → 3-2385, 3-7079 | resources none → MBRT BASE [8 h] |
| 3-2380 | INST SIGNAL CABINET, MAD AND 17TH | 2024-01-22 → 2024-04-05 (+74d) | 2024-01-22 → 2024-04-05 (+74d) |  |  | -69d → -136d | 3-2150, 3-2386 → 3-2150, 3-2386, 3-2487, 2-1593 | resources none → MBRT BASE [8 h] |
| 3-2382 | INST PPB POST, MAD AND 17TH | 2024-01-23 → 2024-04-08 (+76d) | 2024-01-25 → 2024-04-09 (+75d) | 3d → 2d |  | -69d → -136d |  | resources none → MBRT BASE [16 h] |
| 3-2383 | INST WIRING, MAD AND 17TH | 2024-01-26 → 2024-04-10 (+75d) | 2024-01-30 → 2024-04-11 (+72d) | 3d → 2d |  | -69d → -136d |  | resources none → MBRT BASE [16 h] |
| 3-2387 | NOTIFY SDOT, MAD AND 17TH | 2024-01-31 → 2024-04-12 (+72d) | 2024-01-31 → 2024-04-12 (+72d) |  |  | -29d → -136d |  | resources none → MBRT BASE |
| 3-2388 | SDOT INSPECTION, MAD AND 17TH | 2024-02-01 → 2024-04-15 (+74d) | 2024-02-07 → 2024-04-15 (+68d) | 5d → 1d |  | -29d → -136d |  | resources none → MBRT BASE [8 h] |
| 3-2389 | COMM SIGNAL, MAD AND 17TH | 2024-02-08 → 2024-04-16 (+68d) | 2024-02-08 → 2024-04-16 (+68d) |  |  | -29d → -136d |  | resources none → MBRT BASE [8 h] |
| 3 | **MADISON AND 18TH** |  | 2024-02-09 → 2024-05-14 (+95d) |  |  |  |  |  |
| 3-3105 | INSTALL POLES, MAD AND 18TH |  |  |  |  |  | none → 3-2091 SS | resources none → MBRT NEW [16 h] |
| 3-2392 | INST SERVICE METER CABINET, MAD & 18TH | 2023-10-12 → 2024-02-05 A (+116d) | 2023-10-12 → 2024-02-05 A (+116d) |  | 0% → 100% | -69d → none | 3-2125, 3-2146, 3-2150 → 3-2125, 3-2146 SS | resources none → MBRT BASE [8 h] |
| 3-0050 | SDCI INSPECTION | 2023-10-13 → 2024-02-06 A (+116d) | 2023-10-13 → 2024-02-06 A (+116d) |  | 0% → 100% | -69d → none |  | resources none → MBRT NEW |
| 3-0070 | SDOT INSPECTION | 2023-10-16 → 2024-02-07 A (+114d) | 2023-10-16 → 2024-02-07 A (+114d) |  | 0% → 100% | -69d → none |  | resources none → MBRT NEW |
| 3-0038 | SCL INSPECTION REQUEST | 2023-10-17 → 2024-02-14 A (+120d) | 2023-10-17 → 2024-02-14 A (+120d) |  | 0% → 100% | -69d → none |  | resources none → MBRT NEW |
| 3-0039 | 30 DAY WAIT FOR SCL TO INSPECT, MAD AND BOYLSTON | 2023-10-17 → 2024-02-15 A (+121d) | 2023-11-30 → 2024-03-05 A (+96d) | 30d → 21d | 0% → 100% | -69d → none |  | resources none → MBRT NEW |
| 3-0079 | SCL INSPECTION | 2023-12-01 → 2024-03-06 A (+96d) | 2023-12-01 → 2024-03-06 A (+96d) |  | 0% → 100% | -69d → none |  | resources none → MBRT NEW [8 h] |
| 3-2397 | COMMISION NOTIFICATION | 2023-12-04 → 2024-03-07 A (+94d) | 2023-12-04 → 2024-03-07 A (+94d) |  | 0% → 100% | -69d → none |  | resources none → MBRT BASE |
| 3-2398 | 30 DAY WAIT FOR SCL TO COMMISION | 2023-12-04 → 2024-03-07 A (+94d) | 2024-01-17 → 2024-03-07 A (+50d) | 30d → 2d | 0% → 100% | -69d → none |  | resources none → MBRT BASE |
| 3-2399 | COMM SERVICE, MAD AND 18TH | 2024-01-18 → 2024-03-08 A (+50d) | 2024-01-18 → 2024-03-08 A (+50d) |  | 0% → 100% | -69d → none |  | resources none → MBRT BASE [8 h] |
| 3-2391 | INST SIGNAL CABINET, MAD AND 18TH | 2024-01-19 → 2024-05-01 (+103d) | 2024-01-19 → 2024-05-01 (+103d) |  |  | -69d → -136d | PMP-26, PMP-0016, 3-2125, 3-2399 → PMP-26, PMP-0016, 3-2125, 3-2399, 3-2156, 3-2383, 2-1640 | resources none → MBRT BASE [8 h] |
| 3-2393 | INST MAST ARMS, MAD AND 18TH | 2024-01-22 → 2024-05-02 (+101d) | 2024-01-23 → 2024-05-02 (+100d) | 2d → 1d |  | -69d → -136d |  | resources none → MBRT BASE [8 h] |
| 3-2394 | INST PPB POST, MAD AND 18TH | 2024-01-24 → 2024-05-03 (+100d) | 2024-01-24 → 2024-05-03 (+100d) |  |  | -69d → -136d |  | resources none → MBRT BASE [8 h] |
| 3-2395 | INST PEDISTALS, MAD AND 18TH | 2024-01-25 → 2024-05-06 (+102d) | 2024-01-25 → 2024-05-06 (+102d) |  |  | -69d → -136d |  | resources none → MBRT BASE [8 h] |
| 3-2396 | INST WIRING, MAD AND 18TH | 2024-01-26 → 2024-05-07 (+102d) | 2024-01-30 → 2024-05-08 (+99d) | 3d → 2d |  | -69d → -136d |  | resources none → MBRT BASE [16 h] |
| 3-2400 | NOTIFY SDOT, MAD AND 18TH | 2024-01-31 → 2024-05-09 (+99d) | 2024-01-31 → 2024-05-09 (+99d) |  |  | -28d → -136d |  | resources none → MBRT BASE |
| 3-2401 | SDOT INSPECTION, MAD AND 18TH | 2024-02-01 → 2024-05-10 (+99d) | 2024-02-07 → 2024-05-13 (+96d) | 5d → 2d |  | -28d → -136d |  | resources none → MBRT BASE [16 h] |
| 3-2402 | COMM SIGNAL, MAD AND 18TH | 2024-02-09 → 2024-05-14 (+95d) | 2024-02-09 → 2024-05-14 (+95d) |  |  | -29d → -136d |  | resources none → MBRT BASE [8 h] |
| 4 | **MADISON AND 19TH** | 2023-08-24 → 2024-04-24 (+244d) | 2023-12-26 → 2024-06-28 (+185d) |  |  |  |  |  |
| 3-2405 | INST SERVICE METER CABINET, MAD & 19TH | 2023-08-24 → 2024-04-24 (+244d) | 2023-08-24 → 2024-04-24 (+244d) |  |  | -39d → -140d | 3-2176, 3-2162 → 3-2176, 3-2162, 3-2140, 3-9673 | resources none → MBRT BASE [8 h] |

| ID | Task | Start | Finish | Duration | Complete | Total float | Predecessors | Other |
| --- | --- | --- | --- | --- | --- | --- | --- | --- |
| 3-1050 | SDCI INSPECTION | 2023-08-25 → 2024-04-25 (+244d) | 2023-08-25 → 2024-04-25 (+244d) |  |  | -39d → -140d |  | resources none → MBRT NEW [8 h] |
| 3-1070 | SDOT INSPECTION | 2023-08-28 → 2024-04-26 (+242d) | 2023-08-28 → 2024-04-26 (+242d) |  |  | -39d → -140d |  | resources none → MBRT NEW [8 h] |
| 3-1038 | SCL INSPECTION REQUEST | 2023-08-29 → 2024-04-29 (+244d) | 2023-08-29 → 2024-04-29 (+244d) |  |  | -39d → -140d |  | resources none → MBRT NEW |
| 3-1039 | 30 DAY WAIT FOR SCL TO INSPECT, MAD AND BOYLSTON | 2023-08-29 → 2024-04-29 (+244d) | 2023-10-10 → 2024-04-30 (+203d) | 30d → 2d |  | -39d → -140d |  | resources none → MBRT NEW |
| 3-1079 | SCL INSPECTION | 2023-10-11 → 2024-05-01 (+203d) | 2023-10-11 → 2024-05-01 (+203d) |  |  | -39d → -140d |  | resources none → MBRT NEW [8 h] |
| 3-2410 | COMMISION NOTIFICATION | 2023-10-12 → 2024-05-02 (+203d) | 2023-10-12 → 2024-05-02 (+203d) |  |  | -39d → -140d |  | resources none → MBRT BASE |
| 3-2411 | 30 DAY WAIT FOR SCL TO COMMISION | 2023-10-13 → 2024-05-03 (+203d) | 2023-11-28 → 2024-06-03 (+188d) | 30d → 21d |  | -39d → -140d |  | resources none → MBRT BASE |
| 3-2412 | COMM SERVICE, MAD AND 19TH | 2023-11-29 → 2024-06-04 (+188d) | 2023-11-29 → 2024-06-04 (+188d) |  |  | -39d → -140d |  | resources none → MBRT BASE [8 h] |
| 3-2404 | INST SIGNAL CABINET, MAD AND 19TH | 2023-11-30 → 2024-06-05 (+188d) | 2023-11-30 → 2024-06-05 (+188d) |  |  | -39d → -140d | 3-2176, 3-2412 → 3-2176, 3-2412, 3-9673, 3-2396, 3-2402, 3-2486 | resources none → MBRT BASE [8 h] |
| 3-2406 | INST MAGNOMETERS, MAD AND 19TH | 2023-12-01 → 2024-06-06 (+188d) | 2023-12-01 → 2024-06-06 (+188d) |  |  | -39d → -140d |  | resources none → MBRT BASE [8 h] |
| 3-2407 | INST PPB POST, MAD AND 19TH | 2023-12-04 → 2024-06-07 (+186d) | 2023-12-06 → 2024-06-11 (+188d) |  |  | -39d → -140d |  | resources none → MBRT BASE [24 h] |
| 3-2408 | INST PEDISTALS, MAD AND 19TH | 2023-12-07 → 2024-06-12 (+188d) | 2023-12-11 → 2024-06-14 (+186d) |  |  | -39d → -140d |  | resources none → MBRT BASE [24 h] |
| 3-2409 | INST WIRING, MAD AND 19TH | 2023-12-12 → 2024-06-17 (+188d) | 2023-12-14 → 2024-06-19 (+188d) |  |  | -39d → -140d |  | resources none → MBRT BASE [24 h] |
| 3-2413 | NOTIFY SDOT, MAD AND 19TH | 2023-12-15 → 2024-06-20 (+188d) | 2023-12-15 → 2024-06-20 (+188d) |  |  | 2d → -127d |  | resources none → MBRT BASE |
| 3-2414 | SDOT INSPECTION, MAD AND 19TH | 2023-12-18 → 2024-06-21 (+186d) | 2023-12-22 → 2024-06-27 (+188d) |  |  | 2d → -127d |  | resources none → MBRT BASE [40 h] |
| 3-2415 | COMM SIGNAL, MAD AND 19TH | 2023-12-26 → 2024-06-28 (+185d) | 2023-12-26 → 2024-06-28 (+185d) |  |  | 2d → -127d |  | resources none → MBRT BASE [8 h] |
| 5 | **MADISON AND 20TH** |  | 2023-10-20 → 2024-01-31 (+103d) |  |  |  |  |  |
| DSC-448 | DSC 448 Bouolder Conflict P34-06 Foundation |  |  |  |  |  | none → MS-0025 | resources none → MBRT DSC [32 h] |
| 3-2418 | INST SERVICE METER CABINET, MAD & 20TH |  |  |  |  |  |  | resources none → MBRT BASE [8 h] |
| 3-2038 | SCL INSPECTION REQUEST |  |  |  |  |  |  | resources none → MBRT NEW |
| 3-2050 | SDCI INSPECTION |  |  |  |  |  |  | resources none → MBRT NEW |
| 3-2070 | SDOT INSPECTION |  |  |  |  |  |  | resources none → MBRT NEW |
| 3-2789 | 30 DAY WAIT FOR SCL TO INSPECT, MAD AND BOYLSTON |  | 2023-08-18 A | 30d → 21d | 0% → 100% | 45d → none |  | resources none → MBRT NEW |
| 3-2779 | SCL INSPECTION | 2023-08-21 A | 2023-08-21 A |  | 0% → 100% | 45d → none |  | resources none → MBRT NEW |
| 3-2419 | INST STRAIN POLE, MAD AND 20TH | 2023-08-14 → 2023-09-19 A (+36d) | 2023-08-14 → 2023-09-19 A (+36d) |  | 0% → 100% | 82d → none |  | resources none → MBRT BASE [8 h] |
| 3-2422 | COMMISION NOTIFICATION | 2023-08-22 → 2023-10-03 A (+42d) | 2023-08-22 → 2023-10-03 A (+42d) |  | 0% → 100% | 45d → none |  | resources none → MBRT BASE |
| 3-2423 | 30 DAY WAIT FOR SCL TO COMMISION | 2023-08-22 → 2023-10-03 A (+42d) | 2023-10-03 → 2023-10-25 A (+22d) | 30d → 21d | 0% → 100% | 45d → none |  | resources none → MBRT BASE |
| 3-2424 | COMM SERVICE, MAD AND 20TH | 2023-10-04 → 2023-10-26 A (+22d) | 2023-10-04 → 2023-10-26 A (+22d) |  | 0% → 100% | 45d → none |  | resources none → MBRT BASE [8 h] |
| 3-2417 | INST SIGNAL CABINET, MAD AND 20TH | 2023-10-05 → 2024-01-22 A (+109d) | 2023-10-05 → 2024-01-31 A (+118d) |  | 0% → 100% | 45d → none |  | resources none → MBRT BASE [64 h] |
| 3-2420 | INST PPB POST, MAD AND 20TH | 2023-10-06 → 2024-01-22 A (+108d) | 2023-10-06 → 2024-01-31 A (+117d) |  | 0% → 100% | 45d → none |  | resources none → MBRT BASE [64 h] |
| 3-2421 | INST WIRING, MAD AND 20TH | 2023-10-09 → 2024-01-22 A (+105d) | 2023-10-11 → 2024-01-31 A (+112d) |  | 0% → 100% | 45d → none |  | resources none → MBRT BASE [64 h] |
| 3-2425 | NOTIFY SDOT, MAD AND 20TH | 2023-10-12 → 2024-01-31 A (+111d) | 2023-10-12 → 2024-01-31 A (+111d) |  | 0% → 100% | 45d → none |  | resources none → MBRT BASE [8 h] |
| 3-2426 | SDOT INSPECTION, MAD AND 20TH | 2023-10-13 → 2024-01-31 A (+110d) | 2023-10-19 → 2024-01-31 A (+104d) |  | 0% → 100% | 45d → none |  | resources none → MBRT BASE [8 h] |
| 3-2427 | COMM SIGNAL, MAD AND 20TH | 2023-10-20 → 2024-01-31 A (+103d) | 2023-10-20 → 2024-01-31 A (+103d) |  | 0% → 100% | 45d → none |  | resources none → MBRT BASE [8 h] |
| 6 | **MADISON AND DENNY** |  | 2023-10-05 → 2023-10-12 (+7d) |  |  |  |  |  |
| 3-2430 | INSTALL SERVICE CABINET |  |  |  |  |  |  | resources none → MBRT BASE [8 h] |
| 3-7323 | SDCI INSPECTION |  |  |  |  |  |  | resources none → MBRT NEW |
| 3-7324 | SDOT INSPECTION |  |  |  |  |  |  | resources none → MBRT NEW |
| 3-7325 | SCL INSPECTION REQUEST |  |  |  |  |  |  | constraint start on or after 2023-07-03 → none; resources none → MBRT NEW |
| 3-7326 | 30 DAY WAIT FOR SCL TO INSPECT |  |  |  |  |  |  | resources none → MBRT NEW |
| 3-7327 | SCL INSPECTION |  |  |  |  |  |  | resources none → MBRT NEW |
| 3-7328 | COMMISION NOTIFICATION |  |  |  |  |  |  | resources none → MBRT NEW |
| 3-7329 | 30 DAY WAIT FOR SCL TO COMMISION |  | 2023-09-11 → 2023-09-09 A (-2d) |  | 0% → 100% | -4d → none |  | resources none → MBRT NEW |
| 3-2437 | COMM SERVICE, MAD AND DENNY | 2023-09-12 → 2023-09-11 A (-1d) | 2023-09-12 → 2023-09-11 A (-1d) |  | 0% → 100% | -4d → none | 3-7329 → 3-7329, 3-2447 | resources none → MBRT BASE [8 h] |
| 3-2429 | INST SIGNAL CABINET, MAD & DENNY | 2023-09-13 → 2023-09-19 A (+6d) | 2023-09-13 → 2023-09-19 A (+6d) |  | 0% → 100% | -4d → none |  | resources none → MBRT BASE [8 h] |
| 3-2434 | INST WIRING, MAD AND DENNY | 2023-09-22 → 2023-09-20 A (-2d) | 2023-09-26 → 2023-09-20 A (-6d) |  | 0% → 100% | -4d → none | 3-2433 → 3-2429 | resources none → MBRT BASE [8 h] |
| 3-2432 | INST PPB POST, MAD AND DENNY | 2023-09-15 → 2023-09-26 A (+11d) | 2023-09-19 → 2023-09-29 A (+10d) |  | 0% → 100% | -4d → none | INST MAGNOMETERS, MAD AND DENNY → 3-2429 | resources none → MBRT BASE [32 h] |
| 3-2433 | INST PEDISTALS, MAD AND DENNY | 2023-09-20 → 2023-10-02 A (+12d) | 2023-09-21 → 2023-10-03 A (+12d) |  | 0% → 100% | -4d → none |  | resources none → MBRT BASE [16 h] |
| 3-2438 | NOTIFY SDOT, MAD AND DENNY | 2023-09-27 → 2023-10-04 A (+7d) | 2023-09-27 → 2023-10-04 A (+7d) |  | 0% → 100% | -4d → none | 3-2437, 3-2434 → 3-2437, 3-2434, 3-2433 | resources none → MBRT BASE [8 h] |
| 3-2439 | SDOT INSPECTION, MAD AND DENNY | 2023-09-28 → 2023-10-05 A (+7d) | 2023-10-04 → 2023-10-11 A (+7d) |  | 0% → 100% | -4d → none |  | resources none → MBRT BASE [40 h] |
| 3-2440 | COMM SIGNAL, MAD AND DENNY | 2023-10-05 → 2023-10-12 A (+7d) | 2023-10-05 → 2023-10-12 A (+7d) |  | 0% → 100% | -4d → none |  | resources none → MBRT BASE [8 h] |
| 7 | **MADISON AND 23RD** | 2023-10-06 → 2024-03-04 (+150d) | 2023-10-20 → 2024-03-18 (+150d) |  |  |  |  |  |
| 3-2442 | INST MAGNOMETERS, MAD AND 23RD | 2023-10-06 → 2024-03-04 A (+150d) | 2023-10-09 → 2024-03-05 A (+148d) |  | 0% → 100% | -4d → none | 3-2220, 3-2440 → 3-2220, 3-2440, 3-2421 | resources none → MBRT BASE [16 h] |
| 3-2443 | INST WIRING, MAD AND 23RD | 2023-10-10 → 2024-03-06 A (+148d) | 2023-10-11 → 2024-03-07 A (+148d) |  | 0% → 100% | 4d → none |  | resources none → MBRT BASE [16 h] |
| 3-2444 | NOTFICY SDOT, MAD AND 23RD | 2023-10-12 → 2024-03-08 A (+148d) | 2023-10-12 → 2024-03-08 A (+148d) |  | 0% → 100% | 39d → none |  | resources none → MBRT BASE [8 h] |
| 3-2445 | SDOT INSPECTION, MAD AND 23RD | 2023-10-13 → 2024-03-11 A (+150d) | 2023-10-19 → 2024-03-15 A (+148d) |  | 0% → 100% | 39d → none |  | resources none → MBRT BASE [40 h] |
| 3-2446 | COMM SIGNAL, MAD AND 23RD | 2023-10-20 → 2024-03-18 A (+150d) | 2023-10-20 → 2024-03-18 A (+150d) |  | 0% → 100% | 39d → none |  | resources none → MBRT BASE [8 h] |
| 8 | **MADISON AND 24TH** |  | 2023-10-20 → 2023-11-15 (+26d) |  |  |  |  |  |
| 3-2474 | DELAY WAITING FOR SCL TO SLEEVE OR TURN OFF POWER |  | 2023-08-22 → 2023-10-31 A (+70d) | 5d → 0d | 0% → 100% | 5d → none | none → MS-0025 | was named DELAY WAITING FOR SCL TO SLEAVE OR TURN OFF POWER; resources none → MBRT NEW |
| 3-2509 | DELAY AWAITING SCL TO SLEEVE OR TURN OFF POWER TO ALLOW FOR INSTALLATION OF THE SIGNAL POLE |  | 2023-08-18 → 2023-10-31 A (+74d) | 5d → 0d | 0% → 100% | -15d → none | none → MS-0025 | was named DELAY AWAITING SCL TO SLEAVE OR TURN OFF POWER TO ALLOW FOR INSTALLATION OF THE SIGNAL POLE; resources none → MBRT NEW |
| 3-2449 | INST SERVICE METER CABINET, MAD & 24TH |  |  |  |  |  |  | resources none → MBRT BASE [8 h] |
| 3-3058 | SDCI INSPECTION |  |  |  |  |  |  | resources none → MBRT NEW |
| 3-3038 | SCL INSPECTION REQUEST |  |  |  |  |  |  | resources none → MBRT NEW |
| 3-3059 | SDOT INSPECTION |  |  |  |  |  |  | resources none → MBRT NEW |
| 3-3039 | 30 DAY WAIT FOR SCL TO INSPECT, MAD AND BOYLSTON |  | 2023-08-17 A | 30d → 21d | 0% → 100% | -14d → none |  | resources none → MBRT NEW |
| 3-3079 | SCL INSPECTION | 2023-08-21 → 2023-08-18 A (-3d) | 2023-08-21 → 2023-08-18 A (-3d) |  | 0% → 100% | -15d → none | 3-3039, 3-2509 → 3-3039, 3-2509 SS | resources none → MBRT NEW |
| 3-2454 | COMMISION NOTIFICATION | 2023-08-22 → 2023-09-21 A (+30d) | 2023-08-22 → 2023-09-21 A (+30d) |  | 0% → 100% | -15d → none |  | resources none → MBRT BASE |
| 3-2455 | 30 DAY WAIT FOR SCL TO COMMISION | 2023-08-23 → 2023-09-22 A (+30d) | 2023-09-20 → 2023-09-28 A (+8d) |  | 0% → 100% | -15d → none |  | resources none → MBRT BASE |
| 3-2456 | COMM SERVICE, MAD AND 24TH | 2023-09-21 → 2023-09-29 A (+8d) | 2023-09-21 → 2023-09-29 A (+8d) |  | 0% → 100% | -15d → none |  | resources none → MBRT BASE [8 h] |
| 3-2448 | INST SIGNAL CABINET, MAD AND 24TH | 2023-09-22 → 2023-10-30 A (+38d) | 2023-09-22 → 2023-11-01 A (+40d) |  | 0% → 100% | -15d → none |  | resources none → MBRT BASE [24 h] |

| ID | Task | Start | Finish | Duration | Complete | Total float | Predecessors | Other |
| --- | --- | --- | --- | --- | --- | --- | --- | --- |
| 3-2451 | INST PPB POST, MAD AND 24TH | 2023-09-29 → 2023-10-30 A (+31d) | 2023-10-03 → 2023-11-01 A (+29d) |  | 0% → 100% | -15d → none |  | resources none → MBRT BASE [24 h] |
| 3-2452 | INST PEDISTALS, MAD AND 24TH | 2023-10-04 → 2023-10-30 A (+26d) | 2023-10-04 → 2023-11-01 A (+28d) |  | 0% → 100% | -15d → none |  | resources none → MBRT BASE [24 h] |
| 3-2453 | INST WIRING, MAD AND 24TH | 2023-10-05 → 2023-10-31 A (+26d) | 2023-10-11 → 2023-11-02 A (+22d) |  | 0% → 100% | -15d → none |  | resources none → MBRT BASE [24 h] |
| 3-2450 | INST MAST ARMS, MAD AND 24TH | 2023-09-25 → 2023-11-01 A (+37d) | 2023-09-28 → 2023-11-01 A (+34d) |  | 0% → 100% | -15d → none |  | resources none → MBRT BASE [8 h] |
| 3-3110 | INSTALL POLES, MAD AND 24TH | 2023-08-23 → 2023-11-01 A (+70d) | 2023-08-28 → 2023-11-01 A (+65d) |  | 0% → 100% | 5d → none |  | resources none → MBRT NEW [32 h] |
| 3-2457 | NOTIFY SDOT, MAD AND 24TH | 2023-10-12 → 2023-11-03 A (+22d) | 2023-10-12 → 2023-11-03 A (+22d) |  | 0% → 100% | 45d → none |  | resources none → MBRT BASE [8 h] |
| 3-2458 | SDOT INSPECTION, MAD AND 24TH | 2023-10-13 → 2023-11-06 A (+24d) | 2023-10-19 → 2023-11-14 A (+26d) | 5d → 7d | 0% → 100% | 45d → none |  | resources none → MBRT BASE [48 h] |
| 3-2459 | COMM SIGNAL, MAD AND 24TH | 2023-10-20 → 2023-11-15 A (+26d) | 2023-10-20 → 2023-11-15 A (+26d) |  | 0% → 100% | 45d → none |  | resources none → MBRT BASE [8 h] |
| 9 | **MADISON AND 28TH** | 2023-08-29 → 2023-12-11 (+104d) | 2024-02-23 → 2024-05-29 (+96d) |  |  |  |  |  |
| 3-3115 | INST POLES, MAD AND 28TH | 2023-08-29 → 2023-12-11 A (+104d) | 2023-08-31 → 2023-12-13 A (+104d) |  | 0% → 100% | 12d → none |  | resources none → MBRT NEW [24 h] |
| 3-2462 | INST SERVICE METER CABINET, MAD & 28TH | 2023-10-16 → 2024-03-11 A (+147d) | 2023-10-16 → 2024-03-11 A (+147d) |  | 0% → 100% | -44d → none |  | resources none → MBRT BASE [8 h] |
| 3-8050 | SDCI INSPECTION | 2023-10-17 → 2024-03-12 A (+147d) | 2023-10-17 → 2024-03-12 A (+147d) |  | 0% → 100% | -44d → none |  | resources none → MBRT NEW [8 h] |
| 3-8070 | SDOT INSPECTION | 2023-10-18 → 2024-03-13 A (+147d) | 2023-10-18 → 2024-03-13 A (+147d) |  | 0% → 100% | -44d → none |  | resources none → MBRT NEW [8 h] |
| 3-8038 | SCL INSPECTION REQUEST | 2023-10-19 → 2024-03-14 A (+147d) | 2023-10-19 → 2024-03-14 A (+147d) |  | 0% → 100% | -44d → none |  | resources none → MBRT NEW |
| 3-8039 | 30 DAY WAIT FOR SCL TO INSPECT, MAD AND BOYLSTON | 2023-10-19 → 2024-03-14 A (+147d) | 2023-12-04 → 2024-03-15 A (+102d) | 30d → 2d | 0% → 100% | -44d → none |  | resources none → MBRT NEW |
| 3-8079 | SCL INSPECTION | 2023-12-05 → 2024-03-18 A (+104d) | 2023-12-05 → 2024-03-18 A (+104d) |  | 0% → 100% | -44d → none |  | resources none → MBRT NEW [8 h] |
| 3-2468 | COMMISION NOTIFICATION | 2023-12-06 → 2024-03-19 A (+104d) | 2023-12-06 → 2024-03-19 A (+104d) |  | 0% → 100% | -44d → none |  | resources none → MBRT BASE |
| 3-2469 | 30 DAY WAIT FOR SCL TO COMMISION | 2023-12-07 → 2024-03-20 A (+104d) | 2024-01-22 → 2024-04-05 (+74d) | 30d → 15d |  | -44d → -121d |  | resources none → MBRT BASE |
| 3-2470 | COMM SERVICE, MAD AND 28TH | 2024-01-23 → 2024-04-08 (+76d) | 2024-01-23 → 2024-04-08 (+76d) |  |  | -44d → -121d |  | resources none → MBRT BASE [8 h] |
| 3-2461 | INST SIGNAL CABINET, MAD AND 28TH | 2024-01-24 → 2024-05-15 (+112d) | 2024-01-24 → 2024-05-15 (+112d) |  |  | -44d → -147d | PMP-0016, 3-2272, 3-2470 → PMP-0016, 3-2272, 3-2470, 3-2500, 3-2525, 2-1626 | resources none → MBRT BASE [8 h] |
| 3-2463 | INST MAGNOMETERS, MAD AND 28TH | 2024-01-25 → 2024-05-16 (+112d) | 2024-01-29 → 2024-05-16 (+108d) | 3d → 1d |  | -44d → -147d |  | resources none → MBRT BASE [8 h] |
| 3-2464 | INST MAST ARMS, MAD AND 28TH | 2024-01-30 → 2024-05-17 (+108d) | 2024-02-01 → 2024-05-17 (+106d) | 3d → 1d |  | -44d → -147d |  | resources none → MBRT BASE [8 h] |
| 3-2465 | INST PPB POST, MAD AND 28TH | 2024-02-02 → 2024-05-20 (+108d) | 2024-02-05 → 2024-05-20 (+105d) | 2d → 1d |  | -44d → -147d |  | resources none → MBRT BASE [8 h] |
| 3-2466 | INST PEDISTALS, MAD AND 28TH | 2024-02-06 → 2024-05-21 (+105d) | 2024-02-06 → 2024-05-21 (+105d) |  |  | -44d → -147d |  | resources none → MBRT BASE [8 h] |
| 3-2467 | INST WIRING, MAD AND 28TH | 2024-02-07 → 2024-05-22 (+105d) | 2024-02-13 → 2024-05-23 (+100d) | 5d → 2d |  | -44d → -147d |  | resources none → MBRT BASE [16 h] |
| 3-2471 | NOTIFY SDOT, MAD AND 28TH | 2024-02-14 → 2024-05-24 (+100d) | 2024-02-14 → 2024-05-24 (+100d) |  |  | -44d → -147d |  | resources none → MBRT BASE |
| 3-2472 | SDOT INSPECTION, MAD AND 28TH | 2024-02-15 → 2024-05-28 (+103d) | 2024-02-22 → 2024-05-28 (+96d) | 5d → 1d |  | -44d → -147d |  | resources none → MBRT BASE [8 h] |
| 3-2473 | COMM SIGNAL, MAD AND 28TH | 2024-02-23 → 2024-05-29 (+96d) | 2024-02-23 → 2024-05-29 (+96d) |  |  | -44d → -147d |  | resources none → MBRT BASE [8 h] |
| 12 | **ITS WIRING** | 2024-03-15 → 2024-07-04 (+111d) | 2024-03-28 → 2024-07-17 (+111d) |  |  |  |  |  |
| 3-2501 | INST WIRING, ITS, ITS WIRING | 2024-03-15 → 2024-07-04 (+111d) | 2024-03-28 → 2024-07-17 (+111d) |  |  | -58d → -136d |  | resources none → MBRT BASE [80 h] |
| 13 | **LIGHTING** |  | 2024-05-30 → 2024-07-25 (+56d) |  |  |  |  |  |
| 3-2503 | INST POLES, LIGHTING | 2023-11-17 → 2023-12-26 A (+39d) | 2023-12-04 → 2023-12-26 A (+22d) |  | 0% → 100% | -35d → none | 3-2369 → 3-2369 SS | resources none → MBRT BASE [8 h] |
| 3-2504 | INST WIRING, LIGHTING | 2023-12-05 → 2023-12-26 A (+21d) | 2023-12-18 → 2024-02-13 A (+57d) |  | 0% → 100% | -35d → none |  | resources none → MBRT BASE [272 h] |
| 3-2505 | NOTIFY SCL, LIGHTING | 2023-12-19 → 2024-02-13 A (+56d) | 2023-12-19 → 2024-02-13 A (+56d) | 0d → 1d | 0% → 100% | -35d → none |  | resources none → MBRT BASE [8 h] |
| 3-2506 | SCL Lighting Final Inspection, LIGHTING | 2023-12-19 → 2024-02-14 A (+57d) | 2024-02-01 → 2024-02-23 A (+22d) | 30d → 10d | 0% → 100% | -35d → none |  | was named SCL INSPECTION, LIGHTING; resources none → MBRT BASE [80 h] |
| 3-2685 | COMM SERVICE, LIGHTING | 2024-02-02 → 2024-02-27 A (+25d) | 2024-02-02 → 2024-02-27 A (+25d) |  | 0% → 100% | -35d → none | 3-2506 → 3-2506, 3-2521 | resources none → MBRT NEW [8 h] |
| 3-2690 | NOTIFY SCL, LIGHTING | 2024-02-05 → 2024-02-28 A (+23d) | 2024-02-05 → 2024-02-28 A (+23d) |  | 0% → 100% | -35d → none |  | resources none → MBRT NEW |
| 3-2695 | SCL Commissioning Inspection, LIGHTING - DELAY | 2024-02-05 → 2024-03-01 A (+25d) | 2024-02-16 → 2024-03-15 A (+28d) |  | 0% → 100% | -35d → none |  | was named SCL INSPECTION, LIGHTING; resources none → MBRT NEW |
| 3-2507 | COMM LIGHTING, LIGHTING | 2024-02-20 → 2024-03-18 A (+27d) | 2024-02-20 → 2024-03-18 A (+27d) |  | 0% → 100% | -35d → none | 3-2695 → 3-2695, 3-2521 | resources none → MBRT BASE [8 h] |
| 3-2930 | INST POLES, LIGHTING | 2023-08-14 A | 2023-08-25 A |  | 0% → 100% | 36d → none | none → 3-2091 SS | resources none → MBRT NEW [80 h] |
| 3-2935 | INST WIRING, LIGHTING | 2024-01-31 → 2024-04-12 (+72d) | 2024-02-13 → 2024-04-25 (+72d) |  |  | -69d → -92d |  | resources none → MBRT NEW [80 h] |
| 3-2940 | NOTIFY SCL, LIGHTING | 2024-02-14 → 2024-04-26 (+72d) | 2024-02-14 → 2024-04-26 (+72d) |  |  | -69d → -92d |  | resources none → MBRT NEW |
| 3-2945 | SCL Lighting Final Inspection, LIGHTING | 2024-02-14 → 2024-04-26 (+72d) | 2024-03-27 → 2024-04-29 (+33d) | 30d → 2d |  | -69d → -92d |  | was named SCL INSPECTION, LIGHTING; resources none → MBRT NEW [16 h] |
| 3-2955 | COMM SERVICE, LIGHTING | 2024-03-28 → 2024-04-30 (+33d) | 2024-03-28 → 2024-04-30 (+33d) |  |  | -69d → -92d |  | resources none → MBRT NEW [8 h] |
| 3-2960 | NOTIFY SCL, LIGHTING | 2024-03-29 → 2024-05-01 (+33d) | 2024-03-29 → 2024-05-01 (+33d) |  |  | -69d → -92d |  | resources none → MBRT NEW |
| 3-2965 | SCL Commissioning Inspection, LIGHTING | 2024-03-29 → 2024-05-01 (+33d) | 2024-04-11 → 2024-05-14 (+33d) |  |  | -69d → -92d |  | was named SCL INSPECTION, LIGHTING; resources none → MBRT NEW |
| 3-2950 | COMM LIGHTING, LIGHTING | 2024-04-12 → 2024-05-15 (+33d) | 2024-04-12 → 2024-05-15 (+33d) |  |  | -69d → -92d |  | resources none → MBRT NEW [8 h] |
| 3-2705 | INST POLES, LIGHTING | 2023-08-14 A | 2023-08-25 A |  | 0% → 100% | 36d → none |  | resources none → MBRT NEW [80 h] |
| 3-2710 | INST WIRING, LIGHTING | 2024-01-31 → 2024-05-09 (+99d) | 2024-02-13 → 2024-05-22 (+99d) |  |  | -69d → -111d |  | resources none → MBRT NEW [80 h] |
| 3-2715 | NOTIFY SCL, LIGHTING | 2024-02-14 → 2024-05-23 (+99d) | 2024-02-14 → 2024-05-23 (+99d) |  |  | -69d → -111d |  | resources none → MBRT NEW |
| 3-2720 | SCL Lighting Final Inspection, LIGHTING | 2024-02-14 → 2024-05-23 (+99d) | 2024-03-27 → 2024-05-24 (+58d) | 30d → 2d |  | -69d → -111d |  | was named SCL INSPECTION, LIGHTING; resources none → MBRT NEW [16 h] |
| 3-2730 | COMM SERVICE, LIGHTING | 2024-03-28 → 2024-05-28 (+61d) | 2024-03-28 → 2024-05-28 (+61d) |  |  | -69d → -111d |  | resources none → MBRT NEW [8 h] |
| 3-2735 | NOTIFY SCL, LIGHTING | 2024-03-29 → 2024-05-29 (+61d) | 2024-03-29 → 2024-05-29 (+61d) |  |  | -69d → -111d |  | resources none → MBRT NEW |
| 3-2740 | SCL Commissioning Inspection, LIGHTING | 2024-03-29 → 2024-05-29 (+61d) | 2024-04-11 → 2024-06-11 (+61d) |  |  | -69d → -111d |  | was named SCL INSPECTION, LIGHTING; resources none → MBRT NEW |
| 3-2725 | COMM LIGHTING, LIGHTING | 2024-04-12 → 2024-06-12 (+61d) | 2024-04-12 → 2024-06-12 (+61d) |  |  | -69d → -111d |  | resources none → MBRT NEW [8 h] |
| 3-2885 | INST POLES, LIGHTING | 2023-08-14 A | 2023-08-25 A |  | 0% → 100% | -4d → none |  | resources none → MBRT NEW [80 h] |
| 3-2890 | INST WIRING, LIGHTING | 2023-12-15 → 2024-06-20 (+188d) | 2023-12-29 → 2024-07-03 (+187d) |  |  | -39d → -140d |  | resources none → MBRT NEW [80 h] |
| 3-2895 | NOTIFY SCL, LIGHTING | 2024-01-02 → 2024-07-04 (+184d) | 2024-01-02 → 2024-07-04 (+184d) |  |  | -39d → -140d |  | resources none → MBRT NEW |
| 3-2900 | SCL Lighting Final Inspection, LIGHTING | 2024-01-02 → 2024-07-04 (+184d) | 2024-02-13 → 2024-07-05 (+143d) | 30d → 2d |  | -39d → -140d |  | was named SCL INSPECTION, LIGHTING; resources none → MBRT NEW [16 h] |
| 3-2910 | COMM SERVICE, LIGHTING | 2024-02-14 → 2024-07-08 (+145d) | 2024-02-14 → 2024-07-08 (+145d) |  |  | -39d → -140d |  | resources none → MBRT NEW [8 h] |
| 3-2915 | NOTIFY SCL, LIGHTING | 2024-02-15 → 2024-07-09 (+145d) | 2024-02-15 → 2024-07-09 (+145d) |  |  | -39d → -140d |  | resources none → MBRT NEW |
| 3-2920 | SCL Commissioning Inspection, LIGHTING | 2024-02-15 → 2024-07-09 (+145d) | 2024-02-29 → 2024-07-22 (+144d) |  |  | -39d → -140d |  | was named SCL INSPECTION, LIGHTING; resources none → MBRT NEW |
| 3-2905 | COMM LIGHTING, LIGHTING | 2024-03-01 → 2024-07-23 (+144d) | 2024-03-01 → 2024-07-23 (+144d) |  |  | -39d → -140d |  | resources none → MBRT NEW [8 h] |
| 5 | **DENNY (Schematic 22)** |  | 2023-12-12 → 2023-12-27 (+15d) |  |  |  |  |  |
| 3-2880 | SCL NOTIFICATION FOR MANDERALING |  |  | 1d → 0d |  |  | none → MS-0025 | resources none → MBRT NEW |
| 3-2925 | 2 DAY WAIT FOR SCL | 2023-08-14 A | 2023-08-15 A |  | 0% → 100% | 21d → none |  | resources none → MBRT NEW [16 h] |
| 3-2970 | OWNER CAUSED DELAY SLC MANERALING | 2023-08-16 A | 2023-09-15 → 2023-10-27 A (+42d) | 22d → 0d | 0% → 100% | 21d → none |  | resources none → MBRT NEW |
| 3-3015 | MANDREL CONDUITS | 2023-09-18 → 2023-10-30 A (+42d) | 2023-09-18 → 2023-10-30 A (+42d) |  | 0% → 100% | 21d → none |  | resources none → MBRT NEW [8 h] |
| 3-2840 | INST POLES, LIGHTING | 2023-08-28 → 2023-10-31 A (+64d) | 2023-09-11 → 2023-11-03 A (+53d) | 10d → 4d | 0% → 100% | -4d → none |  | resources none → MBRT NEW [32 h] |
| 3-2845 | INST WIRING, LIGHTING | 2023-09-27 → 2023-11-21 A (+55d) | 2023-10-10 → 2023-11-29 A (+50d) |  | 0% → 100% | 15d → none |  | resources none → MBRT NEW [80 h] |

| ID | Task | Start | Finish | Duration | Complete | Total float | Predecessors | Other |
| --- | --- | --- | --- | --- | --- | --- | --- | --- |
| 3-2850 | NOTIFY SCL, LIGHTING | 2023-10-11 → 2023-11-29 A (+49d) | 2023-10-11 → 2023-11-29 A (+49d) | 0d → 1d | 0% → 100% | 15d → none |  | resources none → MBRT NEW [8 h] |
| 3-2855 | SCL Lighting Final Inspection, LIGHTING | 2023-10-11 → 2023-11-29 A (+49d) | 2023-11-22 → 2023-11-29 A (+7d) | 30d → 21d | 0% → 100% | 15d → none |  | was named SCL INSPECTION, LIGHTING; resources none → MBRT NEW |
| 3-2865 | COMM SERVICE, LIGHTING | 2023-11-27 → 2023-11-29 A (+2d) | 2023-11-27 → 2023-11-29 A (+2d) |  | 0% → 100% | 15d → none |  | resources none → MBRT NEW [8 h] |
| 3-2870 | NOTIFY SCL, LIGHTING | 2023-11-28 → 2023-12-12 A (+14d) | 2023-11-28 → 2023-12-12 A (+14d) |  | 0% → 100% | 15d → none |  | resources none → MBRT NEW |
| 3-2875 | SCL INSPECTION, LIGHTING | 2023-11-28 → 2023-12-12 A (+14d) | 2023-12-11 → 2023-12-26 A (+15d) |  | 0% → 100% | 15d → none |  | resources none → MBRT NEW [80 h] |
| 3-2860 | COMM LIGHTING, LIGHTING | 2023-12-12 → 2023-12-27 A (+15d) | 2023-12-12 → 2023-12-27 A (+15d) |  | 0% → 100% | 15d → none |  | resources none → MBRT NEW [8 h] |
| 4 | **23RD (Schematic 23)** |  | 2024-01-10 → 2024-04-17 (+98d) |  |  |  |  |  |
| 3-9588 | SCL NOTIFICATION FOR MANDERALING |  |  | 1d → 0d |  |  | none → 3-2880 SS | resources none → MBRT NEW |
| 3-9593 | 2 DAY WAIT FOR SCL | 2023-08-14 A | 2023-08-15 A |  | 0% → 100% | 21d → none |  | resources none → MBRT NEW [16 h] |
| 3-9598 | OWNER CAUSED DELAY SLC MANERALING | 2023-08-16 A | 2023-09-15 → 2023-12-12 A (+88d) | 22d → 0d | 0% → 100% | 21d → none |  | resources none → MBRT NEW |
| 3-9618 | MANDREL CONDUITS | 2023-09-18 → 2023-12-13 A (+86d) | 2023-09-18 → 2023-12-14 A (+87d) | 1d → 2d | 0% → 100% | 21d → none |  | resources none → MBRT NEW [16 h] |
| 3-2795 | INST POLES, LIGHTING | 2023-10-10 → 2023-12-27 A (+78d) | 2023-10-23 → 2023-12-27 A (+65d) |  | 0% → 100% | -4d → none | 3-2442 → 3-9618 | resources none → MBRT NEW [80 h] |
| 3-2800 | INST WIRING, LIGHTING | 2023-10-24 → 2024-01-02 A (+70d) | 2023-11-06 → 2024-01-05 A (+60d) |  | 0% → 100% | -4d → none | 3-2795, 3-2443, 3-9618 → 3-2795, 3-9618 | resources none → MBRT NEW [80 h] |
| 3-2805 | NOTIFY SCL, LIGHTING | 2023-11-07 → 2024-01-05 A (+59d) | 2023-11-07 → 2024-01-05 A (+59d) |  | 0% → 100% | -4d → none |  | resources none → MBRT NEW |
| 3-2810 | SCL Lighting Final Inspection, LIGHTING | 2023-11-07 → 2024-01-08 A (+62d) | 2023-12-21 → 2024-01-12 A (+22d) | 30d → 10d | 0% → 100% | -4d → none |  | was named SCL INSPECTION, LIGHTING; resources none → MBRT NEW [80 h] |
| 3-2820 | COMM SERVICE, LIGHTING | 2023-12-22 → 2024-04-02 (+102d) | 2023-12-22 → 2024-04-02 (+102d) |  |  | -4d → -72d |  | resources none → MBRT NEW [8 h] |
| 3-2825 | NOTIFY SCL, LIGHTING | 2023-12-26 → 2024-04-03 (+99d) | 2023-12-26 → 2024-04-03 (+99d) |  |  | -4d → -72d |  | resources none → MBRT NEW |
| 3-2830 | SCL Commissioning Inspection, LIGHTING | 2023-12-26 → 2024-04-03 (+99d) | 2024-01-09 → 2024-04-16 (+98d) |  |  | -4d → -72d |  | was named SCL INSPECTION, LIGHTING; resources none → MBRT NEW |
| 3-2815 | COMM LIGHTING, LIGHTING | 2024-01-10 → 2024-04-17 (+98d) | 2024-01-10 → 2024-04-17 (+98d) |  |  | -4d → -72d |  | resources none → MBRT NEW [8 h] |
| 3 | **24TH (Schematic 24)** |  | 2023-12-28 → 2023-12-27 (-1d) |  |  |  |  |  |
| 3-9603 | SCL NOTIFICATION FOR MANDERALING |  |  | 1d → 0d |  |  | none → 3-9588 SS | resources none → MBRT NEW |
| 3-9608 | 2 DAY WAIT FOR SCL | 2023-08-14 A | 2023-08-15 A |  | 0% → 100% | 2d → none |  | resources none → MBRT NEW [16 h] |
| 3-9613 | OWNER CAUSED DELAY SLC MANERALING | 2023-08-16 A | 2023-09-15 → 2023-09-29 A (+14d) | 22d → 32d | 0% → 100% | 2d → none |  | resources none → MBRT NEW [256 h] |
| 3-9623 | MANDREL CONDUITS | 2023-09-18 → 2023-10-02 A (+14d) | 2023-09-18 → 2023-10-02 A (+14d) |  | 0% → 100% | 2d → none |  | resources none → MBRT NEW [8 h] |
| 3-2750 | INST POLES, LIGHTING | 2023-09-12 → 2023-11-06 A (+55d) | 2023-09-25 → 2023-11-07 A (+43d) |  | 0% → 100% | -4d → none |  | resources none → MBRT NEW [80 h] |
| 3-2755 | INST WIRING, LIGHTING | 2023-10-12 → 2023-12-05 A (+54d) | 2023-10-25 → 2023-12-08 A (+44d) |  | 0% → 100% | -15d → none |  | resources none → MBRT NEW [80 h] |
| 3-2760 | NOTIFY SCL, LIGHTING | 2023-10-26 → 2023-12-08 A (+43d) | 2023-10-26 → 2023-12-08 A (+43d) |  | 0% → 100% | 3d → none |  | resources none → MBRT NEW |
| 3-2765 | SCL Lighting Final Inspection, LIGHTING | 2023-10-26 → 2023-12-11 A (+46d) | 2023-12-11 A | 30d → 1d | 0% → 100% | 3d → none |  | was named SCL INSPECTION, LIGHTING; resources none → MBRT NEW [8 h] |
| 3-2775 | COMM SERVICE, LIGHTING | 2023-12-12 → 2023-12-11 A (-1d) | 2023-12-12 → 2023-12-11 A (-1d) |  | 0% → 100% | 3d → none |  | resources none → MBRT NEW [8 h] |
| 3-2780 | NOTIFY SCL, LIGHTING | 2023-12-13 → 2023-12-12 A (-1d) | 2023-12-13 → 2023-12-12 A (-1d) |  | 0% → 100% | 3d → none |  | resources none → MBRT NEW |
| 3-2785 | SCL INSPECTION, LIGHTING | 2023-12-13 → 2023-12-12 A (-1d) | 2023-12-27 → 2023-12-26 A (-1d) |  | 0% → 100% | 3d → none |  | resources none → MBRT NEW [80 h] |
| 3-2770 | COMM LIGHTING, LIGHTING | 2023-12-28 → 2023-12-27 A (-1d) | 2023-12-28 → 2023-12-27 A (-1d) |  | 0% → 100% | 3d → none |  | resources none → MBRT NEW [8 h] |
| 10 | **MLK** | 2023-09-26 → 2023-11-08 (+43d) | 2024-05-15 → 2024-07-01 (+47d) |  |  |  |  |  |
| 3-3065 | INST POLES, LIGHTING | 2023-09-26 → 2023-11-08 A (+43d) | 2023-10-09 → 2023-11-10 A (+32d) |  | 0% → 100% | -4d → none | 3-3115, 3-2750 → 3-2750 | resources none → MBRT NEW [80 h] |
| 3-3070 | INST WIRING, LIGHTING | 2024-03-06 → 2024-05-30 (+85d) | 2024-03-18 → 2024-06-11 (+85d) |  |  | -102d → -134d |  | resources none → MBRT NEW [72 h] |
| 3-3075 | NOTIFY SCL, LIGHTING | 2024-03-19 → 2024-06-12 (+85d) | 2024-03-19 → 2024-06-12 (+85d) |  |  | -92d → -124d |  | resources none → MBRT NEW |
| 3-3080 | SCL Lighting Final Inspection, LIGHTING | 2024-03-19 → 2024-06-12 (+85d) | 2024-04-29 → 2024-06-13 (+45d) | 30d → 2d |  | -92d → -124d |  | was named SCL INSPECTION, LIGHTING; resources none → MBRT NEW [16 h] |
| 3-3090 | COMM SERVICE, LIGHTING | 2024-04-30 → 2024-06-14 (+45d) | 2024-04-30 → 2024-06-14 (+45d) |  |  | -92d → -124d |  | resources none → MBRT NEW [8 h] |
| 3-3095 | NOTIFY SCL, LIGHTING | 2024-05-01 → 2024-06-17 (+47d) | 2024-05-01 → 2024-06-17 (+47d) |  |  | -92d → -124d |  | resources none → MBRT NEW |
| 3-3100 | SCL Commissioning Inspection, LIGHTING | 2024-05-01 → 2024-06-17 (+47d) | 2024-05-14 → 2024-06-28 (+45d) |  |  | -92d → -124d |  | was named SCL INSPECTION, LIGHTING; resources none → MBRT NEW |
| 3-3085 | COMM LIGHTING, LIGHTING | 2024-05-15 → 2024-07-01 (+47d) | 2024-05-15 → 2024-07-01 (+47d) |  |  | -92d → -124d |  | resources none → MBRT NEW [8 h] |
| 9 | **HARRISON** | 2023-10-10 → 2024-02-13 (+126d) | 2024-05-30 → 2024-07-15 (+46d) |  |  |  |  |  |
| 3-3020 | INST POLES, LIGHTING | 2023-10-10 → 2024-02-13 A (+126d) | 2023-10-23 → 2024-02-14 A (+114d) | 10d → 4d | 0% → 100% | -4d → none |  | resources none → MBRT NEW [32 h] |
| 3-3025 | INST WIRING, LIGHTING | 2024-03-19 → 2024-06-12 (+85d) | 2024-04-01 → 2024-06-25 (+85d) |  |  | -102d → -134d |  | resources none → MBRT NEW [80 h] |
| 3-3030 | NOTIFY SCL, LIGHTING | 2024-04-02 → 2024-06-26 (+85d) | 2024-04-02 → 2024-06-26 (+85d) |  |  | -102d → -134d |  | resources none → MBRT NEW |
| 3-3035 | SCL Lighting Final Inspection, LIGHTING | 2024-04-02 → 2024-06-26 (+85d) | 2024-05-13 → 2024-06-27 (+45d) | 30d → 2d |  | -102d → -134d |  | was named SCL INSPECTION, LIGHTING; resources none → MBRT NEW [16 h] |
| 3-3045 | COMM SERVICE, LIGHTING | 2024-05-14 → 2024-06-28 (+45d) | 2024-05-14 → 2024-06-28 (+45d) |  |  | -102d → -134d |  | resources none → MBRT NEW [8 h] |
| 3-3050 | NOTIFY SCL, LIGHTING | 2024-05-15 → 2024-07-01 (+47d) | 2024-05-15 → 2024-07-01 (+47d) |  |  | -102d → -134d |  | resources none → MBRT NEW |
| 3-3055 | SCL Commissioning Inspection, LIGHTING | 2024-05-15 → 2024-07-01 (+47d) | 2024-05-29 → 2024-07-12 (+44d) |  |  | -102d → -134d |  | was named SCL INSPECTION, LIGHTING; resources none → MBRT NEW |
| 3-3040 | COMM LIGHTING, LIGHTING | 2024-05-30 → 2024-07-15 (+46d) | 2024-05-30 → 2024-07-15 (+46d) |  |  | -102d → -134d |  | resources none → MBRT NEW [8 h] |
| 8 | **19TH AND UNION** | 2024-01-23 → 2024-04-23 (+91d) | 2024-04-18 → 2024-07-25 (+98d) |  |  |  |  |  |
| 3-2975 | INST POLES, LIGHTING | 2024-01-23 → 2024-04-23 (+91d) | 2024-02-05 → 2024-05-06 (+91d) |  |  | -73d → -104d | 3-2490 → 3-2490, 3-3020 | resources none → MBRT NEW [80 h] |
| 3-2980 | INST WIRING, LIGHTING | 2024-02-06 → 2024-07-01 (+146d) | 2024-02-20 → 2024-07-05 (+136d) | 10d → 5d |  | -73d → -142d | 3-2975, 3-2493 → 3-2975, 3-2493, 3-2490 | resources none → MBRT NEW [40 h] |
| 3-2985 | NOTIFY SCL, LIGHTING | 2024-02-21 → 2024-07-08 (+138d) | 2024-02-21 → 2024-07-08 (+138d) |  |  | -73d → -142d |  | resources none → MBRT NEW |
| 3-2990 | SCL Lighting Final Inspection, LIGHTING | 2024-02-21 → 2024-07-08 (+138d) | 2024-04-02 → 2024-07-09 (+98d) | 30d → 2d |  | -73d → -142d |  | was named SCL INSPECTION, LIGHTING; resources none → MBRT NEW [16 h] |
| 3-3000 | COMM SERVICE, LIGHTING | 2024-04-03 → 2024-07-10 (+98d) | 2024-04-03 → 2024-07-10 (+98d) |  |  | -73d → -142d |  | resources none → MBRT NEW [8 h] |
| 3-3005 | NOTIFY SCL, LIGHTING | 2024-04-04 → 2024-07-11 (+98d) | 2024-04-04 → 2024-07-11 (+98d) |  |  | -73d → -142d |  | resources none → MBRT NEW |
| 3-3010 | SCL Commissioning Inspection, LIGHTING | 2024-04-04 → 2024-07-11 (+98d) | 2024-04-17 → 2024-07-24 (+98d) |  |  | -73d → -142d |  | was named SCL INSPECTION, LIGHTING; resources none → MBRT NEW |
| 3-2995 | COMM LIGHTING, LIGHTING | 2024-04-18 → 2024-07-25 (+98d) | 2024-04-18 → 2024-07-25 (+98d) |  |  | -73d → -142d |  | resources none → MBRT NEW [8 h] |
| 19 | **WORK TO COMPLETE AFTER SIGNAL/LIGHTING COMMISSIONING** | 2023-10-06 → 2023-10-10 (+4d) | 2024-03-06 → 2024-07-04 (+120d) |  |  |  |  |  |
| 18 | **16TH AND MADISON** | 2023-12-08 → 2024-02-21 (+75d) | 2024-02-26 → 2024-03-27 (+30d) |  |  |  |  |  |
| 3-3130 | REMOVE TEMP SIGNALS | 2023-12-08 → 2024-02-21 A (+75d) | 2023-12-11 → 2024-02-22 A (+73d) |  | 0% → 100% | 9d → none |  | resources none → MBRT ADDED [16 h] |
| 3-3135 | REMOVE SIGNAL POLE | 2023-12-12 → 2024-02-21 A (+71d) | 2023-12-12 → 2024-02-22 A (+72d) |  | 0% → 100% | 9d → none |  | resources none → MBRT ADDED [8 h] |
| 3-3140 | REMOVE FOUNDATIONS | 2023-12-13 → 2024-03-04 A (+82d) | 2023-12-14 → 2024-03-05 A (+82d) |  | 0% → 100% | 9d → none |  | resources none → MBRT ADDED [16 h] |
| 3-3145 | GRADE SIDEWALKS | 2023-12-15 → 2024-03-06 A (+82d) | 2023-12-15 → 2024-03-06 A (+82d) |  | 0% → 100% | 9d → none |  | resources none → MBRT ADDED [8 h] |
| 3-3150 | CURB RAMP | 2023-12-18 → 2024-03-07 A (+80d) | 2023-12-19 → 2024-03-08 A (+80d) |  | 0% → 100% | 9d → none |  | resources none → MBRT ADDED [16 h] |
| 3-3155 | SIDEWALKS | 2023-12-20 → 2024-03-11 A (+82d) | 2023-12-20 → 2024-03-11 A (+82d) |  | 0% → 100% | 9d → none |  | resources none → MBRT ADDED [8 h] |
| 3-3125 | REMOVE TEMP LIGHTING | 2024-02-21 → 2024-03-22 A (+30d) | 2024-02-22 → 2024-03-25 A (+32d) |  | 0% → 100% | -35d → none |  | resources none → MBRT ADDED [16 h] |
| 3-3160 | GRADE SIDEWALKS AFTER TEMP LIGHTING REMOVAL | 2024-02-23 → 2024-03-26 A (+32d) | 2024-02-23 → 2024-03-26 A (+32d) |  | 0% → 100% | -35d → none |  | resources none → MBRT ADDED [8 h] |
| 3-3165 | FINISH SIDEWALKS | 2024-02-26 → 2024-03-27 A (+30d) | 2024-02-26 → 2024-03-27 A (+30d) |  | 0% → 100% | -35d → none |  | resources none → MBRT ADDED [8 h] |

| ID | Task | Start | Finish | Duration | Complete | Total float | Predecessors | Other |
| --- | --- | --- | --- | --- | --- | --- | --- | --- |
| 1 | **17TH AND MADISON** | 2024-02-09 → 2024-04-17 (+68d) | 2024-02-14 → 2024-04-22 (+68d) |  |  |  |  |  |
| 3-3170 | REMOVE CABINET | 2024-02-09 → 2024-04-17 (+68d) | 2024-02-09 → 2024-04-17 (+68d) |  |  | -28d → -75d |  | resources none → MBRT ADDED [8 h] |
| 3-3175 | REMOVE CABINET FOUNDATION | 2024-02-12 → 2024-04-18 (+66d) | 2024-02-12 → 2024-04-18 (+66d) |  |  | -28d → -75d |  | resources none → MBRT ADDED [8 h] |
| 3-3190 | GRADE SIDEWALKS | 2024-02-13 → 2024-04-19 (+66d) | 2024-02-13 → 2024-04-19 (+66d) |  |  | -28d → -75d |  | resources none → MBRT ADDED [8 h] |
| 3-3200 | POUR SIDEWALKS | 2024-02-14 → 2024-04-22 (+68d) | 2024-02-14 → 2024-04-22 (+68d) |  |  | -28d → -75d |  | resources none → MBRT ADDED [8 h] |
| 2 | **19TH AND MADISON** | 2024-02-12 → 2024-07-01 (+140d) | 2024-02-15 → 2024-07-04 (+140d) |  |  |  |  |  |
| 3-3205 | REMOVE CABINET | 2024-02-12 → 2024-07-01 (+140d) | 2024-02-12 → 2024-07-01 (+140d) |  |  | -29d → -127d |  | resources none → MBRT ADDED [8 h] |
| 3-3210 | REMOVE CABINET FOUNDATION | 2024-02-13 → 2024-07-02 (+140d) | 2024-02-13 → 2024-07-02 (+140d) |  |  | -29d → -127d |  | resources none → MBRT ADDED [8 h] |
| 3-3215 | GRADE SIDEWALKS | 2024-02-14 → 2024-07-03 (+140d) | 2024-02-14 → 2024-07-03 (+140d) |  |  | -29d → -127d |  | resources none → MBRT ADDED [8 h] |
| 3-3220 | POUR SIDEWALKS | 2024-02-15 → 2024-07-04 (+140d) | 2024-02-15 → 2024-07-04 (+140d) |  |  | -29d → -127d |  | resources none → MBRT ADDED [8 h] |
| 3 | **20TH AND MADISON** | 2023-10-23 → 2024-02-06 (+106d) | 2023-10-26 → 2024-03-11 (+137d) |  |  |  |  |  |
| 3-3225 | REMOVE CABINET | 2023-10-23 → 2024-02-06 A (+106d) | 2023-10-23 → 2024-02-09 A (+109d) |  | 0% → 100% | 45d → none |  | resources none → MBRT ADDED [8 h] |
| 3-3230 | REMOVE CABINET FOUNDATION | 2023-10-24 → 2024-03-04 A (+132d) | 2023-10-24 → 2024-03-07 A (+135d) | 1d → 4d | 0% → 100% | 45d → none |  | resources none → MBRT ADDED [32 h] |
| 3-3235 | GRADE SIDEWALKS | 2023-10-25 → 2024-03-08 A (+135d) | 2023-10-25 → 2024-03-08 A (+135d) |  | 0% → 100% | 45d → none |  | resources none → MBRT ADDED [8 h] |
| 3-3240 | POUR SIDEWALKS | 2023-10-26 → 2024-03-11 A (+137d) | 2023-10-26 → 2024-03-11 A (+137d) |  | 0% → 100% | 45d → none |  | resources none → MBRT ADDED [8 h] |
| 4 | **DENNY AND MADISON** | 2023-10-06 → 2023-10-10 (+4d) | 2023-10-11 → 2023-12-13 (+63d) |  |  |  |  |  |
| 3-3245 | REMOVE CABINET | 2023-10-06 → 2023-12-05 A (+60d) | 2023-10-06 → 2023-12-05 A (+60d) |  | 0% → 100% | 56d → none | 3-2440 → 3-2440, 3-3325 | resources none → MBRT ADDED [8 h] |
| 3-3250 | REMOVE CABINET FOUNDATION | 2023-10-09 → 2023-12-11 A (+63d) | 2023-10-09 → 2023-12-11 A (+63d) |  | 0% → 100% | 56d → none |  | resources none → MBRT ADDED [8 h] |
| 3-3255 | GRADE SIDEWALKS | 2023-10-10 → 2023-12-12 A (+63d) | 2023-10-10 → 2023-12-12 A (+63d) |  | 0% → 100% | 56d → none |  | resources none → MBRT ADDED [8 h] |
| 3-3260 | POUR SIDEWALKS | 2023-10-11 → 2023-12-13 A (+63d) | 2023-10-11 → 2023-12-13 A (+63d) |  | 0% → 100% | 56d → none |  | resources none → MBRT ADDED [8 h] |
| 5 | **24TH AND MADISON** | 2023-10-23 → 2023-11-16 (+24d) |  |  |  |  |  |  |
| 3-3265 | REMOVE CABINET | 2023-10-23 → 2023-12-05 A (+43d) | 2023-10-23 → 2023-12-05 A (+43d) |  | 0% → 100% | 45d → none | 3-2459 → 3-2459, 3-3330, 3-3245 SS | resources none → MBRT ADDED [8 h] |
| 3-3270 | REMOVE CABINET FOUNDATION | 2023-10-24 → 2023-12-11 A (+48d) | 2023-10-24 → 2023-12-11 A (+48d) |  | 0% → 100% | 45d → none |  | resources none → MBRT ADDED [8 h] |
| 3-3275 | GRADE SIDEWALKS | 2023-10-25 → 2023-12-12 A (+48d) | 2023-10-25 → 2023-12-12 A (+48d) |  | 0% → 100% | 45d → none |  | resources none → MBRT ADDED [8 h] |
| 3-3280 | POUR SIDEWALKS | 2023-10-26 → 2023-12-13 A (+48d) | 2023-10-26 → 2023-12-13 A (+48d) |  | 0% → 100% | 45d → none |  | resources none → MBRT ADDED [8 h] |
| 3-3305 | REMOVE WOOD POLE | 2023-12-29 A | 2023-12-29 A |  | 0% → 100% | 3d → none |  | resources none → MBRT ADDED [8 h] |
| 6 | **28TH/MLK AND MADISON** | 2024-02-26 → 2024-05-30 (+94d) | 2024-03-06 → 2024-06-10 (+96d) |  |  |  |  |  |
| 3-3285 | REMOVE CABINET | 2024-02-26 → 2024-05-30 (+94d) | 2024-02-26 → 2024-05-30 (+94d) |  |  | -42d → -109d |  | resources none → MBRT ADDED [8 h] |
| 3-3310 | REMOVE STRAIN POLES | 2024-02-27 → 2024-05-31 (+94d) | 2024-02-27 → 2024-05-31 (+94d) |  |  | -42d → -109d |  | resources none → MBRT ADDED [8 h] |
| 3-3290 | REMOVE FOUNDATIONS | 2024-02-28 → 2024-06-03 (+96d) | 2024-02-29 → 2024-06-04 (+96d) |  |  | -42d → -109d |  | resources none → MBRT ADDED [16 h] |
| 3-3295 | GRADE SIDEWALKS | 2024-03-01 → 2024-06-05 (+96d) | 2024-03-01 → 2024-06-05 (+96d) |  |  | -42d → -109d |  | resources none → MBRT ADDED [8 h] |
| 3-3315 | CURB RAMP | 2024-03-04 → 2024-06-06 (+94d) | 2024-03-05 → 2024-06-07 (+94d) |  |  | -42d → -109d |  | resources none → MBRT ADDED [16 h] |
| 3-3300 | POUR SIDEWALKS | 2024-03-06 → 2024-06-10 (+96d) | 2024-03-06 → 2024-06-10 (+96d) |  |  | -42d → -109d |  | resources none → MBRT ADDED [8 h] |
| 18 | **KCM SERVICE CONECTIONS** |  | 2023-10-03 → 2023-10-05 (+2d) |  |  |  |  |  |
| 3-9541 | SERVICE CABINET |  |  |  |  |  |  | resources none → MBRT KCM [8 h] |
| 3-9544 | SDCI INSPECTION |  |  |  |  |  |  | resources none → MBRT KCM [8 h] |
| 3-9542 | REQUEST KCM INSPECTION |  |  |  |  |  |  | resources none → MBRT KCM [8 h] |
| 3-9543 | WAIT FOR KCM TO INSPECT |  |  |  |  |  |  | resources none → MBRT KCM [32 h] |
| 3-9545 | NOTIFY SCL FOR INSPECTION |  |  |  |  |  |  | constraint start on or after 2023-07-03 → none; resources none → MBRT KCM [8 h] |
| 3-9546 | 30 DAY WAIT FOR SCL TO INSPECT |  |  |  |  |  |  | resources none → MBRT KCM |
| 3-9547 | SCL INSPECTION |  |  |  |  |  |  | resources none → MBRT KCM [8 h] |
| 3-9548 | NOTIFY SCL TO COMMISION |  |  |  |  |  |  | resources none → MBRT KCM [8 h] |
| 3-9549 | 30 DAY WAIT FOR SCL TO COMMISION |  | 2023-09-08 A |  | 0% → 100% | 78d → none |  | resources none → MBRT KCM |
| 3-9550 | COMMISION SERVICE | 2023-09-11 A | 2023-09-11 A |  | 0% → 100% | 78d → none |  | resources none → MBRT KCM [8 h] |
| 3-9552 | SERVICE CABINET |  |  |  |  |  |  | constraint start on or after 2023-06-01 → none; resources none → MBRT KCM [8 h] |
| 3-9555 | SDCI INSPECTION |  |  |  |  |  |  | resources none → MBRT KCM [8 h] |
| 3-9553 | REQUEST KCM INSPECTION |  |  |  |  |  |  | resources none → MBRT KCM [8 h] |
| 3-9554 | WAIT FOR KCM TO INSPECT |  |  |  |  |  |  | resources none → MBRT KCM [32 h] |
| 3-9556 | NOTIFY SCL FOR INSPECTION |  |  |  |  |  |  | constraint start on or after 2023-07-03 → none; resources none → MBRT KCM [8 h] |
| 3-9557 | 30 DAY WAIT FOR SCL TO INSPECT |  |  |  |  |  |  | resources none → MBRT KCM |
| 3-9558 | SCL INSPECTION |  |  |  |  |  |  | resources none → MBRT KCM [8 h] |
| 3-9559 | NOTIFY SCL TO COMMISION |  |  |  |  |  |  | resources none → MBRT KCM [8 h] |
| 3-9560 | 30 DAY WAIT FOR SCL TO COMMISION |  | 2023-09-08 A |  | 0% → 100% | 78d → none |  | resources none → MBRT KCM |
| 3-9561 | COMMISION SERVICE | 2023-09-11 A | 2023-09-11 A |  | 0% → 100% | 78d → none |  | resources none → MBRT KCM [8 h] |
| 3-9563 | SERVICE CABINET |  |  |  |  |  |  | resources none → MBRT KCM [8 h] |
| 3-9566 | SDCI INSPECTION |  |  |  |  |  |  | resources none → MBRT KCM [8 h] |
| 3-9564 | REQUEST KCM INSPECTION |  |  |  |  |  |  | resources none → MBRT KCM [8 h] |
| 3-9565 | WAIT FOR KCM TO INSPECT |  |  |  |  |  |  | resources none → MBRT KCM [32 h] |
| 3-9567 | NOTIFY SCL FOR INSPECTION |  |  |  |  |  |  | constraint start on or after 2023-07-03 → none; resources none → MBRT KCM [8 h] |
| 3-9568 | 30 DAY WAIT FOR SCL TO INSPECT |  |  |  |  |  |  | resources none → MBRT KCM |
| 3-9569 | SCL INSPECTION |  |  |  |  |  |  | resources none → MBRT KCM [8 h] |
| 3-9570 | NOTIFY SCL TO COMMISION |  |  |  |  |  |  | resources none → MBRT KCM [8 h] |
| 3-9571 | 30 DAY WAIT FOR SCL TO COMMISION |  | 2023-09-08 A |  | 0% → 100% | 78d → none |  | resources none → MBRT KCM |
| 3-9572 | COMMISION SERVICE | 2023-09-11 A | 2023-09-11 A |  | 0% → 100% | 78d → none |  | resources none → MBRT KCM [8 h] |
| 4 | **JOHN AND MADISON** |  | 2023-10-03 → 2023-10-05 (+2d) |  |  |  |  |  |
| 3-9574 | SERVICE CABINET |  |  |  |  |  |  | resources none → MBRT KCM [8 h] |
| 3-9577 | SDCI INSPECTION |  |  |  |  |  |  | resources none → MBRT KCM [8 h] |
| 3-9575 | REQUEST KCM INSPECTION |  |  |  |  |  |  | resources none → MBRT KCM [8 h] |
| 3-9576 | WAIT FOR KCM TO INSPECT |  |  |  |  |  |  | resources none → MBRT KCM [32 h] |
| 3-9578 | NOTIFY SCL FOR INSPECTION | 2023-08-14 → 2023-09-21 A (+38d) | 2023-08-14 → 2023-09-21 A (+38d) |  | 0% → 100% | 62d → none |  | constraint start on or after 2023-07-03 → none; resources none → MBRT KCM [8 h] |

| ID | Task | Start | Finish | Duration | Complete | Total float | Predecessors | Other |
| --- | --- | --- | --- | --- | --- | --- | --- | --- |
| 3-9579 | 30 DAY WAIT FOR SCL TO INSPECT | 2023-08-15 → 2023-09-22 A (+38d) | 2023-09-06 → 2023-09-29 A (+23d) |  | 0% → 100% | 62d → none |  | resources none → MBRT KCM |
| 3-9580 | SCL INSPECTION | 2023-09-07 → 2023-10-02 A (+25d) | 2023-09-07 → 2023-10-02 A (+25d) |  | 0% → 100% | 62d → none |  | resources none → MBRT KCM [8 h] |
| 3-9581 | NOTIFY SCL TO COMMISION | 2023-09-08 → 2023-10-03 A (+25d) | 2023-09-08 → 2023-10-03 A (+25d) |  | 0% → 100% | 62d → none |  | resources none → MBRT KCM [8 h] |
| 3-9582 | 30 DAY WAIT FOR SCL TO COMMISION | 2023-09-11 → 2023-10-04 A (+23d) | 2023-10-02 → 2023-10-04 A (+2d) |  | 0% → 100% | 62d → none |  | resources none → MBRT KCM |
| 3-9583 | COMMISION SERVICE | 2023-10-03 → 2023-10-05 A (+2d) | 2023-10-03 → 2023-10-05 A (+2d) |  | 0% → 100% | 62d → none |  | resources none → MBRT KCM [8 h] |
| 14 | **STATIONS** | 2023-09-11 → 2024-01-03 (+114d) | 2023-12-11 → 2024-05-14 (+155d) |  |  |  |  |  |
| 1 | **17TH AVE WB STATION** | 2023-09-11 → 2024-02-05 (+147d) | 2023-09-20 → 2024-04-05 (+198d) |  |  |  |  |  |
| 3-2510 | INST SHELTER, 17TH AVE WB STATION | 2023-09-11 → 2024-02-05 A (+147d) | 2023-09-14 → 2024-02-05 A (+144d) |  | 0% → 100% | 16d → none |  | resources none → MBRT BASE [8 h] |
| 3-2511 | INST TEC PYLON, 17TH AVE WB STATION | 2023-09-15 → 2024-04-02 (+200d) | 2023-09-18 → 2024-04-03 (+198d) |  |  | 16d → -91d |  | resources none → MBRT BASE [16 h] |
| 3-2512 | INST AMENITIES, 17TH AVE WB STATION | 2023-09-19 → 2024-04-04 (+198d) | 2023-09-20 → 2024-04-05 (+198d) |  |  | 16d → -91d |  | resources none → MBRT BASE [16 h] |
| 2 | **17TH AVE EB STATION** | 2023-09-21 → 2024-01-03 (+104d) | 2023-10-02 → 2024-04-09 (+190d) |  |  |  |  |  |
| 3-2514 | INST SHELTER, 17TH AVE EB STATION | 2023-09-21 → 2024-01-03 A (+104d) | 2023-09-26 → 2024-01-03 A (+99d) |  | 0% → 100% | 16d → none | 3-2512 → 3-7955 | resources none → MBRT BASE [8 h] |
| 3-2515 | INST TEC PYLON, 17TH AVE EB STATION | 2023-09-27 → 2024-04-02 (+188d) | 2023-09-28 → 2024-04-03 (+188d) |  |  | 16d → -89d |  | resources none → MBRT BASE [16 h] |
| 3-2516 | INST AMENITIES, 17TH AVE EB STATION | 2023-09-29 → 2024-04-08 (+192d) | 2023-10-02 → 2024-04-09 (+190d) |  |  | 16d → -91d | 3-2515 → 3-2515, 3-2512 | resources none → MBRT BASE [16 h] |
| 3 | **DENNY WB STATION** | 2023-10-03 → 2024-02-06 (+126d) | 2023-10-12 → 2024-04-11 (+182d) |  |  |  |  |  |
| 3-2518 | INST SHELTER, DENNY WB STATION | 2023-10-03 → 2024-02-06 A (+126d) | 2023-10-06 → 2024-02-06 A (+123d) |  | 0% → 100% | 16d → none | 3-2516 → 3-2510 | resources none → MBRT BASE [8 h] |
| 3-2519 | INST TEC PYLON, DENNY WB STATION | 2023-10-09 → 2024-04-02 (+176d) | 2023-10-10 → 2024-04-03 (+176d) |  |  | 16d → -87d |  | resources none → MBRT BASE [16 h] |
| 3-2520 | INST AMENITIES, DENNY WB STATION | 2023-10-11 → 2024-04-10 (+182d) | 2023-10-12 → 2024-04-11 (+182d) |  |  | 16d → -91d | 3-2519 → 3-2519, 3-2516 | resources none → MBRT BASE [16 h] |
| 4 | **DENNY EB STATION** | 2023-10-13 → 2024-03-14 (+153d) | 2023-10-24 → 2024-04-17 (+176d) |  |  |  |  |  |
| 3-2522 | INST SHELTER, DENNY EB STATION | 2023-10-13 → 2024-03-14 A (+153d) | 2023-10-18 → 2024-03-19 A (+153d) |  | 0% → 100% | 16d → none | 3-2520, 3-2205 → 3-2205, 3-2518 | resources none → MBRT BASE [32 h] |
| 3-2523 | INST TEC PYLON, DENNY EB STATION | 2023-10-19 → 2024-04-12 (+176d) | 2023-10-20 → 2024-04-15 (+178d) |  |  | 16d → -91d | 3-2522 → 3-2522, 3-2520 | resources none → MBRT BASE [16 h] |
| 3-2524 | INST AMENITIES, DENNY EB STATION | 2023-10-23 → 2024-04-16 (+176d) | 2023-10-24 → 2024-04-17 (+176d) |  |  | 16d → -91d | 3-2523 → 3-2523, 3-2516 | resources none → MBRT BASE [16 h] |
| 5 | **23RD WB STATION** | 2023-10-25 → 2024-01-04 (+71d) | 2023-11-03 → 2024-04-19 (+168d) |  |  |  |  |  |
| 3-2526 | INST SHELTER, 23RD WB STATION | 2023-10-25 → 2024-01-04 A (+71d) | 2023-10-30 → 2024-01-04 A (+66d) |  | 0% → 100% | 16d → none | 3-2220, 3-2524, 3-2285 → 3-2220, 3-2285, 3-2514 | resources none → MBRT BASE [8 h] |
| 3-2527 | INST TEC PYLON, 23RD WB STATION | 2023-10-31 → 2024-04-16 (+168d) | 2023-11-01 → 2024-04-17 (+168d) |  |  | 16d → -91d | 3-2526 → 3-2526, 3-2523 | resources none → MBRT BASE [16 h] |
| 3-2528 | INST AMENITIES, 23RD WB STATION | 2023-11-02 → 2024-04-18 (+168d) | 2023-11-03 → 2024-04-19 (+168d) |  |  | 16d → -91d | 3-2527 → 3-2527, 3-2524 | resources none → MBRT BASE [16 h] |
| 6 | **24TH EB STATION** | 2023-11-06 → 2024-02-27 (+113d) | 2023-11-16 → 2024-04-23 (+159d) |  |  |  |  |  |
| 3-2530 | INST SHELTER, 24TH EB STATION | 2023-11-06 → 2024-02-27 A (+113d) | 2023-11-09 → 2024-02-27 A (+110d) |  | 0% → 100% | 16d → none | 3-2528 → 3-2518 FF | resources none → MBRT BASE [8 h] |
| 3-2531 | INST TEC PYLON, 24TH EB STATION | 2023-11-10 → 2024-04-18 (+160d) | 2023-11-14 → 2024-04-19 (+157d) |  |  | 16d → -91d | 3-2530 → 3-2530, 3-2527 | resources none → MBRT BASE [16 h] |
| 3-2532 | INST AMENITIES, 24TH EB STATION | 2023-11-15 → 2024-04-22 (+159d) | 2023-11-16 → 2024-04-23 (+159d) |  |  | 16d → -91d | 3-2531 → 3-2531, 3-2528 | resources none → MBRT BASE [16 h] |
| 7 | **MADISON AND 27TH EB STATION** | 2023-11-17 → 2024-04-24 (+159d) | 2023-11-30 → 2024-05-03 (+155d) |  |  |  |  |  |
| 3-2534 | INST SHELTER, MAD & 27TH EB STATION | 2023-11-17 → 2024-04-24 (+159d) | 2023-11-22 → 2024-04-29 (+159d) |  |  | 16d → -91d |  | resources none → MBRT BASE [32 h] |
| 3-2535 | INST TEC PYLON, MAD & 27TH EB STATION | 2023-11-27 → 2024-04-30 (+155d) | 2023-11-28 → 2024-05-01 (+155d) |  |  | 16d → -91d | 3-2534 → 3-2534, 3-2531 | resources none → MBRT BASE [16 h] |
| 3-2536 | INST AMENITIES, MAD & 27TH EB STATION | 2023-11-29 → 2024-05-02 (+155d) | 2023-11-30 → 2024-05-03 (+155d) |  |  | 16d → -91d |  | resources none → MBRT BASE [16 h] |
| 8 | **MADISON AND MLK WB STATION** | 2023-12-01 → 2024-05-06 (+157d) | 2023-12-11 → 2024-05-14 (+155d) |  |  |  |  |  |
| 3-2538 | INST SHELTER, MAD & MLK WB STATION | 2023-12-01 → 2024-05-06 (+157d) | 2023-12-06 → 2024-05-09 (+155d) |  |  | 16d → -91d |  | resources none → MBRT BASE [32 h] |
| 3-2539 | INST TEC PYLON, MAD & MLK WB STATION | 2023-12-07 → 2024-05-10 (+155d) | 2023-12-07 → 2024-05-10 (+155d) |  |  | 16d → -91d |  | resources none → MBRT BASE [8 h] |
| 3-2540 | INST AMENITIES, MAD & MLK WB STATION | 2023-12-08 → 2024-05-13 (+157d) | 2023-12-11 → 2024-05-14 (+155d) |  |  | 16d → -91d |  | resources none → MBRT BASE [16 h] |
| 3-2542 | INST REMAINING OCS POLES, REMAINING OCS POLES |  |  |  |  |  |  | resources none → MBRT BASE [32 h] |
| 16 | **COMFORT STATION** |  | 2023-11-21 → 2024-07-08 (+230d) |  |  |  |  |  |
| 3-2544 | F/R/P FOOTING, BEFORE UNSUITABLE SOILS |  |  |  |  |  |  | resources none → MBRT BASE [16 h] |
| 3-3500 | OVEREX UNSUITABLE SOILS |  |  |  |  |  |  | resources none → MBRT NEW [40 h] |
| 3-3505 | AWAIT GEOTECH REPORT |  |  |  |  |  |  | resources none → MBRT NEW [40 h] |
| 3-3565 | AWAIT APPROVAL OF NEW MATERIAL DUE TO UNSUITABLE SOILS |  |  |  |  |  |  | resources none → MBRT NEW [40 h] |
| 3-3570 | QUARRY SPALLS EXTRA WORK |  |  |  |  |  |  | resources none → MBRT NEW [40 h] |
| 3-3510 | COMPLETE FOUNDATION AFTER UNSUITABLE SOILS |  | 2023-08-25 → 2023-08-26 A (+1d) |  | 0% → 100% | 28d → none |  | resources none → MBRT NEW [40 h] |
| 3-2545 | WALLS, COMFORT STATION | 2023-08-28 → 2024-04-15 (+231d) | 2023-09-11 → 2024-05-10 (+242d) | 10d → 20d |  | 28d → -129d | 3-2544, 3-3510 → 3-2544, 3-3510, 3-2332 FF, 3-2326 | resources none → MBRT BASE [80 h] |
| 3-2550 | ROOF, COMFORT STATION | 2023-09-12 → 2024-04-29 (+230d) | 2023-09-25 → 2024-05-10 (+228d) |  |  | 28d → -129d | 3-2545 → 3-2545 FF, 3-2545 SS | resources none → MBRT NEW [80 h] |
| 3-2555 | PLUMBING/HVAC, COMFORT STATION | 2023-09-26 → 2024-05-13 (+230d) | 2023-10-09 → 2024-05-24 (+228d) |  |  | 28d → -129d |  | resources none → MBRT NEW [80 h] |
| 3-2560 | ELECTRICAL, COMFORT STATION | 2023-10-10 → 2024-05-28 (+231d) | 2023-10-23 → 2024-06-10 (+231d) |  |  | 28d → -129d |  | resources none → MBRT NEW [80 h] |
| 3-2565 | FURNISHES, COMFORT STATION | 2023-10-24 → 2024-06-11 (+231d) | 2023-11-21 → 2024-07-08 (+230d) |  |  | 28d → -129d |  | resources none → MBRT NEW [160 h] |
| 4 | **LUMP SUM ITEMS** |  | 2024-03-07 → 2024-04-22 (+46d) |  |  |  |  |  |
| 1 | **BI 001 - CONSTRUCTION SURVEY** |  | 2023-11-21 → 2024-04-22 (+153d) |  |  |  |  |  |
| LS-1145 | CONSTRUCTION SURVEY, BI 001 |  | 2023-08-25 A |  | 33% → 100% | 71d → none |  |  |
| LS-1150 | CONSTRUCTION SURVEY, BI 001 | 2023-08-28 A | 2023-09-18 A |  | 0% → 100% | 71d → none |  |  |
| LS-1155 | CONSTRUCTION SURVEY, BI 001 | 2023-09-19 A | 2023-10-09 A |  | 0% → 100% | 71d → none |  |  |
| LS-1160 | CONSTRUCTION SURVEY, BI 001 | 2023-10-10 A | 2023-10-30 A |  | 0% → 100% | 71d → none |  |  |
| LS-1185 | CONSTRUCTION SURVEY, BI 001; 10% FOR PHYSICAL COMPLETION | 2023-10-31 → 2024-03-04 A (+125d) | 2023-11-21 → 2024-04-22 (+153d) |  |  | 71d → -32d |  |  |
| LS-1195 | VIBRATION MONITORING, BI 003 |  |  |  |  |  | LS-1190, MS-0025 → LS-1190 SS, MS-0025 |  |
| LS-1410 | PE #23, BI 007 - MAINTENANCE & PROTECTION OF TRAFFIC CONTROL |  | 2023-08-14 A |  | 95% → 100% | 0d → none |  |  |
| LS-1415 | PE #24, BI 007 - MAINTENANCE & PROTECTION OF TRAFFIC CONTROL | 2023-08-15 A | 2023-09-12 A |  | 0% → 100% | 0d → none |  |  |
| LS-1420 | PE #25, BI 007 - MAINTENANCE & PROTECTION OF TRAFFIC CONTROL | 2023-09-13 A | 2023-10-10 A |  | 0% → 100% | 0d → none |  |  |
| LS-1425 | PE #26, BI 007 - MAINTENANCE & PROTECTION OF TRAFFIC CONTROL | 2023-10-11 A | 2023-11-07 A |  | 0% → 100% | 0d → none |  |  |
| LS-1430 | PE #27, BI 007 - MAINTENANCE & PROTECTION OF TRAFFIC CONTROL | 2023-11-08 A | 2023-12-08 A |  | 0% → 100% | 0d → none |  |  |
| LS-1435 | PE #28, BI 007 - MAINTENANCE & PROTECTION OF TRAFFIC CONTROL | 2023-12-11 A | 2024-01-09 A |  | 0% → 100% | 0d → none |  |  |
| LS-1440 | PE #29, BI 007 - MAINTENANCE & PROTECTION OF TRAFFIC CONTROL | 2024-01-10 A | 2024-02-07 A |  | 0% → 100% | 0d → none |  |  |
| LS-1445 | PE #30, BI 007 - MAINTENANCE & PROTECTION OF TRAFFIC CONTROL | 2024-02-08 A | 2024-03-07 A |  | 0% → 100% | 0d → none |  |  |
| 5 | **BI 194 - PEDESTRIAN ENHANCEMENTS ON MADISON ST I-5 OVERPASS** | 2023-11-06 → 2024-04-02 (+148d) | 2023-11-22 → 2024-04-08 (+138d) |  |  |  |  |  |
| LS-1480 | PLANTERS, BI 194 - PEDESTRIAN ENHANCEMENTS ON MADISON ST I-5 OVERPASS | 2023-11-06 → 2024-04-02 (+148d) | 2023-11-10 → 2024-04-08 (+150d) |  |  | 27d → -72d |  | constraint as late as possible → none |
| LS-1485 | DECORATIVE PANELS, BI 194 - PEDESTRIAN ENHANCEMENTS ON MADISON ST I-5 OVERPASS | 2023-11-10 → 2024-04-02 (+144d) | 2023-11-17 → 2024-04-08 (+143d) |  |  | 27d → -68d |  | constraint as late as possible → none |

| ID | Task | Start | Finish | Total float | Other |
| --- | --- | --- | --- | --- | --- |
| LS-1490 | PLANTING, BI 194 - PEDESTRIAN ENHANCEMENTS ON MADISON ST I-5 OVERPASS | 2023-11-16 → 2024-04-02 (+138d) | 2023-11-22 → 2024-04-08 (+138d) | 27d → -65d | constraint as late as possible → none |

## Version 3 (data date 2024-07-29, saved 2024-08-16, file round-trip-b0e148d6-d5a1-4ac2-8ec5-c8e918243477_1787944410631.xer)

Note of the change: Add project attachments and schedule file

Last finish 2024-10-01 → 2024-12-11 (+71d). Complete tasks 3576 → 4220.

Added:

| ID | Task | Duration | Start | Finish | Predecessors |
| --- | --- | --- | --- | --- | --- |
| 7 | **NCR's** |  | 2024-06-24 | 2024-08-23 |  |
| NCR-087 | NCR 87 WOOD POLE Seneca | 16d | 2024-06-24 A | 2024-07-15 A | 2-5010, 2-7260 |
| NCR-119 | NCR 119 Stairs SEC 12th | 7d | 2024-06-24 A | 2024-07-02 A | 2-1516 |
| NCR-036 | NCR 036 FLEXI PAVE 8TH | 1d | 2024-06-25 A | 2024-06-25 A | 1-0229 |
| NCR-041 | NCR 41 SETTLED FLEXI PAVE 7TH AND SPRING | 1d | 2024-06-25 A | 2024-06-25 A | 1-0229 |
| NCR-057 | NCR 57 FLEXI PAVE @ GRATE 5th & Spring | 1d | 2024-06-25 A | 2024-06-25 A | 1-1420, 1-1225 |
| NCR-040 | NCR 40 SPALLED ROADWAY AT DENNY | 4d | 2024-06-26 A | 2024-07-01 A | 3-5010 SS |
| NCR-060 | NCR 060 HONEY COMB RTIS FOUNDATION DENNY | 1d | 2024-06-26 A | 2024-06-26 A | NCR-040 SS |
| NCR-090 | NCR 90 RAMP AND PBB POST LOCATION 8th/Spring | 2d | 2024-06-27 A | 2024-06-28 A | 1-2835 |
| NCR-113 | NCR 113 SPALLED STEP 13th | 4d | 2024-07-01 A | 2024-07-05 A | 2-1457 |
| NCR-112 | NCR 112 BRONZE LETTER UPSIDE DOWN 5th/Madison | 13d | 2024-07-01 A | 2024-07-17 A | 1-0517 |
| NCR-086 | NCR 86 THICKENED EDGE 12th/13th South | 9d | 2024-07-02 A | 2024-07-12 A | 2-1457 |
| NCR-088 | NCR 88 SPALL REPAIR 14th | 1d | 2024-07-02 A | 2024-07-02 A | 2-1317 |
| NCR-093 | NCR 93 SPALL REPAIR 9th/Spring | 1d | 2024-07-02 A | 2024-07-02 A | 1-0166 |
| NCR-064 | NCR 64 PAVED OVER VALVE 11th | 2d | 2024-07-08 A | 2024-07-09 A | 2-1698, 2-5025 |
| NCR-035 | NCR 035 SPALLED PANEL 25TH AND MAD | 2d | 2024-07-10 A | 2024-07-11 A | 3-1986 |
| NCR-080 | NCR 80 COLD JOINT DRIVEWAY 25th/26th | 6d | 2024-07-10 A | 2024-07-17 A | 3-1986 |
| CRR-100 | CURB RAMP REPLACEMENT | 17d | 2024-07-12 A | 2024-08-05 | NCR-114 SS |
| NCR-106 | NCR 106 DAMAGED SIDEWALK CURB SUMMIT | 1d | 2024-07-12 A | 2024-07-12 A | 1-3325 |
| NCR-114 | NCR 114 PRIVATE WALK DAMAGED BOYLESTON TO SUMMIT | 13d | 2024-07-12 A | 2024-07-30 | 1-3325, 1-5040 |
| CNR-065 | NCR 65 ROADWAY PANEL CRACK AT 12TH | 9d | 2024-07-15 A | 2024-07-26 A | 2-1282 |
| NCR-089 | NCR 89 REPLACE PANEL 25th | 9d | 2024-07-15 A | 2024-07-26 A | 3-1986 |
| NCR-129 | NCR 129 MISSING GROUND VAULT 11th | 9d | 2024-07-15 A | 2024-07-26 A | 2-1446, 2-1747 |
| NCR-125 | NCR 125 SHELTER INSTALLED OUT OF SQUARE 5th/Madison | 3d | 2024-07-15 A | 2024-07-17 A | 1-1116 |
| NCR-001 | NCR 001 Paving Grind Rough Finish 1st/2nd | 9d | 2024-08-06 | 2024-08-16 | 1-0154, CRR-100 |
| NCR-100 | NCR 100 GRINDING PAVEMENT 15th | 5d | 2024-08-19 | 2024-08-23 | 2-1303, NCR-001 |
| 1-8025 | Striping - Crosswalks & Stop Bars | 5d | 2024-05-13 A | 2024-05-17 A | 1-0810 |
| 1-0715 | Complete Electrical MAD & 2ND SW CORNER | 25d | 2024-04-09 A | 2024-05-13 A | 1-0669, DSC-717, DSC-UPO, DSC-737, DSC-729, DSC-720 |
| 76 | **Complete Remaining Sidelwalks - Zone 1** |  | 2024-04-02 | 2024-07-17 |  |
| 1-5010 | Compete Sidewalks - 7th & Madison | 4d | 2024-04-02 A | 2024-04-05 A | 1-0708 |
| 1-5015 | Compete Sidewalks - 8th & Madison | 4d | 2024-04-02 A | 2024-04-05 A | 1-0714 |
| 1-5020 | Compete Sidewalks - Boren & Madison | 49d | 2024-04-08 A | 2024-06-14 A | 1-5015, 1-5010 |
| 1-5025 | Compete Sidewalks - 9th & Madison | 37d | 2024-04-17 A | 2024-06-07 A | 1-5020 SS+7d |
| 1-5030 | Compete Sidewalks - 7th & Madison | 30d | 2024-04-17 A | 2024-05-29 A | 1-5020 SS+7d, 1-5010 |
| 1-5040 | Compete Sidewalks - Summit & Madison | 12d | 2024-06-17 A | 2024-07-02 A | 1-5020, 1-5030, 1-5025 |
| 1-5045 | Compete Sidewalks - Boylston & Madison | 12d | 2024-06-17 A | 2024-07-02 A | 1-5020, 1-5030, 1-5025 |
| 1-5035 | Compete Sidewalks - Minor & Madison | 11d | 2024-07-03 A | 2024-07-17 A | 1-5040, 1-5045 |
| 1-1044 | Decorative Metal Design Change | 30d | 2024-08-01 | 2024-09-11 | 1-0788 |
| 24 | **Complete Magnometers** |  | 2024-06-05 | 2024-07-23 |  |
| 1-6000 | Complete Magnometers 3rd/Boren,9th/Spring, Boyleston, 17th | 35d | 2024-06-05 A | 2024-07-23 A | 1-0892, 1-0983, 1-1045 |
| 1-1780 | Complete Commissioning Schematic 4 | 35d | 2024-06-18 A | 2024-08-14 | 1-1770 FS+70d |
| 1-2155 | Schematic 5 NCR; Commission Schematic 5 & 6 | 61d | 2024-04-02 A | 2024-06-26 A | 1-1795 |
| 2-2061 | TUNNEL SEAL ISSUE RESOLUTION / COORDINATION | 97d | 2023-07-08 A | 2024-09-27 | 2-2056 |
| 2-1015 | 14th Center Island | 10d | 2024-03-20 A | 2024-05-01 A | 2-1523 |
| 2-1020 | Electrical 14th to 15th South Side | 10d | 2024-04-02 A | 2024-04-15 A | 2-1523 |
| 2-1025 | Sidewalk 14th to 15th Sout Side | 9d | 2024-04-16 A | 2024-04-26 A | 2-1020 |
| 32 | **Complete Remaining Sidelwalks - Zone 2** |  | 2024-04-04 | 2024-08-02 |  |
| 2-5010 | Compete Sidewalks - 10th & Seneca | 27d | 2024-04-04 A | 2024-05-10 A | 2-1396, 2-1490, 2-7255 |
| 2-5015 | NEC 12th Bike Island | 2d | 2024-05-02 A | 2024-05-03 A | 2-5010 SS |
| 2-5020 | Union Raised Bike Lane | 5d | 2024-06-07 A | 2024-06-13 A | 2-5015, 2-5010 |
| 2-5025 | Pour Sidewalk - 11th | 1d | 2024-06-25 A | 2024-06-25 A | 2-5020 |
| 2-5030 | Complete Sidewalks - 15th | 7d | 2024-07-25 A | 2024-08-02 | 2-1470 SS+1d, 2-5035 SS |
| 2-5035 | Complete Sidewalk - 12th Maserati | 2d | 2024-07-25 A | 2024-07-26 A | 2-5025 FF |
| 2-1544 | Striping - Crosswalks & Stop Bars | 24d | 2024-05-13 A | 2024-06-14 A | 1-8025 SS |
| 2-1713 | Remove Exist. Poles & Temp Power | 5d | 2024-04-24 A | 2024-04-30 A | 2-1613 |
| 3-2374 | Sidewalk @ Harrison NW Corner | 10d | 2024-04-05 A | 2024-04-18 A | 3-2314 |
| 19 | **Complete Remaining Sidelwalks - Zone 3** |  | 2024-05-28 | 2024-08-16 |  |
| 3-5000 | Sidewalks 19th & Madison Design Change | 20d | 2024-05-28 A | 2024-06-24 A | 3-2351 |
| 3-5005 | Sidewalks MLK to 29th South Side | 6d | 2024-06-25 A | 2024-07-02 A | 3-5000 |
| 3-5010 | Finish Sidewalks 17th, 20th, Denny, 14th, 24th, 28th | 28d | 2024-07-03 A | 2024-08-16 | 3-5005, 3-2196, 3-2332 |
| 3-2365 | Striping - Crosswalks & Stop Bars | 5d | 2024-05-22 A | 2024-05-29 A | 3-2357 SS, 3-2339 |
| 3-2835 | Schematic 23 Buildout | 20d | 2024-07-09 A | 2024-08-05 | 3-2810 |
| 10 | **MLK (Schematic 25)** |  | 2023-11-08 | 2024-06-12 |  |
| 9 | **HARRISON (Schematic 26)** |  | 2024-02-13 | 2024-06-26 |  |
| 8 | **19TH AND UNION (Schematic 27)** |  | 2024-04-23 | 2024-06-03 |  |
| 3-2570 | Exterior Lighting Delay | 60d | 2024-07-31 | 2024-10-22 | 3-2565 |
| 3-2575 | Complete Exterior :Lighting / Soffit / Paint | 5d | 2024-10-23 | 2024-10-29 | 3-2570 |

Removed: MS-2561 KC METRO, 20d NOTICE; MS-2566 KC METRO, 20d NOTICE; MS-0067 KC METRO, 20d NOTICE; MS-0052 OCS WIRE INSTALLATION KCM - W OF BDWY (120CD); MS-0062 OCS WIRE INSTALLATION KCM - E OF BDWY (180CD); MS-0057 OCS WIRE INSTALLATION KCM - BDWY INT (45CD); 2-1541 INST SIGNS, STRIPING AND SIGNS; 3-2362 Complete Shelters; MLK; HARRISON; 19TH AND UNION

Changed:

| ID | Task | Start | Finish | Duration | Complete | Total float | Predecessors | Other |
| --- | --- | --- | --- | --- | --- | --- | --- | --- |
| PSP-0018 | PREP-TEMPORARY DISCHARGE PLAN |  |  |  |  |  | PCS-0014 → PCS-0014 SS |  |
| PSP-0023 | PREP-SWPP |  |  |  |  |  | PCS-0014 → PCS-0014 SS |  |
| PSP-0028 | PREP-PROJECT WORK PLAN |  |  |  |  |  | PCS-0014 → PCS-0014 SS |  |
| PSP-0033 | PREP-TVSPP |  |  |  |  |  | PCS-0014 → PCS-0014 SS |  |
| PSP-0038 | PREP-VIBRATION MONITORING PLAN |  |  |  |  |  | PCS-0014 → PCS-0014 SS |  |
| PSP-0043 | PREP-TEMPORARY BYPASS PLANS |  |  |  |  |  | PCS-0014 → PCS-0014 SS |  |
| PSP-0048 | PREP-WATERMAIN SEQUENCE PLAN |  |  |  |  |  | PCS-0014 → PCS-0014 SS |  |
| PSP-48 | PREP-TEMPORARY WATERMAIN WORK PLAN |  |  |  |  |  | PCS-0014 → PCS-0014 SS |  |
| PSP-53 | PREP-PIPE LINING SUBMITTALS |  |  |  |  |  | PCS-0014 → PCS-0014 SS |  |
| PSP-58 | PREP-SCL VAULT MATERIAL SUBMITTAL |  |  |  |  |  | PCS-0014 → PCS-0014 SS |  |
| PMP-0026 | RECEIVE KCM OCS POLES | 2022-02-02 A → 2022-04-04 A (+61d) | 2022-02-02 A → 2022-04-04 A (+61d) |  |  |  |  |  |
| 2 | **CONSTRUCTION / CONTRACT DAYS** |  | 2024-10-01 → 2024-12-11 (+71d) |  |  |  |  |  |
| 1 | **MILESTONES** |  | 2024-10-01 → 2024-12-11 (+71d) |  |  |  |  |  |
| MS-0030 | CONTRACT DURATION |  | 2024-10-01 → 2024-12-11 (+71d) |  | 78% → 84% | -147d → -198d |  |  |
| MS-2556 | 19TH & UNION, COMPLETION MILESTONE | 2024-07-03 → 2024-07-12 A (+9d) | 2024-07-03 → 2024-07-12 A (+9d) |  | 0% → 100% | -126d → none |  |  |
| MS-2547 | COMPLETE ZONE 3 | 2024-07-30 → 2024-09-06 (+38d) | 2024-07-30 → 2024-09-06 (+38d) |  |  | -145d → -173d | 3-2501 FF, Complete Shelters FF, 3-2364 FF, 3-2542 FF, 3-2379 FF, 3-2565 FF, 3-3300 FF, 3-2189 FF, 3-2267 FF, 3-3040 FF → 3-2501 FF, 3-2364 FF, 3-2542 FF, 3-2379 FF, 3-2565 FF, 3-3300 FF, 3-2189 FF, 3-2267 FF, 3-3040 FF, 3-2512 FF, 3-2516 FF, 3-2520 FF, 3-2524 FF, 3-2528 FF, 3-2532 FF, 3-2536 FF, 3-2540 FF, 3-5010 FF, 3-2361 FF |  |
| MS-1137 | COMPLETE ZONE 1 | 2024-07-19 → 2024-09-16 (+59d) | 2024-07-19 → 2024-09-16 (+59d) |  |  | -138d → -179d | 1-1133 FF, 1-1135 FF, 1-1045 FF, 1-1043 FF, 1-0792 FF, 1-0790 FF, 1-0822 FF, 1-0086 FF, 1-0085 FF, 1-8020 FF, 1-2105 FF → 1-1133 FF, 1-1135 FF, 1-1045 FF, 1-1043 FF, 1-0792 FF, 1-0790 FF, 1-0822 FF, 1-0086 FF, 1-0085 FF, 1-8020 FF, 1-2105 FF, 1-0666 FF, 1-5035 FF, 1-6000 FF, 1-1780 FF, 1-2155 FF, 1-1123 FF, 3-2512 FF, 1-1118 FF, 1-1114 FF, 1-1110 FF, 1-1106 FF, 1-1102 FF, 1-1098 FF |  |
| MS-1674 | COMPLETE ZONE 2 | 2024-08-01 → 2024-10-11 (+71d) | 2024-08-01 → 2024-10-11 (+71d) |  |  | -147d → -198d | 2-1655 FF, MS-1137 FF, 2-1678 FF, 2-2527 FF → 2-1655 FF, MS-1137 FF, 2-1678 FF, 2-2527 FF, 2-5030 FF |  |
| MS-2549 | SUBSTANTIAL COMPLETION | 2024-08-01 → 2024-10-11 (+71d) | 2024-08-01 → 2024-10-11 (+71d) |  |  | -147d → -198d | MS-1137 FF, MS-2547 FF, 2-1657, INST SIGNS, STRIPING AND SIGNS, 2-1543, 2-1642, 2-1655, 2-1626, 2-1524, MS-0025, MS-1674 FF, LS-1290, SC-1664, SC-1669, 2-1643, LS-1475, MS-2556 FF, 1-1520, 1-1500, 1-1770, 1-1540, 1-1795, 1-1815, 1-1840, 1-1870, 1-1895, 1-1920, 1-1945, 1-1970, 1-1995, 2-2137, 2-2152, 2-2167, 2-2197, 2-2212, 3-2378, 3-2507, 3-2995, 3-3040, 3-3085, 3-2770, 3-2815, 3-2860, 3-2905, 3-2725, 3-2950, 2-2622, 2-2657, 3-3155, 3-3165, 3-3200, 3-3220, 3-3240, 3-3260, 3-3305, 3-3280, 1-2030, 1-2050, 1-2070, 1-2105, 1-2135, 1-2150, 1-2195, 1-2320, 1-2415, 1-2425, 1-2585, 1-2520, 1-2665, 1-2700, 1-2705, 2-1640, 1-2225, 1-2575, 3-2486, SC-0032, 3-2201, 1-6629, 1-6618, 1-6640, 1-6651, 1-6662, 1-6607, 3-9583, 3-9572, 3-9561, 3-9550, 1-10006, 3-2540, DSC-448, DSC-700, PCO010.01, PCO012.01, PCO014.01, PCO015.01, PCO018.01, PCO019.01, PCO020.01, PCO021.01, PCO024.01, PCO025.01, PCO026.01, PCO027.01, PCO028.01, PCO029.01, PCO030.01, PCO031.01, PCO037.01, PCO042.01, PCO043.01, PCO049.01, PCO052.01, PCO058.01, PCO059.01, PCO060.01, PCO062.01, PCO063.01, PCO064.01, PCO066.01, PCO069.01, PCO072.01, PCO077.01, PCO078.01, PCO079.01, PCO080.01, PCO081.01, PCO084.01, PCO085.01, PCO087.01, PCO088.01, PCO092.01, PCO093.01, PCO094.01, PCO096.01, PCO097.01, PCO100.01, PCO101.01, PCO103.01, PCO104.01, PCO105.01, PCO106.01, PCO108.01, PCO109.01, PCO110.01, PCO112.01, PCO113.01, PCO114.01, PCO116.01, PCO122.01, PCO123.01, PCO124.01, PCO126.01, PCO127.01, PCO128.01, PCO129.01, PCO130.01, PCO131.01, PCO133.01, PCO134.01, PCO135.01, PCO137.01, PCO138.01, PCO139.01, PCO140.01, PCO141.01, PCO142.01, PCO143.01, PCO144.01, PCO145.01, PCO146.01, PCO147.01, PCO148.01, PCO149.01, PCO150.01, PCO151.01, PCO155.01, PCO156.01, PCO158.01, PCO159.01, PCO162.01, PCO163.01, PCO165.01, PCO167.01, PCO168.01, PCO170.01, PCO171.01, PCO172.01, PCO173.01, PCO176.01, PCO178.01, PCO180.01, PCO181.01, PCO183.01, PCO184.01, PCO185.01, PCO186.01, PCO187.01, PCO188.01, PCO190.01, PCO192.01, PCO198.01, PCO199.01, PCO200.01, PCO201.01, PCO203.01, PCO205.01, PCO207.01, PCO212.01, PCO214.01, PCO215.01, PCO216.01, PCO217.01, PCO220.01, PCO221.01, PCO222.01, PCO225.01, PCO227.01, PCO229.01, PCO230.01, PCO231.01, PCO232.01, PCO233.01, PCO234.01, PCO235.01, PCO237.01, PCO238.01, PCO239.01, PCO240.01, PCO241.01, PCO242.01, PCO246.01, PCO247.01, PCO248.01, PCO250.01, PCO251.01, PCO252.01, PCO253.01, PCO255.01, PCO257.01, PCO258.01, PCO259.01, PCO264.01, PCO265.01, PCO266.01, PCO267.01, PCO269.01, PCO270.01, PCO271.01, PCO272.01, PCO273.01, PCO274.01, PCO276.01, PCO278.01, PCO279.01, PCO280.01, PCO281.01, PCO282.01, PCO283.01, PCO284.01, PCO285.01, PCO286.01, PCO289.01, PCO290.01, PCO292.01, PCO293.01, PCO294.01, PCO295.01, PCO296.01, PCO297.01, PCO298.01, PCO300.01, PCO301.01, PCO302.01, PCO304.01, PCO305.01, PCO306.01, PCO307.01, PCO308.01, PCO309.01, PCO310.01, PCO314.01, PCO315.01, PCO317.01, PCO318.01, PCO320.01, PCO322.01, PCO323.01, PCO324.01, PCO325.01, PCO328.01, PCO333.01, PCO334.01, PCO335.01, PCO336.01, PCO339.01, PCO340.01, PCO341.01, PCO343.01, PCO344.01, PCO345.01, PCO346.01, PCO347.01, PCO348.01, PCO351.01, PCO354.01, PCO355.01, PCO359.01, PCO361.01, PCO362.01, PCO363.01, PCO364.01, PCO365.01, PCO366.01, PCO367.01, PCO370.01, PCO371.01, PCO373.01, PCO374.01, PCO375.01, PCO376.01, PCO377.01, PCO379.01, PCO380.01, PCO382.01, PCO383.01, PCO384.01, PCO385.01, PCO386.01, PCO387.01, PCO388.01, PCO391.01, PCO392.01, PCO395.01, PCO397.01, PCO398.01, PCO399.01, PCO400.01, PCO401.01, PCO403.01, PCO404.01, PCO405.01, PCO406.01, PCO407.01, PCO409.01, PCO411.01, PCO413.01, PCO414.01, PCO415.01, PCO417.01, PCO421.01, PCO423.01, PCO424.01, PCO426.01, PCO428.01, PCO429.01, PCO431.01, PCO432.01, PCO434.01, PCO435.01, PCO436.01, PCO437.01, PCO438.01, PCO441.01, PCO442.01, PCO443.01, PCO445.01, PCO446.01, PCO447.01, PCO449.01, PCO450.01, PCO451.01, PCO452.01, PCO455.01, PCO457.01, PCO458.01, PCO461.01, PCO465.01, PCO466.01, PCO467.01, PCO468.01, PCO469.01, PCO470.01, PCO471.01, PCO472.01, PCO476.01, PCO477.01, PCO479.01, PCO481.01, PCO485.01, PCO486.01, PCO490.01, PCO491.01, PCO494.01, PCO495.01, PCO497.01, PCO498.01, PCO500.01, PCO504.01, PCO505.01, PCO506.01, PCO508.01, PCO509.01, PCO510.01, PCO513.01, PCO516.01, PCO517.01, PCO518.01, PCO519.01, PCO520.01, PCO521.01, PCO522.01, PCO527.01, PCO530.01, PCO532.01, PCO536.01, PCO540.01, PCO541.01, PCO542.01, PCO544.01, PCO548.01, PCO549.01, PCO550.01, PCO551.01, PCO552.01, PCO553.01, PCO557.01, PCO561.01, PCO562.01, PCO564.01, PCO565.01, PCO566.01, PCO570.01, PCO615.01, PCO625.01, PCO626.01, PCO627.01, PCO629.01, PCO631.01, PCO635.01, PCO636.01, PCO643.01, PCO647.01, PCO650.01, PCO652.01, PCO653.01, PCO654.01, PCO658.01, PCO659.01, PCO661.01, PCO664.01, PCO665.01, PCO666.01, PCO667.01, PCO673.01, PCO674.01, PCO675.01, PCO679.01, PCO694.01, PCO697.01, PCO700.01, PCO701.01 → MS-1137 FF, MS-2547 FF, 2-1657, 2-1543, 2-1642, 2-1655, 2-1626, 2-1524, MS-0025, MS-1674 FF, LS-1290, SC-1664, SC-1669, 2-1643, LS-1475, MS-2556 FF, 1-1520, 1-1500, 1-1770, 1-1540, 1-1795, 1-1815, 1-1840, 1-1870, 1-1895, 1-1920, 1-1945, 1-1970, 1-1995, 2-2137, 2-2152, 2-2167, 2-2197, 2-2212, 3-2378, 3-2507, 3-2995, 3-3040, 3-3085, 3-2770, 3-2815, 3-2860, 3-2905, 3-2725, 3-2950, 2-2622, 2-2657, 3-3155, 3-3165, 3-3200, 3-3220, 3-3240, 3-3260, 3-3305, 3-3280, 1-2030, 1-2050, 1-2070, 1-2105, 1-2135, 1-2150, 1-2195, 1-2320, 1-2415, 1-2425, 1-2585, 1-2520, 1-2665, 1-2700, 1-2705, 2-1640, 1-2225, 1-2575, 3-2486, SC-0032, 3-2201, 1-6629, 1-6618, 1-6640, 1-6651, 1-6662, 1-6607, 3-9583, 3-9572, 3-9561, 3-9550, 1-10006 FF, 3-2540, DSC-448, DSC-700, PCO010.01, PCO012.01, PCO014.01, PCO015.01, PCO018.01, PCO019.01, PCO020.01, PCO021.01, PCO024.01, PCO025.01, PCO026.01, PCO027.01, PCO028.01, PCO029.01, PCO030.01, PCO031.01, PCO037.01, PCO042.01, PCO043.01, PCO049.01, PCO052.01, PCO058.01, PCO059.01, PCO060.01, PCO062.01, PCO063.01, PCO064.01, PCO066.01, PCO069.01, PCO072.01, PCO077.01, PCO078.01, PCO079.01, PCO080.01, PCO081.01, PCO084.01, PCO085.01, PCO087.01, PCO088.01, PCO092.01, PCO093.01, PCO094.01, PCO096.01, PCO097.01, PCO100.01, PCO101.01, PCO103.01, PCO104.01, PCO105.01, PCO106.01, PCO108.01, PCO109.01, PCO110.01, PCO112.01, PCO113.01, PCO114.01, PCO116.01, PCO122.01, PCO123.01, PCO124.01, PCO126.01, PCO127.01, PCO128.01, PCO129.01, PCO130.01, PCO131.01, PCO133.01, PCO134.01, PCO135.01, PCO137.01, PCO138.01, PCO139.01, PCO140.01, PCO141.01, PCO142.01, PCO143.01, PCO144.01, PCO145.01, PCO146.01, PCO147.01, PCO148.01, PCO149.01, PCO150.01, PCO151.01, PCO155.01, PCO156.01, PCO158.01, PCO159.01, PCO162.01, PCO163.01, PCO165.01, PCO167.01, PCO168.01, PCO170.01, PCO171.01, PCO172.01, PCO173.01, PCO176.01, PCO178.01, PCO180.01, PCO181.01, PCO183.01, PCO184.01, PCO185.01, PCO186.01, PCO187.01, PCO188.01, PCO190.01, PCO192.01, PCO198.01, PCO199.01, PCO200.01, PCO201.01, PCO203.01, PCO205.01, PCO207.01, PCO212.01, PCO214.01, PCO215.01, PCO216.01, PCO217.01, PCO220.01, PCO221.01, PCO222.01, PCO225.01, PCO227.01, PCO229.01, PCO230.01, PCO231.01, PCO232.01, PCO233.01, PCO234.01, PCO235.01, PCO237.01, PCO238.01, PCO239.01, PCO240.01, PCO241.01, PCO242.01, PCO246.01, PCO247.01, PCO248.01, PCO250.01, PCO251.01, PCO252.01, PCO253.01, PCO255.01, PCO257.01, PCO258.01, PCO259.01, PCO264.01, PCO265.01, PCO266.01, PCO267.01, PCO269.01, PCO270.01, PCO271.01, PCO272.01, PCO273.01, PCO274.01, PCO276.01, PCO278.01, PCO279.01, PCO280.01, PCO281.01, PCO282.01, PCO283.01, PCO284.01, PCO285.01, PCO286.01, PCO289.01, PCO290.01, PCO292.01, PCO293.01, PCO294.01, PCO295.01, PCO296.01, PCO297.01, PCO298.01, PCO300.01, PCO301.01, PCO302.01, PCO304.01, PCO305.01, PCO306.01, PCO307.01, PCO308.01, PCO309.01, PCO310.01, PCO314.01, PCO315.01, PCO317.01, PCO318.01, PCO320.01, PCO322.01, PCO323.01, PCO324.01, PCO325.01, PCO328.01, PCO333.01, PCO334.01, PCO335.01, PCO336.01, PCO339.01, PCO340.01, PCO341.01, PCO343.01, PCO344.01, PCO345.01, PCO346.01, PCO347.01, PCO348.01, PCO351.01, PCO354.01, PCO355.01, PCO359.01, PCO361.01, PCO362.01, PCO363.01, PCO364.01, PCO365.01, PCO366.01, PCO367.01, PCO370.01, PCO371.01, PCO373.01, PCO374.01, PCO375.01, PCO376.01, PCO377.01, PCO379.01, PCO380.01, PCO382.01, PCO383.01, PCO384.01, PCO385.01, PCO386.01, PCO387.01, PCO388.01, PCO391.01, PCO392.01, PCO395.01, PCO397.01, PCO398.01, PCO399.01, PCO400.01, PCO401.01, PCO403.01, PCO404.01, PCO405.01, PCO406.01, PCO407.01, PCO409.01, PCO411.01, PCO413.01, PCO414.01, PCO415.01, PCO417.01, PCO421.01, PCO423.01, PCO424.01, PCO426.01, PCO428.01, PCO429.01, PCO431.01, PCO432.01, PCO434.01, PCO435.01, PCO436.01, PCO437.01, PCO438.01, PCO441.01, PCO442.01, PCO443.01, PCO445.01, PCO446.01, PCO447.01, PCO449.01, PCO450.01, PCO451.01, PCO452.01, PCO455.01, PCO457.01, PCO458.01, PCO461.01, PCO465.01, PCO466.01, PCO467.01, PCO468.01, PCO469.01, PCO470.01, PCO471.01, PCO472.01, PCO476.01, PCO477.01, PCO479.01, PCO481.01, PCO485.01, PCO486.01, PCO490.01, PCO491.01, PCO494.01, PCO495.01, PCO497.01, PCO498.01, PCO500.01, PCO504.01, PCO505.01, PCO506.01, PCO508.01, PCO509.01, PCO510.01, PCO513.01, PCO516.01, PCO517.01, PCO518.01, PCO519.01, PCO520.01, PCO521.01, PCO522.01, PCO527.01, PCO530.01, PCO532.01, PCO536.01, PCO540.01, PCO541.01, PCO542.01, PCO544.01, PCO548.01, PCO549.01, PCO550.01, PCO551.01, PCO552.01, PCO553.01, PCO557.01, PCO561.01, PCO562.01, PCO564.01, PCO565.01, PCO566.01, PCO570.01, PCO615.01, PCO625.01, PCO626.01, PCO627.01, PCO629.01, PCO631.01, PCO635.01, PCO636.01, PCO643.01, PCO647.01, PCO650.01, PCO652.01, PCO653.01, PCO654.01, PCO658.01, PCO659.01, PCO661.01, PCO664.01, PCO665.01, PCO666.01, PCO667.01, PCO673.01, PCO674.01, PCO675.01, PCO679.01, PCO694.01, PCO697.01, PCO700.01, PCO701.01, NCR-119, NCR-087, NCR-036, NCR-041, NCR-057, NCR-060, NCR-090, NCR-112, NCR-088, NCR-093, NCR-086, NCR-064, NCR-035, NCR-080, NCR-106, NCR-114, CRR-100, NCR-125, NCR-001, CNR-065, NCR-089, NCR-100, NCR-113, NCR-129, 2-1540, 2-1456, SC-0047 FF, LS-1485 |  |
| MS-2550 | PUNCH LIST | 2024-08-02 → 2024-10-14 (+73d) | 2024-10-01 → 2024-12-11 (+71d) |  |  | -147d → -198d |  |  |
| MS-2551 | PHYSICAL COMPLETION | 2024-10-01 → 2024-12-11 (+71d) | 2024-10-01 → 2024-12-11 (+71d) |  |  | -147d → -198d | MS-2550 FF, MS-0030 FF, LS-1185 FF, LS-1445 FF, OCS WIRE INSTALLATION KCM - E OF BDWY (180CD) FF, OCS WIRE INSTALLATION KCM - BDWY INT (45CD) FF, OCS WIRE INSTALLATION KCM - W OF BDWY (120CD) FF → MS-2550 FF, MS-0030 FF, LS-1185 FF, LS-1445 FF, 3-2575 FF, 1-0789 FF |  |
| 2 | **SCHDULE CONSTRAINTS** |  | 2024-05-21 → 2024-07-26 (+66d) |  |  |  |  |  |
| SC-1674 | EXPIRATION OF HOLIDAY MORATORIUM |  |  |  |  |  | SC-0027 → SC-0027 FF |  |
| SC-0031 | ROUTE 2 DEENERGIZATION |  |  |  |  |  | MS-0025 → MS-0025 SS |  |
| SC-0037 | 10TH AVE START WORK |  |  |  |  |  | PMP-0020, MS-0025 → PMP-0020, MS-0025 SS |  |
| SC-1669 | COMPLETE ROUTE 2 SIGNALS & CHANN | 2024-05-21 → 2024-07-26 A (+66d) | 2024-05-21 → 2024-07-26 A (+66d) |  | 0% → 100% | -96d → none | 2-1657, MS-0025, 2-1537, 2-1489, 2-1516, 2-1540, 2-1613 → 2-1657 FF, 2-1537 FF, 2-1489 FF, 2-1516 FF, 2-1540 FF, 2-1613 FF | constraint finish on 2024-01-31 → none |
| OCS-0035 | INST OWNER FUNISHED OCS POLES, OCS LINE REMOVAL |  |  |  |  |  | OCS-0034, PMP-0026 → OCS-0034, PMP-0026 SS |  |
| 4 | **ZONE 1 - 1ST AVE TO BROADWAY** |  | 2024-07-19 → 2024-09-17 (+60d) |  |  |  |  |  |
| 1-0199 | SPU CUSTOMER SHUTDOWN NOTIFICATION |  |  |  |  |  | PCS-0014 → PCS-0014 SS |  |
| 19 | **STRIPING & SIGNS REMAINING ZONE 1** | 2024-04-25 → 2024-05-13 (+18d) | 2024-04-25 → 2024-07-26 (+92d) |  |  |  |  |  |
| 1-8010 | INST SIGNS, STRIPING AND SIGNS | 2024-04-25 → 2024-05-13 A (+18d) | 2024-04-25 → 2024-05-17 A (+22d) | 0d → 5d | 0% → 100% | -77d → none |  | resources MBRT NEW → MBRT NEW [40 h] |
| 1-8015 | CURE TIME, STRIPING AND SIGNS | 2024-04-25 → 2024-05-20 A (+25d) | 2024-04-25 → 2024-06-14 A (+50d) | 0d → 19d | 0% → 100% | -77d → none |  | resources MBRT NEW → MBRT NEW [152 h] |
| 1-8020 | CHANNELIZATION, STRIPING AND SIGNS | 2024-04-25 → 2024-06-17 A (+53d) | 2024-04-25 → 2024-07-26 A (+92d) | 0d → 30d | 0% → 100% | -77d → none | 1-8015 → 1-8015, 1-8025 | resources MBRT NEW → MBRT NEW [240 h] |
| 3 | **STORM** |  | 2024-04-03 → 2024-04-30 (+27d) |  |  |  |  |  |
| 1-0085 | STORM MAD & BROADWAY PIPE LINING | 2024-04-02 → 2024-04-29 A (+27d) | 2024-04-03 → 2024-04-30 A (+27d) |  | 0% → 100% | -62d → none |  |  |
| 8 | **SIDEWALKS** |  | 2024-04-24 → 2024-08-23 (+121d) |  |  |  |  |  |
| 1-0572 | POUR SIDEWALKS, SPRING AND 4TH NW CORNER |  |  |  |  |  | 1-0571 → 1-0571, PCO495.01 FF |  |
| 32 | **9TH SPRING TO MADISON EAST SIDE** |  | 2024-04-24 → 2024-06-10 (+47d) |  |  |  |  |  |
| DSC-677 | DSC 677 DUCT BANK CONFLICT |  | 2024-04-08 A |  | 90% → 100% | -142d → none |  |  |
| 1-0603 | INST CONDUIT, 9TH SPRING TO MAD EAST SIDE |  | 2024-04-22 → 2024-06-03 A (+42d) |  | 0% → 100% | -142d → none |  |  |
| 1-0605 | POUR SIDEWALK, 9TH SPRING TO MAD EAST SIDE |  | 2024-04-23 → 2024-06-10 A (+48d) |  | 0% → 100% | -142d → none |  |  |
| DSC-696 | DSC 696 DUCT BANK CONFLICTS |  | 2024-04-08 → 2024-05-01 A (+23d) |  | 79% → 100% | -132d → none |  |  |
| 1-0604 | GRADE SIDWALKS, 9TH SPRING TO MAD EAST SIDE | 2024-04-23 → 2024-06-04 A (+42d) | 2024-04-23 → 2024-06-05 A (+43d) | 1d → 2d | 0% → 100% | -142d → none | 1-0603, DSC-672, DSC-677, DSC-696 → 1-0603, DSC-672, DSC-677, DSC-696, 1-0603 FF |  |
| 1-0650 | POUR SIDEWALK, 9TH SPRING TO MAD EAST SIDE Complete | 2024-04-24 → 2024-06-06 A (+43d) | 2024-04-24 → 2024-06-10 A (+47d) | 0d → 3d | 0% → 100% | -142d → none | 1-0552, 1-0605, 1-0604 → 1-0552, 1-0605 FF, 1-0604 | resources MBRT NEW → MBRT NEW [24 h] |
| 20 | **9TH SPRING TO MADISON WEST SIDE** |  | 2024-04-17 → 2024-05-01 (+14d) |  |  |  |  |  |
| 1-0550 | INST CONDUIT, 9TH SPRING TO MAD WEST SIDE |  | 2024-04-08 → 2024-04-22 A (+14d) |  | 0% → 100% | -138d → none |  |  |
| 1-0551 | GRADE SIDEWALK, 9TH SPRING TO MAD WEST SIDE | 2024-04-09 → 2024-04-23 A (+14d) | 2024-04-09 → 2024-04-23 A (+14d) |  | 0% → 100% | -138d → none |  |  |
| 1-0552 | POUR SIDEWALK, 9TH SPRING TO MAD WEST SIDE | 2024-04-10 → 2024-04-24 A (+14d) | 2024-04-17 → 2024-05-01 A (+14d) |  | 0% → 100% | -138d → none |  |  |
| 43 | **MADISON AND 1ST SE CORNER** |  | 2024-04-04 → 2024-08-23 (+141d) |  |  |  |  |  |
| 1-0666 | INST BRICK PAVERS, MAD & 1ST & 2ND | 2024-04-02 → 2024-08-19 (+139d) | 2024-04-04 → 2024-08-23 (+141d) | 3d → 5d |  | -99d → -163d | 1-0665 → 1-0665, NCR-001 | was named INST BRICK PAVERS, MAD & 1ST SE CORNER |
| 44 | **MADISON AND 2ND SW CORNER** |  | 2024-04-10 → 2024-05-31 (+51d) |  |  |  |  |  |
| DSC-717 | DSC 717 SWC 2nd unknown steel line |  | 2024-04-08 A |  | 0% → 100% | -102d → none |  |  |
| DSC-720 | DSC 720 NWC and 2nd Madison Conduit conflict | 2024-03-01 A → 2024-03-04 A (+3d) | 2024-04-08 A |  | 0% → 100% | -102d → none |  |  |
| DSC-729 | DSC 729 SWC 2nd and madison duct bank conflcit | 2024-03-01 A → 2024-03-04 A (+3d) | 2024-04-08 A |  | 0% → 100% | -101d → none |  |  |
| DSC-737 | DSC 737 SWC 2nd Cast in Place HH riser | 2024-03-01 A → 2024-03-04 A (+3d) | 2024-04-08 A |  | 0% → 100% | -102d → none |  |  |
| DSC-UPO | DSC UPO 2nd and Madison delay. SDOT directed no UPO | 2024-03-01 A → 2024-03-04 A (+3d) | 2024-04-08 A |  | 0% → 100% | -102d → none |  |  |
| 1-0670 | GRADE & POUR CURB RAMP, MAD & 2ND SW CORNER | 2024-04-09 → 2024-05-14 A (+35d) | 2024-04-09 → 2024-05-28 A (+49d) | 1d → 10d | 0% → 100% | -102d → none | 1-0669, DSC-717, DSC-UPO, DSC-737, DSC-729 FF, DSC-720 → 1-0669, DSC-717, DSC-UPO, DSC-737, DSC-729 FF, DSC-720, 1-0715 | was named POUR CURB RAMP, MAD & 2ND SW CORNER |
| 1-0671 | GRADE & POUR SIDEWALK, MAD & 2ND SW CORNER | 2024-04-10 → 2024-05-16 A (+36d) | 2024-04-10 → 2024-05-31 A (+51d) | 1d → 11d | 0% → 100% | -102d → none | 1-0670, 1-0490, 1-0666 → 1-0670 SS+2d, 1-0490 | was named POUR SIDEWALK, MAD & 2ND SW CORNER |
| 21 | **DRIVEWAYS 9TH SPRING TO MADISON WEST SIDE** | 2024-04-20 → 2024-04-27 (+7d) | 2024-04-20 → 2024-04-27 (+7d) |  |  |  |  |  |
| 1-0554 | REM SIDEWALK, DRIVEWAYS 9TH SPRING TO MAD WEST SIDE | 2024-04-20 → 2024-04-27 A (+7d) | 2024-04-20 → 2024-04-27 A (+7d) |  | 0% → 100% | -31d → none | 1-0550, 1-0552, 1-3130, 1-0513 → 1-0550 SS, 1-0552 SS, 1-3130, 1-0513 |  |
| 1-0555 | POUR DRIVEWAYS, DRIVEWAYS 9TH SPRING TO MAD WEST SIDE | 2024-04-20 → 2024-04-27 A (+7d) | 2024-04-20 → 2024-04-27 A (+7d) |  | 0% → 100% | -31d → none |  |  |
| 9 | **MILLING AND PAVING** |  | 2024-04-25 → 2024-05-10 (+15d) |  |  |  |  |  |
| 1-0755 | MILL MAD 6TH TO BROADWAY, MILLING & PAVING | 2024-04-22 → 2024-04-29 A (+7d) | 2024-04-24 → 2024-05-01 A (+7d) |  | 0% → 100% | -77d → none |  |  |
| 1-0810 | PAVE REMAINING ZONE 1 | 2024-04-25 → 2024-05-02 A (+7d) | 2024-04-25 → 2024-05-10 A (+15d) | 0d → 7d | 0% → 100% | -77d → none |  | resources MBRT NEW → MBRT NEW [56 h] |
| 1-0766 | STATION SIDEWALKS, MAD AND 8TH WB |  |  |  |  |  | 1-0765, 1-0765 FF, 1-0764 → 1-0765, 1-0765 FF, 1-0764, 1-0764 FF |  |
| 12 | **I-5 ENHANCEMENTS** | 2024-02-20 → 2024-02-12 (-8d) | 2024-06-10 → 2024-09-17 (+99d) |  |  |  |  |  |
| 1-0793 | DELAY AWAITING DC | 2024-02-20 A → 2024-02-12 A (-8d) | 2024-05-28 → 2024-02-12 A (-106d) |  | 0% → 100% | -109d → none |  |  |
| 1-0788 | INST PLANTERS, I-5 ENHANCEMENTS | 2024-05-29 → 2024-07-30 (+62d) | 2024-05-30 → 2024-07-31 (+62d) |  |  | -109d → -180d |  |  |
| 1-0790 | PLANT PLANTERS, I-5 ENHANCEMENTS | 2024-06-06 → 2024-08-01 (+56d) | 2024-06-10 → 2024-08-05 (+56d) |  |  | -109d → -149d | 1-0789, LS-1490 FF → 1-0788 |  |
| 1-0789 | INST DECORATIVE METAL, I-5 ENHANCEMENTS | 2024-05-31 → 2024-09-12 (+104d) | 2024-06-05 → 2024-09-17 (+104d) |  |  | -109d → -180d | 1-0788, LS-1485 FF → 1-0788, 1-1044 |  |

| ID | Task | Start | Finish | Duration | Complete | Total float | Predecessors |
| --- | --- | --- | --- | --- | --- | --- | --- |
| 14 | **SIGNALS** |  | 2024-06-19 → 2024-07-23 (+34d) |  |  |  |  |
| 7 | **SPRING AND 7TH** |  | 2024-05-06 → 2024-05-28 (+22d) |  |  |  |  |
| 1-1545 | POLE DOES NOT WORK |  | 2024-04-08 → 2024-04-29 A (+21d) |  | 94% → 100% | -111d → none |  |
| 1-1430 | INST MAST ARMS, SPRING AND 7TH | 2024-04-09 → 2024-04-30 A (+21d) | 2024-04-10 → 2024-05-01 A (+21d) |  | 0% → 100% | -111d → none |  |
| 1-0841 | INST PPB POST, SPRING AND 7TH | 2024-04-11 → 2024-05-02 A (+21d) | 2024-04-11 → 2024-05-02 A (+21d) |  | 0% → 100% | -111d → none |  |
| 1-0842 | INST PEDISTAL, SPRING AND 7TH | 2024-04-12 → 2024-05-03 A (+21d) | 2024-04-12 → 2024-05-03 A (+21d) |  | 0% → 100% | -111d → none |  |
| 1-0843 | INST WIRING, SPRING AND 7TH | 2024-04-24 → 2024-05-15 A (+21d) | 2024-04-26 → 2024-05-17 A (+21d) |  | 0% → 100% | -111d → none |  |
| 1-0847 | NOTIFY SDOT, SPRING AND 7TH | 2024-04-29 → 2024-05-20 A (+21d) | 2024-04-29 → 2024-05-20 A (+21d) |  | 0% → 100% | -97d → none |  |
| 1-0848 | SDOT INSPECTION, SPRING AND 7TH | 2024-04-29 → 2024-05-20 A (+21d) | 2024-05-03 → 2024-05-24 A (+21d) |  | 0% → 100% | -97d → none |  |
| 1-0849 | COMM SIGNAL, SPRING AND 7TH | 2024-05-06 → 2024-05-28 A (+22d) | 2024-05-06 → 2024-05-28 A (+22d) |  | 0% → 100% | -97d → none |  |
| 9 | **SPRING AND 9TH** |  | 2024-06-19 → 2024-06-13 (-6d) |  |  |  |  |
| 1-0867 | INST SERVICE CABINET, SPRING AND 9TH | 2024-04-24 → 2024-05-02 A (+8d) | 2024-04-24 → 2024-05-02 A (+8d) |  | 0% → 100% | -142d → none | 1-0552, 1-0650 → 1-0552 |
| 1-0882 | SDCI INSPECTION | 2024-04-25 → 2024-05-03 A (+8d) | 2024-04-25 → 2024-05-03 A (+8d) |  | 0% → 100% | -142d → none |  |
| 1-0927 | SDOT INSPECTION | 2024-04-25 → 2024-05-03 A (+8d) | 2024-04-25 → 2024-05-03 A (+8d) |  | 0% → 100% | -142d → none |  |
| 1-0873 | SCL INSPECTION REQUEST | 2024-04-26 → 2024-05-06 A (+10d) | 2024-04-26 → 2024-05-06 A (+10d) |  | 0% → 100% | -142d → none |  |
| 1-0874 | 30 DAY WAIT FOR SCL TO INSPECT | 2024-04-26 → 2024-05-06 A (+10d) | 2024-04-29 → 2024-05-07 A (+8d) |  | 0% → 100% | -142d → none |  |
| 1-0942 | SCL INSPECTION | 2024-04-30 → 2024-05-08 A (+8d) | 2024-04-30 → 2024-05-08 A (+8d) |  | 0% → 100% | -142d → none |  |
| 1-0947 | SCL COMMISION NOTIFICATION | 2024-05-01 → 2024-05-09 A (+8d) | 2024-05-01 → 2024-05-09 A (+8d) |  | 0% → 100% | -142d → none |  |
| 1-1012 | 30 DAY WAIT FOR SCL TO COMMISION | 2024-05-02 → 2024-05-10 A (+8d) | 2024-05-31 → 2024-05-10 A (-21d) | 21d → 1d | 0% → 100% | -142d → none |  |
| 1-0879 | SCL COMMISION SERVICE, SPRING AND 9TH | 2024-06-03 → 2024-05-13 A (-21d) | 2024-06-03 → 2024-05-13 A (-21d) |  | 0% → 100% | -142d → none |  |
| 1-0865 | INST OWNER FURNISHED SIGNAL CABINET, SPRING & 9TH | 2024-06-04 → 2024-05-28 A (-7d) | 2024-06-04 → 2024-05-28 A (-7d) |  | 0% → 100% | -142d → none | 1-0857, 1-0605, 1-0326, 1-0879, 1-0604, 1-0605 FF, 1-0875 SS → 1-0857, 1-0326, 1-0879, 1-0875 SS, 1-0552 |
| 1-0875 | 3rd Prime Crew - UG Complete | 2024-05-22 → 2024-05-28 A (+6d) | 2024-05-22 → 2024-05-28 A (+6d) |  | 0% → 100% | -134d → none |  |
| 1-0866 | SPLICE LOOP LEED IN, SPRING AND 9TH | 2024-06-05 → 2024-05-29 A (-7d) | 2024-06-05 → 2024-05-29 A (-7d) |  | 0% → 100% | -141d → none |  |
| 1-0870 | INST PPB POST, SPRING AND 9TH | 2024-06-05 → 2024-05-29 A (-7d) | 2024-06-05 → 2024-05-29 A (-7d) |  | 0% → 100% | -142d → none |  |
| 1-0871 | INST PEDESTAL, SPRING AND 9TH | 2024-06-06 → 2024-05-30 A (-7d) | 2024-06-06 → 2024-05-30 A (-7d) |  | 0% → 100% | -142d → none |  |
| 1-0872 | INST WIRING, SPRING AND 9TH | 2024-06-07 → 2024-05-31 A (-7d) | 2024-06-11 → 2024-06-04 A (-7d) |  | 0% → 100% | -142d → none |  |
| 1-0876 | NOTIFY SDOT, SPRING AND 9TH | 2024-06-12 → 2024-06-05 A (-7d) | 2024-06-12 → 2024-06-05 A (-7d) |  | 0% → 100% | -142d → none |  |
| 1-0877 | SDOT INSPECTION, SPRING AND 9TH | 2024-06-12 → 2024-06-05 A (-7d) | 2024-06-18 → 2024-06-11 A (-7d) |  | 0% → 100% | -142d → none |  |
| 1-0878 | COMM SIGNAL, SPRING AND 9TH | 2024-06-19 → 2024-06-13 A (-6d) | 2024-06-19 → 2024-06-13 A (-6d) |  | 0% → 100% | -142d → none |  |
| 11 | **MADISON AND 2ND** | 2024-04-11 → 2024-06-03 (+53d) | 2024-04-22 → 2024-06-12 (+51d) |  |  |  |  |
| 1-0892 | INST MAGNETOMETERS & ACCESS POINT, MAD & 2ND | 2024-04-11 → 2024-06-03 A (+53d) | 2024-04-12 → 2024-06-04 A (+53d) |  | 0% → 100% | -102d → none |  |
| 1-0893 | NOTIFY SDOT, MAD AND 2ND | 2024-04-15 → 2024-06-05 A (+51d) | 2024-04-15 → 2024-06-05 A (+51d) |  | 0% → 100% | -102d → none |  |
| 1-0894 | SDOT INSPECTION, MAD AND 2ND | 2024-04-15 → 2024-06-05 A (+51d) | 2024-04-19 → 2024-06-11 A (+53d) |  | 0% → 100% | -102d → none |  |
| 1-0895 | COMM SIGNAL, MAD AND 2ND | 2024-04-22 → 2024-06-12 A (+51d) | 2024-04-22 → 2024-06-12 A (+51d) |  | 0% → 100% | -102d → none |  |
| 18 | **MADISON AND 9TH** |  | 2024-04-29 → 2024-05-28 (+29d) |  |  |  |  |
| 1-0983 | Remove Temp Poles - 9th (KCM Repeater Issue) |  | 2024-04-29 → 2024-05-28 A (+29d) |  | 0% → 100% | -69d → none |  |
| 1-6299 | SCL INSPECTION REQUEST |  |  |  |  |  | 1-1006, 1-6298 → 1-1006, 1-6298, 1-1017 |
| 1-1045 | INST ITS WIRING, ITS WIRING |  | 2024-04-02 A |  | 0% → 100% | -61d → none |  |
| 16 | **LIGHTING** |  | 2024-07-08 → 2024-08-14 (+37d) |  |  |  |  |
| 1 | **SPRING AND 3RD (SCHEMATIC 1)** |  | 2024-03-22 → 2024-06-20 (+90d) |  |  |  |  |
| 1-1555 | Awaiting Ped Light |  | 2024-03-20 A → 2024-06-18 A (+90d) |  |  |  |  |
| 1-1500 | COMMISSION LIGHTING, SPRING AND 3RD | 2024-03-21 A → 2024-06-19 A (+90d) | 2024-03-22 A → 2024-06-20 A (+90d) |  |  |  |  |
| 2 | **SPRING AND 7TH (SCHEMATIC 2)** |  | 2024-05-24 → 2024-06-17 (+24d) |  |  |  |  |
| 1-1052 | INST WIRING, SPRING AND 7TH | 2024-04-29 → 2024-05-20 A (+21d) | 2024-04-30 → 2024-05-21 A (+21d) |  | 0% → 100% | -111d → none |  |
| 1-1510 | NOTIFY SCL, SPRING AND 7TH | 2024-05-01 → 2024-05-22 A (+21d) | 2024-05-02 → 2024-05-23 A (+21d) |  | 0% → 100% | -111d → none |  |
| 1-1505 | SCL Lighting Final Inspection, SPRING AND 7TH | 2024-05-03 → 2024-05-24 A (+21d) | 2024-05-06 → 2024-05-28 A (+22d) |  | 0% → 100% | -111d → none |  |
| 1-1745 | NOTIFY SCL, SPRING AND 7TH | 2024-05-07 → 2024-05-29 A (+22d) | 2024-05-08 → 2024-05-30 A (+22d) |  | 0% → 100% | -111d → none |  |
| 1-1515 | SCL Commissioning Inspection, SPRING AND 7TH | 2024-05-09 → 2024-05-31 A (+22d) | 2024-05-22 → 2024-06-13 A (+22d) |  | 0% → 100% | -111d → none |  |
| 1-1520 | COMMISSION LIGHTING, SPRING AND 7TH | 2024-05-23 → 2024-06-14 A (+22d) | 2024-05-24 → 2024-06-17 A (+24d) |  | 0% → 100% | -111d → none |  |
| 3 | **SPRING AND 8TH (SCHEMATIC 3)** |  | 2024-04-22 → 2024-05-28 (+36d) |  |  |  |  |
| 1-1095 | DELAY AWAITING DEVELOPER TO FINISH ON N. SIDE OF SPRING |  | 2024-04-08 → 2024-05-13 A (+35d) |  | 0% → 100% | -85d → none |  |
| 1-1535 | SCL Commissioning Inspection, SPRING AND 8TH |  | 2024-04-08 A |  | 0% → 100% | -85d → none |  |
| 1-1540 | COMMISSION LIGHTING, SPRING AND 8TH | 2024-04-09 → 2024-05-14 A (+35d) | 2024-04-22 → 2024-05-28 A (+36d) |  | 0% → 100% | -85d → none |  |
| 4 | **SPRING AND 9TH** |  | 2024-07-08 → 2024-07-01 (-7d) |  |  |  |  |
| 1-1057 | INST WIRING, SPRING AND 9TH | 2024-06-12 → 2024-06-05 A (-7d) | 2024-06-12 → 2024-06-05 A (-7d) |  | 0% → 100% | -138d → none |  |
| 1-1830 | NOTIFY SCL, SPRING AND 9TH | 2024-06-13 → 2024-06-06 A (-7d) | 2024-06-14 → 2024-06-07 A (-7d) |  | 0% → 100% | -138d → none |  |
| 1-1825 | SCL Lighting Final Inspection, SPRING AND 9TH | 2024-06-17 → 2024-06-10 A (-7d) | 2024-06-18 → 2024-06-11 A (-7d) |  | 0% → 100% | -138d → none |  |
| 1-1845 | NOTIFY SCL, SPRING AND 9TH | 2024-06-19 → 2024-06-12 A (-7d) | 2024-06-20 → 2024-06-13 A (-7d) |  | 0% → 100% | -138d → none |  |
| 1-1835 | SCL Commissioning Inspection, SPRING AND 9TH | 2024-06-21 → 2024-06-14 A (-7d) | 2024-07-04 → 2024-06-27 A (-7d) |  | 0% → 100% | -138d → none |  |
| 1-1840 | COMMISSION LIGHTING, SPRING AND 9TH | 2024-07-05 → 2024-06-28 A (-7d) | 2024-07-08 → 2024-07-01 A (-7d) |  | 0% → 100% | -138d → none |  |
| 5 | **MADISON AND 3RD (SCHEMATIC 4)** |  | 2024-03-08 → 2024-08-14 (+159d) |  |  |  |  |
| 6 | **MADISON AND 5TH (SCHEMATIC 5)** |  | 2024-03-25 → 2024-06-26 (+93d) |  |  |  |  |
| 7 | **MADISON 7TH TO 8TH (SCHEMATIC 7 & 8)** |  | 2024-04-29 → 2024-06-19 (+51d) |  |  |  |  |
| 1-2120 | SCHEMATIC 8 Inspection & Build-out |  | 2024-04-22 → 2024-06-12 A (+51d) |  | 0% → 100% | -104d → none |  |
| 1-2130 | SCHEMATIC 8 Commissioning | 2024-04-23 → 2024-06-13 A (+51d) | 2024-04-29 → 2024-06-19 A (+51d) |  | 0% → 100% | -104d → none |  |
| 1-1069 | INST WIRING, MAD AND 9TH |  | 2024-04-15 A |  | 0% → 100% | -110d → none |  |
| 1-1072 | INST WIRING, MAD AND TERRY |  | 2024-04-15 A |  | 0% → 100% | -110d → none |  |
| 10 | **MADISON AND BOREN** |  | 2024-05-09 → 2024-06-21 (+43d) |  |  |  |  |
| 1-1075 | INST WIRING, MAD AND BOREN |  | 2024-04-15 A |  | 0% → 100% | -110d → none |  |
| 1-1860 | NOTIFY SCL, MAD AND BOREN | 2024-04-16 A | 2024-04-17 A |  | 0% → 100% | -110d → none |  |

| ID | Task | Start | Finish | Complete | Total float |
| --- | --- | --- | --- | --- | --- |
| 1-1855 | SCL Lighting Final Inspection, MAD AND BOREN | 2024-04-18 A | 2024-04-19 A | 0% → 100% | -110d → none |
| 1-1875 | NOTIFY SCL, MAD AND BOREN | 2024-04-22 A | 2024-04-23 A | 0% → 100% | -110d → none |
| 1-1865 | SCL FINAL LIGHTING MAD AND BOREN | 2024-04-24 A | 2024-05-07 A | 0% → 100% | -110d → none |
| 1-1870 | COMMISSION LIGHTING, MAD AND BOREN | 2024-05-08 → 2024-06-20 A (+43d) | 2024-05-09 → 2024-06-21 A (+43d) | 0% → 100% | -110d → none |
| 1-1915 | SCL Commissioning Inspection, MAD AND BOYLSTON |  | 2024-04-02 A | 0% → 100% | -69d → none |
| 1-1920 | COMMISSION LIGHTING, MAD AND BOYLSTON | 2024-04-03 A | 2024-04-04 A | 0% → 100% | -69d → none |
| 1-1086 | INST POLES, MAD & 8TH CENTER ISLAND | 2024-04-02 A | 2024-04-02 A | 0% → 100% | -80d → none |
| 1-1087 | INST WIRING, MAD & 8TH CENTER ISLAND | 2024-04-03 A | 2024-04-03 A | 0% → 100% | -80d → none |
| 1-1935 | NOTIFY SCL, MAD & 8TH CENTER ISLAND | 2024-04-04 A | 2024-04-05 A | 0% → 100% | -80d → none |
| 1-1930 | SCL Lighting Final Inspection, MAD & 8TH CENTER ISLAND | 2024-04-08 A | 2024-04-09 A | 0% → 100% | -80d → none |
| 1-1950 | NOTIFY SCL, MAD & 8TH CENTER ISLAND | 2024-04-10 A | 2024-04-11 A | 0% → 100% | -80d → none |
| 1-1940 | SCL Commissioning Inspection, MAD & 8TH CENTER ISLAND | 2024-04-12 A | 2024-04-25 A | 0% → 100% | -80d → none |
| 1-1945 | COMMISSION LIGHTING, MAD & 8TH CENTER ISLAND | 2024-04-26 A | 2024-04-29 A | 0% → 100% | -80d → none |
| 1-1089 | INST POLES, MAD & TERRY CENTER ISLAND |  | 2024-04-02 A | 0% → 100% | -109d → none |
| 1-1090 | INST WIRING, MAD & TERRY CENTER ISLAND | 2024-04-03 A | 2024-04-03 A | 0% → 100% | -109d → none |
| 1-1960 | NOTIFY SCL, MAD & TERRY CENTER ISLAND | 2024-04-04 A | 2024-04-05 A | 0% → 100% | -80d → none |
| 1-1955 | SCL Lighting Final Inspection, MAD & TERRY CENTER ISLAND | 2024-04-08 A | 2024-04-09 A | 0% → 100% | -80d → none |
| 1-1975 | NOTIFY SCL, MAD & TERRY CENTER ISLAND | 2024-04-10 A | 2024-04-11 A | 0% → 100% | -80d → none |
| 1-1965 | SCL Commissioning Inspection, MAD & TERRY CENTER ISLAND | 2024-04-12 A | 2024-04-25 A | 0% → 100% | -80d → none |
| 1-1970 | COMMISSION LIGHTING, MAD & TERRY CENTER ISLAND | 2024-04-26 A | 2024-04-29 A | 0% → 100% | -80d → none |
| 1-1092 | INST POLES, MAD & BOYLSTON CENTER ISLAND |  | 2024-04-02 A | 0% → 100% | -92d → none |
| 1-1093 | INST WIRING, MAD & BOYLSTON CENTER ISLAND | 2024-04-03 A | 2024-04-03 A | 0% → 100% | -92d → none |
| 1-1985 | NOTIFY SCL, MAD & BOYLSTON CENTER ISLAND | 2024-04-04 A | 2024-04-05 A | 0% → 100% | -80d → none |
| 1-1980 | SCL Lighting Final Inspection, MAD & BOYLSTON CENTER ISLAND | 2024-04-08 A | 2024-04-09 A | 0% → 100% | -80d → none |
| 1-2000 | NOTIFY SCL, MAD & BOYLSTON CENTER ISLAND | 2024-04-10 A | 2024-04-11 A | 0% → 100% | -80d → none |
| 1-1990 | SCL Commissioning Inspection, MAD & BOYLSTON CENTER ISLAND | 2024-04-12 A | 2024-04-25 A | 0% → 100% | -80d → none |
| 1-1995 | COMMISSION LIGHTING, MAD & BOYLSTON CENTER ISLAND | 2024-04-26 A | 2024-04-29 A | 0% → 100% | -80d → none |
| 21 | **WORK TO COMPLETE AFTER SIGNAL AND LIGHTING IS COMMISSIONED** |  | 2024-07-19 → 2024-07-23 (+4d) |  |  |
| 20 | **7TH AND SPRING** | 2024-05-28 → 2024-06-18 (+21d) | 2024-06-04 → 2024-06-25 (+21d) |  |  |
| 1-2015 | REMOVE POLES AND CABINETS | 2024-05-28 → 2024-06-18 A (+21d) | 2024-05-29 → 2024-06-19 A (+21d) | 0% → 100% | -111d → none |
| 1-2020 | REMOVE POLE FOUNDATIONS | 2024-05-30 → 2024-06-20 A (+21d) | 2024-05-30 → 2024-06-20 A (+21d) | 0% → 100% | -111d → none |
| 1-2025 | GRADE SIDEWALK | 2024-05-31 → 2024-06-21 A (+21d) | 2024-05-31 → 2024-06-21 A (+21d) | 0% → 100% | -111d → none |
| 1-2030 | POUR REMAINING SIDEWALK | 2024-06-03 → 2024-06-24 A (+21d) | 2024-06-04 → 2024-06-25 A (+21d) | 0% → 100% | -111d → none |
| 1 | **8TH AND SPRING** | 2024-04-23 → 2024-05-29 (+36d) | 2024-06-07 → 2024-06-28 (+21d) |  |  |
| 1-2035 | REMOVE TEMP LIGHTING | 2024-04-23 → 2024-05-29 A (+36d) | 2024-04-23 → 2024-05-29 A (+36d) | 0% → 100% | -85d → none |
| 1-2040 | REMOVE LIGHT POLES | 2024-04-24 → 2024-05-30 A (+36d) | 2024-04-24 → 2024-05-30 A (+36d) | 0% → 100% | -85d → none |
| 1-2045 | REMOVE FOUNDATION | 2024-06-03 → 2024-06-24 A (+21d) | 2024-06-03 → 2024-06-24 A (+21d) | 0% → 100% | -111d → none |
| 1-2050 | GRADE SIDEWALKS | 2024-06-05 → 2024-06-26 A (+21d) | 2024-06-05 → 2024-06-26 A (+21d) | 0% → 100% | -111d → none |
| 1-2075 | POUR SIDEWALKS | 2024-06-06 → 2024-06-27 A (+21d) | 2024-06-07 → 2024-06-28 A (+21d) | 0% → 100% | -111d → none |
| 2 | **9TH AND SPRING** | 2024-07-09 → 2024-07-02 (-7d) | 2024-07-12 → 2024-07-05 (-7d) |  |  |
| 1-2055 | REMOVE TEMP LIGHTING | 2024-07-09 → 2024-07-02 A (-7d) | 2024-07-09 → 2024-07-02 A (-7d) | 0% → 100% | -138d → none |
| 1-2060 | REMOVE LIGHT POLE NE CORNER | 2024-07-10 → 2024-07-03 A (-7d) | 2024-07-10 → 2024-07-03 A (-7d) | 0% → 100% | -138d → none |
| 1-2065 | REMOVE FOUNDATION | 2024-07-11 → 2024-07-04 A (-7d) | 2024-07-11 → 2024-07-04 A (-7d) | 0% → 100% | -138d → none |
| 1-2070 | COMPLETE LANDSCAPE | 2024-07-12 → 2024-07-05 A (-7d) | 2024-07-12 → 2024-07-05 A (-7d) | 0% → 100% | -133d → none |
| 3 | **1ST AND MADISON** |  | 2024-07-19 → 2024-07-12 (-7d) |  |  |
| 1-2085 | REMOVE PEDESTAL FOUNDATION | 2024-07-12 → 2024-07-05 A (-7d) | 2024-07-12 → 2024-07-05 A (-7d) | 0% → 100% | -138d → none |
| 1-2090 | REMOVE SIDEWALKS | 2024-07-15 → 2024-07-08 A (-7d) | 2024-07-15 → 2024-07-08 A (-7d) | 0% → 100% | -138d → none |
| 1-2095 | GRADE SIDEWALKS | 2024-07-16 → 2024-07-09 A (-7d) | 2024-07-16 → 2024-07-09 A (-7d) | 0% → 100% | -138d → none |
| 1-2100 | CURB RAMP | 2024-07-17 → 2024-07-10 A (-7d) | 2024-07-18 → 2024-07-11 A (-7d) | 0% → 100% | -138d → none |
| 1-2105 | POUR SIDEWALKS | 2024-07-19 → 2024-07-12 A (-7d) | 2024-07-19 → 2024-07-12 A (-7d) | 0% → 100% | -138d → none |
| 1-2125 | GRADE SIDEWALKS | 2024-04-02 A | 2024-04-02 A | 0% → 100% | -63d → none |
| 1-2135 | POUR SIDEWALKS | 2024-04-03 A | 2024-04-04 A | 0% → 100% | -63d → none |
| 1-2140 | REMOVE TEMP LIGHTING | 2024-04-02 A | 2024-04-03 A | 0% → 100% | -65d → none |
| 1-2145 | GRADE SIDEWALKS | 2024-04-04 A | 2024-04-04 A | 0% → 100% | -65d → none |
| 1-2150 | POUR SIDEWALKS | 2024-04-05 A | 2024-04-08 A | 0% → 100% | -65d → none |
| 1-2205 | REMOVE TEMP LIGHITNG | 2024-04-02 A | 2024-04-03 A | 0% → 100% | -65d → none |
| 1-2215 | GRADE SIDEWALKS | 2024-04-04 A | 2024-04-04 A | 0% → 100% | -65d → none |
| 1-2225 | POUR SIDEWALKS | 2024-04-05 A | 2024-04-08 A | 0% → 100% | -65d → none |
| 1-2280 | POUR SIDEWALKS 2ND CORNER | 2024-04-02 A | 2024-04-02 A | 0% → 100% | -71d → none |
| 1-2285 | REMOVE FOUNDATION 3RD CORNER | 2024-04-03 A | 2024-04-03 A | 0% → 100% | -71d → none |
| 1-2290 | GRADE SIDEWALKS 3RD CORNER | 2024-04-04 A | 2024-04-04 A | 0% → 100% | -71d → none |
| 1-2295 | CURB RAMP 3RD CORNER | 2024-04-05 A | 2024-04-08 A | 0% → 100% | -71d → none |
| 1-2300 | POUR SIDEWALKS 3RD CORNER | 2024-04-09 A | 2024-04-09 A | 0% → 100% | -71d → none |
| 1-2305 | REMOVE FOUNDATION 4TH CORNER | 2024-04-10 A | 2024-04-10 A | 0% → 100% | -71d → none |
| 1-2310 | GRADE SIDEWALKS 4TH CORNER | 2024-04-11 A | 2024-04-11 A | 0% → 100% | -71d → none |
| 1-2315 | CURB RAMP 4TH CORNER | 2024-04-12 A | 2024-04-15 A | 0% → 100% | -71d → none |
| 1-2320 | POUR SIDEWALKS 4TH CORNER | 2024-04-16 A | 2024-04-16 A | 0% → 100% | -71d → none |
| 9 | **9TH AND MADISON** |  | 2024-05-15 → 2024-06-27 (+43d) |  |  |
| 1-2330 | REMOVE STRAIN POLES |  | 2024-04-05 A | 0% → 100% | -69d → none |
| DSC-719 | DSC 719 9th & Madison direct bury poles to be removed |  | 2024-04-05 A | 20% → 100% | -69d → none |

| ID | Task | Start | Finish | Duration | Complete | Total float | Predecessors |
| --- | --- | --- | --- | --- | --- | --- | --- |
| 1-2400 | REMOVE FOUNDATION 4TH CORNER (SWC) | 2024-04-08 A | 2024-04-08 A |  | 0% → 100% | -69d → none |  |
| 1-2405 | GRADE SIDEWALKS 4TH CORNER | 2024-04-09 A | 2024-04-09 A |  | 0% → 100% | -69d → none |  |
| 1-2410 | CURB RAMP 4TH CORNER | 2024-04-10 A | 2024-04-11 A |  | 0% → 100% | -69d → none |  |
| 1-2415 | POUR SIDEWALKS 4TH CORNER | 2024-04-12 A | 2024-04-12 A |  | 0% → 100% | -69d → none |  |
| 1-2335 | REMOVE TEMP LIGHTING | 2024-05-10 → 2024-06-24 A (+45d) | 2024-05-13 → 2024-06-25 A (+43d) |  | 0% → 100% | -92d → none |  |
| 1-2420 | GRADE SIDEWALK AFTER TEMP LIGHTING IS REMOVED | 2024-05-14 → 2024-06-26 A (+43d) | 2024-05-14 → 2024-06-26 A (+43d) |  | 0% → 100% | -92d → none |  |
| 1-2425 | POUR REMAINING SIDEWALKS | 2024-05-15 → 2024-06-27 A (+43d) | 2024-05-15 → 2024-06-27 A (+43d) |  | 0% → 100% | -92d → none |  |
| 11 | **TERRY AND MADISON** |  | 2024-05-16 → 2024-06-28 (+43d) |  |  |  |  |
| 1-2535 | REMOVE TEMP LIGHTING | 2024-05-10 → 2024-06-24 A (+45d) | 2024-05-13 → 2024-06-25 A (+43d) |  | 0% → 100% | -93d → none |  |
| 1-2580 | GRADE SIDEWALK AFTER TEMP LIGHITNG IS REMOVED | 2024-05-14 → 2024-06-26 A (+43d) | 2024-05-14 → 2024-06-26 A (+43d) |  | 0% → 100% | -93d → none |  |
| 1-2585 | POUR REMAINING SIDEWALKS | 2024-05-15 → 2024-06-27 A (+43d) | 2024-05-16 → 2024-06-28 A (+43d) |  | 0% → 100% | -93d → none |  |
| 10 | **BOREN AND MADISON** |  | 2024-06-11 → 2024-07-23 (+42d) |  |  |  |  |
| DSC-722 | DSC 722 Boren & Madison Exist. ITS Conflict w/removal of strain poles |  | 2024-04-08 A |  | 0% → 100% | -89d → none |  |
| 1-2430 | REMOVE EXISTING SIGNAL SYSTEM | 2024-04-02 A | 2024-04-04 A |  | 0% → 100% | -87d → none |  |
| 1-2435 | REMOVE STRAIN POLES | 2024-04-09 A | 2024-04-10 A |  | 0% → 100% | -89d → none |  |
| 1-2440 | REMOVE TEMP LIGHTING | 2024-05-10 → 2024-06-24 A (+45d) | 2024-05-13 → 2024-06-25 A (+43d) |  | 0% → 100% | -110d → none |  |
| 1-2445 | REMOVE FOUNDATION 1ST CORNER | 2024-05-14 → 2024-06-26 A (+43d) | 2024-05-14 → 2024-06-26 A (+43d) |  | 0% → 100% | -110d → none |  |
| 1-2450 | GRADE SIDEWALKS 1ST CORNER | 2024-05-15 → 2024-06-27 A (+43d) | 2024-05-15 → 2024-06-27 A (+43d) |  | 0% → 100% | -110d → none |  |
| 1-2455 | CURB RAMP 1ST CORNER | 2024-05-16 → 2024-06-28 A (+43d) | 2024-05-17 → 2024-07-01 A (+45d) |  | 0% → 100% | -110d → none |  |
| 1-2460 | POUR SIDEWALKS 1ST CORNER | 2024-05-20 → 2024-07-02 A (+43d) | 2024-05-20 → 2024-07-02 A (+43d) |  | 0% → 100% | -110d → none |  |
| 1-2465 | REMOVE FOUNDATION 2ND CORNER | 2024-05-21 → 2024-07-03 A (+43d) | 2024-05-21 → 2024-07-03 A (+43d) |  | 0% → 100% | -110d → none |  |
| 1-2470 | GRADE SIDEWALKS 2ND CORNER | 2024-05-22 → 2024-07-04 A (+43d) | 2024-05-22 → 2024-07-04 A (+43d) |  | 0% → 100% | -110d → none |  |
| 1-2475 | CURB RAMP 2ND CORNER | 2024-05-23 → 2024-07-05 A (+43d) | 2024-05-24 → 2024-07-08 A (+45d) |  | 0% → 100% | -110d → none |  |
| 1-2480 | POUR SIDEWALKS 2ND CORNER | 2024-05-28 → 2024-07-09 A (+42d) | 2024-05-28 → 2024-07-09 A (+42d) |  | 0% → 100% | -110d → none |  |
| 1-2485 | REMOVE FOUNDATION 3RD CORNER | 2024-05-29 → 2024-07-10 A (+42d) | 2024-05-29 → 2024-07-10 A (+42d) |  | 0% → 100% | -110d → none |  |
| 1-2490 | GRADE SIDEWALKS 3RD CORNER | 2024-05-30 → 2024-07-11 A (+42d) | 2024-05-30 → 2024-07-11 A (+42d) |  | 0% → 100% | -110d → none |  |
| 1-2495 | CURB RAMP 3RD CORNER | 2024-05-31 → 2024-07-12 A (+42d) | 2024-06-03 → 2024-07-15 A (+42d) |  | 0% → 100% | -110d → none |  |
| 1-2500 | POUR SIDEWALKS 3RD CORNER | 2024-06-04 → 2024-07-16 A (+42d) | 2024-06-04 → 2024-07-16 A (+42d) |  | 0% → 100% | -110d → none |  |
| 1-2505 | REMOVE FOUNDATION 4TH CORNER | 2024-06-05 → 2024-07-17 A (+42d) | 2024-06-05 → 2024-07-17 A (+42d) |  | 0% → 100% | -110d → none |  |
| 1-2510 | GRADE SIDEWALKS 4TH CORNER | 2024-06-06 → 2024-07-18 A (+42d) | 2024-06-06 → 2024-07-18 A (+42d) |  | 0% → 100% | -110d → none |  |
| 1-2515 | CURB RAMP 4TH CORNER | 2024-06-07 → 2024-07-19 A (+42d) | 2024-06-10 → 2024-07-22 A (+42d) |  | 0% → 100% | -110d → none |  |
| 1-2520 | POUR SIDEWALKS 4TH CORNER | 2024-06-11 → 2024-07-23 A (+42d) | 2024-06-11 → 2024-07-23 A (+42d) |  | 0% → 100% | -110d → none |  |
| 1-2665 | POUR SIDEWALKS | 2024-04-02 A | 2024-04-03 A |  | 0% → 100% | -62d → none |  |
| 1-2640 | REMOVE MAST ARM FOUNDATION | 2024-04-02 A | 2024-04-02 A |  | 0% → 100% | -66d → none |  |
| 1-2695 | GRADE SIDEWALK | 2024-04-03 A | 2024-04-04 A |  | 0% → 100% | -66d → none |  |
| 1-2700 | POUR SIDEWALK | 2024-04-05 A | 2024-04-09 A |  | 0% → 100% | -66d → none |  |
| 1-2680 | REMOVE TEMP LIGHTING | 2024-04-05 A | 2024-04-08 A |  | 0% → 100% | -69d → none |  |
| 1-2685 | REMOVE FOUNDATIONS | 2024-04-09 A | 2024-04-09 A |  | 0% → 100% | -69d → none |  |
| 1-2690 | GRADE SIDEWALKS | 2024-04-10 A | 2024-04-10 A |  | 0% → 100% | -69d → none |  |
| 1-2705 | POUR SIDEWALKS | 2024-04-11 A | 2024-04-12 A |  | 0% → 100% | -69d → none |  |
| 20 | **KCM SERVICE CONECTIONS** |  | 2024-05-20 → 2024-05-23 (+3d) |  |  |  |  |
| 7 | **8TH AND MADISON** |  | 2024-05-20 → 2024-05-23 (+3d) |  |  |  |  |
| 1-9961 | SERVICE CABINET | 2024-04-02 A | 2024-04-02 → 2024-04-05 A (+3d) | 1d → 4d | 0% → 100% | -95d → none |  |
| 1-9976 | SDCI INSPECTION | 2024-04-03 → 2024-04-08 A (+5d) | 2024-04-03 → 2024-04-08 A (+5d) |  | 0% → 100% | -95d → none |  |
| 1-9966 | REQUEST KCM INSPECTION | 2024-04-04 → 2024-04-09 A (+5d) | 2024-04-04 → 2024-04-09 A (+5d) |  | 0% → 100% | -95d → none |  |
| 1-9971 | WAIT FOR KCM TO INSPECT | 2024-04-05 → 2024-04-10 A (+5d) | 2024-04-11 → 2024-04-16 A (+5d) |  | 0% → 100% | -95d → none |  |
| 1-9981 | NOTIFY SCL FOR INSPECTION | 2024-04-12 → 2024-04-17 A (+5d) | 2024-04-12 → 2024-04-17 A (+5d) |  | 0% → 100% | -95d → none |  |
| 1-9986 | 30 DAY WAIT FOR SCL TO INSPECT | 2024-04-15 → 2024-04-18 A (+3d) | 2024-04-16 → 2024-04-19 A (+3d) |  | 0% → 100% | -95d → none |  |
| 1-9991 | SCL INSPECTION | 2024-04-17 → 2024-04-22 A (+5d) | 2024-04-17 → 2024-04-22 A (+5d) |  | 0% → 100% | -95d → none |  |
| 1-9996 | NOTIFY SCL TO COMMISION | 2024-04-18 → 2024-04-23 A (+5d) | 2024-04-18 → 2024-04-23 A (+5d) |  | 0% → 100% | -95d → none |  |
| 1-10001 | 30 DAY WAIT FOR SCL TO COMMISION | 2024-04-19 → 2024-04-24 A (+5d) | 2024-05-17 → 2024-05-22 A (+5d) |  | 0% → 100% | -95d → none |  |
| 1-10006 | COMMISION SERVICE | 2024-05-20 → 2024-05-23 A (+3d) | 2024-05-20 → 2024-05-23 A (+3d) |  | 0% → 100% | -95d → none |  |
| 17 | **STATIONS** |  | 2024-06-12 → 2024-09-16 (+96d) |  |  |  |  |
| 1 | **SPRING AND 3RD EB STATION** |  | 2024-04-04 → 2024-09-06 (+155d) |  |  |  |  |
| 1-1097 | INST TEC PYLON, SPRING & 3RD EB STATION | 2024-04-02 → 2024-04-26 A (+24d) | 2024-04-03 → 2024-04-29 A (+26d) |  | 0% → 100% | -108d → none | 1-1096 → 1-1096, 2-1652 SS |
| 1-1098 | INST AMENITIES, SPRING & 3RD EB STATION | 2024-04-04 → 2024-07-15 A (+102d) | 2024-04-04 → 2024-09-06 (+155d) | 1d → 30d |  | -102d → -179d |  |
| 2 | **SPRING AND 4TH EB** |  | 2024-04-08 → 2024-09-06 (+151d) |  |  |  |  |
| 1-1101 | INST TEC PYLON, SPRING AND 4TH EB | 2024-04-04 → 2024-04-30 A (+26d) | 2024-04-05 → 2024-05-01 A (+26d) |  | 0% → 100% | -108d → none | 1-1100, 1-1097 → 1-1100, 1-1097, 1-1097 FF |
| 1-1102 | INST AMENITIES, SPRING AND 4TH EB | 2024-04-08 → 2024-07-15 A (+98d) | 2024-04-08 → 2024-09-06 (+151d) | 1d → 30d |  | -103d → -179d | 1-1101, 1-1098 → 1-1101, 1-1098 SS |
| 3 | **SPRING AND 8TH EB** |  | 2024-04-10 → 2024-09-06 (+149d) |  |  |  |  |
| 1-1105 | INST TEC PYLON, SPRING AND 8TH EB | 2024-04-08 → 2024-05-02 A (+24d) | 2024-04-09 → 2024-05-03 A (+24d) |  | 0% → 100% | -108d → none |  |
| 1-1106 | INST AMENITIES, SPRING AND 8TH EB | 2024-04-10 → 2024-07-15 A (+96d) | 2024-04-10 → 2024-09-06 (+149d) | 1d → 30d |  | -104d → -179d | 1-1105 → 1-1105, 1-1102 SS |
| 4 | **1ST AVE** |  | 2024-04-12 → 2024-09-06 (+147d) |  |  |  |  |
| 1-1109 | INST TEC PYLON, 1ST AVE | 2024-04-10 → 2024-05-06 A (+26d) | 2024-04-11 → 2024-05-07 A (+26d) |  | 0% → 100% | -108d → none |  |
| 1-1110 | INST AMENITIES, 1ST AVE | 2024-04-12 → 2024-07-15 A (+94d) | 2024-04-12 → 2024-09-06 (+147d) | 1d → 30d |  | -106d → -179d | 1-1109, 1-1102 → 1-1109, 1-1102 SS |
| 5 | **MADISON AND 3RD WB** |  | 2024-04-16 → 2024-09-06 (+143d) |  |  |  |  |
| 1-1113 | INST TEC PYLON, MAD AND 3RD WB | 2024-04-12 → 2024-05-08 A (+26d) | 2024-04-15 → 2024-05-09 A (+24d) |  | 0% → 100% | -108d → none |  |
| 1-1114 | INST AMENITIES, MAD AND 3RD WB | 2024-04-16 → 2024-07-15 A (+90d) | 2024-04-16 → 2024-09-06 (+143d) | 1d → 30d |  | -107d → -179d | 1-1113, 1-1106, 1-1110 → 1-1113, 1-1106 SS, 1-1110 SS |
| 6 | **MADISON AND 5TH WB** |  | 2024-04-18 → 2024-09-06 (+141d) |  |  |  |  |
| 1-1117 | INST TEC PYLON, MAD AND 5TH | 2024-04-16 → 2024-05-10 A (+24d) | 2024-04-17 → 2024-05-13 A (+26d) |  | 0% → 100% | -108d → none | 1-1116, 1-1109, 1-1113 → 1-1116, 1-1113 |

| ID | Task | Start | Finish | Duration | Complete | Total float | Predecessors | Other |
| --- | --- | --- | --- | --- | --- | --- | --- | --- |
| 1-1118 | INST AMENITIES, MAD AND 5TH | 2024-04-18 → 2024-07-15 A (+88d) | 2024-04-18 → 2024-09-06 (+141d) | 1d → 30d |  | -108d → -179d | 1-1117, 1-1114 → 1-1117, 1-1114 SS |  |
| 7 | **MADISON AND 8TH WB** |  | 2024-04-05 → 2024-09-11 (+159d) |  |  |  |  |  |
| 1-1122 | INST AMENITIES, MAD AND 8TH WB | 2024-04-02 → 2024-07-15 A (+104d) | 2024-04-02 → 2024-09-06 (+157d) | 1d → 30d |  | -111d → -179d | 1-1121 → 1-1121, 1-1118 SS |  |
| 1-1123 | INST HANDRAIL, MAD AND 8TH WB | 2024-04-03 → 2024-09-09 (+159d) | 2024-04-05 → 2024-09-11 (+159d) |  |  | -111d → -176d |  |  |
| 8 | **MADISON AND TERRY** | 2024-04-08 → 2024-04-04 (-4d) | 2024-04-30 → 2024-09-11 (+134d) |  |  |  |  |  |
| 1-1125 | INST SHELTER, MAD AND TERRY | 2024-04-08 → 2024-04-04 A (-4d) | 2024-04-17 → 2024-04-15 A (-2d) |  | 0% → 100% | -111d → none | 1-1090, 1-1123 → 1-1090 |  |
| 1-1126 | INST TEC PYLON, MAD AND TERRY | 2024-04-18 → 2024-05-14 A (+26d) | 2024-04-23 → 2024-05-17 A (+24d) |  | 0% → 100% | -111d → none | 1-1125 → 1-1125, 1-1117 |  |
| 1-1127 | INST AMENITIES, MAD AND TERRY | 2024-04-24 → 2024-07-15 A (+82d) | 2024-04-25 → 2024-09-06 (+134d) | 2d → 30d |  | -111d → -179d | 1-1126, 1-1118 → 1-1126, 1-1118 SS, 1-1122 SS |  |
| 1-1128 | INST HANDRAIL, MAD AND TERRY | 2024-04-26 → 2024-09-09 (+136d) | 2024-04-30 → 2024-09-11 (+134d) |  |  | -111d → -179d |  |  |
| 9 | **MADISON AND BOYLSTON** | 2024-05-01 → 2024-04-04 (-27d) | 2024-06-12 → 2024-09-16 (+96d) |  |  |  |  |  |
| 1-1130 | INST SHELTER, MAD AND BOYLSTON | 2024-05-01 → 2024-04-04 A (-27d) | 2024-05-22 → 2024-04-25 A (-27d) |  | 0% → 100% | -111d → none | 1-1093, 1-1128 → 1-1093 |  |
| 1-1131 | INST TEC PYLON, MAD AND BOYLSTON | 2024-05-23 → 2024-05-20 A (-3d) | 2024-05-31 → 2024-05-28 A (-3d) |  | 0% → 100% | -111d → none | 1-1130 → 1-1130, 1-1126 |  |
| 1-1132 | INST AMENITIES, MAD AND BOYLSTON | 2024-06-03 → 2024-07-15 A (+42d) | 2024-06-04 → 2024-09-06 (+94d) | 2d → 30d |  | -111d → -179d | 1-1131 → 1-1131, 1-1127 SS |  |
| 1-1133 | INST HANDRAIL, MAD AND BOYLSTON | 2024-06-05 → 2024-09-09 (+96d) | 2024-06-12 → 2024-09-16 (+96d) |  |  | -111d → -179d | 1-1132 → 1-1132, 1-1128 SS |  |
| 5 | **ZONE 2 - BROADWAY TO 15TH** |  | 2024-08-01 → 2024-10-11 (+71d) |  |  |  |  |  |
| 8 | **SIDEWALKS** |  | 2024-07-29 → 2024-10-11 (+74d) |  |  |  |  |  |
| 12 | **BROADWAY TO 11TH SOUTH SIDE** |  | 2024-04-24 → 2024-10-11 (+170d) |  |  |  |  |  |
| 2-2056 | DSC 537 Pole 40W-137-1 Tunnel Obstruction |  | 2024-04-16 → 2023-07-07 A (-284d) |  | 0% → 100% | -142d → none |  |  |
| 2-1708 | Broadway NWC | 2024-04-17 → 2024-04-02 A (-15d) | 2024-04-23 A | 5d → 16d | 0% → 100% | -76d → none | 2-1673 → 2-1693 | was named Broadway NEC |
| 2-1673 | GRADE SIDEWALK AFTER TUNNEL REMOVAL | 2024-04-17 A | 2024-04-17 A |  | 0% → 100% | -76d → none |  |  |
| 2-1698 | 11th NWC | 2024-04-17 A | 2024-04-23 A |  | 0% → 100% | 114d → none |  |  |
| 2-1703 | Broadway SEC | 2024-04-17 A | 2024-04-23 A |  | 0% → 100% | -76d → none | 2-1673 → 2-1673, 2-1698 SS |  |
| 2-1678 | SIDEWALKS AFTER TUNNEL REMOVAL | 2024-04-24 → 2024-09-30 (+159d) | 2024-04-24 → 2024-10-11 (+170d) | 0d → 10d |  | -76d → -198d | 2-1673, 2-1363, 2-7140, 2-1693, 2-1708, 2-1703 → 2-1673, 2-1363, 2-7140, 2-1693, 2-1708, 2-1703, 2-2061 | was named SIDEWALS AFTER TUNNEL REMOVAL; resources MBRT NEW → MBRT NEW [80 h] |
| 14 | **12TH TO 13TH SOUTH SIDE** |  | 2024-04-03 → 2024-06-06 (+64d) |  |  |  |  |  |
| 2-1456 | Demo & INST WOOD RAMP, 12TH TO 13TH SOUTH SIDE | 2024-04-02 → 2024-05-28 A (+56d) | 2024-04-03 → 2024-06-06 A (+64d) | 2d → 8d | 0% → 100% | -77d → none |  | was named INST WOOD RAMP, 12TH TO 13TH SOUTH SIDE |
| 15 | **13TH TO 14TH SOUTH SIDE** |  | 2024-04-16 → 2024-07-26 (+101d) |  |  |  |  |  |
| 2-1461 | INST CONDUIT, 13TH TO 14TH SOUTH SIDE | 2024-01-02 A → 2024-01-04 A (+2d) | 2024-04-05 → 2024-01-05 A (-91d) |  | 0% → 100% | -142d → none |  |  |
| 2-1462 | GRADE SIDEWALK, 13TH TO 14TH SOUTH SIDE | 2024-01-17 A → 2024-01-08 A (-9d) | 2024-04-05 → 2024-01-09 A (-87d) |  | 0% → 100% | -142d → none |  |  |
| 2-1463 | SIDEWALK, 13TH TO 14TH SOUTH SIDE | 2024-01-23 A → 2024-01-10 A (-13d) | 2024-04-16 → 2024-01-12 A (-95d) |  | 0% → 100% | -142d → none |  |  |
| DSC-721 | DSC 721 13th to 14th South Side Duct Bank conflict with Conduit |  | 2024-04-05 A |  | 20% → 100% | -142d → none |  |  |
| DSC-723 | DSC 723 13th to 14th south side unknown cdf |  | 2024-04-05 A |  | 20% → 100% | -142d → none |  |  |
| DSC-746 | 13th SWC | 2024-04-08 → 2024-07-02 A (+85d) | 2024-04-12 → 2024-07-26 A (+105d) | 5d → 19d | 0% → 100% | -76d → none | DSC-723, DSC-721 → DSC-723, DSC-721, 2-1463 FF |  |
| 16 | **14TH TO 15TH SOUTH SIDE** |  | 2024-04-16 → 2024-07-26 (+101d) |  |  |  |  |  |
| DSC-735 | DSC 735 SEC 14th unknown concrete obstruction |  | 2024-04-05 A |  | 20% → 100% | -142d → none |  |  |
| DSC-736 | DSC 736 SEC 14th unknown utlities in conflict with the pedestal |  | 2024-04-05 A |  | 20% → 100% | -142d → none |  |  |
| 2-1466 | TRENCH CONDUIT, 14TH TO 15TH SOUTH SIDE | 2024-04-02 A | 2024-04-02 A |  | 0% → 100% | -138d → none |  |  |
| 2-1467 | INST CONDUIT, 14TH TO 15TH SOUTH SIDE | 2024-04-08 A | 2024-04-08 A |  | 0% → 100% | -142d → none |  |  |
| 2-1468 | GRADE SIDEWALK, 14TH TO 15TH SOUTH SIDE | 2024-04-09 → 2024-07-19 A (+101d) | 2024-04-10 → 2024-07-22 A (+103d) |  | 0% → 100% | -142d → none |  |  |
| 2-1469 | F/P CURB RAMPS, 14TH TO 15TH SOUTH SIDE | 2024-04-11 → 2024-07-23 A (+103d) | 2024-04-11 → 2024-07-23 A (+103d) |  | 0% → 100% | -142d → none |  |  |
| 2-1470 | SIDEWALK, 14TH TO 15TH SOUTH SIDE | 2024-04-12 → 2024-07-24 A (+103d) | 2024-04-16 → 2024-07-26 A (+101d) |  | 0% → 100% | -142d → none | 2-1469 → 2-1469, 2-1463 FF, DSC-741 FF |  |
| 20 | **13TH TO 14TH NORTH SIDE** |  | 2024-04-19 → 2024-07-26 (+98d) |  |  |  |  |  |
| DSC-741 | 13th NWC | 2024-04-15 → 2024-07-02 A (+78d) | 2024-04-19 → 2024-07-26 A (+98d) | 5d → 19d | 0% → 100% | -76d → none | DSC-746, 2-1495 → DSC-746 FF, 2-1495, 2-1463 FF |  |
| 25 | **12TH MADISON TO PIKE SOUTH EAST SIDE** |  | 2024-04-25 → 2024-06-12 (+48d) |  |  |  |  |  |
| 2-1515 | GRADE SIDEWALK, 12TH MAD TO PIKE SOUTH EAST SIDE | 2024-04-02 → 2024-06-10 A (+69d) | 2024-04-02 → 2024-06-10 A (+69d) |  | 0% → 100% | -63d → none |  |  |
| 2-1516 | SIDEWALK, 12TH MAD TO PIKE SOUTH EAST SIDE | 2024-04-24 → 2024-06-11 A (+48d) | 2024-04-25 → 2024-06-12 A (+48d) |  | 0% → 100% | -78d → none | 2-1515, 1-0650, DSC-741 → 2-1515, 1-0650 |  |
| 26 | **14TH AND EAST PIKE** |  | 2024-07-29 → 2024-10-11 (+74d) |  |  |  |  |  |
| 2-1688 | DELAY AWAITING ART INSTALLATION / INSTALL ART | 2024-03-20 A → 2024-05-02 A (+43d) | 2024-04-05 → 2024-09-13 (+161d) | 0d → 76d | 0% → 55% | -124d → -198d | 2-1523 → 2-1523, 2-1015, 2-1025 | was named DELAY AWAITING DC FOR ART FOUNATION; resources MBRT NEW → MBRT NEW [608 h] |
| 2-1524 | COMPLETE 14th & E. Pike CONCRETE WORK After Art Install | 2024-05-06 → 2024-09-16 (+133d) | 2024-07-29 → 2024-10-11 (+74d) | 60d → 20d |  | -144d → -198d |  | was named ART FOUNDATIONS & INSTALL, 14TH AND EAST PIKE; constraint start on or after 2024-05-06 → none |
| 9 | **MILLING AND PAVING** |  | 2024-04-09 → 2024-05-10 (+31d) |  |  |  |  |  |
| 2-1526 | MILL ZONE 2, MILLING AND PAVING | 2024-04-02 A | 2024-04-03 A |  | 0% → 100% | -110d → none |  |  |
| 2-1651 | HOLD FOR WEATHER - PAVING | 2024-04-02 A | 2024-04-02 A |  | 0% → 100% | -110d → none |  | constraint start on or after 2024-04-01 → none |
| 2-1527 | PREP FOR PAVING, MILLING AND PAVING | 2024-04-04 A | 2024-04-05 A |  | 0% → 100% | -110d → none |  |  |
| 2-1528 | PAVE ZONE 2, MILLING AND PAVING | 2024-04-08 A | 2024-04-09 → 2024-05-10 A (+31d) | 2d → 25d | 0% → 100% | -110d → none |  |  |
| 10 | **MEDIAN STATION PLATFORMS** |  | 2024-04-19 → 2024-04-17 (-2d) |  |  |  |  |  |
| 1 | **MADISON AND EAST UNION STREET** |  | 2024-04-19 → 2024-04-17 (-2d) |  |  |  |  |  |
| 2-1534 | STATION FOUNDATIONS, MAD & EAST UNION STREET |  | 2024-04-05 A |  | 0% → 100% | -94d → none |  |  |
| 2-1535 | STATION NOSING, MAD & EAST UNION STREET | 2024-04-08 A | 2024-04-09 A |  | 0% → 100% | -94d → none |  |  |
| 2-1536 | GRADE FOR CONCRETE, MAD & EAST UNION STREET | 2024-04-10 A | 2024-04-15 → 2024-04-12 A (-3d) | 4d → 3d | 0% → 100% | -94d → none |  |  |
| 2-1537 | STATION SIDEWALK, MAD & EAST UNION STREET | 2024-04-16 → 2024-04-15 A (-1d) | 2024-04-19 → 2024-04-17 A (-2d) | 4d → 3d | 0% → 100% | -94d → none |  |  |
| 11 | **STRIPING AND SIGNS** | 2024-04-10 → 2024-05-11 (+31d) | 2024-06-12 → 2024-07-26 (+44d) |  |  |  |  |  |
| 2-1539 | CURE TIME, STRIPING AND SIGNS | 2024-04-10 → 2024-05-11 A (+31d) | 2024-04-30 → 2024-06-04 A (+35d) | 21d → 25d | 0% → 100% | -163d → none |  |  |
| 2-1540 | CHANNELIZATION, STRIPING AND SIGNS | 2024-05-01 → 2024-06-17 A (+47d) | 2024-05-21 → 2024-07-26 A (+66d) | 15d → 30d | 0% → 100% | -111d → none | 2-1539 → 2-1539, 2-1544 |  |
| 13 | **SIGNALS** |  | 2024-06-12 → 2024-06-06 (-6d) |  |  |  |  |  |
| 1 | **MADISON AND BROADWAY** |  | 2024-06-12 → 2024-06-06 (-6d) |  |  |  |  |  |
| 2-1817 | DSC 702 BROADWAY UNKNOWN UTILITES NWC | 2024-02-14 A → 2024-02-12 A (-2d) | 2024-04-05 A |  | 90% → 100% | -113d → none |  |  |
| 2-1827 | COMPLETE UNDERGROUND NWC BROADWAY | 2024-04-08 A | 2024-04-08 A |  | 0% → 100% | -110d → none |  |  |
| 2-2079 | SCL INSPECTION | 2024-04-08 A | 2024-04-08 A |  | 0% → 100% | -113d → none |  |  |
| 2-1553 | COMMISION NOTIFICATION | 2024-04-09 A | 2024-04-09 A |  | 0% → 100% | -113d → none |  |  |
| 2-1554 | 30 DAY WAIT FOR SCL TO COMMISION | 2024-03-11 A → 2024-04-10 A (+30d) | 2024-04-09 → 2024-05-21 A (+42d) | 21d → 30d | 0% → 100% | -113d → none | 2-1553 FF, 2-2039 → 2-1553 FF, 2-2039, 2-1553 |  |
| 2-1555 | COMM SERVICE, MAD AND BROADWAY | 2024-04-10 → 2024-05-22 A (+42d) | 2024-04-10 → 2024-05-22 A (+42d) |  | 0% → 100% | -113d → none |  |  |

| ID | Task | Start | Finish | Duration | Complete | Total float | Predecessors |
| --- | --- | --- | --- | --- | --- | --- | --- |
| 2-1546 | INST SIGNAL CABINET, MAD & BROADWAY | 2024-05-30 → 2024-05-23 A (-7d) | 2024-05-30 → 2024-05-23 A (-7d) |  | 0% → 100% | -147d → none | 2-1477, 2-1641, 2-1555, 2-1817, 2-1613, 2-1827, 2-1626, 3-2473 → 2-1477, 2-1641, 2-1555, 2-1817, 2-1827 |
| 2-1548 | INST MAGNOMETETERS, MAD & BROADWAY | 2024-05-31 → 2024-05-24 A (-7d) | 2024-05-31 → 2024-05-24 A (-7d) |  | 0% → 100% | -147d → none |  |
| 2-1549 | INST MAST ARMS, MAD AND BROADWAY | 2024-06-03 → 2024-05-28 A (-6d) | 2024-06-03 → 2024-05-28 A (-6d) |  | 0% → 100% | -147d → none |  |
| 2-1550 | INST SIGNAL GEAR, MAD & BROADWAY | 2024-06-04 → 2024-05-29 A (-6d) | 2024-06-04 → 2024-05-29 A (-6d) |  | 0% → 100% | -136d → none |  |
| 2-1551 | INST PEDISTALS, MAD AND BROADWAY | 2024-06-05 → 2024-05-30 A (-6d) | 2024-06-05 → 2024-05-30 A (-6d) |  | 0% → 100% | -136d → none |  |
| 2-1552 | INST WIRING, MAD AND BROADWAY | 2024-06-06 → 2024-05-31 A (-6d) | 2024-06-07 → 2024-06-03 A (-4d) |  | 0% → 100% | -136d → none |  |
| 2-1556 | NOTIFY SDOT, MAD AND BROADWAY | 2024-06-10 → 2024-06-04 A (-6d) | 2024-06-10 → 2024-06-04 A (-6d) |  | 0% → 100% | -121d → none |  |
| 2-1557 | SDOT INSPECTION, MAD AND BROADWAY | 2024-06-11 → 2024-06-05 A (-6d) | 2024-06-11 → 2024-06-05 A (-6d) |  | 0% → 100% | -121d → none |  |
| 2-1558 | COMM SIGNAL, MAD AND BROADWAY | 2024-06-12 → 2024-06-06 A (-6d) | 2024-06-12 → 2024-06-06 A (-6d) |  | 0% → 100% | -121d → none |  |
| 5 | **MADISON AND 13TH** |  | 2024-04-23 → 2024-04-30 (+7d) |  |  |  |  |
| 2-1605 | INST PPB POST, MAD AND 13TH | 2024-04-02 A | 2024-04-04 A |  | 0% → 100% | -147d → none |  |
| 2-1606 | INST PEDISTAL, MAD AND 13TH | 2024-04-05 A | 2024-04-09 A |  | 0% → 100% | -147d → none |  |
| 2-1607 | INST WIRING, MAD AND 13TH | 2024-04-10 A | 2024-04-12 A |  | 0% → 100% | -147d → none |  |
| 2-1611 | NOTIFY SDOT, MAD AND 13TH | 2024-04-15 A | 2024-04-15 A |  | 0% → 100% | -147d → none |  |
| 2-1612 | SDOT INSPECTION, MAD AND 13TH | 2024-04-16 A | 2024-04-19 A |  | 0% → 100% | -147d → none |  |
| 2-1613 | COMM SIGNAL, MAD AND 13TH | 2024-04-22 A | 2024-04-23 A |  | 0% → 100% | -147d → none |  |
| 2-1615 | INST SIGNAL CABINET, MAD AND 14TH | 2024-04-24 A | 2024-04-24 A |  | 0% → 100% | -147d → none | 2-1504, 2-1623, 2-1470, 2-1613 → 2-1504, 2-1623, 2-1613 |
| 2-1617 | INST MAST ARMS, MAD AND 14TH | 2024-04-25 A | 2024-04-25 A |  | 0% → 100% | -147d → none |  |
| 2-1618 | INST PPB POST, MAD AND 14TH | 2024-04-26 A | 2024-04-29 A |  | 0% → 100% | -147d → none |  |
| 2-1619 | INST PEDISTAL, MAD AND 14TH | 2024-04-30 A | 2024-05-01 A |  | 0% → 100% | -147d → none |  |
| 2-1620 | INST WIRING, MAD AND 14TH | 2024-05-02 A | 2024-05-03 A |  | 0% → 100% | -147d → none |  |
| 2-1624 | NOTIFY SDOT, MAD AND 14TH | 2024-05-06 A | 2024-05-06 A |  | 0% → 100% | -147d → none |  |
| 2-1625 | SDOT INSPECTION, MAD AND 14TH | 2024-05-07 A | 2024-05-13 A |  | 0% → 100% | -147d → none |  |
| 2-1626 | COMM SIGNAL, MAD AND 14TH | 2024-05-14 A | 2024-05-14 A |  | 0% → 100% | -147d → none | 2-1625 → 2-1625, 2-1713 |
| 7 | **MADISON AND 15TH** |  | 2024-04-30 → 2024-05-03 (+3d) |  |  |  |  |
| 2-1629 | INST SERVICE CABINET, MAD & 15TH |  |  |  |  |  | 2-1508, 3-2115 → 2-1508 |
| 2-7079 | SCL INSPECTION | 2024-04-02 A | 2024-04-02 A |  | 0% → 100% | -130d → none |  |
| 2-1635 | COMMISION NOTIFICATION | 2024-04-03 A | 2024-04-03 A |  | 0% → 100% | -130d → none |  |
| 2-1636 | 30 DAY WAIT FOR SCL TO COMMISION | 2024-04-03 A | 2024-04-05 A |  | 0% → 100% | -130d → none |  |
| 2-1637 | COMM SERVICE, MAD AND 15TH | 2024-04-08 A | 2024-04-08 A |  | 0% → 100% | -130d → none |  |
| 2-1628 | INST SIGNAL CABINET, MAD AND 15TH | 2024-04-17 → 2024-04-22 A (+5d) | 2024-04-17 → 2024-04-22 A (+5d) |  | 0% → 100% | -136d → none | 2-1637, 3-2116, 2-1607, 3-2389 → 2-1637, 3-2116, 2-1607 |
| 2-1630 | INST MAGNOMETERS, MAD AND 15TH | 2024-04-18 → 2024-04-23 A (+5d) | 2024-04-18 → 2024-04-23 A (+5d) |  | 0% → 100% | -136d → none |  |
| 2-1631 | INST MAST ARMS, MAD AND 15TH | 2024-04-19 → 2024-04-24 A (+5d) | 2024-04-19 → 2024-04-24 A (+5d) |  | 0% → 100% | -136d → none |  |
| 2-1632 | INST PPB POST, MAD AND 15TH | 2024-04-22 → 2024-04-25 A (+3d) | 2024-04-22 → 2024-04-25 A (+3d) |  | 0% → 100% | -136d → none |  |
| 2-1633 | INST PEDISTAL, MAD AND 15TH | 2024-04-23 → 2024-04-26 A (+3d) | 2024-04-23 → 2024-04-26 A (+3d) |  | 0% → 100% | -136d → none |  |
| 2-1634 | INST WIRING, MAD AND 15TH | 2024-04-24 → 2024-04-29 A (+5d) | 2024-04-25 → 2024-04-30 A (+5d) |  | 0% → 100% | -136d → none |  |
| 2-1638 | NOTIFY SDOT, MAD AND 15TH | 2024-04-26 → 2024-05-01 A (+5d) | 2024-04-26 → 2024-05-01 A (+5d) |  | 0% → 100% | -136d → none |  |
| 2-1639 | SDOT INSPECTION, MAD AND 15TH | 2024-04-29 → 2024-05-02 A (+3d) | 2024-04-29 → 2024-05-02 A (+3d) |  | 0% → 100% | -136d → none |  |
| 2-1640 | COMM SIGNAL, MAD AND 15TH | 2024-04-30 → 2024-05-03 A (+3d) | 2024-04-30 → 2024-05-03 A (+3d) |  | 0% → 100% | -136d → none |  |
| 12 | **LANDSCAPING** |  | 2024-05-17 → 2024-05-15 (-2d) |  |  |  |  |
| 2-1543 | INST POUROUS PAVMENT, POROUS PAVMENT |  | 2024-04-15 A |  | 0% → 100% | -70d → none |  |
| 2-1643 | INSTALL TREES, LANDSCAPING & SHRUBS | 2024-04-22 → 2024-04-18 A (-4d) | 2024-05-17 → 2024-05-15 A (-2d) |  | 0% → 100% | -94d → none |  |
| 14 | **ITS WIRING** | 2024-05-01 → 2024-05-06 (+5d) | 2024-05-07 → 2024-05-10 (+3d) |  |  |  |  |
| 2-1642 | INST WIRING, ITS, ITS WIRING | 2024-05-01 → 2024-05-06 A (+5d) | 2024-05-07 → 2024-05-10 A (+3d) |  | 0% → 100% | -86d → none |  |
| 15 | **LIGHTING** |  | 2024-07-26 → 2024-07-17 (-9d) |  |  |  |  |
| 1 | **BROADWAY (SCHEMATIC 12)** | 2024-06-04 → 2024-05-29 (-6d) | 2024-07-26 → 2024-07-17 (-9d) |  |  |  |  |
| 2-1645 | INST POLES, BROADWAY | 2024-06-04 → 2024-05-29 A (-6d) | 2024-06-24 → 2024-06-13 A (-11d) | 15d → 12d | 0% → 100% | -147d → none |  |
| 2-1646 | INST WIRING, BROADWAY | 2024-06-25 → 2024-06-14 A (-11d) | 2024-07-08 → 2024-06-27 A (-11d) |  | 0% → 100% | -147d → none |  |
| 2-1647 | NOTIFY SCL, BROADWAY | 2024-07-09 → 2024-06-28 A (-11d) | 2024-07-09 → 2024-06-28 A (-11d) |  | 0% → 100% | -147d → none |  |
| 2-1648 | SCL Lighting Final Inspection, BROADWAY | 2024-07-09 → 2024-06-28 A (-11d) | 2024-07-10 → 2024-07-01 A (-9d) |  | 0% → 100% | -147d → none |  |
| 2-1649 | COMM SERVICE,BROADWAY | 2024-07-11 → 2024-07-02 A (-9d) | 2024-07-11 → 2024-07-02 A (-9d) |  | 0% → 100% | -147d → none |  |
| 2-2127 | NOTIFY SCL, BROADWAY | 2024-07-12 → 2024-07-03 A (-9d) | 2024-07-12 → 2024-07-03 A (-9d) |  | 0% → 100% | -147d → none |  |
| 2-2132 | SCL Commissioning Inspection, BROADWAY | 2024-07-12 → 2024-07-03 A (-9d) | 2024-07-25 → 2024-07-16 A (-9d) |  | 0% → 100% | -147d → none |  |
| 2-2137 | COMM LIGHTING, BROADWAY | 2024-07-26 → 2024-07-17 A (-9d) | 2024-07-26 → 2024-07-17 A (-9d) |  | 0% → 100% | -147d → none |  |
| 3 | **11TH (SCHEMATIC 14)** |  | 2024-04-15 → 2024-04-03 (-12d) |  |  |  |  |
| 2-2162 | SCL Commissioning Inspection, 11TH - DELAY |  | 2024-04-12 → 2024-04-02 A (-10d) | 10d → 11d | 0% → 100% | -92d → none |  |
| 2-2167 | COMM LIGHTING, 11TH | 2024-04-15 → 2024-04-03 A (-12d) | 2024-04-15 → 2024-04-03 A (-12d) |  | 0% → 100% | -92d → none |  |
| 4 | **12TH (SCHEMATIC 15)** |  | 2024-03-18 → 2024-04-03 (+16d) |  |  |  |  |
| 2-2182 | COMM LIGHTING, 12TH |  | 2024-03-18 A → 2024-04-03 A (+16d) |  |  |  |  |
| 5 | **13TH (SCHEMATIC 16)** |  | 2024-05-30 → 2024-05-09 (-21d) |  |  |  |  |
| 2-2077 | INST POLES, 13TH | 2024-04-02 A | 2024-04-25 → 2024-04-08 A (-17d) | 18d → 5d | 0% → 100% | -124d → none |  |
| 2-2082 | INST WIRING, 13TH | 2024-04-26 → 2024-04-09 A (-17d) | 2024-05-09 → 2024-04-19 A (-20d) | 10d → 9d | 0% → 100% | -124d → none | 2-2077, 2-1607 → 2-2077, 2-1607 FF |
| 2-2087 | NOTIFY SCL, 13TH | 2024-05-10 → 2024-04-22 A (-18d) | 2024-05-10 → 2024-04-22 A (-18d) |  | 0% → 100% | -124d → none |  |
| 2-2092 | SCL Lighting Final Inspection, 13TH | 2024-05-10 → 2024-04-22 A (-18d) | 2024-05-13 → 2024-04-23 A (-20d) |  | 0% → 100% | -124d → none |  |
| 2-2097 | COMM SERVICE, 13TH | 2024-05-14 → 2024-04-24 A (-20d) | 2024-05-14 → 2024-04-24 A (-20d) |  | 0% → 100% | -124d → none |  |
| 2-2187 | NOTIFY SCL, 13TH | 2024-05-15 → 2024-04-25 A (-20d) | 2024-05-15 → 2024-04-25 A (-20d) |  | 0% → 100% | -124d → none |  |
| 2-2192 | SCL Commissioning Inspection, 13TH | 2024-05-15 → 2024-04-25 A (-20d) | 2024-05-29 → 2024-05-08 A (-21d) |  | 0% → 100% | -124d → none |  |
| 2-2197 | COMM LIGHTING, 13TH | 2024-05-30 → 2024-05-09 A (-21d) | 2024-05-30 → 2024-05-09 A (-21d) |  | 0% → 100% | -124d → none |  |
| 2-2102 | INST POLES, 14TH | 2024-04-25 A | 2024-04-25 A |  | 0% → 100% | -127d → none |  |
| 2-2107 | INST WIRING, 14TH | 2024-05-06 A | 2024-05-17 A |  | 0% → 100% | -133d → none |  |

| ID | Task | Start | Finish | Complete | Total float | Predecessors |
| --- | --- | --- | --- | --- | --- | --- |
| 2-2112 | NOTIFY SCL, 14TH | 2024-05-20 A | 2024-05-20 A | 0% → 100% | -133d → none |  |
| 2-2117 | SCL Lighting Final Inspection, 14TH | 2024-05-20 A | 2024-05-21 A | 0% → 100% | -133d → none |  |
| 2-2122 | COMM SERVICE, 14TH | 2024-05-22 A | 2024-05-22 A | 0% → 100% | -133d → none |  |
| 2-2202 | NOTIFY SCL, 14TH | 2024-05-23 A | 2024-05-23 A | 0% → 100% | -133d → none |  |
| 2-2207 | SCL Commissioning Inspection, 14TH | 2024-05-23 A | 2024-06-06 A | 0% → 100% | -133d → none |  |
| 2-2212 | COMM LIGHTING, 14TH | 2024-06-07 A | 2024-06-07 A | 0% → 100% | -133d → none |  |
| 19 | **WORK TO COMPLETE AFTER SIGNAL/LIGHTING COMMISSIONING** |  | 2024-08-01 → 2024-07-26 (-6d) |  |  |  |
| 27 | **BROADWAY** | 2024-06-10 → 2024-06-04 (-6d) | 2024-07-31 → 2024-07-22 (-9d) |  |  |  |
| 2-2222 | KCM RELOCATE OCS LINE | 2024-06-10 → 2024-06-04 A (-6d) | 2024-06-21 → 2024-06-17 A (-4d) | 0% → 100% | -122d → none |  |
| 2-2232 | REMOVE POLES | 2024-06-13 → 2024-06-07 A (-6d) | 2024-06-14 → 2024-06-10 A (-4d) | 0% → 100% | -121d → none |  |
| 2-2237 | REMOVE CABINET | 2024-06-17 → 2024-06-11 A (-6d) | 2024-06-17 → 2024-06-11 A (-6d) | 0% → 100% | -121d → none |  |
| 2-2242 | REMOVE FOUNDATIONS | 2024-06-18 → 2024-06-12 A (-6d) | 2024-06-19 → 2024-06-13 A (-6d) | 0% → 100% | -121d → none |  |
| 2-2247 | GRADE SIDEWALK | 2024-06-20 → 2024-06-14 A (-6d) | 2024-06-20 → 2024-06-14 A (-6d) | 0% → 100% | -121d → none |  |
| 2-2252 | CURB RAMP | 2024-06-21 → 2024-06-17 A (-4d) | 2024-06-24 → 2024-06-18 A (-6d) | 0% → 100% | -121d → none |  |
| 2-2227 | REMOVE TEMP LIGHTING | 2024-07-29 → 2024-07-18 A (-11d) | 2024-07-30 → 2024-07-19 A (-11d) | 0% → 100% | -147d → none |  |
| 2-2257 | SIDEWALKS | 2024-07-31 → 2024-07-22 A (-9d) | 2024-07-31 → 2024-07-22 A (-9d) | 0% → 100% | -147d → none |  |
| 1 | **MADISON AND 11TH** | 2024-04-16 → 2024-04-04 (-12d) | 2024-05-13 → 2024-07-05 (+53d) |  |  |  |
| 2-2267 | REMOVE TEMP LIGHTING | 2024-04-16 → 2024-04-04 A (-12d) | 2024-04-17 → 2024-04-05 A (-12d) | 0% → 100% | -92d → none |  |
| 2-2272 | REMOVE POLES | 2024-04-18 → 2024-04-08 A (-10d) | 2024-04-19 → 2024-04-09 A (-10d) | 0% → 100% | -92d → none |  |
| 2-2277 | REMOVE CABINET | 2024-04-22 → 2024-04-10 A (-12d) | 2024-04-22 → 2024-04-10 A (-12d) | 0% → 100% | -92d → none |  |
| 2-2282 | REMOVE FOUNDATIONS 1ST CORNER | 2024-04-23 → 2024-06-17 A (+55d) | 2024-04-23 → 2024-06-17 A (+55d) | 0% → 100% | -92d → none |  |
| 2-2287 | GRADE SIDEWALK 1ST CORNER | 2024-04-24 → 2024-06-18 A (+55d) | 2024-04-24 → 2024-06-18 A (+55d) | 0% → 100% | -92d → none |  |
| 2-2292 | CURB RAMPS 1ST CORNER | 2024-04-25 → 2024-06-19 A (+55d) | 2024-04-26 → 2024-06-20 A (+55d) | 0% → 100% | -92d → none |  |
| 2-2297 | SIDEWALKS 1ST CORNER | 2024-04-29 → 2024-06-21 A (+53d) | 2024-04-29 → 2024-06-21 A (+53d) | 0% → 100% | -92d → none |  |
| 2-2302 | REMOVE FOUNDATIONS 2ND CORNER | 2024-04-30 → 2024-06-24 A (+55d) | 2024-04-30 → 2024-06-24 A (+55d) | 0% → 100% | -92d → none |  |
| 2-2307 | GRADE SIDEWALKS 2ND CORNER | 2024-05-01 → 2024-06-25 A (+55d) | 2024-05-01 → 2024-06-25 A (+55d) | 0% → 100% | -92d → none |  |
| 2-2312 | CURB RAMPS 2ND CORNER | 2024-05-02 → 2024-06-26 A (+55d) | 2024-05-03 → 2024-06-27 A (+55d) | 0% → 100% | -92d → none |  |
| 2-2317 | SIDEWALKS 2ND CORNER | 2024-05-06 → 2024-06-28 A (+53d) | 2024-05-06 → 2024-06-28 A (+53d) | 0% → 100% | -92d → none |  |
| 2-2322 | REMOVE FOUNDATIONS 3RD CORNER | 2024-05-07 → 2024-07-01 A (+55d) | 2024-05-07 → 2024-07-01 A (+55d) | 0% → 100% | -92d → none |  |
| 2-2327 | GRADE SIDEWALKS 3RD CORNER | 2024-05-08 → 2024-07-02 A (+55d) | 2024-05-08 → 2024-07-02 A (+55d) | 0% → 100% | -92d → none |  |
| 2-2332 | CURB RAMPS 3RD CORNER | 2024-05-09 → 2024-07-03 A (+55d) | 2024-05-10 → 2024-07-04 A (+55d) | 0% → 100% | -92d → none |  |
| 2-2337 | SIDEWALKS 3RD CORNER | 2024-05-13 → 2024-07-05 A (+53d) | 2024-05-13 → 2024-07-05 A (+53d) | 0% → 100% | -92d → none |  |
| 2 | **MADISON AND 12TH** |  | 2024-05-14 → 2024-07-26 (+73d) |  |  |  |
| 2-2352 | REMOVE CABINET | 2024-04-02 A | 2024-04-02 A | 0% → 100% | -82d → none |  |
| 2-2362 | GRADE SIDEWALK 1ST CORNER | 2024-04-04 → 2024-06-18 A (+75d) | 2024-04-04 → 2024-06-18 A (+75d) | 0% → 100% | -82d → none |  |
| 2-2367 | CURB RAMPS 1ST CORNER | 2024-04-05 → 2024-06-19 A (+75d) | 2024-04-08 → 2024-06-20 A (+73d) | 0% → 100% | -82d → none | 2-2362 → 2-2362, 2-2337 |
| 2-2372 | SIDEWALKS 1ST CORNER | 2024-04-09 → 2024-06-21 A (+73d) | 2024-04-09 → 2024-06-21 A (+73d) | 0% → 100% | -82d → none |  |
| 2-2377 | REMOVE FOUNDATIONS 2ND CORNER | 2024-04-10 → 2024-06-24 A (+75d) | 2024-04-10 → 2024-06-24 A (+75d) | 0% → 100% | -82d → none |  |
| 2-2382 | GRADE SIDEWALKS 2ND CORNER | 2024-04-11 → 2024-06-25 A (+75d) | 2024-04-11 → 2024-06-25 A (+75d) | 0% → 100% | -82d → none |  |
| 2-2387 | CURB RAMPS 2ND CORNER | 2024-04-12 → 2024-06-26 A (+75d) | 2024-04-15 → 2024-06-28 A (+74d) | 0% → 100% | -82d → none |  |
| 2-2392 | SIDEWALKS 2ND CORNER | 2024-04-16 → 2024-07-01 A (+76d) | 2024-04-16 → 2024-07-01 A (+76d) | 0% → 100% | -82d → none |  |
| 2-2397 | REMOVE FOUNDATIONS 3RD CORNER | 2024-04-17 → 2024-07-02 A (+76d) | 2024-04-17 → 2024-07-02 A (+76d) | 0% → 100% | -82d → none |  |
| 2-2402 | GRADE SIDEWALKS 3RD CORNER | 2024-04-18 → 2024-07-03 A (+76d) | 2024-04-18 → 2024-07-03 A (+76d) | 0% → 100% | -82d → none |  |
| 2-2407 | CURB RAMPS 3RD CORNER | 2024-04-19 → 2024-07-08 A (+80d) | 2024-04-22 → 2024-07-09 A (+78d) | 0% → 100% | -82d → none |  |
| 2-2412 | SIDEWALKS 3RD CORNER | 2024-04-23 → 2024-07-10 A (+78d) | 2024-04-23 → 2024-07-12 A (+80d) | 0% → 100% | -82d → none |  |
| 2-2417 | REMOVE FOUNDATIONS 4TH CORNER | 2024-04-24 → 2024-07-15 A (+82d) | 2024-04-24 → 2024-07-18 A (+85d) | 0% → 100% | -82d → none |  |
| 2-2422 | GRADE SIDEWALKS 4TH CORNER | 2024-04-25 → 2024-07-19 A (+85d) | 2024-04-25 → 2024-07-22 A (+88d) | 0% → 100% | -82d → none |  |
| 2-2427 | CURB RAMPS 4TH CORNER | 2024-04-26 → 2024-07-23 A (+88d) | 2024-04-29 → 2024-07-24 A (+86d) | 0% → 100% | -82d → none |  |
| 2-2432 | SIDEWALKS 4TH CORNER | 2024-05-14 → 2024-07-25 A (+72d) | 2024-05-14 → 2024-07-26 A (+73d) | 0% → 100% | -92d → none | 2-2427, 2-2337 → 2-2427 |
| 2-2357 | REMOVE FOUNDATIONS 1ST CORNER | 2024-04-03 → 2024-07-26 A (+114d) | 2024-04-03 → 2024-07-26 A (+114d) | 0% → 100% | -82d → none |  |
| 3 | **MADISON AND 13TH** |  | 2024-08-01 → 2024-07-26 (-6d) |  |  |  |
| 2-2442 | REMOVE POLES | 2024-04-24 A | 2024-04-25 A | 0% → 100% | -99d → none |  |
| 2-2447 | REMOVE CABINET | 2024-04-26 A | 2024-04-26 A | 0% → 100% | -99d → none |  |
| 2-2437 | REMOVE TEMP LIGHTING | 2024-05-31 → 2024-05-10 A (-21d) | 2024-06-03 → 2024-05-13 A (-21d) | 0% → 100% | -124d → none |  |
| 2-2452 | REMOVE FOUNDATIONS 1ST CORNER | 2024-06-04 → 2024-07-01 A (+27d) | 2024-06-04 → 2024-07-01 A (+27d) | 0% → 100% | -124d → none |  |
| 2-2457 | GRADE SIDEWALK 1ST CORNER | 2024-06-05 → 2024-07-02 A (+27d) | 2024-06-05 → 2024-07-02 A (+27d) | 0% → 100% | -124d → none |  |
| 2-2462 | CURB RAMPS 1ST CORNER | 2024-06-06 → 2024-07-03 A (+27d) | 2024-06-07 → 2024-07-04 A (+27d) | 0% → 100% | -124d → none |  |
| 2-2467 | SIDEWALKS 1ST CORNER | 2024-06-10 → 2024-07-05 A (+25d) | 2024-06-10 → 2024-07-05 A (+25d) | 0% → 100% | -124d → none |  |
| 2-2472 | REMOVE FOUNDATIONS 2ND CORNER | 2024-06-11 → 2024-07-08 A (+27d) | 2024-06-11 → 2024-07-08 A (+27d) | 0% → 100% | -124d → none |  |
| 2-2477 | GRADE SIDEWALKS 2ND CORNER | 2024-06-12 → 2024-07-09 A (+27d) | 2024-06-12 → 2024-07-09 A (+27d) | 0% → 100% | -124d → none |  |
| 2-2482 | CURB RAMPS 2ND CORNER | 2024-06-13 → 2024-07-10 A (+27d) | 2024-06-14 → 2024-07-11 A (+27d) | 0% → 100% | -124d → none |  |
| 2-2487 | SIDEWALKS 2ND CORNER | 2024-06-17 → 2024-07-12 A (+25d) | 2024-06-17 → 2024-07-12 A (+25d) | 0% → 100% | -124d → none |  |
| 2-2492 | REMOVE FOUNDATIONS 3RD CORNER | 2024-06-18 → 2024-07-15 A (+27d) | 2024-06-18 → 2024-07-15 A (+27d) | 0% → 100% | -124d → none |  |
| 2-2497 | GRADE SIDEWALKS 3RD CORNER | 2024-06-19 → 2024-07-16 A (+27d) | 2024-06-19 → 2024-07-16 A (+27d) | 0% → 100% | -124d → none |  |
| 2-2502 | CURB RAMPS 3RD CORNER | 2024-06-20 → 2024-07-17 A (+27d) | 2024-06-21 → 2024-07-18 A (+27d) | 0% → 100% | -124d → none |  |
| 2-2507 | SIDEWALKS 3RD CORNER | 2024-06-24 → 2024-07-19 A (+25d) | 2024-06-24 → 2024-07-19 A (+25d) | 0% → 100% | -124d → none |  |
| 2-2512 | REMOVE FOUNDATIONS 4TH CORNER | 2024-06-25 → 2024-07-22 A (+27d) | 2024-06-25 → 2024-07-22 A (+27d) | 0% → 100% | -124d → none |  |
| 2-2517 | GRADE SIDEWALKS 4TH CORNER | 2024-06-26 → 2024-07-23 A (+27d) | 2024-06-26 → 2024-07-23 A (+27d) | 0% → 100% | -124d → none |  |
| 2-2522 | CURB RAMPS 4TH CORNER | 2024-06-27 → 2024-07-24 A (+27d) | 2024-06-28 → 2024-07-25 A (+27d) | 0% → 100% | -124d → none |  |
| 2-2527 | SIDEWALKS 4TH CORNER | 2024-08-01 → 2024-07-26 A (-6d) | 2024-08-01 → 2024-07-26 A (-6d) | 0% → 100% | -147d → none |  |

| ID | Task | Start | Finish | Duration | Complete | Total float | Predecessors | Other |
| --- | --- | --- | --- | --- | --- | --- | --- | --- |
| 2-2532 | REMOVE TEMP LIGHTING | 2024-06-10 A | 2024-06-11 A |  | 0% → 100% | -133d → none |  |  |
| 2-2537 | REMOVE POLES | 2024-06-12 A | 2024-06-13 A |  | 0% → 100% | -133d → none |  |  |
| 2-2542 | REMOVE CABINET | 2024-06-14 A | 2024-06-14 A |  | 0% → 100% | -133d → none |  |  |
| 2-2547 | REMOVE FOUNDATIONS 1ST CORNER | 2024-06-17 A | 2024-06-17 A |  | 0% → 100% | -133d → none |  |  |
| 2-2552 | GRADE SIDEWALK 1ST CORNER | 2024-06-18 A | 2024-06-18 A |  | 0% → 100% | -133d → none |  |  |
| 2-2557 | CURB RAMPS 1ST CORNER | 2024-06-19 A | 2024-06-20 A |  | 0% → 100% | -133d → none |  |  |
| 2-2562 | SIDEWALKS 1ST CORNER | 2024-06-21 A | 2024-06-21 A |  | 0% → 100% | -133d → none |  |  |
| 2-2567 | REMOVE FOUNDATIONS 2ND CORNER | 2024-06-24 A | 2024-06-24 A |  | 0% → 100% | -133d → none |  |  |
| 2-2572 | GRADE SIDEWALKS 2ND CORNER | 2024-06-25 A | 2024-06-25 A |  | 0% → 100% | -133d → none |  |  |
| 2-2577 | CURB RAMPS 2ND CORNER | 2024-06-26 A | 2024-06-27 A |  | 0% → 100% | -133d → none |  |  |
| 2-2582 | SIDEWALKS 2ND CORNER | 2024-06-28 A | 2024-06-28 A |  | 0% → 100% | -133d → none |  |  |
| 2-2587 | REMOVE FOUNDATIONS 3RD CORNER | 2024-07-01 A | 2024-07-01 A |  | 0% → 100% | -133d → none |  |  |
| 2-2592 | GRADE SIDEWALKS 3RD CORNER | 2024-07-02 A | 2024-07-02 A |  | 0% → 100% | -133d → none |  |  |
| 2-2597 | CURB RAMPS 3RD CORNER | 2024-07-03 A | 2024-07-04 A |  | 0% → 100% | -133d → none |  |  |
| 2-2602 | SIDEWALKS 3RD CORNER | 2024-07-05 A | 2024-07-05 A |  | 0% → 100% | -133d → none |  |  |
| 2-2607 | REMOVE FOUNDATIONS 4TH CORNER | 2024-07-08 A | 2024-07-08 A |  | 0% → 100% | -133d → none |  |  |
| 2-2612 | GRADE SIDEWALKS 4TH CORNER | 2024-07-09 A | 2024-07-09 A |  | 0% → 100% | -133d → none |  |  |
| 2-2617 | CURB RAMPS 4TH CORNER | 2024-07-10 A | 2024-07-11 A |  | 0% → 100% | -133d → none |  |  |
| 2-2622 | SIDEWALKS 4TH CORNER | 2024-07-12 A | 2024-07-12 A |  | 0% → 100% | -133d → none |  |  |
| 5 | **MADISON AND 15TH** | 2024-05-01 → 2024-05-06 (+5d) | 2024-05-06 → 2024-05-09 (+3d) |  |  |  |  |  |
| 2-2627 | REMOVE SIGNAL CABINET | 2024-05-01 → 2024-05-06 A (+5d) | 2024-05-01 → 2024-05-06 A (+5d) |  | 0% → 100% | -85d → none |  |  |
| 2-2637 | REMOVE CABINET FOUNDATION | 2024-05-02 → 2024-05-07 A (+5d) | 2024-05-02 → 2024-05-07 A (+5d) |  | 0% → 100% | -85d → none |  |  |
| 2-2647 | GRADE SIDEWALK | 2024-05-03 → 2024-05-08 A (+5d) | 2024-05-03 → 2024-05-08 A (+5d) |  | 0% → 100% | -85d → none |  |  |
| 2-2657 | POUR SIDEWALK | 2024-05-06 → 2024-05-09 A (+3d) | 2024-05-06 → 2024-05-09 A (+3d) |  | 0% → 100% | -85d → none |  |  |
| 16 | **STATIONS** | 2024-04-22 → 2024-04-26 (+4d) | 2024-05-17 → 2024-09-03 (+109d) |  |  |  |  |  |
| 1 | **MADISON AND EAST UNION ST** | 2024-04-22 → 2024-04-26 (+4d) | 2024-05-17 → 2024-09-03 (+109d) |  |  |  |  |  |
| 2-1652 | INST SHELTER, MAD & EAST UNION ST | 2024-04-22 → 2024-04-26 A (+4d) | 2024-04-29 → 2024-05-03 A (+4d) |  | 0% → 100% | -94d → none | 2-1537 → 2-1537, 1-1130 |  |
| 2-1653 | INST TEC PYLON, MAD & EAST UNION ST | 2024-04-30 → 2024-05-29 A (+29d) | 2024-05-03 → 2024-06-03 A (+31d) |  | 0% → 100% | -94d → none | 2-1652 → 2-1652, 1-1117, 1-1131 |  |
| 2-1654 | INST AMENITIES, MAD & EAST UNION ST | 2024-05-06 → 2024-07-15 A (+70d) | 2024-05-09 → 2024-08-26 (+109d) | 4d → 30d |  | -94d → -173d | 2-1653 → 2-1653, 1-1132 SS |  |
| 2-1655 | INST RAILING, MAD & EAST UNION ST | 2024-05-10 → 2024-08-27 (+109d) | 2024-05-17 → 2024-09-03 (+109d) |  |  | -94d → -170d |  |  |
| 6 | **ZONE 3 - 15TH TO MLK** |  | 2024-07-30 → 2024-10-29 (+91d) |  |  |  |  |  |
| 7 | **SIDEWALKS** |  | 2024-05-21 → 2024-08-16 (+87d) |  |  |  |  |  |
| 18 | **19TH NEC** | 2024-04-15 → 2024-04-29 (+14d) | 2024-04-23 → 2024-05-07 (+14d) |  |  |  |  |  |
| 3-9653 | REMOVE SIDEWALK - 19TH NEC | 2024-04-15 → 2024-04-29 A (+14d) | 2024-04-15 → 2024-04-29 A (+14d) |  | 0% → 100% | -140d → none |  |  |
| 3-9658 | TRENCH CONDUIT - 19TH NEC | 2024-04-16 → 2024-04-30 A (+14d) | 2024-04-16 → 2024-04-30 A (+14d) |  | 0% → 100% | -140d → none |  |  |
| 3-9663 | INST CONDUIT - 19TH NEC | 2024-04-16 → 2024-04-30 A (+14d) | 2024-04-16 → 2024-04-30 A (+14d) |  | 0% → 100% | -140d → none |  |  |
| 3-9668 | GRADE SIDEWALK - 19TH NEC | 2024-04-17 → 2024-05-01 A (+14d) | 2024-04-18 → 2024-05-02 A (+14d) |  | 0% → 100% | -140d → none |  |  |
| 3-9673 | POUR SIDEWALK - 19TH NEC (ESTIMATED DATE) | 2024-04-19 → 2024-05-03 A (+14d) | 2024-04-23 → 2024-05-07 A (+14d) |  | 0% → 100% | -140d → none |  |  |
| 3-9678 | CURB RAMPS - 19TH NEC | 2024-04-19 → 2024-05-03 A (+14d) | 2024-04-19 → 2024-05-03 A (+14d) |  | 0% → 100% | -140d → none |  |  |
| 4 | **15TH TO 16TH SOUTH SIDE** |  | 2024-04-03 → 2024-04-19 (+16d) |  |  |  |  |  |
| 3-2115 | GRADE SIDEWALK, 15TH TO 16TH SOUTH SIDE |  | 2024-03-29 A → 2024-04-15 A (+17d) | 1d → 5d |  |  |  |  |
| 3-2116 | POUR SIDEWALK, 15TH TO 16TH SOUTH SIDE | 2024-04-01 A → 2024-04-16 A (+15d) | 2024-04-03 → 2024-04-19 A (+16d) | 3d → 4d | 0% → 100% | -138d → none | 3-2110 FF → 3-2110 FF, 3-2115 |  |
| DSC-726 | DSC 726 CO-OP Driveway drain outlet |  | 2024-04-05 A |  | 20% → 100% | -143d → none |  |  |
| 3-2100 | REM SIDEWALK, DRIVEWAY BETWEEN 15TH & 16TH NORTH SIDE | 2024-04-06 A | 2024-04-06 A |  | 0% → 100% | -60d → none |  |  |
| 3-2101 | INST CONDUIT, DRIVEWAY BETWEEN 15TH & 16TH NORTH SIDE | 2024-04-06 A | 2024-04-06 A |  | 0% → 100% | -60d → none |  |  |
| 3-2102 | POUR DRIVEWAY, DRIVEWAY BETWEEN 15TH & 16TH NORTH SIDE | 2024-04-07 A | 2024-04-07 A |  | 0% → 100% | -60d → none |  |  |
| 6 | **17TH TO 18TH SOUTH SIDE** |  | 2024-04-04 → 2024-04-02 (-2d) |  |  |  |  |  |
| 3-2129 | GRADE SIDEWALK, 17TH TO 18TH SOUTH SIDE | 2024-01-02 A → 2023-12-20 A (-13d) | 2024-04-03 → 2023-12-22 A (-103d) |  | 0% → 100% | -142d → none |  |  |
| 3-2130 | POUR SIDEWALK, 17TH TO 18TH SOUTH SIDE | 2024-01-09 A → 2023-12-26 A (-14d) | 2024-04-04 → 2024-01-03 A (-92d) |  | 0% → 100% | -142d → none |  |  |
| DSC-716 | DSC 716 EXISTING POLE BELOW NEW SIDEWALK GRADE | 2024-03-01 A → 2024-02-12 A (-18d) | 2024-04-02 → 2024-02-12 A (-50d) |  | 0% → 100% | -142d → none |  |  |
| 3-2135 | INSTALL WHEEL GUIDES | 2024-04-02 A | 2024-04-02 A |  | 0% → 100% | -140d → none |  |  |
| 9 | **17TH TO 18TH NORTH SIDE** |  | 2024-04-09 → 2024-04-18 (+9d) |  |  |  |  |  |
| 3-2231 | Sidewalk NWC 17th |  | 2024-04-09 → 2024-04-18 A (+9d) |  | 40% → 100% | -140d → none |  |  |
| 10 | **DRIVEWAY BETWEEN 17TH AND 18TH NORTH SIDE** |  | 2024-04-02 → 2024-04-22 (+20d) |  |  |  |  |  |
| 3-2150 | POUR DRIVEWAYS, DRIVEWAY BETWEEN 17TH, 18TH & 19TH |  | 2024-04-02 → 2024-04-22 A (+20d) |  | 0% → 100% | -134d → none |  | was named POUR DRIVEWAYS, DRIVEWAY BETWEEN 17TH & 18TH NORTH SIDE |
| 11 | **18TH TO 19TH NORTH SIDE** |  | 2024-04-26 → 2024-05-10 (+14d) |  |  |  |  |  |
| 3-2154 | INST CONDUIT, 18TH TO 19TH NORTH SIDE | 2024-04-02 A | 2024-04-03 → 2024-04-16 A (+13d) | 2d → 11d | 0% → 100% | -140d → none |  |  |
| 3-2155 | GRADE SIDEWALK, 18TH TO 19TH NORTH SIDE | 2024-04-04 → 2024-04-17 A (+13d) | 2024-04-05 → 2024-04-18 A (+13d) |  | 0% → 100% | -140d → none |  |  |
| 3-2156 | POUR SIDEWALK, 18TH TO 19TH NORTH SIDE | 2024-04-08 → 2024-04-22 A (+14d) | 2024-04-12 → 2024-04-26 A (+14d) |  | 0% → 100% | -140d → none |  |  |
| 3-2157 | 19th NEC | 2024-04-15 → 2024-04-29 A (+14d) | 2024-04-26 → 2024-05-10 A (+14d) |  | 0% → 100% | -109d → none |  |  |
| 35 | **27TH TO MLK SOUTH SIDE** |  | 2024-05-07 → 2024-06-07 (+31d) |  |  |  |  |  |
| DSC-734 | DSC 734 SWC MLK Uknown Unlocated utiltity |  | 2024-04-04 A |  | 40% → 100% | -145d → none |  |  |
| 3-2292 | INST CONDUIT, 27TH TO MLK SOUTH SIDE |  | 2024-04-04 A |  | 0% → 100% | -145d → none |  |  |
| 3-2294 | POUR BUS STATION FOUNDATIONS, 27TH TO MLK SOUTH SIDE |  | 2024-04-04 A |  | 0% → 100% | -145d → none |  |  |
| 3-2295 | GRADE SIDEWALK, 27TH TO MLK SOUTH SIDE | 2024-04-05 A | 2024-04-08 A |  | 0% → 100% | -145d → none |  |  |
| 3-2580 | INSTALL WHEEL GUIDES | 2024-04-05 A | 2024-04-05 A |  | 0% → 100% | -133d → none |  |  |
| 3-2296 | POUR SIDEWALK, 27TH TO MLK SOUTH SIDE | 2024-04-12 A | 2024-04-23 → 2024-05-23 A (+30d) | 8d → 30d | 0% → 100% | -145d → none |  |  |
| 3-2336 | Complete MLK SE Corner | 2024-04-24 → 2024-04-15 A (-9d) | 2024-05-07 → 2024-04-29 A (-8d) | 10d → 11d | 0% → 100% | -116d → none | 3-2296, 3-2314 → 3-2296 SS+1d, 3-2314 | resources MBRT NEW [80 h] → MBRT NEW [88 h] |
| 3-2356 | Complete 28th & Madison NE Corner | 2024-04-24 → 2024-05-24 A (+30d) | 2024-05-07 → 2024-06-07 A (+31d) |  | 0% → 100% | -116d → none |  |  |
| 38 | **E. HARRISON AND MLK SW CORNER** |  | 2024-03-28 → 2024-04-18 (+21d) |  |  |  |  |  |

| ID | Task | Start | Finish | Duration | Complete | Total float | Predecessors | Other |
| --- | --- | --- | --- | --- | --- | --- | --- | --- |
| 3-2314 | POUR SIDEWALK, E HARRISON & MLK SW CORNER |  | 2024-03-28 A → 2024-04-04 A (+7d) |  |  |  |  |  |
| 39 | **E. ARTHUR MLK TO 27TH NORTH SIDE** |  | 2024-04-08 → 2024-05-01 (+23d) |  |  |  |  |  |
| 3-2316 | REM SIDEWALK, E ARTHUR MLK TO 27TH NORTH SIDE |  |  |  |  |  | 3-2314 → 3-2310 SS |  |
| 3-2318 | INST CONDUIT, E ARTHUR MLK TO 27TH NORTH SIDE |  | 2024-04-02 A |  | 0% → 100% | -139d → none |  |  |
| 3-2319 | GRADE SIDEWALK, E ARTHUR MLK TO 27TH NORTH SIDE | 2024-04-03 A | 2024-04-03 A |  | 0% → 100% | -139d → none |  |  |
| 3-2320 | POUR SIDEWALK, E ARTHUR MLK TO 27TH NORTH SIDE | 2024-04-04 A | 2024-04-08 → 2024-05-01 A (+23d) | 3d → 20d | 0% → 100% | -139d → none |  |  |
| 40 | **E. HARRISON MLK TO E ARTHUR SOUTH SIDE** |  | 2024-04-11 → 2024-05-29 (+48d) |  |  |  |  |  |
| 3-2324 | INST CONDUIT, E HARRISON MLK TO E ARTHUR SOUTH SIDE |  | 2024-04-02 → 2024-04-15 A (+13d) |  | 0% → 100% | -134d → none |  |  |
| 3-2325 | GRADE SIDEWALK, E HARRISON MLK TO E ARTHUR SOUTH SIDE | 2024-04-03 → 2024-04-16 A (+13d) | 2024-04-03 → 2024-05-28 A (+55d) | 1d → 30d | 0% → 100% | -134d → none |  |  |
| 3-2326 | POUR SIDEWALK, E HARRISON MLK TO E ARTHUR SOUTH SIDE | 2024-04-09 → 2024-04-17 A (+8d) | 2024-04-11 → 2024-05-29 A (+48d) | 3d → 30d | 0% → 100% | -137d → none | 3-2325, 3-2320 → 3-2325 SS+1d, 3-2374 |  |
| 41 | **MLK AND E. ARTHUR CENTER ISLAND** | 2024-04-24 → 2024-05-30 (+36d) | 2024-05-10 → 2024-07-01 (+52d) |  |  |  |  |  |
| 3-2328 | REM SIDEWALK, MLK & E ARTHUR CENTER ISLAND | 2024-04-24 → 2024-05-30 A (+36d) | 2024-04-24 → 2024-05-30 A (+36d) |  | 0% → 100% | -145d → none |  |  |
| 3-2329 | TRENCH CONDUIT, MLK & E ARTHUR CENTER ISLAND | 2024-04-25 → 2024-05-31 A (+36d) | 2024-04-25 → 2024-05-31 A (+36d) |  | 0% → 100% | -145d → none |  |  |
| 3-2330 | INST CONDUIT, MLK & E ARTHUR CENTER ISLAND | 2024-04-25 → 2024-05-31 A (+36d) | 2024-04-25 → 2024-05-31 A (+36d) |  | 0% → 100% | -145d → none |  |  |
| 3-2331 | GRADE SIDEWALK, MLK & E ARTHUR CENTER ISLAND | 2024-04-26 → 2024-06-03 A (+38d) | 2024-04-26 → 2024-06-03 A (+38d) |  | 0% → 100% | -145d → none |  |  |
| 3-2332 | POUR SIDEWALK, MLK & E ARTHUR CENTER ISLAND | 2024-04-29 → 2024-06-04 A (+36d) | 2024-05-10 → 2024-07-01 A (+52d) | 10d → 20d | 0% → 100% | -145d → none |  |  |
| 42 | **19TH AND UNION ST** |  | 2024-05-21 → 2024-05-24 (+3d) |  |  |  |  |  |
| DSC-738 | DSC 738 SWC 19th and Union duct bank conflict with pedestal |  | 2024-04-05 A |  | 0% → 100% | -134d → none |  |  |
| 3-2346 | INST CONDUIT, SW CORNER |  | 2024-04-05 A |  | 0% → 100% | -134d → none |  |  |
| 3-2347 | SIDEWALKS AND CURBS, SW CORNER | 2024-04-08 A | 2024-04-12 A |  | 0% → 100% | -134d → none |  |  |
| 3-2341 | REMOVE SIDEWALK, SE CORNER | 2024-04-15 A | 2024-04-16 A |  | 0% → 100% | -134d → none |  |  |
| 3-2342 | INST CONDUIT, SE CORNER | 2024-04-15 A | 2024-04-22 A |  | 0% → 100% | -134d → none |  |  |
| 3-2343 | SIDEWALKS AND CURBS, SE CORNER | 2024-04-23 A | 2024-04-25 A |  | 0% → 100% | -134d → none |  |  |
| 3 | **NE CORNER** |  | 2024-05-08 → 2024-05-17 (+9d) |  |  |  |  |  |
| 3-2337 | REMOVE SIDEWALK, NE CORNER | 2024-04-26 A | 2024-04-29 A |  | 0% → 100% | -134d → none |  |  |
| 3-2338 | INST CONDUIT, NE CORNER | 2024-04-26 A | 2024-05-03 → 2024-05-13 A (+10d) | 6d → 12d | 0% → 100% | -134d → none |  |  |
| 3-2339 | SIDEWALKS AND CURBS, NE CORNER | 2024-05-06 → 2024-05-14 A (+8d) | 2024-05-08 → 2024-05-17 A (+9d) | 3d → 4d | 0% → 100% | -134d → none |  |  |
| 6 | **NW CORNER** | 2024-05-09 → 2024-05-14 (+5d) | 2024-05-21 → 2024-05-24 (+3d) |  |  |  |  |  |
| 3-2349 | REMOVE SIDEWALK, NW CORNER | 2024-05-09 → 2024-05-14 A (+5d) | 2024-05-10 → 2024-05-15 A (+5d) |  | 0% → 100% | -134d → none | 3-2347, 3-2339 → 3-2347, 3-2339 SS |  |
| 3-2350 | INST CONDUIT, NW CORNER | 2024-05-09 → 2024-05-14 A (+5d) | 2024-05-16 → 2024-05-21 A (+5d) |  | 0% → 100% | -134d → none |  |  |
| 3-2351 | SIDEWALKS AND CURBS, NW CORNER | 2024-05-17 → 2024-05-22 A (+5d) | 2024-05-21 → 2024-05-24 A (+3d) |  | 0% → 100% | -134d → none |  |  |
| 8 | **MILLING AND PAVING** |  | 2024-05-17 → 2024-05-29 (+12d) |  |  |  |  |  |
| 3-2357 | MILL, MILLING AND PAVING | 2024-05-13 → 2024-05-22 A (+9d) | 2024-05-14 → 2024-05-23 A (+9d) |  | 0% → 100% | -145d → none | 3-2176, 3-2355, 3-3575, 3-2332, 3-2296 → 3-2176, 3-2355, 3-3575, 3-2296 FF |  |
| 3-2358 | PAVE, MILLING AND PAVING | 2024-05-15 → 2024-05-24 A (+9d) | 2024-05-17 → 2024-05-29 A (+12d) |  | 0% → 100% | -145d → none |  |  |
| 9 | **STRIPING AND SIGNS** | 2024-05-20 → 2024-05-22 (+2d) | 2024-07-30 → 2024-08-16 (+17d) |  |  |  |  |  |
| 3-2360 | CURE TIME, STRIPING AND SIGNS | 2024-05-20 → 2024-05-30 A (+10d) | 2024-06-18 → 2024-06-14 A (-4d) | 21d → 12d | 0% → 100% | -145d → none |  |  |
| 3-2361 | CHANNELIZATION, STRIPING AND SIGNS | 2024-06-19 → 2024-06-17 A (-2d) | 2024-07-02 → 2024-08-16 (+45d) | 10d → 30d |  | -145d → -158d | 3-2024, 3-2360, 3-2157, 3-2356, 3-2336 → 3-2024, 3-2360, 3-2157, 3-2356, 3-2336, 3-2365 | was named STRIPING, STRIPING AND SIGNS |
| 10 | **LANDSCAPING** |  | 2024-06-03 → 2024-06-06 (+3d) |  |  |  |  |  |
| 3-2364 | INST POUROUS PAVEMENT, POUROUS PAVEMENT | 2024-05-22 → 2024-05-28 A (+6d) | 2024-06-03 → 2024-06-06 A (+3d) |  | 0% → 100% | -104d → none |  |  |
| 11 | **SIGNALS** |  | 2024-07-03 → 2024-07-12 (+9d) |  |  |  |  |  |
| 10 | **E HARRISON AND MLK** |  | 2024-06-03 → 2024-06-26 (+23d) |  |  |  |  |  |
| 3-2476 | INST SERVICE METER CABINET, E HARRISON & MLK | 2024-04-09 → 2024-05-02 A (+23d) | 2024-04-09 → 2024-05-02 A (+23d) |  | 0% → 100% | -139d → none |  |  |
| 3-9050 | SDCI INSPECTION | 2024-04-10 → 2024-05-03 A (+23d) | 2024-04-10 → 2024-05-03 A (+23d) |  | 0% → 100% | -139d → none |  |  |
| 3-9070 | SDOT INSPECTION | 2024-04-11 → 2024-05-06 A (+25d) | 2024-04-11 → 2024-05-06 A (+25d) |  | 0% → 100% | -139d → none |  |  |
| 3-9038 | SCL INSPECTION REQUEST | 2024-04-12 → 2024-05-07 A (+25d) | 2024-04-12 → 2024-05-07 A (+25d) |  | 0% → 100% | -139d → none |  |  |
| 3-9039 | 30 DAY WAIT FOR SCL TO INSPECT, MAD AND BOYLSTON | 2024-04-12 → 2024-05-07 A (+25d) | 2024-04-15 → 2024-05-08 A (+23d) |  | 0% → 100% | -139d → none |  |  |
| 3-9079 | SCL INSPECTION | 2024-04-16 → 2024-05-09 A (+23d) | 2024-04-16 → 2024-05-09 A (+23d) |  | 0% → 100% | -139d → none |  |  |
| 3-2481 | COMMISION NOTIFICATION | 2024-04-17 → 2024-05-10 A (+23d) | 2024-04-17 → 2024-05-10 A (+23d) |  | 0% → 100% | -139d → none |  |  |
| 3-2482 | 30 DAY WAIT FOR SCL TO COMMISION | 2024-04-18 → 2024-05-13 A (+25d) | 2024-05-16 → 2024-06-11 A (+26d) |  | 0% → 100% | -139d → none |  |  |
| 3-2483 | COMM SERVICE, E HARRISON AND MLK | 2024-05-17 → 2024-06-12 A (+26d) | 2024-05-17 → 2024-06-12 A (+26d) |  | 0% → 100% | -139d → none |  |  |
| 3-2475 | INST SIGNAL CABINET, E HARRISON & MLK | 2024-05-20 → 2024-06-13 A (+24d) | 2024-05-20 → 2024-06-13 A (+24d) |  | 0% → 100% | -139d → none | 3-2332, 3-2483, 3-2402 → 3-2483, 3-2402 |  |
| 3-2477 | INST MAST ARMS, E HARRISON AND MLK | 2024-05-21 → 2024-06-14 A (+24d) | 2024-05-21 → 2024-06-14 A (+24d) |  | 0% → 100% | -139d → none |  |  |
| 3-2478 | INST PPB POST, E HARRISON AND MLK | 2024-05-22 → 2024-06-17 A (+26d) | 2024-05-22 → 2024-06-17 A (+26d) |  | 0% → 100% | -139d → none |  |  |
| 3-2479 | INST PEDISTALS, E HARRISON AND MLK | 2024-05-23 → 2024-06-18 A (+26d) | 2024-05-23 → 2024-06-18 A (+26d) |  | 0% → 100% | -139d → none |  |  |
| 3-2480 | INST WIRING, E HARRISON AND MLK | 2024-05-24 → 2024-06-19 A (+26d) | 2024-05-29 → 2024-06-21 A (+23d) |  | 0% → 100% | -139d → none |  |  |
| 3-2484 | NOTIFY SDOT, E HARRISON AND MLK | 2024-05-30 → 2024-06-24 A (+25d) | 2024-05-30 → 2024-06-24 A (+25d) |  | 0% → 100% | -139d → none |  |  |
| 3-2485 | SDOT INSPECTION, E HARRISON AND MLK | 2024-05-31 → 2024-06-25 A (+25d) | 2024-05-31 → 2024-06-25 A (+25d) |  | 0% → 100% | -139d → none |  |  |
| 3-2486 | COMM SIGNAL, E HARRISON AND MLK | 2024-06-03 → 2024-06-26 A (+23d) | 2024-06-03 → 2024-06-26 A (+23d) |  | 0% → 100% | -139d → none |  |  |
| 11 | **19TH AND UNION** |  | 2024-07-03 → 2024-07-12 (+9d) |  |  |  |  |  |
| 3-2489 | INST SERVICE METER CABINET, 19TH & UNION | 2024-04-15 A | 2024-04-16 A |  | 0% → 100% | -121d → none |  |  |
| 3-6038 | SCL INSPECTION REQUEST | 2024-04-15 A | 2024-04-15 A |  | 0% → 100% | -121d → none |  |  |
| 3-6039 | 30 DAY WAIT FOR SCL TO INSPECT, MAD AND BOYLSTON | 2024-04-15 A | 2024-04-16 A |  | 0% → 100% | -121d → none |  |  |
| 3-2490 | INST MAST ARMS, 19TH AND UNION | 2024-04-17 A | 2024-04-22 A |  | 0% → 100% | -104d → none |  |  |
| 3-6050 | SDCI INSPECTION | 2024-04-17 A | 2024-04-17 A |  | 0% → 100% | -121d → none |  |  |
| 3-6079 | SCL INSPECTION | 2024-04-17 A | 2024-04-17 A |  | 0% → 100% | -121d → none |  |  |
| 3-2494 | COMMISION NOTIFICATION | 2024-04-18 A | 2024-04-18 A |  | 0% → 100% | -121d → none |  |  |
| 3-6070 | SDOT INSPECTION | 2024-04-18 A | 2024-04-18 A |  | 0% → 100% | -121d → none |  |  |
| 3-2495 | 30 DAY WAIT FOR SCL TO COMMISION | 2024-04-19 A | 2024-05-17 A |  | 0% → 100% | -121d → none |  |  |
| 3-2496 | COMM SERVICE, 19TH AND UNION | 2024-05-20 A | 2024-05-20 A |  | 0% → 100% | -121d → none |  |  |
| 3-2488 | INST SIGNAL CABINET, 19TH AND UNION | 2024-06-20 → 2024-06-14 A (-6d) | 2024-06-20 → 2024-06-14 A (-6d) |  | 0% → 100% | -142d → none |  |  |

| ID | Task | Start | Finish | Duration | Complete | Total float | Predecessors | Other |
| --- | --- | --- | --- | --- | --- | --- | --- | --- |
| 3-2491 | INST PPB POST, 19TH AND UNION | 2024-06-21 → 2024-06-17 A (-4d) | 2024-06-21 → 2024-06-17 A (-4d) |  | 0% → 100% | -142d → none | 3-2490, 3-2358, 3-2488 → 3-2490, 3-2488 |  |
| 3-2492 | INST PEDISTALS, 19TH AND UNION | 2024-06-24 → 2024-06-18 A (-6d) | 2024-06-24 → 2024-06-18 A (-6d) |  | 0% → 100% | -142d → none |  |  |
| 3-2493 | INST WIRING, 19TH AND UNION | 2024-06-25 → 2024-06-19 A (-6d) | 2024-06-28 → 2024-06-24 A (-4d) |  | 0% → 100% | -142d → none |  |  |
| 3-2497 | NOTIFY SDOT, 19TH AND UNION | 2024-07-01 → 2024-06-25 A (-6d) | 2024-07-01 → 2024-06-25 A (-6d) |  | 0% → 100% | -136d → none |  |  |
| 3-2498 | SDOT INSPECTION, 19TH AND UNION | 2024-07-02 → 2024-06-26 A (-6d) | 2024-07-02 → 2024-06-26 A (-6d) |  | 0% → 100% | -136d → none |  |  |
| 3-2499 | COMM SIGNAL, 19TH AND UNION | 2024-07-03 → 2024-07-12 A (+9d) | 2024-07-03 → 2024-07-12 A (+9d) |  | 0% → 100% | -136d → none | 3-2498 → 3-2498, 3-2415 SS |  |
| 2 | **MADISON AND 17TH** |  | 2024-04-16 → 2024-05-02 (+16d) |  |  |  |  |  |
| 3-2487 | Complete UG Elec & Sidewalks NWC 17th | 2024-04-05 A | 2024-04-05 A |  | 0% → 100% | -136d → none |  | constraint start on or after 2024-04-05 → none |
| 3-2380 | INST SIGNAL CABINET, MAD AND 17TH | 2024-04-05 → 2024-04-23 A (+18d) | 2024-04-05 → 2024-04-23 A (+18d) |  | 0% → 100% | -136d → none |  |  |
| 3-2382 | INST PPB POST, MAD AND 17TH | 2024-04-08 → 2024-04-24 A (+16d) | 2024-04-09 → 2024-04-25 A (+16d) |  | 0% → 100% | -136d → none |  |  |
| 3-2383 | INST WIRING, MAD AND 17TH | 2024-04-10 → 2024-04-26 A (+16d) | 2024-04-11 → 2024-04-29 A (+18d) |  | 0% → 100% | -136d → none |  |  |
| 3-2387 | NOTIFY SDOT, MAD AND 17TH | 2024-04-12 → 2024-04-30 A (+18d) | 2024-04-12 → 2024-04-30 A (+18d) |  | 0% → 100% | -136d → none |  |  |
| 3-2388 | SDOT INSPECTION, MAD AND 17TH | 2024-04-15 → 2024-05-01 A (+16d) | 2024-04-15 → 2024-05-01 A (+16d) |  | 0% → 100% | -136d → none |  |  |
| 3-2389 | COMM SIGNAL, MAD AND 17TH | 2024-04-16 → 2024-05-02 A (+16d) | 2024-04-16 → 2024-05-02 A (+16d) |  | 0% → 100% | -136d → none |  |  |
| 3 | **MADISON AND 18TH** |  | 2024-05-14 → 2024-05-10 (-4d) |  |  |  |  |  |
| 3-2391 | INST SIGNAL CABINET, MAD AND 18TH | 2024-05-01 → 2024-04-29 A (-2d) | 2024-05-01 → 2024-04-29 A (-2d) |  | 0% → 100% | -136d → none | PMP-26, PMP-0016, 3-2125, 3-2399, 3-2156, 3-2383, 2-1640 → PMP-26, PMP-0016, 3-2125, 3-2399, 3-2156, 3-2380 SS |  |
| 3-2393 | INST MAST ARMS, MAD AND 18TH | 2024-05-02 → 2024-04-30 A (-2d) | 2024-05-02 → 2024-04-30 A (-2d) |  | 0% → 100% | -136d → none |  |  |
| 3-2394 | INST PPB POST, MAD AND 18TH | 2024-05-03 → 2024-05-01 A (-2d) | 2024-05-03 → 2024-05-01 A (-2d) |  | 0% → 100% | -136d → none |  |  |
| 3-2395 | INST PEDISTALS, MAD AND 18TH | 2024-05-06 → 2024-05-02 A (-4d) | 2024-05-06 → 2024-05-02 A (-4d) |  | 0% → 100% | -136d → none |  |  |
| 3-2396 | INST WIRING, MAD AND 18TH | 2024-05-07 → 2024-05-03 A (-4d) | 2024-05-08 → 2024-05-06 A (-2d) |  | 0% → 100% | -136d → none |  |  |
| 3-2400 | NOTIFY SDOT, MAD AND 18TH | 2024-05-09 → 2024-05-07 A (-2d) | 2024-05-09 → 2024-05-07 A (-2d) |  | 0% → 100% | -136d → none |  |  |
| 3-2401 | SDOT INSPECTION, MAD AND 18TH | 2024-05-10 → 2024-05-08 A (-2d) | 2024-05-13 → 2024-05-09 A (-4d) |  | 0% → 100% | -136d → none |  |  |
| 3-2402 | COMM SIGNAL, MAD AND 18TH | 2024-05-14 → 2024-05-10 A (-4d) | 2024-05-14 → 2024-05-10 A (-4d) |  | 0% → 100% | -136d → none |  |  |
| 4 | **MADISON AND 19TH** | 2024-04-24 → 2024-04-02 (-22d) | 2024-06-28 → 2024-07-12 (+14d) |  |  |  |  |  |
| 3-2405 | INST SERVICE METER CABINET, MAD & 19TH | 2024-04-24 → 2024-04-02 A (-22d) | 2024-04-24 → 2024-04-08 A (-16d) | 1d → 5d | 0% → 100% | -140d → none | 3-2176, 3-2162, 3-2140, 3-9673 → 3-2176, 3-2162, 3-2140 |  |
| 3-1050 | SDCI INSPECTION | 2024-04-25 → 2024-04-09 A (-16d) | 2024-04-25 → 2024-04-09 A (-16d) |  | 0% → 100% | -140d → none |  |  |
| 3-1070 | SDOT INSPECTION | 2024-04-26 → 2024-04-10 A (-16d) | 2024-04-26 → 2024-04-10 A (-16d) |  | 0% → 100% | -140d → none |  |  |
| 3-1038 | SCL INSPECTION REQUEST | 2024-04-29 → 2024-04-11 A (-18d) | 2024-04-29 → 2024-04-11 A (-18d) |  | 0% → 100% | -140d → none |  |  |
| 3-1039 | 30 DAY WAIT FOR SCL TO INSPECT, MAD AND BOYLSTON | 2024-04-29 → 2024-04-11 A (-18d) | 2024-04-30 → 2024-04-12 A (-18d) |  | 0% → 100% | -140d → none |  |  |
| 3-1079 | SCL INSPECTION | 2024-05-01 → 2024-04-15 A (-16d) | 2024-05-01 → 2024-04-15 A (-16d) |  | 0% → 100% | -140d → none |  |  |
| 3-2410 | COMMISION NOTIFICATION | 2024-05-02 → 2024-04-16 A (-16d) | 2024-05-02 → 2024-04-16 A (-16d) |  | 0% → 100% | -140d → none |  |  |
| 3-2411 | 30 DAY WAIT FOR SCL TO COMMISION | 2024-05-03 → 2024-04-17 A (-16d) | 2024-06-03 → 2024-06-17 A (+14d) | 21d → 43d | 0% → 100% | -140d → none |  |  |
| 3-2412 | COMM SERVICE, MAD AND 19TH | 2024-06-04 → 2024-06-18 A (+14d) | 2024-06-04 → 2024-06-18 A (+14d) |  | 0% → 100% | -140d → none |  |  |
| 3-2404 | INST SIGNAL CABINET, MAD AND 19TH | 2024-06-05 → 2024-06-19 A (+14d) | 2024-06-05 → 2024-06-19 A (+14d) |  | 0% → 100% | -140d → none | 3-2176, 3-2412, 3-9673, 3-2396, 3-2402, 3-2486 → 3-2176, 3-2412, 3-9673, 3-2396, 3-2402 |  |
| 3-2406 | INST MAGNOMETERS, MAD AND 19TH | 2024-06-06 → 2024-06-20 A (+14d) | 2024-06-06 → 2024-06-20 A (+14d) |  | 0% → 100% | -140d → none |  |  |
| 3-2407 | INST PPB POST, MAD AND 19TH | 2024-06-07 → 2024-06-21 A (+14d) | 2024-06-11 → 2024-06-25 A (+14d) |  | 0% → 100% | -140d → none |  |  |
| 3-2408 | INST PEDISTALS, MAD AND 19TH | 2024-06-12 → 2024-06-26 A (+14d) | 2024-06-14 → 2024-06-28 A (+14d) |  | 0% → 100% | -140d → none |  |  |
| 3-2409 | INST WIRING, MAD AND 19TH | 2024-06-17 → 2024-07-01 A (+14d) | 2024-06-19 → 2024-07-03 A (+14d) |  | 0% → 100% | -140d → none |  |  |
| 3-2413 | NOTIFY SDOT, MAD AND 19TH | 2024-06-20 → 2024-07-04 A (+14d) | 2024-06-20 → 2024-07-04 A (+14d) |  | 0% → 100% | -127d → none |  |  |
| 3-2414 | SDOT INSPECTION, MAD AND 19TH | 2024-06-21 → 2024-07-05 A (+14d) | 2024-06-27 → 2024-07-11 A (+14d) |  | 0% → 100% | -127d → none |  |  |
| 3-2415 | COMM SIGNAL, MAD AND 19TH | 2024-06-28 → 2024-07-12 A (+14d) | 2024-06-28 → 2024-07-12 A (+14d) |  | 0% → 100% | -127d → none |  |  |
| 9 | **MADISON AND 28TH** |  | 2024-05-29 → 2024-06-07 (+9d) |  |  |  |  |  |
| 3-2469 | 30 DAY WAIT FOR SCL TO COMMISION |  | 2024-04-05 A |  | 0% → 100% | -121d → none |  |  |
| 3-2470 | COMM SERVICE, MAD AND 28TH | 2024-04-08 A | 2024-04-08 A |  | 0% → 100% | -121d → none |  |  |
| 3-2461 | INST SIGNAL CABINET, MAD AND 28TH | 2024-05-15 → 2024-05-24 A (+9d) | 2024-05-15 → 2024-05-24 A (+9d) |  | 0% → 100% | -147d → none |  |  |
| 3-2500 | Complete UG Elec & Sidewalks SEC 28th | 2024-04-24 → 2024-05-24 A (+30d) | 2024-04-24 → 2024-05-24 A (+30d) |  | 0% → 100% | -132d → none |  |  |
| 3-2525 | Complete UG Elec & Sidewalks NEC 28th | 2024-04-24 → 2024-05-24 A (+30d) | 2024-04-24 → 2024-05-24 A (+30d) |  | 0% → 100% | -132d → none |  |  |
| 3-2463 | INST MAGNOMETERS, MAD AND 28TH | 2024-05-16 → 2024-05-28 A (+12d) | 2024-05-16 → 2024-05-28 A (+12d) |  | 0% → 100% | -147d → none |  |  |
| 3-2464 | INST MAST ARMS, MAD AND 28TH | 2024-05-17 → 2024-05-29 A (+12d) | 2024-05-17 → 2024-05-29 A (+12d) |  | 0% → 100% | -147d → none |  |  |
| 3-2465 | INST PPB POST, MAD AND 28TH | 2024-05-20 → 2024-05-30 A (+10d) | 2024-05-20 → 2024-05-30 A (+10d) |  | 0% → 100% | -147d → none |  |  |
| 3-2466 | INST PEDISTALS, MAD AND 28TH | 2024-05-21 → 2024-05-31 A (+10d) | 2024-05-21 → 2024-05-31 A (+10d) |  | 0% → 100% | -147d → none |  |  |
| 3-2467 | INST WIRING, MAD AND 28TH | 2024-05-22 → 2024-06-03 A (+12d) | 2024-05-23 → 2024-06-04 A (+12d) |  | 0% → 100% | -147d → none |  |  |
| 3-2471 | NOTIFY SDOT, MAD AND 28TH | 2024-05-24 → 2024-06-05 A (+12d) | 2024-05-24 → 2024-06-05 A (+12d) |  | 0% → 100% | -147d → none |  |  |
| 3-2472 | SDOT INSPECTION, MAD AND 28TH | 2024-05-28 → 2024-06-06 A (+9d) | 2024-05-28 → 2024-06-06 A (+9d) |  | 0% → 100% | -147d → none |  |  |
| 3-2473 | COMM SIGNAL, MAD AND 28TH | 2024-05-29 → 2024-06-07 A (+9d) | 2024-05-29 → 2024-06-07 A (+9d) |  | 0% → 100% | -147d → none |  |  |
| 12 | **ITS WIRING** | 2024-07-04 → 2024-07-15 (+11d) | 2024-07-17 → 2024-07-26 (+9d) |  |  |  |  |  |
| 3-2501 | INST WIRING, ITS, ITS WIRING | 2024-07-04 → 2024-07-15 A (+11d) | 2024-07-17 → 2024-07-26 A (+9d) |  | 0% → 100% | -136d → none |  |  |
| 13 | **LIGHTING** |  | 2024-07-25 → 2024-08-15 (+21d) |  |  |  |  |  |
| 7 | **17TH (SCHEMATIC 19)** |  | 2024-05-15 → 2024-05-22 (+7d) |  |  |  |  |  |
| 3-2935 | INST WIRING, LIGHTING | 2024-04-12 → 2024-04-26 A (+14d) | 2024-04-25 → 2024-05-09 A (+14d) |  | 0% → 100% | -92d → none | 3-2930, 3-2372, 3-2383 → 3-2930, 3-2372, 3-2383 SS |  |
| 3-2940 | NOTIFY SCL, LIGHTING | 2024-04-26 → 2024-05-10 A (+14d) | 2024-04-26 → 2024-05-10 A (+14d) |  | 0% → 100% | -92d → none |  |  |
| 3-2945 | SCL Lighting Final Inspection, LIGHTING | 2024-04-26 → 2024-05-10 A (+14d) | 2024-04-29 → 2024-05-13 A (+14d) |  | 0% → 100% | -92d → none |  |  |
| 3-2955 | COMM SERVICE, LIGHTING | 2024-04-30 → 2024-05-14 A (+14d) | 2024-04-30 → 2024-05-14 A (+14d) |  | 0% → 100% | -92d → none |  |  |
| 3-2960 | NOTIFY SCL, LIGHTING | 2024-05-01 → 2024-05-15 A (+14d) | 2024-05-01 → 2024-05-15 A (+14d) |  | 0% → 100% | -92d → none |  |  |
| 3-2965 | SCL Commissioning Inspection, LIGHTING | 2024-05-01 → 2024-05-15 A (+14d) | 2024-05-14 → 2024-05-21 A (+7d) | 10d → 5d | 0% → 100% | -92d → none |  |  |
| 3-2950 | COMM LIGHTING, LIGHTING | 2024-05-15 → 2024-05-22 A (+7d) | 2024-05-15 → 2024-05-22 A (+7d) |  | 0% → 100% | -92d → none |  |  |
| 2 | **18TH (SCHEMATIC 20)** |  | 2024-06-12 → 2024-05-22 (-21d) |  |  |  |  |  |
| 3-2710 | INST WIRING, LIGHTING | 2024-05-09 → 2024-05-03 A (-6d) | 2024-05-22 → 2024-05-09 A (-13d) | 10d → 5d | 0% → 100% | -111d → none | 3-2705, 3-2396 → 3-2705, 3-2396 SS |  |
| 3-2715 | NOTIFY SCL, LIGHTING | 2024-05-23 → 2024-05-10 A (-13d) | 2024-05-23 → 2024-05-10 A (-13d) |  | 0% → 100% | -111d → none |  |  |
| 3-2720 | SCL Lighting Final Inspection, LIGHTING | 2024-05-23 → 2024-05-10 A (-13d) | 2024-05-24 → 2024-05-13 A (-11d) |  | 0% → 100% | -111d → none |  |  |

| ID | Task | Start | Finish | Duration | Complete | Total float | Predecessors |
| --- | --- | --- | --- | --- | --- | --- | --- |
| 3-2730 | COMM SERVICE, LIGHTING | 2024-05-28 → 2024-05-14 A (-14d) | 2024-05-28 → 2024-05-14 A (-14d) |  | 0% → 100% | -111d → none |  |
| 3-2735 | NOTIFY SCL, LIGHTING | 2024-05-29 → 2024-05-15 A (-14d) | 2024-05-29 → 2024-05-15 A (-14d) |  | 0% → 100% | -111d → none |  |
| 3-2740 | SCL Commissioning Inspection, LIGHTING | 2024-05-29 → 2024-05-15 A (-14d) | 2024-06-11 → 2024-05-21 A (-21d) | 10d → 5d | 0% → 100% | -111d → none |  |
| 3-2725 | COMM LIGHTING, LIGHTING | 2024-06-12 → 2024-05-22 A (-21d) | 2024-06-12 → 2024-05-22 A (-21d) |  | 0% → 100% | -111d → none |  |
| 6 | **19TH (SCHEMATIC 21)** |  | 2024-07-23 → 2024-05-22 (-62d) |  |  |  |  |
| 3-2890 | INST WIRING, LIGHTING | 2024-06-20 → 2024-05-03 A (-48d) | 2024-07-03 → 2024-05-09 A (-55d) | 10d → 5d | 0% → 100% | -140d → none | 3-2885, 3-2409 → 3-2885, 3-2710 SS |
| 3-2895 | NOTIFY SCL, LIGHTING | 2024-07-04 → 2024-05-10 A (-55d) | 2024-07-04 → 2024-05-10 A (-55d) |  | 0% → 100% | -140d → none |  |
| 3-2900 | SCL Lighting Final Inspection, LIGHTING | 2024-07-04 → 2024-05-10 A (-55d) | 2024-07-05 → 2024-05-13 A (-53d) |  | 0% → 100% | -140d → none |  |
| 3-2910 | COMM SERVICE, LIGHTING | 2024-07-08 → 2024-05-14 A (-55d) | 2024-07-08 → 2024-05-14 A (-55d) |  | 0% → 100% | -140d → none |  |
| 3-2915 | NOTIFY SCL, LIGHTING | 2024-07-09 → 2024-05-15 A (-55d) | 2024-07-09 → 2024-05-15 A (-55d) |  | 0% → 100% | -140d → none |  |
| 3-2920 | SCL Commissioning Inspection, LIGHTING | 2024-07-09 → 2024-05-15 A (-55d) | 2024-07-22 → 2024-05-21 A (-62d) | 10d → 5d | 0% → 100% | -140d → none |  |
| 3-2905 | COMM LIGHTING, LIGHTING | 2024-07-23 → 2024-05-22 A (-62d) | 2024-07-23 → 2024-05-22 A (-62d) |  | 0% → 100% | -140d → none |  |
| 4 | **23RD (Schematic 23)** |  | 2024-04-17 → 2024-08-15 (+120d) |  |  |  |  |
| 3-2820 | COMM SERVICE, LIGHTING | 2024-04-02 → 2024-08-06 (+126d) | 2024-04-02 → 2024-08-06 (+126d) |  |  | -72d → -157d | 3-2810 → 3-2810, 3-2835 |
| 3-2825 | NOTIFY SCL, LIGHTING | 2024-04-03 → 2024-08-07 (+126d) | 2024-04-03 → 2024-08-07 (+126d) | 0d → 1d |  | -72d → -157d |  |
| 3-2830 | SCL Commissioning Inspection, LIGHTING | 2024-04-03 → 2024-08-08 (+127d) | 2024-04-16 → 2024-08-14 (+120d) | 10d → 5d |  | -72d → -157d |  |
| 3-2815 | COMM LIGHTING, LIGHTING | 2024-04-17 → 2024-08-15 (+120d) | 2024-04-17 → 2024-08-15 (+120d) |  |  | -72d → -157d |  |
| 3-3070 | INST WIRING, LIGHTING | 2024-05-30 → 2024-05-10 A (-20d) | 2024-06-11 → 2024-05-22 A (-20d) |  | 0% → 100% | -134d → none | 3-3065, 3-2755, 3-2480 → 3-3065, 3-2755, 3-2935 |
| 3-3075 | NOTIFY SCL, LIGHTING | 2024-06-12 → 2024-05-23 A (-20d) | 2024-06-12 → 2024-05-23 A (-20d) |  | 0% → 100% | -124d → none |  |
| 3-3080 | SCL Lighting Final Inspection, LIGHTING | 2024-06-12 → 2024-05-23 A (-20d) | 2024-06-13 → 2024-05-24 A (-20d) |  | 0% → 100% | -124d → none |  |
| 3-3090 | COMM SERVICE, LIGHTING | 2024-06-14 → 2024-05-28 A (-17d) | 2024-06-14 → 2024-05-28 A (-17d) |  | 0% → 100% | -124d → none |  |
| 3-3095 | NOTIFY SCL, LIGHTING | 2024-06-17 → 2024-05-29 A (-19d) | 2024-06-17 → 2024-05-29 A (-19d) |  | 0% → 100% | -124d → none |  |
| 3-3100 | SCL Commissioning Inspection, LIGHTING | 2024-06-17 → 2024-05-29 A (-19d) | 2024-06-28 → 2024-06-11 A (-17d) |  | 0% → 100% | -124d → none |  |
| 3-3085 | COMM LIGHTING, LIGHTING | 2024-07-01 → 2024-06-12 A (-19d) | 2024-07-01 → 2024-06-12 A (-19d) |  | 0% → 100% | -124d → none |  |
| 3-3025 | INST WIRING, LIGHTING | 2024-06-12 → 2024-05-23 A (-20d) | 2024-06-25 → 2024-06-06 A (-19d) |  | 0% → 100% | -134d → none | 3-3020, 3-3070, 3-2480 → 3-3020, 3-3070 |
| 3-3030 | NOTIFY SCL, LIGHTING | 2024-06-26 → 2024-06-07 A (-19d) | 2024-06-26 → 2024-06-07 A (-19d) |  | 0% → 100% | -134d → none |  |
| 3-3035 | SCL Lighting Final Inspection, LIGHTING | 2024-06-26 → 2024-06-07 A (-19d) | 2024-06-27 → 2024-06-10 A (-17d) |  | 0% → 100% | -134d → none |  |
| 3-3045 | COMM SERVICE, LIGHTING | 2024-06-28 → 2024-06-11 A (-17d) | 2024-06-28 → 2024-06-11 A (-17d) |  | 0% → 100% | -134d → none |  |
| 3-3050 | NOTIFY SCL, LIGHTING | 2024-07-01 → 2024-06-12 A (-19d) | 2024-07-01 → 2024-06-12 A (-19d) |  | 0% → 100% | -134d → none |  |
| 3-3055 | SCL Commissioning Inspection, LIGHTING | 2024-07-01 → 2024-06-12 A (-19d) | 2024-07-12 → 2024-06-25 A (-17d) |  | 0% → 100% | -134d → none |  |
| 3-3040 | COMM LIGHTING, LIGHTING | 2024-07-15 → 2024-06-26 A (-19d) | 2024-07-15 → 2024-06-26 A (-19d) |  | 0% → 100% | -134d → none |  |
| 3-2975 | INST POLES, LIGHTING | 2024-04-23 A | 2024-05-06 A |  | 0% → 100% | -104d → none |  |
| 3-2980 | INST WIRING, LIGHTING | 2024-07-01 → 2024-05-07 A (-55d) | 2024-07-05 → 2024-05-13 A (-53d) |  | 0% → 100% | -142d → none | 3-2975, 3-2493, 3-2490 → 3-2975, 3-2490 |
| 3-2985 | NOTIFY SCL, LIGHTING | 2024-07-08 → 2024-05-14 A (-55d) | 2024-07-08 → 2024-05-14 A (-55d) |  | 0% → 100% | -142d → none |  |
| 3-2990 | SCL Lighting Final Inspection, LIGHTING | 2024-07-08 → 2024-05-14 A (-55d) | 2024-07-09 → 2024-05-15 A (-55d) |  | 0% → 100% | -142d → none |  |
| 3-3000 | COMM SERVICE, LIGHTING | 2024-07-10 → 2024-05-16 A (-55d) | 2024-07-10 → 2024-05-16 A (-55d) |  | 0% → 100% | -142d → none |  |
| 3-3005 | NOTIFY SCL, LIGHTING | 2024-07-11 → 2024-05-17 A (-55d) | 2024-07-11 → 2024-05-17 A (-55d) |  | 0% → 100% | -142d → none |  |
| 3-3010 | SCL Commissioning Inspection, LIGHTING | 2024-07-11 → 2024-05-17 A (-55d) | 2024-07-24 → 2024-05-31 A (-54d) |  | 0% → 100% | -142d → none |  |
| 3-2995 | COMM LIGHTING, LIGHTING | 2024-07-25 → 2024-06-03 A (-52d) | 2024-07-25 → 2024-06-03 A (-52d) |  | 0% → 100% | -142d → none |  |
| 19 | **WORK TO COMPLETE AFTER SIGNAL/LIGHTING COMMISSIONING** |  | 2024-07-04 → 2024-07-18 (+14d) |  |  |  |  |
| 1 | **17TH AND MADISON** | 2024-04-17 → 2024-05-03 (+16d) | 2024-04-22 → 2024-05-08 (+16d) |  |  |  |  |
| 3-3170 | REMOVE CABINET | 2024-04-17 → 2024-05-03 A (+16d) | 2024-04-17 → 2024-05-03 A (+16d) |  | 0% → 100% | -75d → none |  |
| 3-3175 | REMOVE CABINET FOUNDATION | 2024-04-18 → 2024-05-06 A (+18d) | 2024-04-18 → 2024-05-06 A (+18d) |  | 0% → 100% | -75d → none |  |
| 3-3190 | GRADE SIDEWALKS | 2024-04-19 → 2024-05-07 A (+18d) | 2024-04-19 → 2024-05-07 A (+18d) |  | 0% → 100% | -75d → none |  |
| 3-3200 | POUR SIDEWALKS | 2024-04-22 → 2024-05-08 A (+16d) | 2024-04-22 → 2024-05-08 A (+16d) |  | 0% → 100% | -75d → none |  |
| 2 | **19TH AND MADISON** | 2024-07-01 → 2024-07-15 (+14d) | 2024-07-04 → 2024-07-18 (+14d) |  |  |  |  |
| 3-3205 | REMOVE CABINET | 2024-07-01 → 2024-07-15 A (+14d) | 2024-07-01 → 2024-07-15 A (+14d) |  | 0% → 100% | -127d → none |  |
| 3-3210 | REMOVE CABINET FOUNDATION | 2024-07-02 → 2024-07-16 A (+14d) | 2024-07-02 → 2024-07-16 A (+14d) |  | 0% → 100% | -127d → none |  |
| 3-3215 | GRADE SIDEWALKS | 2024-07-03 → 2024-07-17 A (+14d) | 2024-07-03 → 2024-07-17 A (+14d) |  | 0% → 100% | -127d → none |  |
| 3-3220 | POUR SIDEWALKS | 2024-07-04 → 2024-07-18 A (+14d) | 2024-07-04 → 2024-07-18 A (+14d) |  | 0% → 100% | -127d → none |  |
| 6 | **28TH/MLK AND MADISON** | 2024-05-30 → 2024-06-10 (+11d) | 2024-06-10 → 2024-06-19 (+9d) |  |  |  |  |
| 3-3285 | REMOVE CABINET | 2024-05-30 → 2024-06-10 A (+11d) | 2024-05-30 → 2024-06-10 A (+11d) |  | 0% → 100% | -109d → none |  |
| 3-3310 | REMOVE STRAIN POLES | 2024-05-31 → 2024-06-11 A (+11d) | 2024-05-31 → 2024-06-11 A (+11d) |  | 0% → 100% | -109d → none |  |
| 3-3290 | REMOVE FOUNDATIONS | 2024-06-03 → 2024-06-12 A (+9d) | 2024-06-04 → 2024-06-13 A (+9d) |  | 0% → 100% | -109d → none |  |
| 3-3295 | GRADE SIDEWALKS | 2024-06-05 → 2024-06-14 A (+9d) | 2024-06-05 → 2024-06-14 A (+9d) |  | 0% → 100% | -109d → none |  |
| 3-3315 | CURB RAMP | 2024-06-06 → 2024-06-17 A (+11d) | 2024-06-07 → 2024-06-18 A (+11d) |  | 0% → 100% | -109d → none |  |
| 3-3300 | POUR SIDEWALKS | 2024-06-10 → 2024-06-19 A (+9d) | 2024-06-10 → 2024-06-19 A (+9d) |  | 0% → 100% | -109d → none |  |
| 14 | **STATIONS** |  | 2024-05-14 → 2024-09-06 (+115d) |  |  |  |  |
| 1 | **17TH AVE WB STATION** |  | 2024-04-05 → 2024-09-06 (+154d) |  |  |  |  |
| 3-2511 | INST TEC PYLON, 17TH AVE WB STATION | 2024-04-02 → 2024-06-04 A (+63d) | 2024-04-03 → 2024-06-05 A (+63d) |  | 0% → 100% | -91d → none | 3-2510 → 3-2510, 2-1653 |
| 3-2512 | INST AMENITIES, 17TH AVE WB STATION | 2024-04-04 → 2024-07-15 A (+102d) | 2024-04-05 → 2024-09-06 (+154d) | 2d → 30d |  | -91d → -173d | 3-2511 → 3-2511, 2-1654 SS |
| 2 | **17TH AVE EB STATION** |  | 2024-04-09 → 2024-09-06 (+150d) |  |  |  |  |
| 3-2515 | INST TEC PYLON, 17TH AVE EB STATION | 2024-04-02 → 2024-06-06 A (+65d) | 2024-04-03 → 2024-06-07 A (+65d) |  | 0% → 100% | -89d → none | 3-2514 → 3-2514, 3-2511 |
| 3-2516 | INST AMENITIES, 17TH AVE EB STATION | 2024-04-08 → 2024-07-15 A (+98d) | 2024-04-09 → 2024-09-06 (+150d) | 2d → 30d |  | -91d → -173d | 3-2515, 3-2512 → 3-2515, 3-2512 SS |
| 3 | **DENNY WB STATION** |  | 2024-04-11 → 2024-09-06 (+148d) |  |  |  |  |
| 3-2519 | INST TEC PYLON, DENNY WB STATION | 2024-04-02 → 2024-06-10 A (+69d) | 2024-04-03 → 2024-06-11 A (+69d) |  | 0% → 100% | -87d → none | 3-2518 → 3-2518, 3-2515 |
| 3-2520 | INST AMENITIES, DENNY WB STATION | 2024-04-10 → 2024-07-15 A (+96d) | 2024-04-11 → 2024-09-06 (+148d) | 2d → 30d |  | -91d → -173d | 3-2519, 3-2516 → 3-2519, 3-2516 SS |
| 4 | **DENNY EB STATION** |  | 2024-04-17 → 2024-09-06 (+142d) |  |  |  |  |
| 3-2523 | INST TEC PYLON, DENNY EB STATION | 2024-04-12 → 2024-06-12 A (+61d) | 2024-04-15 → 2024-06-13 A (+59d) |  | 0% → 100% | -91d → none | 3-2522, 3-2520 → 3-2522, 3-2519 |
| 3-2524 | INST AMENITIES, DENNY EB STATION | 2024-04-16 → 2024-07-15 A (+90d) | 2024-04-17 → 2024-09-06 (+142d) | 2d → 30d |  | -91d → -173d | 3-2523, 3-2516 → 3-2523, 3-2516 SS |

| ID | Task | Start | Finish | Duration | Complete | Total float | Predecessors |
| --- | --- | --- | --- | --- | --- | --- | --- |
| 5 | **23RD WB STATION** |  | 2024-04-19 → 2024-09-06 (+140d) |  |  |  |  |
| 3-2527 | INST TEC PYLON, 23RD WB STATION | 2024-04-16 → 2024-06-14 A (+59d) | 2024-04-17 → 2024-06-17 A (+61d) |  | 0% → 100% | -91d → none |  |
| 3-2528 | INST AMENITIES, 23RD WB STATION | 2024-04-18 → 2024-07-15 A (+88d) | 2024-04-19 → 2024-09-06 (+140d) | 2d → 30d |  | -91d → -173d | 3-2527, 3-2524 → 3-2527, 3-2524 SS |
| 6 | **24TH EB STATION** |  | 2024-04-23 → 2024-09-06 (+136d) |  |  |  |  |
| 3-2531 | INST TEC PYLON, 24TH EB STATION | 2024-04-18 → 2024-06-18 A (+61d) | 2024-04-19 → 2024-06-19 A (+61d) |  | 0% → 100% | -91d → none |  |
| 3-2532 | INST AMENITIES, 24TH EB STATION | 2024-04-22 → 2024-07-15 A (+84d) | 2024-04-23 → 2024-09-06 (+136d) | 2d → 30d |  | -91d → -173d | 3-2531, 3-2528 → 3-2531, 3-2528 SS |
| 7 | **MADISON AND 27TH EB STATION** | 2024-04-24 → 2024-05-06 (+12d) | 2024-05-03 → 2024-09-06 (+126d) |  |  |  |  |
| 3-2534 | INST SHELTER, MAD & 27TH EB STATION | 2024-04-24 → 2024-05-06 A (+12d) | 2024-04-29 → 2024-05-09 A (+10d) |  | 0% → 100% | -91d → none | 3-2532 → 2-1652 |
| 3-2535 | INST TEC PYLON, MAD & 27TH EB STATION | 2024-04-30 → 2024-06-20 A (+51d) | 2024-05-01 → 2024-06-21 A (+51d) |  | 0% → 100% | -91d → none |  |
| 3-2536 | INST AMENITIES, MAD & 27TH EB STATION | 2024-05-02 → 2024-07-15 A (+74d) | 2024-05-03 → 2024-09-06 (+126d) | 2d → 30d |  | -91d → -173d | 3-2535 → 3-2535, 3-2532 SS |
| 8 | **MADISON AND MLK WB STATION** | 2024-05-06 → 2024-05-10 (+4d) | 2024-05-14 → 2024-09-06 (+115d) |  |  |  |  |
| 3-2538 | INST SHELTER, MAD & MLK WB STATION | 2024-05-06 → 2024-05-10 A (+4d) | 2024-05-09 → 2024-05-15 A (+6d) |  | 0% → 100% | -91d → none | 3-2536 → 3-2534 |
| 3-2539 | INST TEC PYLON, MAD & MLK WB STATION | 2024-05-10 → 2024-06-24 A (+45d) | 2024-05-10 → 2024-06-24 A (+45d) |  | 0% → 100% | -91d → none | 3-2538 → 3-2538, 3-2535 |
| 3-2540 | INST AMENITIES, MAD & MLK WB STATION | 2024-05-13 → 2024-07-15 A (+63d) | 2024-05-14 → 2024-09-06 (+115d) | 2d → 30d |  | -91d → -173d | 3-2539 → 3-2539, 3-2536 SS |
| 16 | **COMFORT STATION** |  | 2024-07-08 → 2024-10-29 (+113d) |  |  |  |  |
| 3-2545 | WALLS, COMFORT STATION | 2024-04-15 → 2024-04-17 A (+2d) | 2024-05-10 → 2024-05-14 A (+4d) |  | 0% → 100% | -129d → none | 3-2544, 3-3510, 3-2332 FF, 3-2326 → 3-2544, 3-3510, 3-2326 SS |
| 3-2550 | ROOF, COMFORT STATION | 2024-04-29 → 2024-05-15 A (+16d) | 2024-05-10 → 2024-05-29 A (+19d) |  | 0% → 100% | -129d → none | 3-2545 FF, 3-2545 SS → 3-2545, 3-2545 SS |
| 3-2555 | PLUMBING/HVAC, COMFORT STATION | 2024-05-13 → 2024-05-30 A (+17d) | 2024-05-24 → 2024-06-12 A (+19d) |  | 0% → 100% | -129d → none |  |
| 3-2560 | ELECTRICAL, COMFORT STATION | 2024-05-28 → 2024-06-13 A (+16d) | 2024-06-10 → 2024-07-10 A (+30d) | 10d → 20d | 0% → 100% | -129d → none |  |
| 3-2565 | FURNISHES, COMFORT STATION | 2024-06-11 → 2024-07-11 A (+30d) | 2024-07-08 → 2024-07-30 (+22d) | 20d → 40d | 0% → 98% | -129d → -167d |  |
| 4 | **LUMP SUM ITEMS** |  | 2024-04-22 → 2024-09-17 (+148d) |  |  |  |  |
| LS-1185 | CONSTRUCTION SURVEY, BI 001; 10% FOR PHYSICAL COMPLETION |  | 2024-04-22 A |  | 0% → 100% | -32d → none |  |
| 5 | **BI 194 - PEDESTRIAN ENHANCEMENTS ON MADISON ST I-5 OVERPASS** | 2024-04-02 → 2024-07-30 (+119d) | 2024-04-08 → 2024-09-17 (+162d) |  |  |  |  |
| LS-1480 | PLANTERS, BI 194 - PEDESTRIAN ENHANCEMENTS ON MADISON ST I-5 OVERPASS | 2024-04-02 → 2024-07-30 (+119d) | 2024-04-08 → 2024-07-31 (+114d) | 5d → 2d |  | -72d → -180d |  |
| LS-1490 | PLANTING, BI 194 - PEDESTRIAN ENHANCEMENTS ON MADISON ST I-5 OVERPASS | 2024-04-02 → 2024-08-01 (+121d) | 2024-04-08 → 2024-08-05 (+119d) | 5d → 3d |  | -65d → -153d | MS-0025 → MS-0025, LS-1480 |
| LS-1485 | DECORATIVE PANELS, BI 194 - PEDESTRIAN ENHANCEMENTS ON MADISON ST I-5 OVERPASS | 2024-04-02 → 2024-09-12 (+163d) | 2024-04-08 → 2024-09-17 (+162d) | 5d → 4d |  | -68d → -180d | MS-0025 → MS-0025, LS-1480, 1-0789 SS, LS-1490 |
